node_id,wbs,task_name,duration,optimistic_time,pessimistic_time,baseline_start,baseline_end,resource_demand,total_cost
0,1,Manufacturing Tool Cost Module,60.2916666666667,59.69,60.89,2012-06-04 08:00:00,2012-08-03 15:00:00,,61698.9
1,1.1,Manufacturing Tool Cost Module,60.2916666666667,59.69,60.89,2012-06-04 08:00:00,2012-08-03 15:00:00,,61698.9
2,1.1.1,Kick-Off,0.291666666666667,0.29,0.29,2012-06-04 08:00:00,2012-06-04 15:00:00,,804.9
3,1.1.1.1,Kick-Off meeting & brainstorming,0.0833333333333333,0.07,0.1,2012-06-04 08:00:00,2012-06-04 10:00:00,Dirk Pilu;Geert Engelrest,268.3
4,1.1.1.2,Project team definition,0.0833333333333333,0.07,0.1,2012-06-04 10:00:00,2012-06-04 12:00:00,Dirk Pilu;Geert Engelrest,268.3
5,1.1.1.3,Project Objectives,0.0833333333333333,0.07,0.1,2012-06-04 13:00:00,2012-06-04 15:00:00,Dirk Pilu;Geert Engelrest,268.3
6,1.1.1.4,Signed Project Charter,0.0,0.0,0.0,2012-06-04 15:00:00,2012-06-04 15:00:00,,0.0
7,1.1.2,Project spec's,17.0,16.83,17.17,2012-06-04 15:00:00,2012-06-21 15:00:00,,30825.6
8,1.1.2.1,Define calculation model,6.79166666666667,5.43,8.15,2012-06-04 15:00:00,2012-06-11 10:00:00,Dirk Pilu;Geert Engelrest;Hubert Lutters;Kristof Himpens;Youri Deweerdt,10670.4
9,1.1.2.2,Define dBase structure,4.0,3.2,4.8,2012-06-11 10:00:00,2012-06-15 10:00:00,Dirk Pilu;Geert Engelrest;Hubert Lutters;Kristof Himpens;Youri Deweerdt,9484.8
10,1.1.2.3,Define Graphical User Interface,4.0,3.2,4.8,2012-06-15 10:00:00,2012-06-19 10:00:00,Dirk Pilu;Geert Engelrest;Hubert Lutters;Kristof Himpens;Youri Deweerdt,4742.4
11,1.1.2.4,Review spec's,1.0,0.8,1.2,2012-06-19 10:00:00,2012-06-20 10:00:00,Dirk Pilu;Geert Engelrest;Hubert Lutters;Kristof Himpens;Youri Deweerdt,2371.2
12,1.1.2.5,Update specifications,1.20833333333333,0.97,1.45,2012-06-20 10:00:00,2012-06-21 15:00:00,Dirk Pilu;Geert Engelrest;Hubert Lutters;Kristof Himpens;Youri Deweerdt,3556.8
13,1.1.2.6,Spec's frozen,0.0,0.0,0.0,2012-06-21 15:00:00,2012-06-21 15:00:00,,0.0
14,1.1.3,dBase creation / SetUp,19.0,18.81,19.19,2012-06-21 15:00:00,2012-07-10 15:00:00,,9282.8
15,1.1.3.1,Maintenance cost,7.0,6.93,7.07,2012-06-21 15:00:00,2012-06-28 15:00:00,,2018.0
16,1.1.3.1.1,HWL - spares,4.0,3.2,4.8,2012-06-21 15:00:00,2012-06-25 15:00:00,Hubert Lutters,807.2
17,1.1.3.1.2,TMS - Hours,3.0,2.4,3.6,2012-06-25 15:00:00,2012-06-28 15:00:00,Hubert Lutters,1210.8
18,1.1.3.1.3,Maintenance cost,0.0,0.0,0.0,2012-06-28 15:00:00,2012-06-28 15:00:00,,0.0
19,1.1.3.2,Improvement cost,8.0,7.92,8.08,2012-06-21 15:00:00,2012-06-29 15:00:00,,2421.6
20,1.1.3.2.1,SPAR - spares,4.0,3.2,4.8,2012-06-21 15:00:00,2012-06-25 15:00:00,Kristof Himpens,807.2
21,1.1.3.2.2,SPAR - Hours toolshop,2.0,1.6,2.4,2012-06-25 15:00:00,2012-06-27 15:00:00,Kristof Himpens,807.2
22,1.1.3.2.3,SPAR - Hours design,2.0,1.6,2.4,2012-06-27 15:00:00,2012-06-29 15:00:00,Kristof Himpens,807.2
23,1.1.3.2.4,Improvement cost,0.0,0.0,0.0,2012-06-29 15:00:00,2012-06-29 15:00:00,,0.0
24,1.1.3.3,COPQ linked,11.0,10.89,11.11,2012-06-29 15:00:00,2012-07-10 15:00:00,,2825.2
25,1.1.3.3.1,Production scrap (confirmed / unconfirmed),5.0,4.0,6.0,2012-06-29 15:00:00,2012-07-04 15:00:00,Kristof Himpens,1210.8
26,1.1.3.3.2,Inventory scrap,2.0,1.6,2.4,2012-07-04 15:00:00,2012-07-06 15:00:00,Kristof Himpens,807.2
27,1.1.3.3.3,Sorting (intern / extern),4.0,3.2,4.8,2012-07-06 15:00:00,2012-07-10 15:00:00,Kristof Himpens,807.2
28,1.1.3.3.4,COPQ,0.0,0.0,0.0,2012-07-10 15:00:00,2012-07-10 15:00:00,,0.0
29,1.1.3.4,Operational losses linked,7.0,6.93,7.07,2012-06-28 15:00:00,2012-07-05 15:00:00,,2018.0
30,1.1.3.4.1,"Support hours, Lost capacity",7.0,5.6,8.4,2012-06-28 15:00:00,2012-07-05 15:00:00,Hubert Lutters,2018.0
31,1.1.3.4.2,Operational losses,0.0,0.0,0.0,2012-07-05 15:00:00,2012-07-05 15:00:00,,0.0
32,1.1.3.5,dBase frozen,0.0,0.0,0.0,2012-07-10 15:00:00,2012-07-10 15:00:00,,0.0
33,1.1.4,dBase functionality / Calculation model -  implementation,14.0,13.86,14.14,2012-07-10 15:00:00,2012-07-24 15:00:00,,8072.0
34,1.1.4.1,Calculation function,7.0,5.6,8.4,2012-07-10 15:00:00,2012-07-17 15:00:00,Hubert Lutters;Kristof Himpens,4036.0
35,1.1.4.2,Analyze / export function,7.0,5.6,8.4,2012-07-10 15:00:00,2012-07-17 15:00:00,Hubert Lutters;Kristof Himpens,4036.0
36,1.1.4.3,Functionality implemented,0.0,0.0,0.0,2012-07-24 15:00:00,2012-07-24 15:00:00,,0.0
37,1.1.5,Evaluation - Update,10.0,9.9,10.1,2012-07-24 15:00:00,2012-08-03 15:00:00,,12713.6
38,1.1.5.1,Calculation-Analyze verification,6.0,4.8,7.2,2012-07-24 15:00:00,2012-07-30 15:00:00,Dirk Pilu;Geert Engelrest;Hubert Lutters;Kristof Himpens;Youri Deweerdt,9484.8
39,1.1.5.2,Update,4.0,3.2,4.8,2012-07-30 15:00:00,2012-08-03 15:00:00,Kristof Himpens;Hubert Lutters,3228.8
40,1.1.5.3,Release,0.0,0.0,0.0,2012-08-03 15:00:00,2012-08-03 15:00:00,,0.0
