node_id,wbs,task_name,duration,optimistic_time,pessimistic_time,baseline_start,baseline_end,resource_demand,total_cost
0,1,Sea Electricity,468.041666666667,463.36,472.72,2013-02-04 06:00:00,2014-05-18 07:00:00,,139062138.004578
20,1.1,Pin-piles,202.666666666667,200.64,204.69,2013-02-04 06:00:00,2013-08-25 22:00:00,,21715090.0
1,1.1.1,Fabrication of pre-piling template,14.6666666666667,11.73,17.6,2013-04-20 06:00:00,2013-05-04 22:00:00,,1044000.0
2,1.1.2,Transportation of template and mounting on Jack Up Platform Buzzard,9.66666666666667,7.73,11.6,2013-05-05 06:00:00,2013-05-14 22:00:00,,58000.0
3,1.1.3,Mobilisation of Jack Up Platform Buzzard,0.666666666666667,0.53,0.8,2013-05-15 06:00:00,2013-05-15 22:00:00,Laborer[5.00 #60];Skipper;Engineer[3.00 #18];Vessel Buzzard,63040.0
551,1.1.4,Purchasing of pin-piles,49.6666666666667,39.73,59.6,2013-02-04 06:00:00,2013-03-25 22:00:00,,6264000.0
11,1.1.5,Continious delivery of pin-piles,24.6666666666667,19.73,29.6,2013-03-01 06:00:00,2013-03-25 22:00:00,,19200.0
10,1.1.6,Seabed preparations,39.6666666666667,39.27,40.06,2013-04-06 06:00:00,2013-05-15 22:00:00,,2947200.0
6,1.1.6.1,Mobilisation of vessels,14.6666666666667,11.73,17.6,2013-04-06 06:00:00,2013-04-20 22:00:00,Laborer[5.00 #60];Skipper;Vessel Pompei,859200.0
7,1.1.6.2,Seabed preparations,24.6666666666667,19.73,29.6,2013-04-21 06:00:00,2013-05-15 22:00:00,Laborer[22.00 #60];Skipper;Engineer[6.00 #18];Vessel Pompei,2088000.0
15,1.1.7,Pile driving works,99.6666666666667,98.67,100.66,2013-05-16 06:00:00,2013-08-23 22:00:00,,4513250.0
526,1.1.7.1,Delivery of pin-piles OTS,0.666666666666667,0.53,0.8,2013-05-16 06:00:00,2013-05-16 22:00:00,Laborer[5.00 #60];Skipper[0.50 #4];Vessel Maersk[0.50 #1];Crane,17330.0
527,1.1.7.2,Delivery of pin-piles 1,0.666666666666667,0.53,0.8,2013-05-20 06:00:00,2013-05-20 22:00:00,Laborer[5.00 #60];Skipper[0.50 #4];Vessel Maersk[0.50 #1];Crane,17330.0
528,1.1.7.3,Delivery of pin-piles 2,0.666666666666667,0.53,0.8,2013-05-24 06:00:00,2013-05-24 22:00:00,Laborer[5.00 #60];Skipper[0.50 #4];Vessel Maersk[0.50 #1];Crane,17330.0
529,1.1.7.4,Delivery of pin-piles 3,0.666666666666667,0.53,0.8,2013-05-28 06:00:00,2013-05-28 22:00:00,Laborer[5.00 #60];Skipper[0.50 #4];Vessel Maersk[0.50 #1];Crane,17330.0
530,1.1.7.5,Delivery of pin-piles 4,0.666666666666667,0.53,0.8,2013-06-01 06:00:00,2013-06-01 22:00:00,Laborer[5.00 #60];Skipper[0.50 #4];Vessel Maersk[0.50 #1];Crane,17330.0
531,1.1.7.6,Delivery of pin-piles 5,0.666666666666667,0.53,0.8,2013-06-05 06:00:00,2013-06-05 22:00:00,Laborer[5.00 #60];Skipper[0.50 #4];Vessel Maersk[0.50 #1];Crane,17330.0
532,1.1.7.7,Delivery of pin-piles 6,0.666666666666667,0.53,0.8,2013-06-10 06:00:00,2013-06-10 22:00:00,Laborer[5.00 #60];Skipper[0.50 #4];Vessel Maersk[0.50 #1];Crane,17330.0
533,1.1.7.8,Delivery of pin-piles 7,0.666666666666667,0.53,0.8,2013-06-14 06:00:00,2013-06-14 22:00:00,Laborer[5.00 #60];Skipper[0.50 #4];Vessel Maersk[0.50 #1];Crane,17330.0
534,1.1.7.9,Delivery of pin-piles 8,0.666666666666667,0.53,0.8,2013-06-18 06:00:00,2013-06-18 22:00:00,Laborer[5.00 #60];Skipper[0.50 #4];Vessel Maersk[0.50 #1];Crane,17330.0
535,1.1.7.10,Delivery of pin-piles 9,0.666666666666667,0.53,0.8,2013-06-22 06:00:00,2013-06-22 22:00:00,Laborer[5.00 #60];Skipper[0.50 #4];Vessel Maersk[0.50 #1];Crane,17330.0
536,1.1.7.11,Delivery of pin-piles 10,0.666666666666667,0.53,0.8,2013-06-26 06:00:00,2013-06-26 22:00:00,Laborer[5.00 #60];Skipper[0.50 #4];Vessel Maersk[0.50 #1];Crane,17330.0
537,1.1.7.12,Delivery of pin-piles 11,0.666666666666667,0.53,0.8,2013-06-30 06:00:00,2013-06-30 22:00:00,Laborer[5.00 #60];Skipper[0.50 #4];Vessel Maersk[0.50 #1];Crane,17330.0
538,1.1.7.13,Delivery of pin-piles 12,0.666666666666667,0.53,0.8,2013-07-04 06:00:00,2013-07-04 22:00:00,Laborer[5.00 #60];Skipper[0.50 #4];Vessel Maersk[0.50 #1];Crane,17330.0
539,1.1.7.14,Delivery of pin-piles 13,0.666666666666667,0.53,0.8,2013-07-08 06:00:00,2013-07-08 22:00:00,Laborer[5.00 #60];Skipper[0.50 #4];Vessel Maersk[0.50 #1];Crane,17330.0
540,1.1.7.15,Delivery of pin-piles 14,0.666666666666667,0.53,0.8,2013-07-12 06:00:00,2013-07-12 22:00:00,Laborer[5.00 #60];Skipper[0.50 #4];Vessel Maersk[0.50 #1];Crane,17330.0
541,1.1.7.16,Delivery of pin-piles 15,0.666666666666667,0.53,0.8,2013-07-16 06:00:00,2013-07-16 22:00:00,Laborer[5.00 #60];Skipper[0.50 #4];Vessel Maersk[0.50 #1];Crane,17330.0
542,1.1.7.17,Delivery of pin-piles 16,0.666666666666667,0.53,0.8,2013-07-20 06:00:00,2013-07-20 22:00:00,Laborer[5.00 #60];Skipper[0.50 #4];Vessel Maersk[0.50 #1];Crane,17330.0
543,1.1.7.18,Delivery of pin-piles 17,0.666666666666667,0.53,0.8,2013-07-24 06:00:00,2013-07-24 22:00:00,Laborer[5.00 #60];Skipper[0.50 #4];Vessel Maersk[0.50 #1];Crane,17330.0
544,1.1.7.19,Delivery of pin-piles 18,0.666666666666667,0.53,0.8,2013-07-28 06:00:00,2013-07-28 22:00:00,Laborer[5.00 #60];Skipper[0.50 #4];Vessel Maersk[0.50 #1];Crane,17330.0
545,1.1.7.20,Delivery of pin-piles 19,0.666666666666667,0.53,0.8,2013-08-01 06:00:00,2013-08-01 22:00:00,Laborer[5.00 #60];Skipper[0.50 #4];Vessel Maersk[0.50 #1];Crane,17330.0
546,1.1.7.21,Delivery of pin-piles 20,0.666666666666667,0.53,0.8,2013-08-05 06:00:00,2013-08-05 22:00:00,Laborer[5.00 #60];Skipper[0.50 #4];Vessel Maersk[0.50 #1];Crane,17330.0
547,1.1.7.22,Delivery of pin-piles 21,0.666666666666667,0.53,0.8,2013-08-13 06:00:00,2013-08-13 22:00:00,Laborer[5.00 #60];Skipper[0.50 #4];Vessel Maersk[0.50 #1];Crane,17330.0
548,1.1.7.23,Delivery of pin-piles 22,0.666666666666667,0.53,0.8,2013-08-09 06:00:00,2013-08-09 22:00:00,Laborer[5.00 #60];Skipper[0.50 #4];Vessel Maersk[0.50 #1];Crane,17330.0
549,1.1.7.24,Delivery of pin-piles 23,0.666666666666667,0.53,0.8,2013-08-17 06:00:00,2013-08-17 22:00:00,Laborer[5.00 #60];Skipper[0.50 #4];Vessel Maersk[0.50 #1];Crane,17330.0
550,1.1.7.25,Delivery of pin-piles 24,0.666666666666667,0.53,0.8,2013-08-21 06:00:00,2013-08-21 22:00:00,Laborer[5.00 #60];Skipper[0.50 #4];Vessel Maersk[0.50 #1];Crane,17330.0
12,1.1.7.26,OTS: drive 4 pin-piles for OTS foundation into seabed,1.66666666666667,1.33,2.0,2013-05-17 06:00:00,2013-05-18 22:00:00,Laborer[22.00 #60];Skipper;Engineer[6.00 #18];Vessel Buzzard,163200.0
13,1.1.7.27,Turbine1: drive 4 pin-piles for jacket foundation into seabed,1.66666666666667,1.33,2.0,2013-05-21 06:00:00,2013-05-22 22:00:00,Laborer[22.00 #60];Skipper;Engineer[6.00 #18];Vessel Buzzard,163200.0
14,1.1.7.28,Turbine2: drive 4 pin-piles for jacket foundation into seabed,1.66666666666667,1.33,2.0,2013-05-25 06:00:00,2013-05-26 22:00:00,Laborer[22.00 #60];Skipper;Engineer[6.00 #18];Vessel Buzzard,163200.0
196,1.1.7.29,Turbine3: drive 4 pin-piles for jacket foundation into seabed,1.66666666666667,1.33,2.0,2013-05-29 06:00:00,2013-05-30 22:00:00,Laborer[22.00 #60];Skipper;Engineer[6.00 #18];Vessel Buzzard,163200.0
197,1.1.7.30,Turbine4: drive 4 pin-piles for jacket foundation into seabed,1.66666666666667,1.33,2.0,2013-06-02 06:00:00,2013-06-03 22:00:00,Laborer[22.00 #60];Skipper;Engineer[6.00 #18];Vessel Buzzard,163200.0
198,1.1.7.31,Turbine5: drive 4 pin-piles for jacket foundation into seabed,1.66666666666667,1.33,2.0,2013-06-06 06:00:00,2013-06-07 22:00:00,Laborer[22.00 #60];Skipper;Engineer[6.00 #18];Vessel Buzzard,163200.0
199,1.1.7.32,Turbine6: drive 4 pin-piles for jacket foundation into seabed,1.66666666666667,1.33,2.0,2013-06-11 06:00:00,2013-06-12 22:00:00,Laborer[22.00 #60];Skipper;Engineer[6.00 #18];Vessel Buzzard,163200.0
200,1.1.7.33,Turbine7: drive 4 pin-piles for jacket foundation into seabed,1.66666666666667,1.33,2.0,2013-06-15 06:00:00,2013-06-16 22:00:00,Laborer[22.00 #60];Skipper;Engineer[6.00 #18];Vessel Buzzard,163200.0
201,1.1.7.34,Turbine8: drive 4 pin-piles for jacket foundation into seabed,1.66666666666667,1.33,2.0,2013-06-19 06:00:00,2013-06-20 22:00:00,Laborer[22.00 #60];Skipper;Engineer[6.00 #18];Vessel Buzzard,163200.0
202,1.1.7.35,Turbine9: drive 4 pin-piles for jacket foundation into seabed,1.66666666666667,1.33,2.0,2013-06-23 06:00:00,2013-06-24 22:00:00,Laborer[22.00 #60];Skipper;Engineer[6.00 #18];Vessel Buzzard,163200.0
203,1.1.7.36,Turbine10: drive 4 pin-piles for jacket foundation into seabed,1.66666666666667,1.33,2.0,2013-06-27 06:00:00,2013-06-28 22:00:00,Laborer[22.00 #60];Skipper;Engineer[6.00 #18];Vessel Buzzard,163200.0
204,1.1.7.37,Turbine11: drive 4 pin-piles for jacket foundation into seabed,1.66666666666667,1.33,2.0,2013-07-01 06:00:00,2013-07-02 22:00:00,Laborer[22.00 #60];Skipper;Engineer[6.00 #18];Vessel Buzzard,163200.0
205,1.1.7.38,Turbine12: drive 4 pin-piles for jacket foundation into seabed,1.66666666666667,1.33,2.0,2013-07-05 06:00:00,2013-07-06 22:00:00,Laborer[22.00 #60];Skipper;Engineer[6.00 #18];Vessel Buzzard,163200.0
206,1.1.7.39,Turbine13: drive 4 pin-piles for jacket foundation into seabed,1.66666666666667,1.33,2.0,2013-07-09 06:00:00,2013-07-10 22:00:00,Laborer[22.00 #60];Skipper;Engineer[6.00 #18];Vessel Buzzard,163200.0
207,1.1.7.40,Turbine14: drive 4 pin-piles for jacket foundation into seabed,1.66666666666667,1.33,2.0,2013-07-13 06:00:00,2013-07-14 22:00:00,Laborer[22.00 #60];Skipper;Engineer[6.00 #18];Vessel Buzzard,163200.0
208,1.1.7.41,Turbine15: drive 4 pin-piles for jacket foundation into seabed,1.66666666666667,1.33,2.0,2013-07-17 06:00:00,2013-07-18 22:00:00,Laborer[22.00 #60];Skipper;Engineer[6.00 #18];Vessel Buzzard,163200.0
209,1.1.7.42,Turbine16: drive 4 pin-piles for jacket foundation into seabed,1.66666666666667,1.33,2.0,2013-07-21 06:00:00,2013-07-22 22:00:00,Laborer[22.00 #60];Skipper;Engineer[6.00 #18];Vessel Buzzard,163200.0
210,1.1.7.43,Turbine17: drive 4 pin-piles for jacket foundation into seabed,1.66666666666667,1.33,2.0,2013-07-25 06:00:00,2013-07-26 22:00:00,Laborer[22.00 #60];Skipper;Engineer[6.00 #18];Vessel Buzzard,163200.0
211,1.1.7.44,Turbine18: drive 4 pin-piles for jacket foundation into seabed,1.66666666666667,1.33,2.0,2013-07-29 06:00:00,2013-07-30 22:00:00,Laborer[22.00 #60];Skipper;Engineer[6.00 #18];Vessel Buzzard,163200.0
212,1.1.7.45,Turbine19: drive 4 pin-piles for jacket foundation into seabed,1.66666666666667,1.33,2.0,2013-08-02 06:00:00,2013-08-03 22:00:00,Laborer[22.00 #60];Skipper;Engineer[6.00 #18];Vessel Buzzard,163200.0
213,1.1.7.46,Turbine20: drive 4 pin-piles for jacket foundation into seabed,1.66666666666667,1.33,2.0,2013-08-06 06:00:00,2013-08-07 22:00:00,Laborer[22.00 #60];Skipper;Engineer[6.00 #18];Vessel Buzzard,163200.0
214,1.1.7.47,Turbine21: drive 4 pin-piles for jacket foundation into seabed,1.66666666666667,1.33,2.0,2013-08-14 06:00:00,2013-08-15 22:00:00,Laborer[22.00 #60];Skipper;Engineer[6.00 #18];Vessel Buzzard,163200.0
215,1.1.7.48,Turbine22: drive 4 pin-piles for jacket foundation into seabed,1.66666666666667,1.33,2.0,2013-08-10 06:00:00,2013-08-11 22:00:00,Laborer[22.00 #60];Skipper;Engineer[6.00 #18];Vessel Buzzard,163200.0
216,1.1.7.49,Turbine23: drive 4 pin-piles for jacket foundation into seabed,1.66666666666667,1.33,2.0,2013-08-18 06:00:00,2013-08-19 22:00:00,Laborer[22.00 #60];Skipper;Engineer[6.00 #18];Vessel Buzzard,163200.0
217,1.1.7.50,Turbine24: drive 4 pin-piles for jacket foundation into seabed,1.66666666666667,1.33,2.0,2013-08-22 06:00:00,2013-08-23 22:00:00,Laborer[22.00 #60];Skipper;Engineer[6.00 #18];Vessel Buzzard,163200.0
19,1.1.8,Dredging and cleaning of the pin-piles (Pompei),98.6666666666667,97.68,99.65,2013-05-19 06:00:00,2013-08-25 22:00:00,,6806400.0
165,1.1.8.1,OTS,1.66666666666667,1.65,1.68,2013-05-19 06:00:00,2013-05-20 22:00:00,,161280.0
16,1.1.8.1.1,Dredging and cleaning of pin-piles,0.666666666666667,0.53,0.8,2013-05-19 06:00:00,2013-05-19 22:00:00,Laborer[18.00 #60];Skipper;Engineer[6.00 #18];Vessel Pompei,80960.0
17,1.1.8.1.2,Install pin-pile covers on the piles,0.666666666666667,0.53,0.8,2013-05-20 06:00:00,2013-05-20 22:00:00,Laborer[20.00 #60];Skipper;Engineer[6.00 #18];Vessel Buzzard,80320.0
166,1.1.8.2,Turbines,94.6666666666667,93.72,95.61,2013-05-23 06:00:00,2013-08-25 22:00:00,,6645120.0
162,1.1.8.2.1,Dredging and cleaning of pin-piles 1,0.666666666666667,0.53,0.8,2013-05-23 06:00:00,2013-05-23 22:00:00,Laborer[18.00 #60];Skipper;Engineer[6.00 #18];Vessel Pompei,143960.0
218,1.1.8.2.2,Dredging and cleaning of pin-piles 2,0.666666666666667,0.53,0.8,2013-05-27 06:00:00,2013-05-27 22:00:00,Laborer[18.00 #60];Skipper;Engineer[6.00 #18];Vessel Pompei,143960.0
219,1.1.8.2.3,Dredging and cleaning of pin-piles 3,0.666666666666667,0.53,0.8,2013-05-31 06:00:00,2013-05-31 22:00:00,Laborer[18.00 #60];Skipper;Engineer[6.00 #18];Vessel Pompei,143960.0
220,1.1.8.2.4,Dredging and cleaning of pin-piles 4,0.666666666666667,0.53,0.8,2013-06-04 06:00:00,2013-06-04 22:00:00,Laborer[18.00 #60];Skipper;Engineer[6.00 #18];Vessel Pompei,143960.0
221,1.1.8.2.5,Dredging and cleaning of pin-piles 5,0.666666666666667,0.53,0.8,2013-06-08 06:00:00,2013-06-08 22:00:00,Laborer[18.00 #60];Skipper;Engineer[6.00 #18];Vessel Pompei,143960.0
222,1.1.8.2.6,Dredging and cleaning of pin-piles 6,0.666666666666667,0.53,0.8,2013-06-13 06:00:00,2013-06-13 22:00:00,Laborer[18.00 #60];Skipper;Engineer[6.00 #18];Vessel Pompei,143960.0
223,1.1.8.2.7,Dredging and cleaning of pin-piles 7,0.666666666666667,0.53,0.8,2013-06-17 06:00:00,2013-06-17 22:00:00,Laborer[18.00 #60];Skipper;Engineer[6.00 #18];Vessel Pompei,143960.0
224,1.1.8.2.8,Dredging and cleaning of pin-piles 8,0.666666666666667,0.53,0.8,2013-06-21 06:00:00,2013-06-21 22:00:00,Laborer[18.00 #60];Skipper;Engineer[6.00 #18];Vessel Pompei,143960.0
225,1.1.8.2.9,Dredging and cleaning of pin-piles 9,0.666666666666667,0.53,0.8,2013-06-25 06:00:00,2013-06-25 22:00:00,Laborer[18.00 #60];Skipper;Engineer[6.00 #18];Vessel Pompei,143960.0
226,1.1.8.2.10,Dredging and cleaning of pin-piles 10,0.666666666666667,0.53,0.8,2013-06-29 06:00:00,2013-06-29 22:00:00,Laborer[18.00 #60];Skipper;Engineer[6.00 #18];Vessel Pompei,143960.0
227,1.1.8.2.11,Dredging and cleaning of pin-piles 11,0.666666666666667,0.53,0.8,2013-07-03 06:00:00,2013-07-03 22:00:00,Laborer[18.00 #60];Skipper;Engineer[6.00 #18];Vessel Pompei,143960.0
228,1.1.8.2.12,Dredging and cleaning of pin-piles 12,0.666666666666667,0.53,0.8,2013-07-07 06:00:00,2013-07-07 22:00:00,Laborer[18.00 #60];Skipper;Engineer[6.00 #18];Vessel Pompei,143960.0
229,1.1.8.2.13,Dredging and cleaning of pin-piles 13,0.666666666666667,0.53,0.8,2013-07-11 06:00:00,2013-07-11 22:00:00,Laborer[18.00 #60];Skipper;Engineer[6.00 #18];Vessel Pompei,143960.0
230,1.1.8.2.14,Dredging and cleaning of pin-piles 14,0.666666666666667,0.53,0.8,2013-07-15 06:00:00,2013-07-15 22:00:00,Laborer[18.00 #60];Skipper;Engineer[6.00 #18];Vessel Pompei,143960.0
231,1.1.8.2.15,Dredging and cleaning of pin-piles 15,0.666666666666667,0.53,0.8,2013-07-19 06:00:00,2013-07-19 22:00:00,Laborer[18.00 #60];Skipper;Engineer[6.00 #18];Vessel Pompei,143960.0
232,1.1.8.2.16,Dredging and cleaning of pin-piles 16,0.666666666666667,0.53,0.8,2013-07-23 06:00:00,2013-07-23 22:00:00,Laborer[18.00 #60];Skipper;Engineer[6.00 #18];Vessel Pompei,143960.0
233,1.1.8.2.17,Dredging and cleaning of pin-piles 17,0.666666666666667,0.53,0.8,2013-07-27 06:00:00,2013-07-27 22:00:00,Laborer[18.00 #60];Skipper;Engineer[6.00 #18];Vessel Pompei,143960.0
234,1.1.8.2.18,Dredging and cleaning of pin-piles 18,0.666666666666667,0.53,0.8,2013-07-31 06:00:00,2013-07-31 22:00:00,Laborer[18.00 #60];Skipper;Engineer[6.00 #18];Vessel Pompei,143960.0
235,1.1.8.2.19,Dredging and cleaning of pin-piles 19,0.666666666666667,0.53,0.8,2013-08-04 06:00:00,2013-08-04 22:00:00,Laborer[18.00 #60];Skipper;Engineer[6.00 #18];Vessel Pompei,143960.0
236,1.1.8.2.20,Dredging and cleaning of pin-piles 20,0.666666666666667,0.53,0.8,2013-08-08 06:00:00,2013-08-08 22:00:00,Laborer[18.00 #60];Skipper;Engineer[6.00 #18];Vessel Pompei,143960.0
237,1.1.8.2.21,Dredging and cleaning of pin-piles 21,0.666666666666667,0.53,0.8,2013-08-16 06:00:00,2013-08-16 22:00:00,Laborer[18.00 #60];Skipper;Engineer[6.00 #18];Vessel Pompei,143960.0
238,1.1.8.2.22,Dredging and cleaning of pin-piles 22,0.666666666666667,0.53,0.8,2013-08-12 06:00:00,2013-08-12 22:00:00,Laborer[18.00 #60];Skipper;Engineer[6.00 #18];Vessel Pompei,143960.0
239,1.1.8.2.23,Dredging and cleaning of pin-piles 23,0.666666666666667,0.53,0.8,2013-08-20 06:00:00,2013-08-20 22:00:00,Laborer[18.00 #60];Skipper;Engineer[6.00 #18];Vessel Pompei,143960.0
240,1.1.8.2.24,Dredging and cleaning of pin-piles 24,0.666666666666667,0.53,0.8,2013-08-24 06:00:00,2013-08-24 22:00:00,Laborer[18.00 #60];Skipper;Engineer[6.00 #18];Vessel Pompei,143960.0
241,1.1.8.2.25,Install pin-pile covers on the piles 1,0.666666666666667,0.53,0.8,2013-05-24 06:00:00,2013-05-24 22:00:00,Laborer[20.00 #60];Skipper;Engineer[6.00 #18];Vessel Buzzard,132920.0
242,1.1.8.2.26,Install pin-pile covers on the piles 2,0.666666666666667,0.53,0.8,2013-05-28 06:00:00,2013-05-28 22:00:00,Laborer[20.00 #60];Skipper;Engineer[6.00 #18];Vessel Buzzard,132920.0
243,1.1.8.2.27,Install pin-pile covers on the piles 3,0.666666666666667,0.53,0.8,2013-06-01 06:00:00,2013-06-01 22:00:00,Laborer[20.00 #60];Skipper;Engineer[6.00 #18];Vessel Buzzard,132920.0
244,1.1.8.2.28,Install pin-pile covers on the piles 4,0.666666666666667,0.53,0.8,2013-06-05 06:00:00,2013-06-05 22:00:00,Laborer[20.00 #60];Skipper;Engineer[6.00 #18];Vessel Buzzard,132920.0
245,1.1.8.2.29,Install pin-pile covers on the piles 5,0.666666666666667,0.53,0.8,2013-06-10 06:00:00,2013-06-10 22:00:00,Laborer[20.00 #60];Skipper;Engineer[6.00 #18];Vessel Buzzard,132920.0
246,1.1.8.2.30,Install pin-pile covers on the piles 6,0.666666666666667,0.53,0.8,2013-06-14 06:00:00,2013-06-14 22:00:00,Laborer[20.00 #60];Skipper;Engineer[6.00 #18];Vessel Buzzard,132920.0
247,1.1.8.2.31,Install pin-pile covers on the piles 7,0.666666666666667,0.53,0.8,2013-06-18 06:00:00,2013-06-18 22:00:00,Laborer[20.00 #60];Skipper;Engineer[6.00 #18];Vessel Buzzard,132920.0
248,1.1.8.2.32,Install pin-pile covers on the piles 8,0.666666666666667,0.53,0.8,2013-06-22 06:00:00,2013-06-22 22:00:00,Laborer[20.00 #60];Skipper;Engineer[6.00 #18];Vessel Buzzard,132920.0
249,1.1.8.2.33,Install pin-pile covers on the piles 9,0.666666666666667,0.53,0.8,2013-06-26 06:00:00,2013-06-26 22:00:00,Laborer[20.00 #60];Skipper;Engineer[6.00 #18];Vessel Buzzard,132920.0
250,1.1.8.2.34,Install pin-pile covers on the piles 10,0.666666666666667,0.53,0.8,2013-06-30 06:00:00,2013-06-30 22:00:00,Laborer[20.00 #60];Skipper;Engineer[6.00 #18];Vessel Buzzard,132920.0
251,1.1.8.2.35,Install pin-pile covers on the piles 11,0.666666666666667,0.53,0.8,2013-07-04 06:00:00,2013-07-04 22:00:00,Laborer[20.00 #60];Skipper;Engineer[6.00 #18];Vessel Buzzard,132920.0
252,1.1.8.2.36,Install pin-pile covers on the piles 12,0.666666666666667,0.53,0.8,2013-07-08 06:00:00,2013-07-08 22:00:00,Laborer[20.00 #60];Skipper;Engineer[6.00 #18];Vessel Buzzard,132920.0
253,1.1.8.2.37,Install pin-pile covers on the piles 13,0.666666666666667,0.53,0.8,2013-07-12 06:00:00,2013-07-12 22:00:00,Laborer[20.00 #60];Skipper;Engineer[6.00 #18];Vessel Buzzard,132920.0
254,1.1.8.2.38,Install pin-pile covers on the piles 14,0.666666666666667,0.53,0.8,2013-07-16 06:00:00,2013-07-16 22:00:00,Laborer[20.00 #60];Skipper;Engineer[6.00 #18];Vessel Buzzard,132920.0
255,1.1.8.2.39,Install pin-pile covers on the piles 15,0.666666666666667,0.53,0.8,2013-07-20 06:00:00,2013-07-20 22:00:00,Laborer[20.00 #60];Skipper;Engineer[6.00 #18];Vessel Buzzard,132920.0
256,1.1.8.2.40,Install pin-pile covers on the piles 16,0.666666666666667,0.53,0.8,2013-07-24 06:00:00,2013-07-24 22:00:00,Laborer[20.00 #60];Skipper;Engineer[6.00 #18];Vessel Buzzard,132920.0
257,1.1.8.2.41,Install pin-pile covers on the piles 17,0.666666666666667,0.53,0.8,2013-07-28 06:00:00,2013-07-28 22:00:00,Laborer[20.00 #60];Skipper;Engineer[6.00 #18];Vessel Buzzard,132920.0
258,1.1.8.2.42,Install pin-pile covers on the piles 18,0.666666666666667,0.53,0.8,2013-08-01 06:00:00,2013-08-01 22:00:00,Laborer[20.00 #60];Skipper;Engineer[6.00 #18];Vessel Buzzard,132920.0
259,1.1.8.2.43,Install pin-pile covers on the piles 19,0.666666666666667,0.53,0.8,2013-08-05 06:00:00,2013-08-05 22:00:00,Laborer[20.00 #60];Skipper;Engineer[6.00 #18];Vessel Buzzard,132920.0
260,1.1.8.2.44,Install pin-pile covers on the piles 20,0.666666666666667,0.53,0.8,2013-08-09 06:00:00,2013-08-09 22:00:00,Laborer[20.00 #60];Skipper;Engineer[6.00 #18];Vessel Buzzard,132920.0
261,1.1.8.2.45,Install pin-pile covers on the piles 21,0.666666666666667,0.53,0.8,2013-08-17 06:00:00,2013-08-17 22:00:00,Laborer[20.00 #60];Skipper;Engineer[6.00 #18];Vessel Buzzard,132920.0
262,1.1.8.2.46,Install pin-pile covers on the piles 22,0.666666666666667,0.53,0.8,2013-08-13 06:00:00,2013-08-13 22:00:00,Laborer[20.00 #60];Skipper;Engineer[6.00 #18];Vessel Buzzard,132920.0
263,1.1.8.2.47,Install pin-pile covers on the piles 23,0.666666666666667,0.53,0.8,2013-08-21 06:00:00,2013-08-21 22:00:00,Laborer[20.00 #60];Skipper;Engineer[6.00 #18];Vessel Buzzard,132920.0
264,1.1.8.2.48,Install pin-pile covers on the piles 24,0.666666666666667,0.53,0.8,2013-08-25 06:00:00,2013-08-25 22:00:00,Laborer[20.00 #60];Skipper;Engineer[6.00 #18];Vessel Buzzard,132920.0
45,1.2,Jacket foundations of wind turbines,268.666666666667,265.98,271.35,2013-02-04 06:00:00,2013-10-30 22:00:00,,10603504.0
35,1.2.1,Fabrication and assemblage of steel structure for jacket foundations,265.666666666667,263.01,268.32,2013-02-04 06:00:00,2013-10-27 22:00:00,,3224944.0
21,1.2.1.1,Purshase of tubulars,119.666666666667,118.47,120.86,2013-02-04 06:00:00,2013-06-03 22:00:00,,80000.0
23,1.2.1.2,Purchase of castings and pile stoppers,119.666666666667,118.47,120.86,2013-02-04 06:00:00,2013-06-03 22:00:00,,150000.0
25,1.2.1.3,Assembly of midsection 1,8.66666666666667,6.93,10.4,2013-03-16 06:00:00,2013-03-24 22:00:00,,55100.0
337,1.2.1.4,Assembly of midsection 2,8.66666666666667,6.93,10.4,2013-03-25 06:00:00,2013-04-02 22:00:00,,55100.0
338,1.2.1.5,Assembly of midsection 3,8.66666666666667,6.93,10.4,2013-04-03 06:00:00,2013-04-11 22:00:00,,55100.0
339,1.2.1.6,Assembly of midsection 4,8.66666666666667,6.93,10.4,2013-04-12 06:00:00,2013-04-20 22:00:00,,55100.0
340,1.2.1.7,Assembly of midsection 5,8.66666666666667,6.93,10.4,2013-04-21 06:00:00,2013-04-29 22:00:00,,55100.0
341,1.2.1.8,Assembly of midsection 6,8.66666666666667,6.93,10.4,2013-04-30 06:00:00,2013-05-08 22:00:00,,55100.0
342,1.2.1.9,Assembly of midsection 7,8.66666666666667,6.93,10.4,2013-05-09 06:00:00,2013-05-17 22:00:00,,55100.0
343,1.2.1.10,Assembly of midsection 8,8.66666666666667,6.93,10.4,2013-05-18 06:00:00,2013-05-26 22:00:00,,55100.0
344,1.2.1.11,Assembly of midsection 9,8.66666666666667,6.93,10.4,2013-05-27 06:00:00,2013-06-04 22:00:00,,55100.0
345,1.2.1.12,Assembly of midsection 10,8.66666666666667,6.93,10.4,2013-06-05 06:00:00,2013-06-13 22:00:00,,55100.0
346,1.2.1.13,Assembly of midsection 11,8.66666666666667,6.93,10.4,2013-06-14 06:00:00,2013-06-22 22:00:00,,55100.0
347,1.2.1.14,Assembly of midsection 12,8.66666666666667,6.93,10.4,2013-06-23 06:00:00,2013-07-01 22:00:00,,55100.0
348,1.2.1.15,Assembly of midsection 13,8.66666666666667,6.93,10.4,2013-07-02 06:00:00,2013-07-10 22:00:00,,55100.0
349,1.2.1.16,Assembly of midsection 14,8.66666666666667,6.93,10.4,2013-07-11 06:00:00,2013-07-19 22:00:00,,55100.0
350,1.2.1.17,Assembly of midsection 15,8.66666666666667,6.93,10.4,2013-07-20 06:00:00,2013-07-28 22:00:00,,55100.0
351,1.2.1.18,Assembly of midsection 16,8.66666666666667,6.93,10.4,2013-07-29 06:00:00,2013-08-06 22:00:00,,55100.0
352,1.2.1.19,Assembly of midsection 17,8.66666666666667,6.93,10.4,2013-08-07 06:00:00,2013-08-15 22:00:00,,55100.0
353,1.2.1.20,Assembly of midsection 18,8.66666666666667,6.93,10.4,2013-08-16 06:00:00,2013-08-24 22:00:00,,55100.0
354,1.2.1.21,Assembly of midsection 19,8.66666666666667,6.93,10.4,2013-08-25 06:00:00,2013-09-02 22:00:00,,55100.0
355,1.2.1.22,Assembly of midsection 20,8.66666666666667,6.93,10.4,2013-09-03 06:00:00,2013-09-11 22:00:00,,55100.0
356,1.2.1.23,Assembly of midsection 21,8.66666666666667,6.93,10.4,2013-09-12 06:00:00,2013-09-20 22:00:00,,55100.0
357,1.2.1.24,Assembly of midsection 22,8.66666666666667,6.93,10.4,2013-09-21 06:00:00,2013-09-29 22:00:00,,55100.0
358,1.2.1.25,Assembly of midsection 23,8.66666666666667,6.93,10.4,2013-09-30 06:00:00,2013-10-08 22:00:00,,55100.0
359,1.2.1.26,Assembly of midsection 24,8.66666666666667,6.93,10.4,2013-10-09 06:00:00,2013-10-17 22:00:00,,55100.0
27,1.2.1.27,Purchase of secondary steel items,79.6666666666667,78.87,80.46,2013-02-13 06:00:00,2013-05-03 22:00:00,,350000.0
29,1.2.1.28,Final jacket assembly 1,8.66666666666667,6.93,10.4,2013-03-25 06:00:00,2013-04-02 22:00:00,,40600.0
360,1.2.1.29,Final jacket assembly 2,8.66666666666667,6.93,10.4,2013-04-03 06:00:00,2013-04-11 22:00:00,,40744.0
361,1.2.1.30,Final jacket assembly 3,8.66666666666667,6.93,10.4,2013-04-12 06:00:00,2013-04-20 22:00:00,,40600.0
362,1.2.1.31,Final jacket assembly 4,8.66666666666667,6.93,10.4,2013-04-21 06:00:00,2013-04-29 22:00:00,,40600.0
363,1.2.1.32,Final jacket assembly 5,8.66666666666667,6.93,10.4,2013-04-30 06:00:00,2013-05-08 22:00:00,,40600.0
364,1.2.1.33,Final jacket assembly 6,8.66666666666667,6.93,10.4,2013-05-09 06:00:00,2013-05-17 22:00:00,,40600.0
365,1.2.1.34,Final jacket assembly 7,8.66666666666667,6.93,10.4,2013-05-18 06:00:00,2013-05-26 22:00:00,,40600.0
366,1.2.1.35,Final jacket assembly 8,8.66666666666667,6.93,10.4,2013-05-27 06:00:00,2013-06-04 22:00:00,,40600.0
367,1.2.1.36,Final jacket assembly 9,8.66666666666667,6.93,10.4,2013-06-05 06:00:00,2013-06-13 22:00:00,,40600.0
368,1.2.1.37,Final jacket assembly 10,8.66666666666667,6.93,10.4,2013-06-14 06:00:00,2013-06-22 22:00:00,,40600.0
369,1.2.1.38,Final jacket assembly 11,8.66666666666667,6.93,10.4,2013-06-23 06:00:00,2013-07-01 22:00:00,,40600.0
370,1.2.1.39,Final jacket assembly 12,8.66666666666667,6.93,10.4,2013-07-02 06:00:00,2013-07-10 22:00:00,,40600.0
371,1.2.1.40,Final jacket assembly 13,8.66666666666667,6.93,10.4,2013-07-11 06:00:00,2013-07-19 22:00:00,,40600.0
372,1.2.1.41,Final jacket assembly 14,8.66666666666667,6.93,10.4,2013-07-20 06:00:00,2013-07-28 22:00:00,,40600.0
373,1.2.1.42,Final jacket assembly 15,8.66666666666667,6.93,10.4,2013-07-29 06:00:00,2013-08-06 22:00:00,,40600.0
374,1.2.1.43,Final jacket assembly 16,8.66666666666667,6.93,10.4,2013-08-07 06:00:00,2013-08-15 22:00:00,,40600.0
375,1.2.1.44,Final jacket assembly 17,8.66666666666667,6.93,10.4,2013-08-16 06:00:00,2013-08-24 22:00:00,,40600.0
376,1.2.1.45,Final jacket assembly 18,8.66666666666667,6.93,10.4,2013-08-25 06:00:00,2013-09-02 22:00:00,,40600.0
377,1.2.1.46,Final jacket assembly 19,8.66666666666667,6.93,10.4,2013-09-03 06:00:00,2013-09-11 22:00:00,,40600.0
378,1.2.1.47,Final jacket assembly 20,8.66666666666667,6.93,10.4,2013-09-12 06:00:00,2013-09-20 22:00:00,,40600.0
379,1.2.1.48,Final jacket assembly 21,8.66666666666667,6.93,10.4,2013-09-21 06:00:00,2013-09-29 22:00:00,,40600.0
380,1.2.1.49,Final jacket assembly 22,8.66666666666667,6.93,10.4,2013-09-30 06:00:00,2013-10-08 22:00:00,,40600.0
381,1.2.1.50,Final jacket assembly 23,8.66666666666667,6.93,10.4,2013-10-09 06:00:00,2013-10-17 22:00:00,,40600.0
382,1.2.1.51,Final jacket assembly 24,8.66666666666667,6.93,10.4,2013-10-18 06:00:00,2013-10-26 22:00:00,,40600.0
31,1.2.1.52,Transport (Hoboken to Vlissingen) 1,0.666666666666667,0.66,0.67,2013-04-03 06:00:00,2013-04-03 22:00:00,,14500.0
383,1.2.1.53,Transport (Hoboken to Vlissingen) 2,0.666666666666667,0.66,0.67,2013-04-12 06:00:00,2013-04-12 22:00:00,,14500.0
384,1.2.1.54,Transport (Hoboken to Vlissingen) 3,0.666666666666667,0.66,0.67,2013-04-21 06:00:00,2013-04-21 22:00:00,,14500.0
385,1.2.1.55,Transport (Hoboken to Vlissingen) 4,0.666666666666667,0.66,0.67,2013-04-30 06:00:00,2013-04-30 22:00:00,,14500.0
386,1.2.1.56,Transport (Hoboken to Vlissingen) 5,0.666666666666667,0.66,0.67,2013-05-09 06:00:00,2013-05-09 22:00:00,,14500.0
387,1.2.1.57,Transport (Hoboken to Vlissingen) 6,0.666666666666667,0.66,0.67,2013-05-18 06:00:00,2013-05-18 22:00:00,,14500.0
388,1.2.1.58,Transport (Hoboken to Vlissingen) 7,0.666666666666667,0.66,0.67,2013-05-27 06:00:00,2013-05-27 22:00:00,,14500.0
389,1.2.1.59,Transport (Hoboken to Vlissingen) 8,0.666666666666667,0.66,0.67,2013-06-05 06:00:00,2013-06-05 22:00:00,,14500.0
390,1.2.1.60,Transport (Hoboken to Vlissingen) 9,0.666666666666667,0.66,0.67,2013-06-14 06:00:00,2013-06-14 22:00:00,,14500.0
391,1.2.1.61,Transport (Hoboken to Vlissingen) 10,0.666666666666667,0.66,0.67,2013-06-23 06:00:00,2013-06-23 22:00:00,,14500.0
392,1.2.1.62,Transport (Hoboken to Vlissingen) 11,0.666666666666667,0.66,0.67,2013-07-02 06:00:00,2013-07-02 22:00:00,,14500.0
393,1.2.1.63,Transport (Hoboken to Vlissingen) 12,0.666666666666667,0.66,0.67,2013-07-11 06:00:00,2013-07-11 22:00:00,,14500.0
394,1.2.1.64,Transport (Hoboken to Vlissingen) 13,0.666666666666667,0.66,0.67,2013-07-20 06:00:00,2013-07-20 22:00:00,,14500.0
395,1.2.1.65,Transport (Hoboken to Vlissingen) 14,0.666666666666667,0.66,0.67,2013-07-29 06:00:00,2013-07-29 22:00:00,,14500.0
396,1.2.1.66,Transport (Hoboken to Vlissingen) 15,0.666666666666667,0.66,0.67,2013-08-07 06:00:00,2013-08-07 22:00:00,,14500.0
397,1.2.1.67,Transport (Hoboken to Vlissingen) 16,0.666666666666667,0.66,0.67,2013-08-16 06:00:00,2013-08-16 22:00:00,,14500.0
398,1.2.1.68,Transport (Hoboken to Vlissingen) 17,0.666666666666667,0.66,0.67,2013-08-25 06:00:00,2013-08-25 22:00:00,,14500.0
399,1.2.1.69,Transport (Hoboken to Vlissingen) 18,0.666666666666667,0.66,0.67,2013-09-03 06:00:00,2013-09-03 22:00:00,,14500.0
400,1.2.1.70,Transport (Hoboken to Vlissingen) 19,0.666666666666667,0.66,0.67,2013-09-12 06:00:00,2013-09-12 22:00:00,,14500.0
401,1.2.1.71,Transport (Hoboken to Vlissingen) 20,0.666666666666667,0.66,0.67,2013-09-21 06:00:00,2013-09-21 22:00:00,,14500.0
402,1.2.1.72,Transport (Hoboken to Vlissingen) 21,0.666666666666667,0.66,0.67,2013-09-30 06:00:00,2013-09-30 22:00:00,,14500.0
403,1.2.1.73,Transport (Hoboken to Vlissingen) 22,0.666666666666667,0.66,0.67,2013-10-09 06:00:00,2013-10-09 22:00:00,,14500.0
404,1.2.1.74,Transport (Hoboken to Vlissingen) 23,0.666666666666667,0.66,0.67,2013-10-18 06:00:00,2013-10-18 22:00:00,,14500.0
405,1.2.1.75,Transport (Hoboken to Vlissingen) 24,0.666666666666667,0.66,0.67,2013-10-27 06:00:00,2013-10-27 22:00:00,,14500.0
44,1.2.2,Transportation and installation of the jacket foundations,184.666666666667,182.82,186.51,2013-04-29 06:00:00,2013-10-30 22:00:00,,7378560.0
313,1.2.2.1,Transport of the jacket foundations 1,0.666666666666667,0.53,0.8,2013-05-04 06:00:00,2013-05-04 22:00:00,Laborer[6.00 #60];Skipper;Towning tugs;Transport barges;Crane[2.00 #3],24800.0
314,1.2.2.2,Transport of the jacket foundations 2,0.666666666666667,0.53,0.8,2013-05-03 06:00:00,2013-05-03 22:00:00,Laborer[6.00 #60];Skipper;Towning tugs;Transport barges;Crane[2.00 #3],24800.0
315,1.2.2.3,Transport of the jacket foundations 3,0.666666666666667,0.53,0.8,2013-04-29 06:00:00,2013-04-29 22:00:00,Laborer[6.00 #60];Skipper;Towning tugs;Transport barges;Crane[2.00 #3],24800.0
316,1.2.2.4,Transport of the jacket foundations 4,0.666666666666667,0.53,0.8,2013-05-02 06:00:00,2013-05-02 22:00:00,Laborer[6.00 #60];Skipper;Towning tugs;Transport barges;Crane[2.00 #3],24800.0
317,1.2.2.5,Transport of the jacket foundations 5,0.666666666666667,0.53,0.8,2013-05-14 06:00:00,2013-05-14 22:00:00,Laborer[6.00 #60];Skipper;Towning tugs;Transport barges;Crane[2.00 #3],24800.0
318,1.2.2.6,Transport of the jacket foundations 6,0.666666666666667,0.53,0.8,2013-05-19 06:00:00,2013-05-19 22:00:00,Laborer[6.00 #60];Skipper;Towning tugs;Transport barges;Crane[2.00 #3],24800.0
319,1.2.2.7,Transport of the jacket foundations 7,0.666666666666667,0.53,0.8,2013-05-28 06:00:00,2013-05-28 22:00:00,Laborer[6.00 #60];Skipper;Towning tugs;Transport barges;Crane[2.00 #3],24800.0
320,1.2.2.8,Transport of the jacket foundations 8,0.666666666666667,0.53,0.8,2013-06-06 06:00:00,2013-06-06 22:00:00,Laborer[6.00 #60];Skipper;Towning tugs;Transport barges;Crane[2.00 #3],24800.0
321,1.2.2.9,Transport of the jacket foundations 9,0.666666666666667,0.53,0.8,2013-06-15 06:00:00,2013-06-15 22:00:00,Laborer[6.00 #60];Skipper;Towning tugs;Transport barges;Crane[2.00 #3],24800.0
322,1.2.2.10,Transport of the jacket foundations 10,0.666666666666667,0.53,0.8,2013-06-24 06:00:00,2013-06-24 22:00:00,Laborer[6.00 #60];Skipper;Towning tugs;Transport barges;Crane[2.00 #3],24800.0
323,1.2.2.11,Transport of the jacket foundations 11,0.666666666666667,0.53,0.8,2013-07-03 06:00:00,2013-07-03 22:00:00,Laborer[6.00 #60];Skipper;Towning tugs;Transport barges;Crane[2.00 #3],24800.0
324,1.2.2.12,Transport of the jacket foundations 12,0.666666666666667,0.53,0.8,2013-07-12 06:00:00,2013-07-12 22:00:00,Laborer[6.00 #60];Skipper;Towning tugs;Transport barges;Crane[2.00 #3],24800.0
325,1.2.2.13,Transport of the jacket foundations 13,0.666666666666667,0.53,0.8,2013-07-21 06:00:00,2013-07-21 22:00:00,Laborer[6.00 #60];Skipper;Towning tugs;Transport barges;Crane[2.00 #3],24800.0
326,1.2.2.14,Transport of the jacket foundations 14,0.666666666666667,0.53,0.8,2013-07-30 06:00:00,2013-07-30 22:00:00,Laborer[6.00 #60];Skipper;Towning tugs;Transport barges;Crane[2.00 #3],24800.0
327,1.2.2.15,Transport of the jacket foundations 15,0.666666666666667,0.53,0.8,2013-08-08 06:00:00,2013-08-08 22:00:00,Laborer[6.00 #60];Skipper;Towning tugs;Transport barges;Crane[2.00 #3],24800.0
328,1.2.2.16,Transport of the jacket foundations 16,0.666666666666667,0.53,0.8,2013-08-17 06:00:00,2013-08-17 22:00:00,Laborer[6.00 #60];Skipper;Towning tugs;Transport barges;Crane[2.00 #3],24800.0
329,1.2.2.17,Transport of the jacket foundations 17,0.666666666666667,0.53,0.8,2013-08-26 06:00:00,2013-08-26 22:00:00,Laborer[6.00 #60];Skipper;Towning tugs;Transport barges;Crane[2.00 #3],24800.0
330,1.2.2.18,Transport of the jacket foundations 18,0.666666666666667,0.53,0.8,2013-09-04 06:00:00,2013-09-04 22:00:00,Laborer[6.00 #60];Skipper;Towning tugs;Transport barges;Crane[2.00 #3],24800.0
331,1.2.2.19,Transport of the jacket foundations 19,0.666666666666667,0.53,0.8,2013-09-13 06:00:00,2013-09-13 22:00:00,Laborer[6.00 #60];Skipper;Towning tugs;Transport barges;Crane[2.00 #3],24800.0
332,1.2.2.20,Transport of the jacket foundations 20,0.666666666666667,0.53,0.8,2013-09-22 06:00:00,2013-09-22 22:00:00,Laborer[6.00 #60];Skipper;Towning tugs;Transport barges;Crane[2.00 #3],24800.0
333,1.2.2.21,Transport of the jacket foundations 21,0.666666666666667,0.53,0.8,2013-10-01 06:00:00,2013-10-01 22:00:00,Laborer[6.00 #60];Skipper;Towning tugs;Transport barges;Crane[2.00 #3],24800.0
334,1.2.2.22,Transport of the jacket foundations 22,0.666666666666667,0.53,0.8,2013-10-10 06:00:00,2013-10-10 22:00:00,Laborer[6.00 #60];Skipper;Towning tugs;Transport barges;Crane[2.00 #3],24800.0
335,1.2.2.23,Transport of the jacket foundations 23,0.666666666666667,0.53,0.8,2013-10-19 06:00:00,2013-10-19 22:00:00,Laborer[6.00 #60];Skipper;Towning tugs;Transport barges;Crane[2.00 #3],24800.0
336,1.2.2.24,Transport of the jacket foundations 24,0.666666666666667,0.53,0.8,2013-10-28 06:00:00,2013-10-28 22:00:00,Laborer[6.00 #60];Skipper;Towning tugs;Transport barges;Crane[2.00 #3],24800.0
289,1.2.2.25,Installation of the jacket foundations 1,0.666666666666667,0.53,0.8,2013-06-09 06:00:00,2013-06-09 22:00:00,Laborer[22.00 #60];Skipper;Engineer[6.00 #18];Vessel Rambiz,88320.0
290,1.2.2.26,Installation of the jacket foundations 2,0.666666666666667,0.53,0.8,2013-06-13 06:00:00,2013-06-13 22:00:00,Laborer[22.00 #60];Skipper;Engineer[6.00 #18];Vessel Rambiz,88320.0
291,1.2.2.27,Installation of the jacket foundations 3,0.666666666666667,0.53,0.8,2013-06-17 06:00:00,2013-06-17 22:00:00,Laborer[22.00 #60];Skipper;Engineer[6.00 #18];Vessel Rambiz,88320.0
292,1.2.2.28,Installation of the jacket foundations 4,0.666666666666667,0.53,0.8,2013-06-21 06:00:00,2013-06-21 22:00:00,Laborer[22.00 #60];Skipper;Engineer[6.00 #18];Vessel Rambiz,88320.0
293,1.2.2.29,Installation of the jacket foundations 5,0.666666666666667,0.53,0.8,2013-06-26 06:00:00,2013-06-26 22:00:00,Laborer[22.00 #60];Skipper;Engineer[6.00 #18];Vessel Rambiz,88320.0
294,1.2.2.30,Installation of the jacket foundations 6,0.666666666666667,0.53,0.8,2013-06-30 06:00:00,2013-06-30 22:00:00,Laborer[22.00 #60];Skipper;Engineer[6.00 #18];Vessel Rambiz,88320.0
295,1.2.2.31,Installation of the jacket foundations 7,0.666666666666667,0.53,0.8,2013-07-04 06:00:00,2013-07-04 22:00:00,Laborer[22.00 #60];Skipper;Engineer[6.00 #18];Vessel Rambiz,88320.0
296,1.2.2.32,Installation of the jacket foundations 8,0.666666666666667,0.53,0.8,2013-07-08 06:00:00,2013-07-08 22:00:00,Laborer[22.00 #60];Skipper;Engineer[6.00 #18];Vessel Rambiz,88320.0
297,1.2.2.33,Installation of the jacket foundations 9,0.666666666666667,0.53,0.8,2013-07-12 06:00:00,2013-07-12 22:00:00,Laborer[22.00 #60];Skipper;Engineer[6.00 #18];Vessel Rambiz,88320.0
298,1.2.2.34,Installation of the jacket foundations 10,0.666666666666667,0.53,0.8,2013-07-16 06:00:00,2013-07-16 22:00:00,Laborer[22.00 #60];Skipper;Engineer[6.00 #18];Vessel Rambiz,88320.0
299,1.2.2.35,Installation of the jacket foundations 11,0.666666666666667,0.53,0.8,2013-07-20 06:00:00,2013-07-20 22:00:00,Laborer[22.00 #60];Skipper;Engineer[6.00 #18];Vessel Rambiz,88320.0
300,1.2.2.36,Installation of the jacket foundations 12,0.666666666666667,0.53,0.8,2013-07-24 06:00:00,2013-07-24 22:00:00,Laborer[22.00 #60];Skipper;Engineer[6.00 #18];Vessel Rambiz,88320.0
301,1.2.2.37,Installation of the jacket foundations 13,0.666666666666667,0.53,0.8,2013-07-28 06:00:00,2013-07-28 22:00:00,Laborer[22.00 #60];Skipper;Engineer[6.00 #18];Vessel Rambiz,88320.0
302,1.2.2.38,Installation of the jacket foundations 14,0.666666666666667,0.53,0.8,2013-08-01 06:00:00,2013-08-01 22:00:00,Laborer[22.00 #60];Skipper;Engineer[6.00 #18];Vessel Rambiz,88320.0
303,1.2.2.39,Installation of the jacket foundations 15,0.666666666666667,0.53,0.8,2013-08-09 06:00:00,2013-08-09 22:00:00,Laborer[22.00 #60];Skipper;Engineer[6.00 #18];Vessel Rambiz,88320.0
304,1.2.2.40,Installation of the jacket foundations 16,0.666666666666667,0.53,0.8,2013-08-18 06:00:00,2013-08-18 22:00:00,Laborer[22.00 #60];Skipper;Engineer[6.00 #18];Vessel Rambiz,88320.0
305,1.2.2.41,Installation of the jacket foundations 17,0.666666666666667,0.53,0.8,2013-08-27 06:00:00,2013-08-27 22:00:00,Laborer[22.00 #60];Skipper;Engineer[6.00 #18];Vessel Rambiz,88320.0
306,1.2.2.42,Installation of the jacket foundations 18,0.666666666666667,0.53,0.8,2013-09-05 06:00:00,2013-09-05 22:00:00,Laborer[22.00 #60];Skipper;Engineer[6.00 #18];Vessel Rambiz,88320.0
307,1.2.2.43,Installation of the jacket foundations 19,0.666666666666667,0.53,0.8,2013-09-14 06:00:00,2013-09-14 22:00:00,Laborer[22.00 #60];Skipper;Engineer[6.00 #18];Vessel Rambiz,88320.0
308,1.2.2.44,Installation of the jacket foundations 20,0.666666666666667,0.53,0.8,2013-09-23 06:00:00,2013-09-23 22:00:00,Laborer[22.00 #60];Skipper;Engineer[6.00 #18];Vessel Rambiz,88320.0
309,1.2.2.45,Installation of the jacket foundations 21,0.666666666666667,0.53,0.8,2013-10-02 06:00:00,2013-10-02 22:00:00,Laborer[22.00 #60];Skipper;Engineer[6.00 #18];Vessel Rambiz,88320.0
310,1.2.2.46,Installation of the jacket foundations 22,0.666666666666667,0.53,0.8,2013-10-11 06:00:00,2013-10-11 22:00:00,Laborer[22.00 #60];Skipper;Engineer[6.00 #18];Vessel Rambiz,88320.0
311,1.2.2.47,Installation of the jacket foundations 23,0.666666666666667,0.53,0.8,2013-10-20 06:00:00,2013-10-20 22:00:00,Laborer[22.00 #60];Skipper;Engineer[6.00 #18];Vessel Rambiz,88320.0
312,1.2.2.48,Installation of the jacket foundations 24,0.666666666666667,0.53,0.8,2013-10-29 06:00:00,2013-10-29 22:00:00,Laborer[22.00 #60];Skipper;Engineer[6.00 #18];Vessel Rambiz,88320.0
265,1.2.2.49,Grouting of foundation to the pin-piles 1,0.666666666666667,0.53,0.8,2013-06-10 06:00:00,2013-06-10 22:00:00,Laborer[12.00 #60];Skipper;Engineer[6.00 #18];Diving team;Vessel Rambiz,194320.0
266,1.2.2.50,Grouting of foundation to the pin-piles 2,0.666666666666667,0.53,0.8,2013-06-14 06:00:00,2013-06-14 22:00:00,Laborer[12.00 #60];Skipper;Engineer[6.00 #18];Diving team;Vessel Rambiz,194320.0
267,1.2.2.51,Grouting of foundation to the pin-piles 3,0.666666666666667,0.53,0.8,2013-06-18 06:00:00,2013-06-18 22:00:00,Laborer[12.00 #60];Skipper;Engineer[6.00 #18];Diving team;Vessel Rambiz,194320.0
268,1.2.2.52,Grouting of foundation to the pin-piles 4,0.666666666666667,0.53,0.8,2013-06-22 06:00:00,2013-06-22 22:00:00,Laborer[12.00 #60];Skipper;Engineer[6.00 #18];Diving team;Vessel Rambiz,194320.0
269,1.2.2.53,Grouting of foundation to the pin-piles 5,0.666666666666667,0.53,0.8,2013-06-27 06:00:00,2013-06-27 22:00:00,Laborer[12.00 #60];Skipper;Engineer[6.00 #18];Diving team;Vessel Rambiz,194320.0
270,1.2.2.54,Grouting of foundation to the pin-piles 6,0.666666666666667,0.53,0.8,2013-07-01 06:00:00,2013-07-01 22:00:00,Laborer[12.00 #60];Skipper;Engineer[6.00 #18];Diving team;Vessel Rambiz,194320.0
271,1.2.2.55,Grouting of foundation to the pin-piles 7,0.666666666666667,0.53,0.8,2013-07-05 06:00:00,2013-07-05 22:00:00,Laborer[12.00 #60];Skipper;Engineer[6.00 #18];Diving team;Vessel Rambiz,194320.0
272,1.2.2.56,Grouting of foundation to the pin-piles 8,0.666666666666667,0.53,0.8,2013-07-09 06:00:00,2013-07-09 22:00:00,Laborer[12.00 #60];Skipper;Engineer[6.00 #18];Diving team;Vessel Rambiz,194320.0
273,1.2.2.57,Grouting of foundation to the pin-piles 9,0.666666666666667,0.53,0.8,2013-07-13 06:00:00,2013-07-13 22:00:00,Laborer[12.00 #60];Skipper;Engineer[6.00 #18];Diving team;Vessel Rambiz,194320.0
274,1.2.2.58,Grouting of foundation to the pin-piles 10,0.666666666666667,0.53,0.8,2013-07-17 06:00:00,2013-07-17 22:00:00,Laborer[12.00 #60];Skipper;Engineer[6.00 #18];Diving team;Vessel Rambiz,194320.0
275,1.2.2.59,Grouting of foundation to the pin-piles 11,0.666666666666667,0.53,0.8,2013-07-21 06:00:00,2013-07-21 22:00:00,Laborer[12.00 #60];Skipper;Engineer[6.00 #18];Diving team;Vessel Rambiz,194320.0
276,1.2.2.60,Grouting of foundation to the pin-piles 12,0.666666666666667,0.53,0.8,2013-07-25 06:00:00,2013-07-25 22:00:00,Laborer[12.00 #60];Skipper;Engineer[6.00 #18];Diving team;Vessel Rambiz,194320.0
277,1.2.2.61,Grouting of foundation to the pin-piles 13,0.666666666666667,0.53,0.8,2013-07-29 06:00:00,2013-07-29 22:00:00,Laborer[12.00 #60];Skipper;Engineer[6.00 #18];Diving team;Vessel Rambiz,194320.0
278,1.2.2.62,Grouting of foundation to the pin-piles 14,0.666666666666667,0.53,0.8,2013-08-02 06:00:00,2013-08-02 22:00:00,Laborer[12.00 #60];Skipper;Engineer[6.00 #18];Diving team;Vessel Rambiz,194320.0
279,1.2.2.63,Grouting of foundation to the pin-piles 15,0.666666666666667,0.53,0.8,2013-08-10 06:00:00,2013-08-10 22:00:00,Laborer[12.00 #60];Skipper;Engineer[6.00 #18];Diving team;Vessel Rambiz,194320.0
280,1.2.2.64,Grouting of foundation to the pin-piles 16,0.666666666666667,0.53,0.8,2013-08-19 06:00:00,2013-08-19 22:00:00,Laborer[12.00 #60];Skipper;Engineer[6.00 #18];Diving team;Vessel Rambiz,194320.0
281,1.2.2.65,Grouting of foundation to the pin-piles 17,0.666666666666667,0.53,0.8,2013-08-28 06:00:00,2013-08-28 22:00:00,Laborer[12.00 #60];Skipper;Engineer[6.00 #18];Diving team;Vessel Rambiz,194320.0
282,1.2.2.66,Grouting of foundation to the pin-piles 18,0.666666666666667,0.53,0.8,2013-09-06 06:00:00,2013-09-06 22:00:00,Laborer[12.00 #60];Skipper;Engineer[6.00 #18];Diving team;Vessel Rambiz,194320.0
283,1.2.2.67,Grouting of foundation to the pin-piles 19,0.666666666666667,0.53,0.8,2013-09-15 06:00:00,2013-09-15 22:00:00,Laborer[12.00 #60];Skipper;Engineer[6.00 #18];Diving team;Vessel Rambiz,194320.0
284,1.2.2.68,Grouting of foundation to the pin-piles 20,0.666666666666667,0.53,0.8,2013-09-24 06:00:00,2013-09-24 22:00:00,Laborer[12.00 #60];Skipper;Engineer[6.00 #18];Diving team;Vessel Rambiz,194320.0
285,1.2.2.69,Grouting of foundation to the pin-piles 21,0.666666666666667,0.53,0.8,2013-10-03 06:00:00,2013-10-03 22:00:00,Laborer[12.00 #60];Skipper;Engineer[6.00 #18];Diving team;Vessel Rambiz,194320.0
286,1.2.2.70,Grouting of foundation to the pin-piles 22,0.666666666666667,0.53,0.8,2013-10-12 06:00:00,2013-10-12 22:00:00,Laborer[12.00 #60];Skipper;Engineer[6.00 #18];Diving team;Vessel Rambiz,194320.0
287,1.2.2.71,Grouting of foundation to the pin-piles 23,0.666666666666667,0.53,0.8,2013-10-21 06:00:00,2013-10-21 22:00:00,Laborer[12.00 #60];Skipper;Engineer[6.00 #18];Diving team;Vessel Rambiz,194320.0
288,1.2.2.72,Grouting of foundation to the pin-piles 24,0.666666666666667,0.53,0.8,2013-10-30 06:00:00,2013-10-30 22:00:00,Laborer[12.00 #60];Skipper;Engineer[6.00 #18];Diving team;Vessel Rambiz,194320.0
74,1.3,Wind turbines,467.541666666667,462.87,472.22,2013-02-04 18:00:00,2014-05-18 07:00:00,,82096544.0045776
62,1.3.1,Purchasing parts of wind turbines,344.166666666667,340.73,347.61,2013-02-04 18:00:00,2014-01-14 22:00:00,,64477040.0
54,1.3.1.1,Purchasing and production of parts of wind turbines,336.166666666667,332.81,339.53,2013-02-04 18:00:00,2014-01-06 22:00:00,,57600000.0
46,1.3.1.1.1,Towers by AMAU-Cuxhaven Germany,239.666666666667,237.27,242.06,2013-05-12 06:00:00,2014-01-06 22:00:00,,14400000.0
47,1.3.1.1.2,Blades by LM Denmark,240.0,237.6,242.4,2013-02-04 18:00:00,2013-10-02 18:00:00,,8640000.0
48,1.3.1.1.3,Generators by VEM Germany,240.0,237.6,242.4,2013-03-16 07:00:00,2013-11-11 07:00:00,,12096000.0
49,1.3.1.1.4,Gearboxes by WINERGY-Vörde Germany and Hansen Belgium,240.0,237.6,242.4,2013-03-16 07:00:00,2013-11-11 07:00:00,,22464000.0
55,1.3.1.2,Transportation of parts from respective factories to Ostend,144.166666666667,142.73,145.61,2013-08-23 18:00:00,2014-01-14 22:00:00,,3302000.0
53,1.3.1.2.1,Towers Germany-Ostend,47.6666666666667,38.13,57.2,2013-11-28 06:00:00,2014-01-14 22:00:00,,624000.0
52,1.3.1.2.2,Blades Denmark-Ostend,39.5416666666667,31.63,47.45,2013-08-23 18:00:00,2013-10-02 07:00:00,,624000.0
51,1.3.1.2.3,Generators Germany-Ostend,48.0,38.4,57.6,2013-10-02 07:00:00,2013-11-19 07:00:00,,1027000.0
50,1.3.1.2.4,Gearboxes Germany-Ostend/Antwerp-Ostend,48.0,38.4,57.6,2013-10-02 07:00:00,2013-11-19 07:00:00,,1027000.0
56,1.3.1.3,Preparation of the onshore site,29.6666666666667,23.73,35.6,2013-03-18 06:00:00,2013-04-16 22:00:00,Laborer[32.00 #60];Engineer[6.00 #18];Crane[3.00 #3],1363200.0
61,1.3.1.4,Assembly of wind turbines on site in Ostend,96.0,95.04,96.96,2013-10-02 07:00:00,2014-01-06 07:00:00,,2211840.0
57,1.3.1.4.1,Assembly of gearbox and generator,48.0,38.4,57.6,2013-11-19 07:00:00,2014-01-06 07:00:00,Laborer[16.00 #60];Welder;Engineer[3.00 #18];Crane,1059840.0
58,1.3.1.4.2,Assembly of blades,48.0,38.4,57.6,2013-10-02 07:00:00,2013-11-19 07:00:00,Laborer[19.00 #60];Welder;Engineer[3.00 #18];Crane,1152000.0
73,1.3.2,Installation wind turbines,151.041666666667,149.53,152.55,2013-12-18 06:00:00,2014-05-18 07:00:00,,17619504.0045776
502,1.3.2.1,Loading jack up transport and installation platform 1,2.66666666666667,2.13,3.2,2013-12-18 06:00:00,2013-12-20 22:00:00,Laborer[16.00 #60];Skipper[2.00 #4];Engineer[8.00 #18];Vessel Neptune;Vessel Vagant;Crane,1074960.0
503,1.3.2.2,Loading jack up transport and installation platform 2,3.0,2.4,3.6,2014-01-06 07:00:00,2014-01-09 07:00:00,Laborer[16.00 #60];Skipper[2.00 #4];Engineer[8.00 #18];Vessel Neptune;Vessel Vagant;Crane,440160.0
504,1.3.2.3,Loading jack up transport and installation platform 3,3.0,2.4,3.6,2014-01-10 07:00:00,2014-01-13 07:00:00,Laborer[16.00 #60];Skipper[2.00 #4];Engineer[8.00 #18];Vessel Neptune;Vessel Vagant;Crane,440160.0
505,1.3.2.4,Loading jack up transport and installation platform 4,3.0,2.4,3.6,2014-01-14 07:00:00,2014-01-17 07:00:00,Laborer[16.00 #60];Skipper[2.00 #4];Engineer[8.00 #18];Vessel Neptune;Vessel Vagant;Crane,440160.0
506,1.3.2.5,Loading jack up transport and installation platform 5,3.0,2.4,3.6,2014-01-18 07:00:00,2014-01-21 07:00:00,Laborer[16.00 #60];Skipper[2.00 #4];Engineer[8.00 #18];Vessel Neptune;Vessel Vagant;Crane,440160.0
507,1.3.2.6,Loading jack up transport and installation platform 6,3.0,2.4,3.6,2014-01-22 07:00:00,2014-01-25 07:00:00,Laborer[16.00 #60];Skipper[2.00 #4];Engineer[8.00 #18];Vessel Neptune;Vessel Vagant;Crane,440160.0
508,1.3.2.7,Loading jack up transport and installation platform 7,3.0,2.4,3.6,2014-01-26 07:00:00,2014-01-29 07:00:00,Laborer[16.00 #60];Skipper[2.00 #4];Engineer[8.00 #18];Vessel Neptune;Vessel Vagant;Crane,440160.0
509,1.3.2.8,Loading jack up transport and installation platform 8,3.0,2.4,3.6,2014-01-30 07:00:00,2014-02-02 07:00:00,Laborer[16.00 #60];Skipper[2.00 #4];Engineer[8.00 #18];Vessel Neptune;Vessel Vagant;Crane,440160.0
510,1.3.2.9,Loading jack up transport and installation platform 9,3.0,2.4,3.6,2014-02-03 07:00:00,2014-02-06 07:00:00,Laborer[16.00 #60];Skipper[2.00 #4];Engineer[8.00 #18];Vessel Neptune;Vessel Vagant;Crane,440160.0
511,1.3.2.10,Loading jack up transport and installation platform 10,3.0,2.4,3.6,2014-02-07 07:00:00,2014-02-10 07:00:00,Laborer[16.00 #60];Skipper[2.00 #4];Engineer[8.00 #18];Vessel Neptune;Vessel Vagant;Crane,440160.0
512,1.3.2.11,Loading jack up transport and installation platform 11,3.0,2.4,3.6,2014-02-11 07:00:00,2014-02-14 07:00:00,Laborer[16.00 #60];Skipper[2.00 #4];Engineer[8.00 #18];Vessel Neptune;Vessel Vagant;Crane,440160.0
513,1.3.2.12,Loading jack up transport and installation platform 12,3.0,2.4,3.6,2014-02-15 07:00:00,2014-02-18 07:00:00,Laborer[16.00 #60];Skipper[2.00 #4];Engineer[8.00 #18];Vessel Neptune;Vessel Vagant;Crane,440160.0
514,1.3.2.13,Loading jack up transport and installation platform 13,3.0,2.4,3.6,2014-02-19 07:00:00,2014-02-22 07:00:00,Laborer[16.00 #60];Skipper[2.00 #4];Engineer[8.00 #18];Vessel Neptune;Vessel Vagant;Crane,440160.0
515,1.3.2.14,Loading jack up transport and installation platform 14,3.0,2.4,3.6,2014-02-23 07:00:00,2014-02-26 07:00:00,Laborer[16.00 #60];Skipper[2.00 #4];Engineer[8.00 #18];Vessel Neptune;Vessel Vagant;Crane,440160.0
516,1.3.2.15,Loading jack up transport and installation platform 15,3.0,2.4,3.6,2014-02-27 07:00:00,2014-03-02 07:00:00,Laborer[16.00 #60];Skipper[2.00 #4];Engineer[8.00 #18];Vessel Neptune;Vessel Vagant;Crane,440160.0
517,1.3.2.16,Loading jack up transport and installation platform 16,3.0,2.4,3.6,2014-03-03 07:00:00,2014-03-06 07:00:00,Laborer[16.00 #60];Skipper[2.00 #4];Engineer[8.00 #18];Vessel Neptune;Vessel Vagant;Crane,440160.0
518,1.3.2.17,Loading jack up transport and installation platform 17,3.0,2.4,3.6,2014-03-07 07:00:00,2014-03-10 07:00:00,Laborer[16.00 #60];Skipper[2.00 #4];Engineer[8.00 #18];Vessel Neptune;Vessel Vagant;Crane,440160.0
519,1.3.2.18,Loading jack up transport and installation platform 18,3.0,2.4,3.6,2014-03-11 07:00:00,2014-03-14 07:00:00,Laborer[16.00 #60];Skipper[2.00 #4];Engineer[8.00 #18];Vessel Neptune;Vessel Vagant;Crane,440160.0
520,1.3.2.19,Loading jack up transport and installation platform 19,3.0,2.4,3.6,2014-03-15 07:00:00,2014-03-18 07:00:00,Laborer[16.00 #60];Skipper[2.00 #4];Engineer[8.00 #18];Vessel Neptune;Vessel Vagant;Crane,440160.0
521,1.3.2.20,Loading jack up transport and installation platform 20,3.0,2.4,3.6,2014-03-19 07:00:00,2014-03-22 07:00:00,Laborer[16.00 #60];Skipper[2.00 #4];Engineer[8.00 #18];Vessel Neptune;Vessel Vagant;Crane,440160.0
522,1.3.2.21,Loading jack up transport and installation platform 21,3.0,2.4,3.6,2014-03-23 07:00:00,2014-03-26 07:00:00,Laborer[16.00 #60];Skipper[2.00 #4];Engineer[8.00 #18];Vessel Neptune;Vessel Vagant;Crane,440160.0
523,1.3.2.22,Loading jack up transport and installation platform 22,3.0,2.4,3.6,2014-03-27 07:00:00,2014-03-30 07:00:00,Laborer[16.00 #60];Skipper[2.00 #4];Engineer[8.00 #18];Vessel Neptune;Vessel Vagant;Crane,440160.0
524,1.3.2.23,Loading jack up transport and installation platform 23,3.0,2.4,3.6,2014-03-31 07:00:00,2014-04-03 07:00:00,Laborer[16.00 #60];Skipper[2.00 #4];Engineer[8.00 #18];Vessel Neptune;Vessel Vagant;Crane,440160.0
525,1.3.2.24,Loading jack up transport and installation platform 24,3.0,2.4,3.6,2014-04-04 07:00:00,2014-04-07 07:00:00,Laborer[16.00 #60];Skipper[2.00 #4];Engineer[8.00 #18];Vessel Neptune;Vessel Vagant;Crane,440160.0
478,1.3.2.25,Offshore assembly of wind turbines 1,0.666666666666667,0.53,0.8,2013-12-21 06:00:00,2013-12-21 22:00:00,Laborer[16.00 #60];Skipper[2.00 #4];Engineer[8.00 #18];Vessel Neptune;Vessel Vagant,355104.0
479,1.3.2.26,Offshore assembly of wind turbines 2,1.0,0.8,1.2,2014-01-09 07:00:00,2014-01-10 07:00:00,Laborer[16.00 #60];Skipper[2.00 #4];Engineer[8.00 #18];Vessel Neptune;Vessel Vagant,143520.0
480,1.3.2.27,Offshore assembly of wind turbines 3,1.0,0.8,1.2,2014-01-13 07:00:00,2014-01-14 07:00:00,Laborer[16.00 #60];Skipper[2.00 #4];Engineer[8.00 #18];Vessel Neptune;Vessel Vagant,143520.0
481,1.3.2.28,Offshore assembly of wind turbines 4,1.0,0.8,1.2,2014-01-17 07:00:00,2014-01-18 07:00:00,Laborer[16.00 #60];Skipper[2.00 #4];Engineer[8.00 #18];Vessel Neptune;Vessel Vagant,143520.0
482,1.3.2.29,Offshore assembly of wind turbines 5,1.0,0.8,1.2,2014-01-21 07:00:00,2014-01-22 07:00:00,Laborer[16.00 #60];Skipper[2.00 #4];Engineer[8.00 #18];Vessel Neptune;Vessel Vagant,143520.0
483,1.3.2.30,Offshore assembly of wind turbines 6,1.0,0.8,1.2,2014-01-25 07:00:00,2014-01-26 07:00:00,Laborer[16.00 #60];Skipper[2.00 #4];Engineer[8.00 #18];Vessel Neptune;Vessel Vagant,143520.0
484,1.3.2.31,Offshore assembly of wind turbines 7,1.0,0.8,1.2,2014-01-29 07:00:00,2014-01-30 07:00:00,Laborer[16.00 #60];Skipper[2.00 #4];Engineer[8.00 #18];Vessel Neptune;Vessel Vagant,143520.0
485,1.3.2.32,Offshore assembly of wind turbines 8,1.0,0.8,1.2,2014-02-02 07:00:00,2014-02-03 07:00:00,Laborer[16.00 #60];Skipper[2.00 #4];Engineer[8.00 #18];Vessel Neptune;Vessel Vagant,143520.0
486,1.3.2.33,Offshore assembly of wind turbines 9,1.0,0.8,1.2,2014-02-06 07:00:00,2014-02-07 07:00:00,Laborer[16.00 #60];Skipper[2.00 #4];Engineer[8.00 #18];Vessel Neptune;Vessel Vagant,143520.0
487,1.3.2.34,Offshore assembly of wind turbines 10,1.0,0.8,1.2,2014-02-10 07:00:00,2014-02-11 07:00:00,Laborer[16.00 #60];Skipper[2.00 #4];Engineer[8.00 #18];Vessel Neptune;Vessel Vagant,143520.0
488,1.3.2.35,Offshore assembly of wind turbines 11,1.0,0.8,1.2,2014-02-14 07:00:00,2014-02-15 07:00:00,Laborer[16.00 #60];Skipper[2.00 #4];Engineer[8.00 #18];Vessel Neptune;Vessel Vagant,143520.0
489,1.3.2.36,Offshore assembly of wind turbines 12,1.0,0.8,1.2,2014-02-18 07:00:00,2014-02-19 07:00:00,Laborer[16.00 #60];Skipper[2.00 #4];Engineer[8.00 #18];Vessel Neptune;Vessel Vagant,143520.0
490,1.3.2.37,Offshore assembly of wind turbines 13,1.0,0.8,1.2,2014-02-22 07:00:00,2014-02-23 07:00:00,Laborer[16.00 #60];Skipper[2.00 #4];Engineer[8.00 #18];Vessel Neptune;Vessel Vagant,143520.0
491,1.3.2.38,Offshore assembly of wind turbines 14,1.0,0.8,1.2,2014-02-26 07:00:00,2014-02-27 07:00:00,Laborer[16.00 #60];Skipper[2.00 #4];Engineer[8.00 #18];Vessel Neptune;Vessel Vagant,143520.0
492,1.3.2.39,Offshore assembly of wind turbines 15,1.0,0.8,1.2,2014-03-02 07:00:00,2014-03-03 07:00:00,Laborer[16.00 #60];Skipper[2.00 #4];Engineer[8.00 #18];Vessel Neptune;Vessel Vagant,143520.0
493,1.3.2.40,Offshore assembly of wind turbines 16,1.0,0.8,1.2,2014-03-06 07:00:00,2014-03-07 07:00:00,Laborer[16.00 #60];Skipper[2.00 #4];Engineer[8.00 #18];Vessel Neptune;Vessel Vagant,143520.0
494,1.3.2.41,Offshore assembly of wind turbines 17,1.0,0.8,1.2,2014-03-10 07:00:00,2014-03-11 07:00:00,Laborer[16.00 #60];Skipper[2.00 #4];Engineer[8.00 #18];Vessel Neptune;Vessel Vagant,143520.0
495,1.3.2.42,Offshore assembly of wind turbines 18,1.0,0.8,1.2,2014-03-14 07:00:00,2014-03-15 07:00:00,Laborer[16.00 #60];Skipper[2.00 #4];Engineer[8.00 #18];Vessel Neptune;Vessel Vagant,143520.0
496,1.3.2.43,Offshore assembly of wind turbines 19,1.0,0.8,1.2,2014-03-18 07:00:00,2014-03-19 07:00:00,Laborer[16.00 #60];Skipper[2.00 #4];Engineer[8.00 #18];Vessel Neptune;Vessel Vagant,143520.0
497,1.3.2.44,Offshore assembly of wind turbines 20,1.0,0.8,1.2,2014-03-22 07:00:00,2014-03-23 07:00:00,Laborer[16.00 #60];Skipper[2.00 #4];Engineer[8.00 #18];Vessel Neptune;Vessel Vagant,143520.0
498,1.3.2.45,Offshore assembly of wind turbines 21,1.0,0.8,1.2,2014-03-26 07:00:00,2014-03-27 07:00:00,Laborer[16.00 #60];Skipper[2.00 #4];Engineer[8.00 #18];Vessel Neptune;Vessel Vagant,143520.0
499,1.3.2.46,Offshore assembly of wind turbines 22,1.0,0.8,1.2,2014-03-30 07:00:00,2014-03-31 07:00:00,Laborer[16.00 #60];Skipper[2.00 #4];Engineer[8.00 #18];Vessel Neptune;Vessel Vagant,143520.0
500,1.3.2.47,Offshore assembly of wind turbines 23,1.0,0.8,1.2,2014-04-03 07:00:00,2014-04-04 07:00:00,Laborer[16.00 #60];Skipper[2.00 #4];Engineer[8.00 #18];Vessel Neptune;Vessel Vagant,143520.0
501,1.3.2.48,Offshore assembly of wind turbines 24,1.0,0.8,1.2,2014-04-07 07:00:00,2014-04-08 07:00:00,Laborer[16.00 #60];Skipper[2.00 #4];Engineer[8.00 #18];Vessel Neptune;Vessel Vagant,143520.0
454,1.3.2.49,Terminations of infield cables 1,2.66666666666667,2.13,3.2,2014-01-08 06:00:00,2014-01-10 22:00:00,Special team,38400.0
455,1.3.2.50,Terminations of infield cables 2,3.0,2.4,3.6,2014-01-12 07:00:00,2014-01-15 07:00:00,Special team,38400.0
456,1.3.2.51,Terminations of infield cables 3,3.0,2.4,3.6,2014-01-16 07:00:00,2014-01-19 07:00:00,Special team,38400.0
457,1.3.2.52,Terminations of infield cables 4,3.0,2.4,3.6,2014-01-20 07:00:00,2014-01-23 07:00:00,Special team,38400.0
458,1.3.2.53,Terminations of infield cables 5,3.0,2.4,3.6,2014-01-24 07:00:00,2014-01-27 07:00:00,Special team,38400.0
459,1.3.2.54,Terminations of infield cables 6,3.0,2.4,3.6,2014-01-28 07:00:00,2014-01-31 07:00:00,Special team,38400.0
460,1.3.2.55,Terminations of infield cables 7,3.0,2.4,3.6,2014-02-02 07:00:00,2014-02-05 07:00:00,Special team,38400.0
461,1.3.2.56,Terminations of infield cables 8,3.0,2.4,3.6,2014-02-05 07:00:00,2014-02-08 07:00:00,Special team,38400.0
462,1.3.2.57,Terminations of infield cables 9,3.0,2.4,3.6,2014-02-09 07:00:00,2014-02-12 07:00:00,Special team,38400.0
463,1.3.2.58,Terminations of infield cables 10,3.0,2.4,3.6,2014-02-13 07:00:00,2014-02-16 07:00:00,Special team,38400.0
464,1.3.2.59,Terminations of infield cables 11,3.0,2.4,3.6,2014-02-17 07:00:00,2014-02-20 07:00:00,Special team,38400.0
465,1.3.2.60,Terminations of infield cables 12,3.0,2.4,3.6,2014-02-21 07:00:00,2014-02-24 07:00:00,Special team,38400.0
466,1.3.2.61,Terminations of infield cables 13,3.0,2.4,3.6,2014-02-25 07:00:00,2014-02-28 07:00:00,Special team,38400.0
467,1.3.2.62,Terminations of infield cables 14,3.0,2.4,3.6,2014-03-01 07:00:00,2014-03-04 07:00:00,Special team,38400.0
468,1.3.2.63,Terminations of infield cables 15,3.0,2.4,3.6,2014-03-05 07:00:00,2014-03-08 07:00:00,Special team,38400.0
469,1.3.2.64,Terminations of infield cables 16,3.0,2.4,3.6,2014-03-09 07:00:00,2014-03-12 07:00:00,Special team,38400.0
470,1.3.2.65,Terminations of infield cables 17,3.0,2.4,3.6,2014-03-13 07:00:00,2014-03-16 07:00:00,Special team,38400.0
471,1.3.2.66,Terminations of infield cables 18,3.0,2.4,3.6,2014-03-17 07:00:00,2014-03-20 07:00:00,Special team,38400.0
472,1.3.2.67,Terminations of infield cables 19,3.0,2.4,3.6,2014-03-21 07:00:00,2014-03-24 07:00:00,Special team,38400.0
473,1.3.2.68,Terminations of infield cables 20,3.0,2.4,3.6,2014-03-25 07:00:00,2014-03-28 07:00:00,Special team,38400.0
474,1.3.2.69,Terminations of infield cables 21,3.0,2.4,3.6,2014-03-29 07:00:00,2014-04-01 07:00:00,Special team,38400.0
475,1.3.2.70,Terminations of infield cables 22,3.0,2.4,3.6,2014-04-02 07:00:00,2014-04-05 07:00:00,Special team,38400.0
476,1.3.2.71,Terminations of infield cables 23,3.0,2.4,3.6,2014-04-06 07:00:00,2014-04-09 07:00:00,Special team,38400.0
477,1.3.2.72,Terminations of infield cables 24,3.0,2.4,3.6,2014-04-10 07:00:00,2014-04-13 07:00:00,Special team,38400.0
430,1.3.2.73,Commissioning of wind turbines 1,4.66666666666667,3.73,5.6,2014-01-11 06:00:00,2014-01-15 22:00:00,Commissioning team,64000.0
431,1.3.2.74,Commissioning of wind turbines 2,4.66666666666667,3.73,5.6,2014-01-16 06:00:00,2014-01-20 22:00:00,Commissioning team,64000.0
432,1.3.2.75,Commissioning of wind turbines 3,4.66666666666667,3.73,5.6,2014-01-21 06:00:00,2014-01-25 22:00:00,Commissioning team,64000.0
433,1.3.2.76,Commissioning of wind turbines 4,4.66666666666667,3.73,5.6,2014-01-26 06:00:00,2014-01-30 22:00:00,Commissioning team,64000.0
434,1.3.2.77,Commissioning of wind turbines 5,4.66666666666667,3.73,5.6,2014-01-31 06:00:00,2014-02-04 22:00:00,Commissioning team,64000.0
435,1.3.2.78,Commissioning of wind turbines 6,4.66666666666667,3.73,5.6,2014-02-05 06:00:00,2014-02-09 22:00:00,Commissioning team,64000.0
436,1.3.2.79,Commissioning of wind turbines 7,4.66666666666667,3.73,5.6,2014-02-10 06:00:00,2014-02-14 22:00:00,Commissioning team,64000.0
437,1.3.2.80,Commissioning of wind turbines 8,4.66666666666667,3.73,5.6,2014-02-15 06:00:00,2014-02-19 22:00:00,Commissioning team,64000.0
438,1.3.2.81,Commissioning of wind turbines 9,4.66666666666667,3.73,5.6,2014-02-20 06:00:00,2014-02-24 22:00:00,Commissioning team,64000.0
439,1.3.2.82,Commissioning of wind turbines 10,4.66666666666667,3.73,5.6,2014-02-25 06:00:00,2014-03-01 22:00:00,Commissioning team,64000.0
440,1.3.2.83,Commissioning of wind turbines 11,4.66666666666667,3.73,5.6,2014-03-02 06:00:00,2014-03-06 22:00:00,Commissioning team,64000.0
441,1.3.2.84,Commissioning of wind turbines 12,4.66666666666667,3.73,5.6,2014-03-07 06:00:00,2014-03-11 22:00:00,Commissioning team,64000.0
442,1.3.2.85,Commissioning of wind turbines 13,4.66666666666667,3.73,5.6,2014-03-12 06:00:00,2014-03-16 22:00:00,Commissioning team,64000.0
443,1.3.2.86,Commissioning of wind turbines 14,4.66666666666667,3.73,5.6,2014-03-17 06:00:00,2014-03-21 22:00:00,Commissioning team,64000.0
444,1.3.2.87,Commissioning of wind turbines 15,4.66666666666667,3.73,5.6,2014-03-22 06:00:00,2014-03-26 22:00:00,Commissioning team,64000.0
445,1.3.2.88,Commissioning of wind turbines 16,4.66666666666667,3.73,5.6,2014-03-27 06:00:00,2014-03-31 22:00:00,Commissioning team,64000.0
446,1.3.2.89,Commissioning of wind turbines 17,4.66666666666667,3.73,5.6,2014-04-01 06:00:00,2014-04-05 22:00:00,Commissioning team,64000.0
447,1.3.2.90,Commissioning of wind turbines 18,4.66666666666667,3.73,5.6,2014-04-06 06:00:00,2014-04-10 22:00:00,Commissioning team,64000.0
448,1.3.2.91,Commissioning of wind turbines 19,5.0,4.0,6.0,2014-04-18 07:00:00,2014-04-23 07:00:00,Commissioning team,64000.0
449,1.3.2.92,Commissioning of wind turbines 20,5.0,4.0,6.0,2014-04-23 07:00:00,2014-04-28 07:00:00,Commissioning team,64000.0
450,1.3.2.93,Commissioning of wind turbines 21,5.0,4.0,6.0,2014-04-28 07:00:00,2014-05-03 07:00:00,Commissioning team,64000.0
451,1.3.2.94,Commissioning of wind turbines 22,5.0,4.0,6.0,2014-05-03 07:00:00,2014-05-08 07:00:00,Commissioning team,64000.0
452,1.3.2.95,Commissioning of wind turbines 23,5.0,4.0,6.0,2014-05-08 07:00:00,2014-05-13 07:00:00,Commissioning team,64000.0
453,1.3.2.96,Commissioning of wind turbines 24,5.0,4.0,6.0,2014-04-13 07:00:00,2014-04-18 07:00:00,Commissioning team,64000.0
406,1.3.2.97,Reliability tests 1,4.66666666666667,3.73,5.6,2014-01-16 06:00:00,2014-01-20 22:00:00,Testing team[0.20 #1],12800.0001907348
407,1.3.2.98,Reliability tests 2,4.66666666666667,3.73,5.6,2014-01-21 06:00:00,2014-01-25 22:00:00,Testing team[0.20 #1],12800.0001907348
408,1.3.2.99,Reliability tests 3,4.66666666666667,3.73,5.6,2014-01-26 06:00:00,2014-01-30 22:00:00,Testing team[0.20 #1],12800.0001907348
409,1.3.2.100,Reliability tests 4,4.66666666666667,3.73,5.6,2014-01-31 06:00:00,2014-02-04 22:00:00,Testing team[0.20 #1],12800.0001907348
410,1.3.2.101,Reliability tests 5,4.66666666666667,3.73,5.6,2014-02-05 06:00:00,2014-02-09 22:00:00,Testing team[0.20 #1],12800.0001907348
411,1.3.2.102,Reliability tests 6,4.66666666666667,3.73,5.6,2014-02-10 06:00:00,2014-02-14 22:00:00,Testing team[0.20 #1],12800.0001907348
412,1.3.2.103,Reliability tests 7,4.66666666666667,3.73,5.6,2014-02-15 06:00:00,2014-02-19 22:00:00,Testing team[0.20 #1],12800.0001907348
413,1.3.2.104,Reliability tests 8,4.66666666666667,3.73,5.6,2014-02-20 06:00:00,2014-02-24 22:00:00,Testing team[0.20 #1],12800.0001907348
414,1.3.2.105,Reliability tests 9,4.66666666666667,3.73,5.6,2014-02-25 06:00:00,2014-03-01 22:00:00,Testing team[0.20 #1],12800.0001907348
415,1.3.2.106,Reliability tests 10,4.66666666666667,3.73,5.6,2014-03-02 06:00:00,2014-03-06 22:00:00,Testing team[0.20 #1],12800.0001907348
416,1.3.2.107,Reliability tests 11,4.66666666666667,3.73,5.6,2014-03-07 06:00:00,2014-03-11 22:00:00,Testing team[0.20 #1],12800.0001907348
417,1.3.2.108,Reliability tests 12,4.66666666666667,3.73,5.6,2014-03-12 06:00:00,2014-03-16 22:00:00,Testing team[0.20 #1],12800.0001907348
418,1.3.2.109,Reliability tests 13,4.66666666666667,3.73,5.6,2014-03-17 06:00:00,2014-03-21 22:00:00,Testing team[0.20 #1],12800.0001907348
419,1.3.2.110,Reliability tests 14,4.66666666666667,3.73,5.6,2014-03-22 06:00:00,2014-03-26 22:00:00,Testing team[0.20 #1],12800.0001907348
421,1.3.2.111,Reliability tests 15,4.66666666666667,3.73,5.6,2014-04-01 06:00:00,2014-04-05 22:00:00,Testing team[0.20 #1],12800.0001907348
420,1.3.2.112,Reliability tests 16,4.66666666666667,3.73,5.6,2014-03-27 06:00:00,2014-03-31 22:00:00,Testing team[0.20 #1],12800.0001907348
422,1.3.2.113,Reliability tests 17,4.66666666666667,3.73,5.6,2014-04-06 06:00:00,2014-04-10 22:00:00,Testing team[0.20 #1],12800.0001907348
423,1.3.2.114,Reliability tests 18,4.66666666666667,3.73,5.6,2014-04-11 06:00:00,2014-04-15 22:00:00,Testing team[0.20 #1],12800.0001907348
424,1.3.2.115,Reliability tests 19,5.0,4.0,6.0,2014-04-23 07:00:00,2014-04-28 07:00:00,Testing team[0.20 #1],12800.0001907348
425,1.3.2.116,Reliability tests 20,5.0,4.0,6.0,2014-04-28 07:00:00,2014-05-03 07:00:00,Testing team[0.20 #1],12800.0001907348
426,1.3.2.117,Reliability tests 21,5.0,4.0,6.0,2014-05-03 07:00:00,2014-05-08 07:00:00,Testing team[0.20 #1],12800.0001907348
427,1.3.2.118,Reliability tests 22,5.0,4.0,6.0,2014-05-08 07:00:00,2014-05-13 07:00:00,Testing team[0.20 #1],12800.0001907348
428,1.3.2.119,Reliability tests 23,5.0,4.0,6.0,2014-05-13 07:00:00,2014-05-18 07:00:00,Testing team[0.20 #1],12800.0001907348
429,1.3.2.120,Reliability tests 24,5.0,4.0,6.0,2014-04-18 07:00:00,2014-04-23 07:00:00,Testing team[0.20 #1],12800.0001907348
98,1.4,Offshore Transformer Station,226.041666666667,223.78,228.3,2013-02-04 06:00:00,2013-09-18 07:00:00,,7706280.0
80,1.4.1,Construction of jacket foundation of OTS,117.666666666667,116.49,118.84,2013-02-04 06:00:00,2013-06-01 22:00:00,,499760.0
75,1.4.1.1,Purchase of base materials,39.6666666666667,31.73,47.6,2013-02-04 06:00:00,2013-03-15 22:00:00,,176000.0
76,1.4.1.2,Construction of jacket foundation for OTS,9.66666666666667,7.73,11.6,2013-03-16 06:00:00,2013-03-25 22:00:00,,278000.0
77,1.4.1.3,Transport of jacket foundation to Ostend,1.66666666666667,1.65,1.68,2013-05-31 06:00:00,2013-06-01 22:00:00,Laborer[8.00 #60];Skipper;Towning tugs;Transport barges;Crane,45760.0
83,1.4.2,Installation of jacket foundation of OTS,1.66666666666667,1.65,1.68,2013-06-02 06:00:00,2013-06-03 22:00:00,,118880.0
82,1.4.2.1,Transport of jacket foundation in sea,0.666666666666667,0.53,0.8,2013-06-02 06:00:00,2013-06-02 22:00:00,Laborer[8.00 #60];Skipper;Engineer[4.00 #18];Towning tugs;Transport barges;Crane,33120.0
81,1.4.2.2,Installation of jacket foundation of OTS,0.666666666666667,0.53,0.8,2013-06-03 06:00:00,2013-06-03 22:00:00,Laborer[18.00 #60];Skipper;Engineer[6.00 #18];Vessel Rambiz,85760.0
93,1.4.3,Steelstructure of Offshore OTS,224.041666666667,221.8,226.28,2013-02-04 06:00:00,2013-09-16 07:00:00,,6979000.0
84,1.4.3.1,Purchase of base materials,149.666666666667,119.73,179.6,2013-02-04 06:00:00,2013-07-03 22:00:00,,3045000.0
85,1.4.3.2,Erection of 1st main deck section,29.6666666666667,23.73,35.6,2013-04-05 06:00:00,2013-05-04 22:00:00,,696000.0
86,1.4.3.3,Erection of 2st main deck section,29.6666666666667,23.73,35.6,2013-05-05 06:00:00,2013-06-03 22:00:00,,696000.0
87,1.4.3.4,Erection of mezzanine deck,15.6666666666667,12.53,18.8,2013-06-04 06:00:00,2013-06-19 22:00:00,,654000.0
88,1.4.3.5,Construction of roof deck,15.6666666666667,12.53,18.8,2013-06-20 06:00:00,2013-07-05 22:00:00,,696000.0
89,1.4.3.6,Internal finishings,2.04166666666667,1.63,2.45,2013-07-06 06:00:00,2013-07-08 07:00:00,,205000.0
90,1.4.3.7,Installation of transformer equipment,60.0,48.0,72.0,2013-07-08 07:00:00,2013-09-06 07:00:00,,864000.0
91,1.4.3.8,Preparation for upcoming transport,10.0,8.0,12.0,2013-09-06 07:00:00,2013-09-16 07:00:00,,123000.0
97,1.4.4,Transport and installation,2.0,1.98,2.02,2013-09-16 07:00:00,2013-09-18 07:00:00,,108640.0
94,1.4.4.1,Transport of OTS,1.0,0.8,1.2,2013-09-16 07:00:00,2013-09-17 07:00:00,Laborer[4.00 #60];Skipper;Engineer;Towning tugs;Transport barges;Crane,22880.0
95,1.4.4.2,Installation of OTS foundation,1.0,0.8,1.2,2013-09-17 07:00:00,2013-09-18 07:00:00,Laborer[18.00 #60];Skipper;Engineer[6.00 #18];Vessel Rambiz,85760.0
125,1.5,Infield cables (33 kV),337.666666666667,334.29,341.04,2013-02-04 06:00:00,2014-01-07 22:00:00,,9400480.0
103,1.5.1,Preparatory works for infield cable laying,16.0,15.84,16.16,2013-09-18 07:00:00,2013-10-04 07:00:00,,1075200.0
100,1.5.1.1,Rock dumping as scour protection around the OTS foundation,2.0,1.6,2.4,2013-09-18 07:00:00,2013-09-20 07:00:00,Laborer[5.00 #60];Skipper;Engineer[4.00 #18];Vessel Pompei,135040.0
101,1.5.1.2,GOSA mattresses installations above existing underground cables as protection,12.0,9.6,14.4,2013-09-20 07:00:00,2013-10-02 07:00:00,Laborer[5.00 #60];Skipper;Engineer[4.00 #18];Vessel Pompei,810240.0
102,1.5.1.3,Pre-grapnel run to remove obstacles from cable trajectories,2.0,1.6,2.4,2013-10-02 07:00:00,2013-10-04 07:00:00,Laborer[5.00 #60];Skipper;Engineer[3.00 #18];Vessel Pompei,129920.0
124,1.5.2,"Infield cables: production, transport and installation",337.666666666667,334.29,341.04,2013-02-04 06:00:00,2014-01-07 22:00:00,,8325280.0
104,1.5.2.1,Production in Karlskrona Sweden,119.666666666667,118.47,120.86,2013-02-04 06:00:00,2013-06-03 22:00:00,,2205000.0
105,1.5.2.2,Transport,4.66666666666667,4.62,4.71,2013-06-06 06:00:00,2013-06-10 22:00:00,Laborer[10.00 #60];Skipper;Vessel Souverreign;Crane,439800.0
106,1.5.2.3,Pre-grapnel runs to remove obstacles,0.666666666666667,0.53,0.8,2013-06-11 06:00:00,2013-06-11 22:00:00,Laborer[18.00 #60];Skipper;Engineer[3.00 #18];Vessel Pompei,73280.0
107,1.5.2.4,Wet trials,0.666666666666667,0.53,0.8,2013-06-12 06:00:00,2013-06-12 22:00:00,Laborer[12.00 #60];Testing team,58080.0
108,1.5.2.5,Cable laying works,47.6666666666667,38.13,57.2,2013-10-31 06:00:00,2013-12-17 22:00:00,Laborer[22.00 #60];Skipper;Vessel Innovator,3217920.0
109,1.5.2.6,Final hang off of the cables in the WTG foundations,47.6666666666667,38.13,57.2,2013-11-05 06:00:00,2013-12-22 22:00:00,Special team[2.00 #2],1228800.0
110,1.5.2.7,Burial of cables,9.66666666666667,7.73,11.6,2013-12-23 06:00:00,2014-01-01 22:00:00,Laborer[22.00 #60];Skipper;Engineer[4.00 #18];Vessel Innovator,772800.0
111,1.5.2.8,Survey of burial depths,1.66666666666667,1.33,2.0,2014-01-02 06:00:00,2014-01-03 22:00:00,Engineer[4.00 #18],20480.0
112,1.5.2.9,Second remedial burial pass if necessary,3.66666666666667,2.93,4.4,2014-01-04 06:00:00,2014-01-07 22:00:00,Laborer[22.00 #60];Skipper;Engineer[4.00 #18];Vessel Innovator,309120.0
161,1.6,Export cables (150 kV),230.041666666667,227.74,232.34,2013-02-04 06:00:00,2013-09-22 07:00:00,,7540240.0
126,1.6.1,Pre-lay grapnel run on trajectory,1.66666666666667,1.33,2.0,2013-02-04 06:00:00,2013-02-05 22:00:00,Laborer[5.00 #60];Skipper;Engineer[3.00 #18];Vessel Pompei,129920.0
132,1.6.2,Production and transport of export cable,93.6666666666667,92.73,94.6,2013-02-09 06:00:00,2013-05-13 22:00:00,,2664430.0
128,1.6.2.1,Purchase of raw materials,69.6666666666667,68.97,70.36,2013-02-09 06:00:00,2013-04-19 22:00:00,,1470000.0
129,1.6.2.2,Manufacturing in Karlskrona Sweden,39.6666666666667,39.27,40.06,2013-03-31 06:00:00,2013-05-09 22:00:00,,625600.0
130,1.6.2.3,Mobilisation of Stemat Spirit,4.66666666666667,3.73,5.6,2013-05-05 06:00:00,2013-05-09 22:00:00,Laborer[6.00 #60];Skipper;Vessel Sternat Spirit,300570.0
131,1.6.2.4,Transport Sweden-Ostend,3.66666666666667,2.93,4.4,2013-05-10 06:00:00,2013-05-13 22:00:00,Laborer[6.00 #60];Skipper;Vessel Sternat Spirit;Crane[2.00 #3],268260.0
135,1.6.3,Dredging shipping lane and preparing trench,9.66666666666667,9.57,9.76,2013-05-04 06:00:00,2013-05-13 22:00:00,,1070200.0
133,1.6.3.1,Dredging to widen shipping lane Vaargeul1,4.66666666666667,3.73,5.6,2013-05-04 06:00:00,2013-05-08 22:00:00,Laborer[18.00 #60];Skipper;Engineer[4.00 #18];Vessel Breughel,481600.0
134,1.6.3.2,Prepare trench where export cable B (150kV) is crossing Vaargeul1,4.66666666666667,3.73,5.6,2013-05-09 06:00:00,2013-05-13 22:00:00,Laborer[18.00 #60];Skipper;Engineer[4.00 #18];Vessel Breughel,588600.0
142,1.6.4,Directional drillings and 150kV cable laying onshore,90.6666666666667,89.76,91.57,2013-02-18 06:00:00,2013-05-19 22:00:00,,1990070.0
136,1.6.4.1,Delivery of pipes to be drilled,59.6666666666667,47.73,71.6,2013-02-18 06:00:00,2013-04-18 22:00:00,,103570.0
193,1.6.4.2,Welding pipes together,4.66666666666667,4.62,4.71,2013-04-19 06:00:00,2013-04-23 22:00:00,Laborer[12.00 #60];Welder[8.00 #8];Crane;Engineer,243600.0
137,1.6.4.3,Directional drillings on land,14.6666666666667,11.73,17.6,2013-04-09 06:00:00,2013-04-23 22:00:00,Laborer[16.00 #60];Engineer[4.00 #18];Drilling machine[2.00 #2],1106200.0
138,1.6.4.4,Pulling welded pipe in through drilling hole,2.66666666666667,2.13,3.2,2013-04-24 06:00:00,2013-04-26 22:00:00,Laborer[14.00 #60];Engineer[4.00 #18];Pulling machine,120000.0
139,1.6.4.5,Factory Acceptance Tests on land cables,1.66666666666667,1.33,2.0,2013-04-27 06:00:00,2013-04-28 22:00:00,Testing team,38100.0
140,1.6.4.6,Cable laying onshore between export cable landing and Elia sub-station,4.66666666666667,3.73,5.6,2013-05-12 06:00:00,2013-05-16 22:00:00,Laborer[13.00 #60];Engineer[4.00 #18];Pulling machine;Crane,231000.0
141,1.6.4.7,Connection of the cables into Elia sub-station,1.66666666666667,1.33,2.0,2013-05-17 06:00:00,2013-05-18 22:00:00,Disconnecting team,80200.0
194,1.6.4.8,Electrical commissioning tests on the onshore cable connections,0.666666666666667,0.53,0.8,2013-05-19 06:00:00,2013-05-19 22:00:00,Testing team,67400.0
155,1.6.5,Export cable was laid down,131.041666666667,129.73,132.35,2013-05-14 06:00:00,2013-09-22 07:00:00,,1246060.0
149,1.6.5.1,Export cable laying on sea bed between coast and OTS,9.66666666666667,7.73,11.6,2013-05-14 06:00:00,2013-05-23 22:00:00,Laborer[17.00 #60];Skipper;Engineer[4.00 #18];Vessel Breydel,732800.0
150,1.6.5.2,Landfall cable pull,0.666666666666667,0.53,0.8,2013-05-24 06:00:00,2013-05-24 22:00:00,Laborer[13.00 #60];Engineer[3.00 #18];Pulling machine,36800.0
195,1.6.5.3,Making joint between sea cable and land cable,0.666666666666667,0.53,0.8,2013-05-25 06:00:00,2013-05-25 22:00:00,Disconnecting team,25300.0
151,1.6.5.4,Backfilling of cable trench,2.66666666666667,2.13,3.2,2013-05-26 06:00:00,2013-05-28 22:00:00,Laborer[12.00 #60];Skipper;Engineer[6.00 #18];Vessel Pearl River,325000.0
152,1.6.5.5,Export cable pull in OTS,1.0,0.8,1.2,2013-09-18 07:00:00,2013-09-19 07:00:00,Laborer[20.00 #60];Engineer[6.00 #18],40660.0
153,1.6.5.6,Complete connection of cable conductors and fibre optics,2.0,1.6,2.4,2013-09-19 07:00:00,2013-09-21 07:00:00,Disconnecting team,38100.0
154,1.6.5.7,Testing 24 hours connection of cable conductors and fibre optics,1.0,0.8,1.2,2013-09-21 07:00:00,2013-09-22 07:00:00,Testing team,47400.0
160,1.6.6,Protection of internal communication cables and gas pipes,2.66666666666667,2.64,2.69,2013-05-28 06:00:00,2013-05-30 22:00:00,,439560.0
156,1.6.6.1,Delivery of rock on Halve Maan site,0.666666666666667,0.66,0.67,2013-05-28 06:00:00,2013-05-28 22:00:00,,325000.0
157,1.6.6.2,Mobilizing rock dumping vessel,0.666666666666667,0.53,0.8,2013-05-29 06:00:00,2013-05-29 22:00:00,Laborer[5.00 #60];Skipper;Vessel Pompei,57280.0
158,1.6.6.3,Rock dumping on PEC crossing and Interconnector South,0.666666666666667,0.53,0.8,2013-05-30 06:00:00,2013-05-30 22:00:00,Laborer[5.00 #60];Skipper;Vessel Pompei,57280.0
