node_id,wbs,task_name,duration,optimistic_time,pessimistic_time,baseline_start,baseline_end,resource_demand,total_cost
0,1,Brussels Finance Tower,594.375,588.43,600.32,2006-03-15 08:00:00,2007-10-30 17:00:00,,15440865.889679
1,1.1,Koningstraat,594.375,588.43,600.32,2006-03-15 08:00:00,2007-10-30 17:00:00,,15440865.889679
2,1.1.1,Werfinstallatie,594.375,475.5,713.25,2006-03-15 08:00:00,2007-10-30 17:00:00,,1850314.07470703
9,1.1.2,Beton,254.375,251.83,256.92,2006-04-10 08:00:00,2006-12-20 17:00:00,,2872078.28125
10,1.1.2.1,Verdiep +3,18.375,14.7,22.05,2006-06-15 08:00:00,2006-07-03 17:00:00,,255893.041015626
11,1.1.2.2,Verdiep +4,16.375,13.1,19.65,2006-06-27 08:00:00,2006-07-13 17:00:00,,255893.041015626
12,1.1.2.3,Verdiep +5,18.375,14.7,22.05,2006-08-04 08:00:00,2006-08-22 17:00:00,,255893.041015626
13,1.1.2.4,Verdiep +6,18.375,14.7,22.05,2006-09-11 08:00:00,2006-09-29 17:00:00,,255892.79296875
14,1.1.2.5,Verdiep +7,18.375,14.7,22.05,2006-09-25 08:00:00,2006-10-13 17:00:00,,255892.79296875
15,1.1.2.6,Verdiep +8,18.375,14.7,22.05,2006-10-09 08:00:00,2006-10-27 17:00:00,,255892.79296875
16,1.1.2.7,Verdiep +9,18.375,14.7,22.05,2006-10-23 08:00:00,2006-11-10 17:00:00,,191919.594726563
17,1.1.2.8,Verdiep +10,18.375,14.7,22.05,2006-11-06 08:00:00,2006-11-24 17:00:00,,191919.594726563
18,1.1.2.9,Verdiep +2,16.375,13.1,19.65,2006-06-05 08:00:00,2006-06-21 17:00:00,,255893.041015626
19,1.1.2.10,Verdiep +1,16.375,13.1,19.65,2006-05-22 08:00:00,2006-06-07 17:00:00,,255893.041015626
20,1.1.2.11,Verdiep glk,39.375,31.5,47.25,2006-04-10 08:00:00,2006-05-19 17:00:00,,383839.189453126
21,1.1.2.12,Buitentrappen (2 fazen),33.375,26.7,40.05,2006-11-17 08:00:00,2006-12-20 17:00:00,,57256.318359375
765,1.1.3,Gevels inbegrepen natuursteen (start = landmeter),214.375,171.5,257.25,2006-10-02 08:00:00,2007-05-04 17:00:00,,2756606.88476563
764,1.1.4,Gevels Wind & waterdicht +3 t/m +10,26.375,21.1,31.65,2007-03-02 08:00:00,2007-03-28 17:00:00,,376803.435546876
45,1.1.5,Technisch lokaal +10,23.375,23.14,23.61,2007-01-15 08:00:00,2007-02-07 17:00:00,,141518.001464844
46,1.1.5.1,Metselwerk,11.375,9.1,13.65,2007-01-15 08:00:00,2007-01-26 17:00:00,,134151.201171875
48,1.1.5.2,HVAC Groepen,2.375,1.9,2.85,2007-02-05 08:00:00,2007-02-07 17:00:00,,7366.80029296874
49,1.1.6,Dakdichting,161.375,159.76,162.99,2006-11-02 08:00:00,2007-04-12 17:00:00,,130114.799316406
50,1.1.6.1,Balkons : wachtslabben,8.375,6.7,10.05,2006-11-02 08:00:00,2006-11-10 17:00:00,,19697.439453125
51,1.1.6.2,Balkons: horizontaal definitief,4.375,3.5,5.25,2007-03-12 08:00:00,2007-03-16 17:00:00,,7951.59973144532
52,1.1.6.3,Boven Schachten,4.375,3.5,5.25,2007-01-29 08:00:00,2007-02-02 17:00:00,,16671.1999511719
53,1.1.6.4,"Metselwerk, helling, dampscherm, slabben",23.375,18.7,28.05,2007-01-08 08:00:00,2007-01-31 17:00:00,,39193.9189453125
54,1.1.6.5,"Helling, dampscherm, definitief",18.375,14.7,22.05,2007-01-29 08:00:00,2007-02-16 17:00:00,,22675.200805664
55,1.1.6.6,Definitief,29.375,23.5,35.25,2007-03-14 08:00:00,2007-04-12 17:00:00,,23925.4404296875
56,1.1.7,Piste renigingsmachine op dak,25.375,20.3,30.45,2007-02-19 08:00:00,2007-03-16 17:00:00,,13667.1997070312
57,1.1.8,Renigingsmachine,6.375,5.1,7.65,2007-03-13 08:00:00,2007-03-19 17:00:00,,75157.2021484376
58,1.1.9,Metselwerk (behalve gaslokaal),53.375,42.7,64.05,2006-10-02 08:00:00,2006-11-24 17:00:00,,134150.400390625
59,1.1.10,Sluiten technische schachten,29.375,23.5,35.25,2007-02-26 08:00:00,2007-03-27 17:00:00,,122781.119140625
61,1.1.11,Pleisterwerken,44.375,35.5,53.25,2007-03-05 08:00:00,2007-04-18 17:00:00,,127818.240966797
62,1.1.12,Chapes,52.375,41.9,62.85,2007-03-20 08:00:00,2007-05-11 17:00:00,,17397.1194763184
63,1.1.13,Vloeren & faience,48.375,38.7,58.05,2007-04-24 08:00:00,2007-06-11 17:00:00,,259179.204101563
64,1.1.14,Binnenschrijnwerk,67.375,53.9,80.85,2007-05-28 08:00:00,2007-08-03 17:00:00,,129647.998046875
65,1.1.15,Tapijt,49.375,39.5,59.25,2007-08-10 08:00:00,2007-09-28 17:00:00,,8493.11993408204
66,1.1.16,Smeedwerk,34.375,27.5,41.25,2007-03-21 08:00:00,2007-04-24 17:00:00,,45633.999633789
67,1.1.17,Schilderwerken,55.375,44.3,66.45,2007-08-08 08:00:00,2007-10-02 17:00:00,,132057.59765625
68,1.1.18,Einde opkuisen,13.375,10.7,16.05,2007-10-03 08:00:00,2007-10-16 17:00:00,,1.0
69,1.1.19,Voorlopige receptie,13.375,10.7,16.05,2007-10-17 08:00:00,2007-10-30 17:00:00,,1.0
752,1.1.20,Verdiep +3,357.375,285.9,428.85,2006-09-18 08:00:00,2007-09-10 17:00:00,,439132.156249999
753,1.1.21,Verdiep +4,352.375,281.9,422.85,2006-09-25 08:00:00,2007-09-12 17:00:00,,439147.282470703
754,1.1.22,Verdiep +5,347.375,277.9,416.85,2006-10-02 08:00:00,2007-09-14 17:00:00,,439140.014648438
755,1.1.23,Verdiep +6,344.375,275.5,413.25,2006-10-09 08:00:00,2007-09-18 17:00:00,,439146.250854492
756,1.1.24,Verdiep +7,339.375,271.5,407.25,2006-10-16 08:00:00,2007-09-20 17:00:00,,439141.442382812
757,1.1.25,Verdiep +8,336.375,269.1,403.65,2006-10-23 08:00:00,2007-09-24 17:00:00,,439140.568237305
758,1.1.26,Verdiep +9,328.375,262.7,394.05,2006-11-02 08:00:00,2007-09-26 17:00:00,,439149.193115235
759,1.1.27,Verdiep  +10,323.375,258.7,388.05,2006-11-09 08:00:00,2007-09-28 17:00:00,,439148.161132813
760,1.1.28,Technische lokaal +10,120.375,96.3,144.45,2007-02-05 08:00:00,2007-06-05 17:00:00,,368344.06640625
761,1.1.29,Verdiep  +2,301.375,241.1,361.65,2006-11-16 08:00:00,2007-09-13 17:00:00,,439136.648437501
762,1.1.30,Verdiep  +1,300.375,240.3,360.45,2006-11-23 08:00:00,2007-09-19 17:00:00,,439133.195800782
763,1.1.31,Verdiep  glk,299.375,239.5,359.25,2006-11-30 08:00:00,2007-09-25 17:00:00,,439145.13671875
742,1.1.32,Liften,298.375,295.39,301.36,2006-12-15 08:00:00,2007-10-09 17:00:00,,1048541.0949707
743,1.1.32.1,Goederenlift KGL1,298.375,295.39,301.36,2006-12-15 08:00:00,2007-10-09 17:00:00,,356500.493408203
744,1.1.32.1.1,KGL1 - werflift montage,73.375,58.7,88.05,2006-12-15 08:00:00,2007-02-26 17:00:00,,113206.08203125
745,1.1.32.1.2,KGL1 werflift,161.375,129.1,193.65,2007-03-13 08:00:00,2007-08-21 17:00:00,,239145.611328125
746,1.1.32.1.3,KGL1 opkuisen,13.375,10.7,16.05,2007-09-26 08:00:00,2007-10-09 17:00:00,,4148.80004882813
747,1.1.32.2,Personenliften KPL1-4,56.375,55.81,56.94,2007-04-16 08:00:00,2007-06-11 17:00:00,,692040.6015625
748,1.1.32.2.1,KPL 1,56.375,45.1,67.65,2007-04-16 08:00:00,2007-06-11 17:00:00,,173010.150390625
749,1.1.32.2.2,KPL 2,56.375,45.1,67.65,2007-04-16 08:00:00,2007-06-11 17:00:00,,173010.150390625
750,1.1.32.2.3,KPL 3,56.375,45.1,67.65,2007-04-16 08:00:00,2007-06-11 17:00:00,,173010.150390625
751,1.1.32.2.4,KPL 4,56.375,45.1,67.65,2007-04-16 08:00:00,2007-06-11 17:00:00,,173010.150390625
