node_id,wbs,task_name,duration,optimistic_time,pessimistic_time,baseline_start,baseline_end,resource_demand,total_cost
0,1,Government Office Building,553.375,547.84,558.91,2008-12-01 08:00:00,2010-06-07 17:00:00,,19429810.5131836
456,1.1,werfinrichting,11.375,9.1,13.65,2008-12-01 08:00:00,2008-12-12 17:00:00,,867102.0
468,1.2,grondwerken en fundering ondergrondse werken,260.375,257.77,262.98,2008-12-08 08:00:00,2009-08-25 17:00:00,,533489.442810059
458,1.2.1,installatie bronbemaling,4.375,3.5,5.25,2008-12-08 08:00:00,2008-12-12 17:00:00,,907.580017089844
459,1.2.2,bronbemaling,253.375,202.7,304.05,2008-12-15 08:00:00,2009-08-25 17:00:00,,27227.419921875
460,1.2.3,grondwerken toren,25.375,20.3,30.45,2008-12-15 08:00:00,2009-01-09 17:00:00,,104828.328125
461,1.2.4,voorbereiding secanspalen parking,25.375,20.3,30.45,2008-12-15 08:00:00,2009-01-09 17:00:00,,9333.330078125
462,1.2.5,secanspalen parking,11.375,9.1,13.65,2009-01-12 08:00:00,2009-01-23 17:00:00,,9333.330078125
463,1.2.6,grondwerken parking,30.375,24.3,36.45,2009-01-26 08:00:00,2009-02-25 17:00:00,,241105.15625
464,1.2.7,ankers secanspalen eerste rij,6.375,5.1,7.65,2009-02-03 08:00:00,2009-02-09 17:00:00,,4666.669921875
457,1.2.8,ankers secanspalen tweede rij,6.375,5.1,7.65,2009-02-12 08:00:00,2009-02-18 17:00:00,,4666.56982421875
465,1.2.9,funderingsplaat gebouw,18.375,14.7,22.05,2009-01-12 08:00:00,2009-01-30 17:00:00,,20710.529296875
466,1.2.10,trekankers funderingsplaat parking,11.375,9.1,13.65,2009-02-26 08:00:00,2009-03-09 17:00:00,,90000.0
467,1.2.11,funderingsplaat parking,20.375,16.3,24.45,2009-03-10 08:00:00,2009-03-30 17:00:00,,20710.529296875
436,1.3,100 ruwbouw,346.375,342.91,349.84,2008-12-15 08:00:00,2009-11-26 17:00:00,,5887941.97119141
416,1.3.1,18 radier,107.375,106.3,108.45,2008-12-15 08:00:00,2009-04-01 17:00:00,,329571.486816406
1,1.3.1.1,radier torengebouw,42.375,33.9,50.85,2008-12-15 08:00:00,2009-01-26 17:00:00,,9394.740234375
2,1.3.1.2,opstellen torenkraan TK2,1.375,1.1,1.65,2009-01-21 08:00:00,2009-01-22 17:00:00,,26178.669921875
3,1.3.1.3,berlinerwand parking + einde grondwerken,18.375,14.7,22.05,2009-02-02 08:00:00,2009-02-20 17:00:00,,152015.21875
4,1.3.1.4,trekankers parking,11.375,9.1,13.65,2009-02-26 08:00:00,2009-03-09 17:00:00,,90000.0
5,1.3.1.5,radier parking,20.375,16.3,24.45,2009-03-10 08:00:00,2009-03-30 17:00:00,,6710.52978515625
6,1.3.1.6,opstellen torenkraan TK1 in parking,6.375,5.1,7.65,2009-03-26 08:00:00,2009-04-01 17:00:00,,45272.328125
475,1.3.2,40 ruwbouw boven -2 toren,18.375,14.7,22.05,2009-02-02 08:00:00,2009-02-20 17:00:00,,378979.8125
476,1.3.3,45 ruwbouw boven -2 parking,29.375,23.5,35.25,2009-03-31 08:00:00,2009-04-29 17:00:00,,505306.40625
477,1.3.4,50 ruwbouw boven -1 toren,18.375,14.7,22.05,2009-03-09 08:00:00,2009-03-27 17:00:00,,378979.8125
478,1.3.5,55 ruwbouw boven -1 parking,33.375,26.7,40.05,2009-04-30 08:00:00,2009-06-02 17:00:00,,505306.40625
479,1.3.6,60 ruwbouw boven gelijkvloers,11.375,9.1,13.65,2009-03-30 08:00:00,2009-04-10 17:00:00,,252653.203125
480,1.3.7,70 ruwbouw boven +1,13.375,10.7,16.05,2009-04-15 08:00:00,2009-04-28 17:00:00,,252653.203125
481,1.3.8,80 ruwbouw boven +2,14.375,11.5,17.25,2009-04-29 08:00:00,2009-05-13 17:00:00,,252653.203125
482,1.3.9,90 ruwbouw boven +3,15.375,12.3,18.45,2009-05-14 08:00:00,2009-05-29 17:00:00,,252653.203125
483,1.3.10,100 ruwbouw boven +4,13.375,10.7,16.05,2009-06-02 08:00:00,2009-06-15 17:00:00,,252653.203125
484,1.3.11,110 ruwbouw boven +5,13.375,10.7,16.05,2009-06-16 08:00:00,2009-06-29 17:00:00,,252653.203125
485,1.3.12,120 ruwbouw boven +6,34.375,27.5,41.25,2009-06-30 08:00:00,2009-08-03 17:00:00,,252653.203125
486,1.3.13,130 ruwbouw boven +7,14.375,11.5,17.25,2009-08-04 08:00:00,2009-08-18 17:00:00,,252653.203125
487,1.3.14,140 ruwbouw boven +8,13.375,10.7,16.05,2009-08-19 08:00:00,2009-09-01 17:00:00,,252653.203125
488,1.3.15,150 ruwbouw boven +9,13.375,10.7,16.05,2009-09-02 08:00:00,2009-09-15 17:00:00,,252653.203125
489,1.3.16,160 ruwbouw boven +10,13.375,10.7,16.05,2009-09-16 08:00:00,2009-09-29 17:00:00,,252653.203125
490,1.3.17,170 ruwbouw boven +11,13.375,10.7,16.05,2009-09-30 08:00:00,2009-10-13 17:00:00,,252653.203125
491,1.3.18,180 ruwbouw boven +12,13.375,10.7,16.05,2009-10-14 08:00:00,2009-10-27 17:00:00,,252653.203125
492,1.3.19,190 ruwbouw boven +13,15.375,12.3,18.45,2009-10-28 08:00:00,2009-11-12 17:00:00,,252653.203125
493,1.3.20,200 ruwbouw boven +14,13.375,10.7,16.05,2009-11-13 08:00:00,2009-11-26 17:00:00,,252653.203125
438,1.4,150 dak,225.375,223.12,227.63,2009-06-03 08:00:00,2010-01-14 17:00:00,,597815.12109375
437,1.4.1,301 dakwerken,225.375,223.12,227.63,2009-06-03 08:00:00,2010-01-14 17:00:00,,597815.12109375
182,1.4.1.1,hellingsbeton,6.375,5.1,7.65,2009-11-27 08:00:00,2009-12-03 17:00:00,,66991.65625
183,1.4.1.2,dakwerken niveau +2,6.375,5.1,7.65,2009-10-14 08:00:00,2009-10-20 17:00:00,,46575.51953125
184,1.4.1.3,dakwerken gebouw,34.375,27.5,41.25,2009-12-11 08:00:00,2010-01-14 17:00:00,,139726.546875
185,1.4.1.4,installatie gevelreiniging,6.375,5.1,7.65,2009-12-04 08:00:00,2009-12-10 17:00:00,,91163.390625
186,1.4.1.5,dakwerken parkingdak,34.375,27.5,41.25,2009-06-03 08:00:00,2009-07-07 17:00:00,,232877.578125
187,1.4.1.6,beschermbeton dak,34.375,27.5,41.25,2009-07-08 08:00:00,2009-08-11 17:00:00,,20480.4296875
440,1.5,180 gevel,282.375,279.55,285.2,2009-06-30 08:00:00,2010-04-08 17:00:00,,3310363.42993164
439,1.5.1,311 gordijngevel,282.375,279.55,285.2,2009-06-30 08:00:00,2010-04-08 17:00:00,,3310363.42993164
188,1.5.1.1,montage hefsteigers,13.375,10.7,16.05,2009-08-26 08:00:00,2009-09-08 17:00:00,,2053.96997070313
189,1.5.1.2,gevel 0 - 2,105.375,84.3,126.45,2009-06-30 08:00:00,2009-10-13 17:00:00,,1071966.0
190,1.5.1.3,gevel 3-5,37.1666666666667,29.73,44.6,2009-09-09 08:00:00,2009-10-16 12:00:00,,491317.75
191,1.5.1.4,gevel 6-9,41.1666666666667,32.93,49.4,2009-10-16 13:00:00,2009-11-26 17:00:00,,491317.75
192,1.5.1.5,gevel 9-boven,111.375,89.1,133.65,2009-11-27 08:00:00,2010-03-18 17:00:00,,1250627.0
193,1.5.1.6,afbouw steigers,20.375,16.3,24.45,2010-03-19 08:00:00,2010-04-08 17:00:00,,3080.9599609375
441,1.6,205 gelijkvloers,157.375,155.8,158.95,2009-09-07 08:00:00,2010-02-11 17:00:00,,520800.307189941
274,1.6.1,pleisterwerken,7.375,5.9,8.85,2009-11-05 08:00:00,2009-11-12 17:00:00,,8611.6201171875
275,1.6.2,traceren plafond + boren ophangpunten,2.375,1.9,2.85,2009-09-07 08:00:00,2009-09-09 17:00:00,,39378.6015625
276,1.6.3,technieken in vals plafond,18.375,14.7,22.05,2009-10-12 08:00:00,2009-10-30 17:00:00,,88472.6171875
277,1.6.4,gk strook gevel structuur,2.375,1.9,2.85,2009-11-23 08:00:00,2009-11-25 17:00:00,,544.22998046875
278,1.6.5,structuur vp,3.375,2.7,4.05,2009-11-30 08:00:00,2009-12-03 17:00:00,,957.809997558594
279,1.6.6,technieken in vloer,6.375,5.1,7.65,2009-12-04 08:00:00,2009-12-10 17:00:00,,26237.029296875
280,1.6.7,chape,27.375,21.9,32.85,2009-12-11 08:00:00,2010-01-07 17:00:00,,2554.86010742188
281,1.6.8,plaatsen convectoren,13.375,10.7,16.05,2010-01-08 08:00:00,2010-01-21 17:00:00,,187631.6875
282,1.6.9,afwerking vloeren,13.375,10.7,16.05,2010-01-22 08:00:00,2010-02-04 17:00:00,,9851.16015625
283,1.6.10,uitplamuren kolommen,1.375,1.1,1.65,2009-12-03 08:00:00,2009-12-04 17:00:00,,4682.93017578125
284,1.6.11,metselwerken,11.375,9.1,13.65,2009-09-07 08:00:00,2009-09-18 17:00:00,,24999.80078125
285,1.6.12,binnenwanden,5.375,4.3,6.45,2010-01-29 08:00:00,2010-02-03 17:00:00,,1037.39001464844
286,1.6.13,sanitaire wanden,2.375,1.9,2.85,2010-01-11 08:00:00,2010-01-13 17:00:00,,37201.2890625
287,1.6.14,binnenschrijnwerk,3.375,2.7,4.05,2010-01-19 08:00:00,2010-01-22 17:00:00,,20841.16015625
288,1.6.15,dichtleggen vp + gkstrook,9.375,7.5,11.25,2010-01-19 08:00:00,2010-01-28 17:00:00,,11668.2099609375
289,1.6.16,natuursteen inkomhal,13.375,10.7,16.05,2010-01-29 08:00:00,2010-02-11 17:00:00,,18002.30078125
290,1.6.17,schilderwerken,13.375,10.7,16.05,2010-01-29 08:00:00,2010-02-11 17:00:00,,15626.6103515625
291,1.6.18,auditorium - verder te detailleren,127.375,101.9,152.85,2009-09-21 08:00:00,2010-01-26 17:00:00,,1.0
292,1.6.19,opkuis,6.375,5.1,7.65,2010-01-27 08:00:00,2010-02-02 17:00:00,,22500.0
442,1.7,210 eerste verdieping,169.375,167.68,171.07,2009-09-07 08:00:00,2010-02-23 17:00:00,,559972.226379395
258,1.7.1,pleisterwerken,7.375,5.9,8.85,2009-11-05 08:00:00,2009-11-12 17:00:00,,8611.6201171875
259,1.7.2,traceren plafond + boren ophangpunten,2.375,1.9,2.85,2009-09-07 08:00:00,2009-09-09 17:00:00,,39378.6015625
260,1.7.3,technieken in vals plafond,18.375,14.7,22.05,2009-10-12 08:00:00,2009-10-30 17:00:00,,88472.6171875
261,1.7.4,gk strook gevel structuur,2.375,1.9,2.85,2009-11-23 08:00:00,2009-11-25 17:00:00,,544.22998046875
262,1.7.5,structuur vp,3.375,2.7,4.05,2009-11-30 08:00:00,2009-12-03 17:00:00,,957.809997558594
263,1.7.6,vloergoten + verhoogde vloer + bekabeling,13.375,10.7,16.05,2010-01-05 08:00:00,2010-01-18 17:00:00,,84509.5
264,1.7.7,plaatsen convectoren,11.375,9.1,13.65,2009-11-30 08:00:00,2009-12-11 17:00:00,,187631.6875
265,1.7.8,uitplamuren kolommen,1.375,1.1,1.65,2009-12-03 08:00:00,2009-12-04 17:00:00,,4682.93017578125
266,1.7.9,metselwerken,11.375,9.1,13.65,2009-09-07 08:00:00,2009-09-18 17:00:00,,24999.80078125
267,1.7.10,binnenwanden,5.375,4.3,6.45,2010-01-29 08:00:00,2010-02-03 17:00:00,,1037.39001464844
268,1.7.11,sanitaire wanden,4.375,3.5,5.25,2010-01-14 08:00:00,2010-01-18 17:00:00,,37201.2890625
269,1.7.12,binnenschrijnwerk,3.375,2.7,4.05,2010-01-19 08:00:00,2010-01-22 17:00:00,,20841.16015625
270,1.7.13,dichtleggen vp + gkstrook,9.375,7.5,11.25,2010-01-19 08:00:00,2010-01-28 17:00:00,,11668.2099609375
271,1.7.14,schilderwerken,13.375,10.7,16.05,2010-01-29 08:00:00,2010-02-11 17:00:00,,15626.6103515625
272,1.7.15,tapijt,4.375,3.5,5.25,2010-02-12 08:00:00,2010-02-16 17:00:00,,11308.76953125
273,1.7.16,opkuis,6.375,5.1,7.65,2010-02-17 08:00:00,2010-02-23 17:00:00,,22500.0
443,1.8,220 tweede verdieping,43.375,42.94,43.81,2009-10-21 08:00:00,2009-12-03 17:00:00,,52785.16015625
414,1.8.1,tegels,14.375,11.5,17.25,2009-10-21 08:00:00,2009-11-04 17:00:00,,14638.26953125
415,1.8.2,bekleding kernen,28.375,22.7,34.05,2009-11-05 08:00:00,2009-12-03 17:00:00,,38146.890625
444,1.9,230 derde verdieping,226.375,224.11,228.64,2009-09-09 08:00:00,2010-04-23 17:00:00,,559972.226379395
194,1.9.1,pleisterwerken,6.375,5.1,7.65,2009-10-21 08:00:00,2009-10-27 17:00:00,,8611.6201171875
195,1.9.2,traceren plafond + boren ophangpunten,2.375,1.9,2.85,2009-09-09 08:00:00,2009-09-11 17:00:00,,39378.6015625
196,1.9.3,technieken in vals plafond,18.375,14.7,22.05,2009-09-14 08:00:00,2009-10-02 17:00:00,,88472.6171875
197,1.9.4,gk strook gevel structuur,4.375,3.5,5.25,2009-11-13 08:00:00,2009-11-17 17:00:00,,544.22998046875
198,1.9.5,structuur vp,5.375,4.3,6.45,2009-11-18 08:00:00,2009-11-23 17:00:00,,957.809997558594
199,1.9.6,vloergoten + verhoogde vloer + bekabeling,13.375,10.7,16.05,2009-11-24 08:00:00,2009-12-07 17:00:00,,84509.5
200,1.9.7,plaatsen convectoren,13.375,10.7,16.05,2009-11-18 08:00:00,2009-12-01 17:00:00,,187631.6875
201,1.9.8,uitplamuren kolommen,3.375,2.7,4.05,2009-11-27 08:00:00,2009-11-30 17:00:00,,4682.93017578125
202,1.9.9,metselwerken,13.375,10.7,16.05,2009-09-09 08:00:00,2009-09-22 17:00:00,,24999.80078125
203,1.9.10,binnenwanden,19.375,15.5,23.25,2009-12-18 08:00:00,2010-01-06 17:00:00,,1037.39001464844
204,1.9.11,sanitaire wanden,2.375,1.9,2.85,2010-04-21 08:00:00,2010-04-23 17:00:00,,37201.2890625
205,1.9.12,binnenschrijnwerk,3.375,2.7,4.05,2009-12-08 08:00:00,2009-12-11 17:00:00,,20841.16015625
206,1.9.13,dichtleggen vp + gkstrook,9.375,7.5,11.25,2009-12-08 08:00:00,2009-12-17 17:00:00,,11668.2099609375
207,1.9.14,schilderwerken,27.375,21.9,32.85,2009-12-18 08:00:00,2010-01-14 17:00:00,,15626.6103515625
208,1.9.15,tapijt,4.375,3.5,5.25,2010-01-15 08:00:00,2010-01-19 17:00:00,,11308.76953125
209,1.9.16,opkuis,6.375,5.1,7.65,2010-01-20 08:00:00,2010-01-26 17:00:00,,22500.0
445,1.10,240 vierde verdieping,139.375,137.98,140.77,2009-09-09 08:00:00,2010-01-26 17:00:00,,559972.226379395
210,1.10.1,pleisterwerken,6.375,5.1,7.65,2009-10-21 08:00:00,2009-10-27 17:00:00,,8611.6201171875
211,1.10.2,traceren plafond + boren ophangpunten,2.375,1.9,2.85,2009-09-09 08:00:00,2009-09-11 17:00:00,,39378.6015625
212,1.10.3,technieken in vals plafond,18.375,14.7,22.05,2009-09-14 08:00:00,2009-10-02 17:00:00,,88472.6171875
213,1.10.4,gk strook gevel structuur,4.375,3.5,5.25,2009-11-13 08:00:00,2009-11-17 17:00:00,,544.22998046875
214,1.10.5,structuur vp,5.375,4.3,6.45,2009-11-18 08:00:00,2009-11-23 17:00:00,,957.809997558594
215,1.10.6,vloergoten + verhoogde vloer + bekabeling,13.375,10.7,16.05,2009-11-24 08:00:00,2009-12-07 17:00:00,,84509.5
216,1.10.7,plaatsen convectoren,13.375,10.7,16.05,2009-11-18 08:00:00,2009-12-01 17:00:00,,187631.6875
217,1.10.8,uitplamuren kolommen,3.375,2.7,4.05,2009-11-27 08:00:00,2009-11-30 17:00:00,,4682.93017578125
218,1.10.9,metselwerken,13.375,10.7,16.05,2009-09-09 08:00:00,2009-09-22 17:00:00,,24999.80078125
219,1.10.10,binnenwanden,19.375,15.5,23.25,2009-12-18 08:00:00,2010-01-06 17:00:00,,1037.39001464844
220,1.10.11,sanitaire wanden,2.375,1.9,2.85,2009-11-16 08:00:00,2009-11-18 17:00:00,,37201.2890625
221,1.10.12,binnenschrijnwerk,3.375,2.7,4.05,2009-12-08 08:00:00,2009-12-11 17:00:00,,20841.16015625
222,1.10.13,dichtleggen vp + gkstrook,9.375,7.5,11.25,2009-12-08 08:00:00,2009-12-17 17:00:00,,11668.2099609375
223,1.10.14,schilderwerken,27.375,21.9,32.85,2009-12-18 08:00:00,2010-01-14 17:00:00,,15626.6103515625
224,1.10.15,tapijt,4.375,3.5,5.25,2010-01-15 08:00:00,2010-01-19 17:00:00,,11308.76953125
225,1.10.16,opkuis,6.375,5.1,7.65,2010-01-20 08:00:00,2010-01-26 17:00:00,,22500.0
446,1.11,250 vijfde verdieping,160.375,158.77,161.98,2009-09-02 08:00:00,2010-02-09 17:00:00,,559972.226379395
226,1.11.1,pleisterwerken,7.375,5.9,8.85,2009-10-28 08:00:00,2009-11-04 17:00:00,,8611.6201171875
227,1.11.2,traceren plafond + boren ophangpunten,2.375,1.9,2.85,2009-09-02 08:00:00,2009-09-04 17:00:00,,39378.6015625
228,1.11.3,technieken in vals plafond,18.375,14.7,22.05,2009-09-28 08:00:00,2009-10-16 17:00:00,,88472.6171875
229,1.11.4,gk strook gevel structuur,2.375,1.9,2.85,2009-11-18 08:00:00,2009-11-20 17:00:00,,544.22998046875
230,1.11.5,structuur vp,3.375,2.7,4.05,2009-11-24 08:00:00,2009-11-27 17:00:00,,957.809997558594
231,1.11.6,vloergoten + verhoogde vloer + bekabeling,27.375,21.9,32.85,2009-12-08 08:00:00,2010-01-04 17:00:00,,84509.5
232,1.11.7,plaatsen convectoren,13.375,10.7,16.05,2009-11-24 08:00:00,2009-12-07 17:00:00,,187631.6875
233,1.11.8,uitplamuren kolommen,1.375,1.1,1.65,2009-12-01 08:00:00,2009-12-02 17:00:00,,4682.93017578125
234,1.11.9,metselwerken,13.375,10.7,16.05,2009-09-02 08:00:00,2009-09-15 17:00:00,,24999.80078125
235,1.11.10,sanitaire wanden,4.375,3.5,5.25,2009-11-19 08:00:00,2009-11-23 17:00:00,,37201.2890625
236,1.11.11,binnenwanden,5.375,4.3,6.45,2010-01-15 08:00:00,2010-01-20 17:00:00,,1037.39001464844
237,1.11.12,binnenschrijnwerk,3.375,2.7,4.05,2010-01-05 08:00:00,2010-01-08 17:00:00,,20841.16015625
238,1.11.13,dichtleggen vp + gkstrook,9.375,7.5,11.25,2010-01-05 08:00:00,2010-01-14 17:00:00,,11668.2099609375
239,1.11.14,schilderwerken,13.375,10.7,16.05,2010-01-15 08:00:00,2010-01-28 17:00:00,,15626.6103515625
240,1.11.15,tapijt,4.375,3.5,5.25,2010-01-29 08:00:00,2010-02-02 17:00:00,,11308.76953125
241,1.11.16,opkuis,6.375,5.1,7.65,2010-02-03 08:00:00,2010-02-09 17:00:00,,22500.0
447,1.12,260 zesde verdieping,160.375,158.77,161.98,2009-09-02 08:00:00,2010-02-09 17:00:00,,559972.226379395
242,1.12.1,pleisterwerken,7.375,5.9,8.85,2009-10-28 08:00:00,2009-11-04 17:00:00,,8611.6201171875
243,1.12.2,traceren plafond + boren ophangpunten,2.375,1.9,2.85,2009-09-02 08:00:00,2009-09-04 17:00:00,,39378.6015625
244,1.12.3,technieken in vals plafond,18.375,14.7,22.05,2009-09-28 08:00:00,2009-10-16 17:00:00,,88472.6171875
245,1.12.4,gk strook gevel structuur,2.375,1.9,2.85,2009-11-18 08:00:00,2009-11-20 17:00:00,,544.22998046875
246,1.12.5,structuur vp,3.375,2.7,4.05,2009-11-24 08:00:00,2009-11-27 17:00:00,,957.809997558594
247,1.12.6,vloergoten + verhoogde vloer + bekabeling,27.375,21.9,32.85,2009-12-08 08:00:00,2010-01-04 17:00:00,,84509.5
248,1.12.7,plaatsen convectoren,13.375,10.7,16.05,2009-11-24 08:00:00,2009-12-07 17:00:00,,187631.6875
249,1.12.8,uitplamuren kolommen,1.375,1.1,1.65,2009-12-01 08:00:00,2009-12-02 17:00:00,,4682.93017578125
250,1.12.9,metselwerken,13.375,10.7,16.05,2009-09-02 08:00:00,2009-09-15 17:00:00,,24999.80078125
251,1.12.10,binnenwanden,5.375,4.3,6.45,2010-01-15 08:00:00,2010-01-20 17:00:00,,1037.39001464844
252,1.12.11,sanitaire wanden,2.375,1.9,2.85,2009-11-24 08:00:00,2009-11-26 17:00:00,,37201.2890625
253,1.12.12,binnenschrijnwerk,3.375,2.7,4.05,2010-01-05 08:00:00,2010-01-08 17:00:00,,20841.16015625
254,1.12.13,dichtleggen vp + gkstrook,9.375,7.5,11.25,2010-01-05 08:00:00,2010-01-14 17:00:00,,11668.2099609375
255,1.12.14,schilderwerken,13.375,10.7,16.05,2010-01-15 08:00:00,2010-01-28 17:00:00,,15626.6103515625
256,1.12.15,tapijt,4.375,3.5,5.25,2010-01-29 08:00:00,2010-02-02 17:00:00,,11308.76953125
257,1.12.16,opkuis,6.375,5.1,7.65,2010-02-03 08:00:00,2010-02-09 17:00:00,,22500.0
448,1.13,270 zevende verdieping,160.375,158.77,161.98,2009-09-30 08:00:00,2010-03-09 17:00:00,,559972.226379395
293,1.13.1,pleisterwerken,6.375,5.1,7.65,2009-11-13 08:00:00,2009-11-19 17:00:00,,8611.6201171875
294,1.13.2,traceren plafond + boren ophangpunten,2.375,1.9,2.85,2009-09-30 08:00:00,2009-10-02 17:00:00,,39378.6015625
295,1.13.3,technieken in vals plafond,22.375,17.9,26.85,2009-10-26 08:00:00,2009-11-17 17:00:00,,88472.6171875
296,1.13.4,gk strook gevel structuur,4.375,3.5,5.25,2009-11-26 08:00:00,2009-11-30 17:00:00,,544.22998046875
297,1.13.5,structuur vp,5.375,4.3,6.45,2009-12-04 08:00:00,2009-12-09 17:00:00,,957.809997558594
298,1.13.6,vloergoten + verhoogde vloer + bekabeling,13.375,10.7,16.05,2010-01-19 08:00:00,2010-02-01 17:00:00,,84509.5
299,1.13.7,plaatsen convectoren,13.375,10.7,16.05,2009-12-04 08:00:00,2009-12-17 17:00:00,,187631.6875
300,1.13.8,uitplamuren kolommen,1.375,1.1,1.65,2009-12-07 08:00:00,2009-12-08 17:00:00,,4682.93017578125
301,1.13.9,metselwerken,13.375,10.7,16.05,2009-09-30 08:00:00,2009-10-13 17:00:00,,24999.80078125
302,1.13.10,sanitaire wanden,4.375,3.5,5.25,2009-11-27 08:00:00,2009-12-01 17:00:00,,37201.2890625
303,1.13.11,binnenwanden,5.375,4.3,6.45,2010-02-12 08:00:00,2010-02-17 17:00:00,,1037.39001464844
304,1.13.12,binnenschrijnwerk,3.375,2.7,4.05,2010-02-02 08:00:00,2010-02-05 17:00:00,,20841.16015625
305,1.13.13,dichtleggen vp + gkstrook,9.375,7.5,11.25,2010-02-02 08:00:00,2010-02-11 17:00:00,,11668.2099609375
306,1.13.14,schilderwerken,13.375,10.7,16.05,2010-02-12 08:00:00,2010-02-25 17:00:00,,15626.6103515625
307,1.13.15,tapijt,4.375,3.5,5.25,2010-02-26 08:00:00,2010-03-02 17:00:00,,11308.76953125
308,1.13.16,opkuis,6.375,5.1,7.65,2010-03-03 08:00:00,2010-03-09 17:00:00,,22500.0
449,1.14,280 achtste verdieping,160.375,158.77,161.98,2009-09-30 08:00:00,2010-03-09 17:00:00,,559972.226379395
309,1.14.1,pleisterwerken,6.375,5.1,7.65,2009-11-13 08:00:00,2009-11-19 17:00:00,,8611.6201171875
310,1.14.2,traceren plafond + boren ophangpunten,2.375,1.9,2.85,2009-09-30 08:00:00,2009-10-02 17:00:00,,39378.6015625
311,1.14.3,technieken in vals plafond,22.375,17.9,26.85,2009-10-26 08:00:00,2009-11-17 17:00:00,,88472.6171875
312,1.14.4,gk strook gevel structuur,4.375,3.5,5.25,2009-11-26 08:00:00,2009-11-30 17:00:00,,544.22998046875
313,1.14.5,structuur vp,5.375,4.3,6.45,2009-12-04 08:00:00,2009-12-09 17:00:00,,957.809997558594
314,1.14.6,vloergoten + verhoogde vloer + bekabeling,13.375,10.7,16.05,2010-01-19 08:00:00,2010-02-01 17:00:00,,84509.5
315,1.14.7,plaatsen convectoren,13.375,10.7,16.05,2009-12-04 08:00:00,2009-12-17 17:00:00,,187631.6875
316,1.14.8,uitplamuren kolommen,1.375,1.1,1.65,2009-12-07 08:00:00,2009-12-08 17:00:00,,4682.93017578125
317,1.14.9,metselwerken,13.375,10.7,16.05,2009-09-30 08:00:00,2009-10-13 17:00:00,,24999.80078125
318,1.14.10,binnenwanden,5.375,4.3,6.45,2010-02-12 08:00:00,2010-02-17 17:00:00,,1037.39001464844
319,1.14.11,sanitaire wanden,2.375,1.9,2.85,2009-12-02 08:00:00,2009-12-04 17:00:00,,37201.2890625
320,1.14.12,binnenschrijnwerk,3.375,2.7,4.05,2010-02-02 08:00:00,2010-02-05 17:00:00,,20841.16015625
321,1.14.13,dichtleggen vp + gkstrook,9.375,7.5,11.25,2010-02-02 08:00:00,2010-02-11 17:00:00,,11668.2099609375
322,1.14.14,schilderwerken,13.375,10.7,16.05,2010-02-12 08:00:00,2010-02-25 17:00:00,,15626.6103515625
323,1.14.15,tapijt,4.375,3.5,5.25,2010-02-26 08:00:00,2010-03-02 17:00:00,,11308.76953125
324,1.14.16,opkuis,6.375,5.1,7.65,2010-03-03 08:00:00,2010-03-09 17:00:00,,22500.0
450,1.15,290 negende verdieping,146.375,144.91,147.84,2009-10-28 08:00:00,2010-03-23 17:00:00,,559972.226379395
325,1.15.1,pleisterwerken,6.375,5.1,7.65,2010-01-15 08:00:00,2010-01-21 17:00:00,,8611.6201171875
326,1.15.2,traceren plafond + boren ophangpunten,2.375,1.9,2.85,2009-10-28 08:00:00,2009-10-30 17:00:00,,39378.6015625
327,1.15.3,technieken in vals plafond,21.375,17.1,25.65,2009-11-10 08:00:00,2009-12-01 17:00:00,,88472.6171875
328,1.15.4,gk strook gevel structuur,2.375,1.9,2.85,2010-01-12 08:00:00,2010-01-14 17:00:00,,544.22998046875
329,1.15.5,structuur vp,5.375,4.3,6.45,2010-01-22 08:00:00,2010-01-27 17:00:00,,957.809997558594
330,1.15.6,vloergoten + verhoogde vloer + bekabeling,13.375,10.7,16.05,2010-02-02 08:00:00,2010-02-15 17:00:00,,84509.5
331,1.15.7,plaatsen convectoren,13.375,10.7,16.05,2010-01-22 08:00:00,2010-02-04 17:00:00,,187631.6875
332,1.15.8,uitplamuren kolommen,17.375,13.9,20.85,2009-12-18 08:00:00,2010-01-04 17:00:00,,4682.93017578125
333,1.15.9,metselwerken,15.375,12.3,18.45,2009-10-28 08:00:00,2009-11-12 17:00:00,,24999.80078125
334,1.15.10,sanitaire wanden,2.375,1.9,2.85,2009-12-07 08:00:00,2009-12-09 17:00:00,,37201.2890625
335,1.15.11,binnenwanden,5.375,4.3,6.45,2010-02-26 08:00:00,2010-03-03 17:00:00,,1037.39001464844
336,1.15.12,binnenschrijnwerk,3.375,2.7,4.05,2010-02-16 08:00:00,2010-02-19 17:00:00,,20841.16015625
337,1.15.13,dichtleggen vp + gkstrook,9.375,7.5,11.25,2010-02-16 08:00:00,2010-02-25 17:00:00,,11668.2099609375
338,1.15.14,schilderwerken,13.375,10.7,16.05,2010-02-26 08:00:00,2010-03-11 17:00:00,,15626.6103515625
339,1.15.15,tapijt,4.375,3.5,5.25,2010-03-12 08:00:00,2010-03-16 17:00:00,,11308.76953125
340,1.15.16,opkuis,6.375,5.1,7.65,2010-03-17 08:00:00,2010-03-23 17:00:00,,22500.0
451,1.16,300 tiende verdieping,146.375,144.91,147.84,2009-10-28 08:00:00,2010-03-23 17:00:00,,559972.226379395
341,1.16.1,pleisterwerken,6.375,5.1,7.65,2010-01-15 08:00:00,2010-01-21 17:00:00,,8611.6201171875
342,1.16.2,traceren plafond + boren ophangpunten,2.375,1.9,2.85,2009-10-28 08:00:00,2009-10-30 17:00:00,,39378.6015625
343,1.16.3,technieken in vals plafond,21.375,17.1,25.65,2009-11-10 08:00:00,2009-12-01 17:00:00,,88472.6171875
344,1.16.4,gk strook gevel structuur,2.375,1.9,2.85,2010-01-12 08:00:00,2010-01-14 17:00:00,,544.22998046875
345,1.16.5,structuur vp,5.375,4.3,6.45,2010-01-22 08:00:00,2010-01-27 17:00:00,,957.809997558594
346,1.16.6,vloergoten + verhoogde vloer + bekabeling,13.375,10.7,16.05,2010-02-02 08:00:00,2010-02-15 17:00:00,,84509.5
347,1.16.7,plaatsen convectoren,13.375,10.7,16.05,2010-01-22 08:00:00,2010-02-04 17:00:00,,187631.6875
348,1.16.8,uitplamuren kolommen,17.375,13.9,20.85,2009-12-18 08:00:00,2010-01-04 17:00:00,,4682.93017578125
349,1.16.9,metselwerken,15.375,12.3,18.45,2009-10-28 08:00:00,2009-11-12 17:00:00,,24999.80078125
350,1.16.10,binnenwanden,5.375,4.3,6.45,2010-02-26 08:00:00,2010-03-03 17:00:00,,1037.39001464844
351,1.16.11,sanitaire wanden,4.375,3.5,5.25,2009-12-10 08:00:00,2009-12-14 17:00:00,,37201.2890625
352,1.16.12,binnenschrijnwerk,3.375,2.7,4.05,2010-02-16 08:00:00,2010-02-19 17:00:00,,20841.16015625
353,1.16.13,dichtleggen vp + gkstrook,9.375,7.5,11.25,2010-02-16 08:00:00,2010-02-25 17:00:00,,11668.2099609375
354,1.16.14,schilderwerken,13.375,10.7,16.05,2010-02-26 08:00:00,2010-03-11 17:00:00,,15626.6103515625
355,1.16.15,tapijt,4.375,3.5,5.25,2010-03-12 08:00:00,2010-03-16 17:00:00,,11308.76953125
356,1.16.16,opkuis,6.375,5.1,7.65,2010-03-17 08:00:00,2010-03-23 17:00:00,,22500.0
452,1.17,310 elfde verdieping,130.375,129.07,131.68,2009-11-27 08:00:00,2010-04-06 17:00:00,,559972.226379395
357,1.17.1,pleisterwerken,6.375,5.1,7.65,2010-02-19 08:00:00,2010-02-25 17:00:00,,8611.6201171875
358,1.17.2,traceren plafond + boren ophangpunten,4.375,3.5,5.25,2009-11-27 08:00:00,2009-12-01 17:00:00,,39378.6015625
359,1.17.3,technieken in vals plafond,34.375,27.5,41.25,2009-12-02 08:00:00,2010-01-05 17:00:00,,88472.6171875
360,1.17.4,gk strook gevel structuur,2.375,1.9,2.85,2010-02-03 08:00:00,2010-02-05 17:00:00,,544.22998046875
361,1.17.5,structuur vp,3.375,2.7,4.05,2010-02-08 08:00:00,2010-02-11 17:00:00,,957.809997558594
362,1.17.6,vloergoten + verhoogde vloer + bekabeling,13.375,10.7,16.05,2010-02-12 08:00:00,2010-02-25 17:00:00,,84509.5
363,1.17.7,plaatsen convectoren,11.375,9.1,13.65,2010-02-08 08:00:00,2010-02-19 17:00:00,,187631.6875
364,1.17.8,uitplamuren kolommen,1.375,1.1,1.65,2010-01-05 08:00:00,2010-01-06 17:00:00,,4682.93017578125
365,1.17.9,metselwerken,13.375,10.7,16.05,2009-11-27 08:00:00,2009-12-10 17:00:00,,24999.80078125
366,1.17.10,sanitaire wanden,2.375,1.9,2.85,2009-12-15 08:00:00,2009-12-17 17:00:00,,37201.2890625
367,1.17.11,binnenwanden,5.375,4.3,6.45,2010-03-10 08:00:00,2010-03-15 17:00:00,,1037.39001464844
368,1.17.12,binnenschrijnwerk,5.375,4.3,6.45,2010-02-26 08:00:00,2010-03-03 17:00:00,,20841.16015625
369,1.17.13,dichtleggen vp + gkstrook,11.375,9.1,13.65,2010-02-26 08:00:00,2010-03-09 17:00:00,,11668.2099609375
370,1.17.14,schilderwerken,13.375,10.7,16.05,2010-03-12 08:00:00,2010-03-25 17:00:00,,15626.6103515625
371,1.17.15,tapijt,4.375,3.5,5.25,2010-03-26 08:00:00,2010-03-30 17:00:00,,11308.76953125
372,1.17.16,opkuis,6.375,5.1,7.65,2010-03-31 08:00:00,2010-04-06 17:00:00,,22500.0
453,1.18,320 twaalfde verdieping,130.375,129.07,131.68,2009-11-27 08:00:00,2010-04-06 17:00:00,,559972.226379395
373,1.18.1,pleisterwerken,6.375,5.1,7.65,2010-02-19 08:00:00,2010-02-25 17:00:00,,8611.6201171875
374,1.18.2,traceren plafond + boren ophangpunten,4.375,3.5,5.25,2009-11-27 08:00:00,2009-12-01 17:00:00,,39378.6015625
375,1.18.3,technieken in vals plafond,34.375,27.5,41.25,2009-12-02 08:00:00,2010-01-05 17:00:00,,88472.6171875
376,1.18.4,gk strook gevel structuur,2.375,1.9,2.85,2010-02-03 08:00:00,2010-02-05 17:00:00,,544.22998046875
377,1.18.5,structuur vp,3.375,2.7,4.05,2010-02-08 08:00:00,2010-02-11 17:00:00,,957.809997558594
378,1.18.6,vloergoten + verhoogde vloer + bekabeling,13.375,10.7,16.05,2010-02-12 08:00:00,2010-02-25 17:00:00,,84509.5
379,1.18.7,plaatsen convectoren,11.375,9.1,13.65,2010-02-08 08:00:00,2010-02-19 17:00:00,,187631.6875
380,1.18.8,uitplamuren kolommen,1.375,1.1,1.65,2010-01-05 08:00:00,2010-01-06 17:00:00,,4682.93017578125
381,1.18.9,metselwerken,13.375,10.7,16.05,2009-11-27 08:00:00,2009-12-10 17:00:00,,24999.80078125
382,1.18.10,binnenwanden,5.375,4.3,6.45,2010-03-10 08:00:00,2010-03-15 17:00:00,,1037.39001464844
383,1.18.11,sanitaire wanden,18.375,14.7,22.05,2009-12-18 08:00:00,2010-01-05 17:00:00,,37201.2890625
384,1.18.12,binnenschrijnwerk,5.375,4.3,6.45,2010-02-26 08:00:00,2010-03-03 17:00:00,,20841.16015625
385,1.18.13,dichtleggen vp + gkstrook,11.375,9.1,13.65,2010-02-26 08:00:00,2010-03-09 17:00:00,,11668.2099609375
386,1.18.14,schilderwerken,13.375,10.7,16.05,2010-03-12 08:00:00,2010-03-25 17:00:00,,15626.6103515625
387,1.18.15,tapijt,4.375,3.5,5.25,2010-03-26 08:00:00,2010-03-30 17:00:00,,11308.76953125
388,1.18.16,opkuis,6.375,5.1,7.65,2010-03-31 08:00:00,2010-04-06 17:00:00,,22500.0
454,1.19,330 dertiende verdieping,187.375,185.5,189.25,2009-12-02 08:00:00,2010-06-07 17:00:00,,559973.226379395
389,1.19.1,pleisterwerken,6.375,5.1,7.65,2010-03-05 08:00:00,2010-03-11 17:00:00,,8611.6201171875
390,1.19.2,traceren plafond + boren ophangpunten,2.375,1.9,2.85,2009-12-02 08:00:00,2009-12-04 17:00:00,,39378.6015625
391,1.19.3,technieken in vals plafond,34.375,27.5,41.25,2009-12-16 08:00:00,2010-01-19 17:00:00,,88472.6171875
392,1.19.4,gk strook gevel structuur,4.375,3.5,5.25,2010-03-18 08:00:00,2010-03-22 17:00:00,,544.22998046875
393,1.19.5,structuur vp,3.375,2.7,4.05,2010-03-23 08:00:00,2010-03-26 17:00:00,,957.809997558594
394,1.19.6,vloergoten + verhoogde vloer + bekabeling,11.375,9.1,13.65,2010-03-29 08:00:00,2010-04-09 17:00:00,,84509.5
395,1.19.7,plaatsen convectoren,13.375,10.7,16.05,2010-03-23 08:00:00,2010-04-05 17:00:00,,187631.6875
396,1.19.8,uitplamuren kolommen,1.375,1.1,1.65,2010-01-07 08:00:00,2010-01-08 17:00:00,,4682.93017578125
397,1.19.9,metselwerken,13.375,10.7,16.05,2009-12-02 08:00:00,2009-12-15 17:00:00,,24999.80078125
398,1.19.10,sanitaire wanden,2.375,1.9,2.85,2010-01-06 08:00:00,2010-01-08 17:00:00,,37201.2890625
399,1.19.11,binnenwanden,3.375,2.7,4.05,2010-04-26 08:00:00,2010-04-29 17:00:00,,1037.39001464844
400,1.19.12,binnenschrijnwerk,5.375,4.3,6.45,2010-04-14 08:00:00,2010-04-19 17:00:00,,20841.16015625
401,1.19.13,dichtleggen vp + gkstrook,9.375,7.5,11.25,2010-04-14 08:00:00,2010-04-23 17:00:00,,11668.2099609375
402,1.19.14,schilderwerken,11.375,9.1,13.65,2010-04-26 08:00:00,2010-05-07 17:00:00,,15626.6103515625
403,1.19.15,tapijt,2.375,1.9,2.85,2010-05-10 08:00:00,2010-05-12 17:00:00,,11308.76953125
404,1.19.16,verhoorkamer,18.375,14.7,22.05,2010-05-13 08:00:00,2010-05-31 17:00:00,,1.0
405,1.19.17,opkuis,6.375,5.1,7.65,2010-06-01 08:00:00,2010-06-07 17:00:00,,22500.0
455,1.20,340 veertiende verdieping,148.0,146.52,149.48,2009-12-15 17:00:00,2010-05-12 17:00:00,,322737.528320312
406,1.20.1,vlottende vloeren,20.375,16.3,24.45,2010-01-08 08:00:00,2010-01-28 17:00:00,,68850.0
407,1.20.2,polybetons,6.375,5.1,7.65,2010-01-29 08:00:00,2010-02-04 17:00:00,,64694.3984375
408,1.20.3,machines techn. Ruimtes,13.375,10.7,16.05,2010-02-05 08:00:00,2010-02-18 17:00:00,,52474.05078125
409,1.20.4,cv operationeel,0.0,0.0,0.0,2009-12-15 17:00:00,2009-12-15 17:00:00,,0.0
410,1.20.5,metselwerken,13.375,10.7,16.05,2010-02-19 08:00:00,2010-03-04 17:00:00,,24999.80078125
411,1.20.6,technieken aansluiten,62.375,49.9,74.85,2010-02-19 08:00:00,2010-04-22 17:00:00,,75251.5078125
412,1.20.7,binnenschrijnwerk,5.375,4.3,6.45,2010-04-23 08:00:00,2010-04-28 17:00:00,,20841.16015625
413,1.20.8,schilderwerken,13.375,10.7,16.05,2010-04-29 08:00:00,2010-05-12 17:00:00,,15626.6103515625
469,1.21,buitenaanleg,69.375,55.5,83.25,2010-02-26 08:00:00,2010-05-06 17:00:00,,194720.828125
474,1.22,testen en opleveringen,98.375,97.39,99.36,2010-02-17 08:00:00,2010-05-26 17:00:00,,422387.0078125
470,1.22.1,afregelen niveaus faze 1 tem +6,27.375,21.9,32.85,2010-02-17 08:00:00,2010-03-16 17:00:00,,99385.1796875
471,1.22.2,opleveringen faze 1,27.375,21.9,32.85,2010-03-03 08:00:00,2010-03-30 17:00:00,,99385.1796875
472,1.22.3,afregelen niveaus faze +2,27.375,21.9,32.85,2010-04-15 08:00:00,2010-05-12 17:00:00,,99385.1796875
473,1.22.4,opleveringen faze 2,34.375,27.5,41.25,2010-04-22 08:00:00,2010-05-26 17:00:00,,124231.46875
