node_id,wbs,task_name,duration,optimistic_time,pessimistic_time,baseline_start,baseline_end,resource_demand,total_cost
0,1.0,Urban Development Project,448.375,443.89,452.86,2007-12-07 08:00:00,2009-02-27 17:00:00,,1537398.51473999
62,1.1,Werfinrichting,0.375,0.3,0.45,2007-12-07 08:00:00,2007-12-07 17:00:00,,136108.0
63,1.2,Grondwerken,4.375,3.5,5.25,2007-12-17 08:00:00,2007-12-21 17:00:00,,2692.30004882813
64,1.3,Funderingen,18.375,14.7,22.05,2008-01-07 08:00:00,2008-01-25 17:00:00,,72594.4296875
65,1.4,Wanden op V0,25.375,20.3,30.45,2008-01-21 08:00:00,2008-02-15 17:00:00,,55480.98046875
66,1.5,Afdekking V0,18.375,14.7,22.05,2008-02-11 08:00:00,2008-02-29 17:00:00,,46319.7109375
67,1.6,Wanden op V1,25.375,20.3,30.45,2008-02-25 08:00:00,2008-03-21 17:00:00,,55480.98046875
68,1.7,Afdekking V1,11.375,9.1,13.65,2008-03-17 08:00:00,2008-03-28 17:00:00,,30879.810546875
69,1.8,Wanden op V2,11.375,9.1,13.65,2008-03-31 08:00:00,2008-04-11 17:00:00,,27740.490234375
1,1.9,Afdekking V2,4.375,3.5,5.25,2008-04-21 08:00:00,2008-04-25 17:00:00,,23742.419921875
2,1.1,Gevelmetselwerk,46.375,37.1,55.65,2008-04-21 08:00:00,2008-06-06 17:00:00,,128627.4375
3,1.11,Voegwerk,25.375,20.3,30.45,2008-05-26 08:00:00,2008-06-20 17:00:00,,3583.3701171875
4,1.12,Opmeten dorpels,0.375,0.3,0.45,2008-06-02 08:00:00,2008-06-02 17:00:00,,382.029998779297
5,1.13,Plaatsen dorpels,4.375,3.5,5.25,2008-06-09 08:00:00,2008-06-13 17:00:00,,1910.15002441406
6,1.14,Plaatsen bordessen + prefabtrappen,4.375,3.5,5.25,2008-06-02 08:00:00,2008-06-06 17:00:00,,26966.619140625
7,1.15,Plaatsen RW afvoerbuizen + voorlopige aansluiting,4.375,3.5,5.25,2008-05-26 08:00:00,2008-05-30 17:00:00,,17353.25
8,1.16,Dakopstanden,25.375,20.3,30.45,2008-04-28 08:00:00,2008-05-23 17:00:00,,33210.078125
9,1.17,Technieken / leidingen in dak,43.375,34.7,52.05,2008-05-26 08:00:00,2008-07-08 17:00:00,,10512.2001953125
10,1.18,Schuimbeton,27.375,21.9,32.85,2008-07-09 08:00:00,2008-08-05 17:00:00,,1379.7900390625
11,1.19,Isolatie + roofing platte daken,27.375,21.9,32.85,2008-08-06 08:00:00,2008-09-02 17:00:00,,64503.3515625
12,1.2,Opmeten ramen en deuren,0.375,0.3,0.45,2008-06-09 08:00:00,2008-06-09 17:00:00,,23772.30078125
13,1.21,Plaatsen ramen en deuren,4.375,3.5,5.25,2008-06-16 08:00:00,2008-06-20 17:00:00,,118861.5234375
14,1.22,Plaatsen gipsblokken_blok 1,6.375,5.1,7.65,2008-09-03 08:00:00,2008-09-09 17:00:00,,10562.099609375
15,1.23,Plaatsen gipsblokken_blok 2,6.375,5.1,7.65,2008-09-10 08:00:00,2008-09-16 17:00:00,,10562.099609375
16,1.24,Plaatsen gipsblokken_blok 3,6.375,5.1,7.65,2008-09-17 08:00:00,2008-09-23 17:00:00,,10562.099609375
17,1.25,Plaatsen gipsblokken_blok 4,6.375,5.1,7.65,2008-09-24 08:00:00,2008-09-30 17:00:00,,10562.099609375
18,1.26,Voorbereidingen elektriciteit / sanitair / HVAC_blok 1,6.375,5.1,7.65,2008-09-10 08:00:00,2008-09-16 17:00:00,,22595.099609375
19,1.27,Voorbereidingen elektriciteit / sanitair / HVAC_blok 2,6.375,5.1,7.65,2008-09-17 08:00:00,2008-09-23 17:00:00,,22595.099609375
20,1.28,Voorbereidingen elektriciteit / sanitair / HVAC_blok 3,6.375,5.1,7.65,2008-09-24 08:00:00,2008-09-30 17:00:00,,22595.099609375
21,1.29,Voorbereidingen elektriciteit / sanitair / HVAC_blok 4,6.375,5.1,7.65,2008-10-01 08:00:00,2008-10-07 17:00:00,,22595.099609375
22,1.3,Plaatsen elektriciteit / sanitair / HVAC_blok 1,13.375,10.7,16.05,2008-09-17 08:00:00,2008-09-30 17:00:00,,45190.19921875
23,1.31,Plaatsen elektriciteit / sanitair / HVAC_blok 2,13.375,10.7,16.05,2008-10-01 08:00:00,2008-10-14 17:00:00,,45190.19921875
24,1.32,Plaatsen elektriciteit / sanitair / HVAC_blok 3,20.375,16.3,24.45,2008-10-15 08:00:00,2008-11-04 17:00:00,,45190.19921875
25,1.33,Plaatsen elektriciteit / sanitair / HVAC_blok 4,13.375,10.7,16.05,2008-11-05 08:00:00,2008-11-18 17:00:00,,45190.19921875
26,1.34,Opmeten keukens_blok 1,0.375,0.3,0.45,2008-10-01 08:00:00,2008-10-01 17:00:00,,1517.39001464844
27,1.35,Opmeten keukens_blok 2,0.375,0.3,0.45,2008-10-15 08:00:00,2008-10-15 17:00:00,,1517.39001464844
28,1.36,Opmeten keukens_blok 3,0.375,0.3,0.45,2008-11-05 08:00:00,2008-11-05 17:00:00,,1517.39001464844
29,1.37,Opmeten keukens_blok 4,0.375,0.3,0.45,2008-11-19 08:00:00,2008-11-19 17:00:00,,1517.39001464844
30,1.38,Pleisterwerken_blok 1,7.375,5.9,8.85,2008-10-01 08:00:00,2008-10-08 17:00:00,,13287.2802734375
31,1.39,Pleisterwerken_blok 2,7.375,5.9,8.85,2008-10-15 08:00:00,2008-10-22 17:00:00,,13287.2802734375
32,1.4,Pleisterwerken_blok 3,7.375,5.9,8.85,2008-11-05 08:00:00,2008-11-12 17:00:00,,13287.2802734375
33,1.41,Pleisterwerken_blok 4,7.375,5.9,8.85,2008-11-19 08:00:00,2008-11-26 17:00:00,,13287.2802734375
34,1.42,Schuimbeton_blok 1,4.16666666666667,3.33,5.0,2008-10-09 08:00:00,2008-10-13 12:00:00,,689.890014648438
35,1.43,Schuimbeton_blok 2,11.1666666666667,8.93,13.4,2008-10-23 08:00:00,2008-11-03 12:00:00,,689.890014648438
36,1.44,Schuimbeton_blok 3,4.16666666666667,3.33,5.0,2008-11-13 08:00:00,2008-11-17 12:00:00,,689.890014648438
37,1.45,Schuimbeton_blok 4,4.16666666666667,3.33,5.0,2008-11-27 08:00:00,2008-12-01 12:00:00,,689.890014648438
38,1.46,Chape_blok 1,2.16666666666667,1.73,2.6,2008-10-13 13:00:00,2008-10-15 17:00:00,,3740.669921875
39,1.47,Chape_blok 2,2.16666666666667,1.73,2.6,2008-11-03 13:00:00,2008-11-05 17:00:00,,3740.669921875
40,1.48,Chape_blok 3,2.16666666666667,1.73,2.6,2008-11-17 13:00:00,2008-11-19 17:00:00,,3740.669921875
41,1.49,Chape_blok 4,2.16666666666667,1.73,2.6,2008-12-01 13:00:00,2008-12-03 17:00:00,,3740.669921875
42,1.5,Opmeten binnendeuren_blok 1,0.375,0.3,0.45,2008-10-16 08:00:00,2008-10-16 17:00:00,,877.830017089844
43,1.51,Opmeten binnendeuren_blok 2,0.375,0.3,0.45,2008-11-06 08:00:00,2008-11-06 17:00:00,,877.830017089844
44,1.52,Opmeten binnendeuren_blok 3,0.375,0.3,0.45,2008-11-20 08:00:00,2008-11-20 17:00:00,,877.830017089844
45,1.53,Opmeten binnendeuren_blok 4,0.375,0.3,0.45,2008-12-04 08:00:00,2008-12-04 17:00:00,,877.830017089844
46,1.54,Vloerafwerking_blok 1,18.1666666666667,14.53,21.8,2008-10-16 08:00:00,2008-11-03 12:00:00,,22771.26953125
47,1.55,Vloerafwerking_blok 2,8.375,6.7,10.05,2008-11-06 08:00:00,2008-11-14 17:00:00,,22771.26953125
48,1.56,Vloerafwerking_blok 3,8.375,6.7,10.05,2008-11-20 08:00:00,2008-11-28 17:00:00,,22771.26953125
49,1.57,Vloerafwerking_blok 4,8.375,6.7,10.05,2008-12-04 08:00:00,2008-12-12 17:00:00,,22771.26953125
50,1.58,Plaatsen badkamers_blok 1,13.375,10.7,16.05,2008-11-06 08:00:00,2008-11-19 17:00:00,,755.039978027344
51,1.59,Plaatsen badkamers_blok 2,11.375,9.1,13.65,2008-11-17 08:00:00,2008-11-28 17:00:00,,755.039978027344
52,1.6,Plaatsen badkamers_blok 3,13.375,10.7,16.05,2008-12-04 08:00:00,2008-12-17 17:00:00,,755.039978027344
53,1.61,Plaatsen badkamers_blok 4,25.375,20.3,30.45,2008-12-15 08:00:00,2009-01-09 17:00:00,,755.039978027344
54,1.62,Plaatsen keukens_blok 1,20.375,16.3,24.45,2008-10-16 08:00:00,2008-11-05 17:00:00,,15173.8603515625
55,1.63,Plaatsen keukens_blok 2,13.375,10.7,16.05,2008-11-06 08:00:00,2008-11-19 17:00:00,,15173.8603515625
56,1.64,Plaatsen keukens_blok 3,13.375,10.7,16.05,2008-11-20 08:00:00,2008-12-03 17:00:00,,15173.8603515625
57,1.65,Plaatsen keukens_blok 4,13.375,10.7,16.05,2008-12-04 08:00:00,2008-12-17 17:00:00,,15173.8603515625
58,1.66,Plaatsen binnendeuren_blok 1,6.375,5.1,7.65,2008-11-04 08:00:00,2008-11-10 17:00:00,,4389.1298828125
59,1.67,Plaatsen binnendeuren_blok 2,4.375,3.5,5.25,2008-11-17 08:00:00,2008-11-21 17:00:00,,4389.1298828125
60,1.68,Plaatsen binnendeuren_blok 3,4.375,3.5,5.25,2008-12-01 08:00:00,2008-12-05 17:00:00,,4389.1298828125
61,1.69,Plaatsen binnendeuren_blok 4,4.375,3.5,5.25,2008-12-15 08:00:00,2008-12-19 17:00:00,,4389.1298828125
70,1.7,Schilderwerken,39.375,31.5,47.25,2009-01-05 08:00:00,2009-02-13 17:00:00,,29804.9296875
71,1.71,Opkuis,11.375,9.1,13.65,2009-02-16 08:00:00,2009-02-27 17:00:00,,59293.328125
