node_id,wbs,task_name,duration,optimistic_time,pessimistic_time,baseline_start,baseline_end,resource_demand,total_cost
0,1,Railway Station (2),493.375,488.44,498.31,2012-11-05 08:00:00,2014-03-13 17:00:00,,1457423.99897803
13,1.1,voorbereidende werken,39.375,38.98,39.77,2012-11-05 08:00:00,2012-12-14 17:00:00,,155859.599374995
1,1.1.1,beschoeide sleuf,14.375,11.5,17.25,2012-11-05 08:00:00,2012-11-19 17:00:00,,23171.2797851563
2,1.1.2,funderingen voor tijdelijke structuur bovenleidingen,11.375,9.1,13.65,2012-11-08 08:00:00,2012-11-19 17:00:00,,16851.83984375
3,1.1.3,tijdelijke structuur overname bovenleiding,10.375,8.3,12.45,2012-11-09 08:00:00,2012-11-19 17:00:00,,14745.3598632813
4,1.1.4,aanpassing doorgang mindervaliden perron A,8.375,6.7,10.05,2012-11-12 08:00:00,2012-11-20 17:00:00,,14745.3598632813
5,1.1.5,overdracht spoor D,0.375,0.3,0.45,2012-11-09 08:00:00,2012-11-09 17:00:00,,2106.47998046875
6,1.1.6,plaatsing oranje veiligheidsnet,7.375,5.9,8.85,2012-11-12 08:00:00,2012-11-19 17:00:00,,12638.8798828125
7,1.1.7,aanpassing signalisatie perron A,11.375,9.1,13.65,2012-11-26 08:00:00,2012-12-07 17:00:00,,21064.7998046875
8,1.1.8,opritten toegang spoorniveau,15.375,12.3,18.45,2012-11-26 08:00:00,2012-12-11 17:00:00,,25257.6005859375
9,1.1.9,Afsluiting zone werf (perron A),15.375,12.3,18.45,2012-11-29 08:00:00,2012-12-14 17:00:00,,25277.759765625
10,1.1.10,nieuwe verlichting perron A,0.375,0.3,0.45,2012-11-05 08:00:00,2012-11-05 17:00:00,,0.0799999982118606
11,1.1.11,Fundering voor torenkraan,0.375,0.3,0.45,2012-11-05 08:00:00,2012-11-05 17:00:00,,0.0799999982118606
12,1.1.12,Installatie torenkraan,0.375,0.3,0.45,2012-11-05 08:00:00,2012-11-05 17:00:00,,0.0799999982118606
65,1.2,Grondwerken,214.375,212.23,216.52,2012-11-05 08:00:00,2013-06-07 17:00:00,,69219.9191955477
24,1.2.1,Zone 1,113.375,112.24,114.51,2012-11-05 08:00:00,2013-02-26 17:00:00,,12281.5998516828
14,1.2.1.1,opbraakwerken perron,15.375,12.3,18.45,2012-12-03 08:00:00,2012-12-18 17:00:00,,587.519989013672
15,1.2.1.2,beschoeiing,38.375,30.7,46.05,2012-12-10 08:00:00,2013-01-17 17:00:00,,3343.11996459961
16,1.2.1.3,afbraakwerken luifel,31.375,25.1,37.65,2012-12-14 08:00:00,2013-01-14 17:00:00,,1077.1199798584
17,1.2.1.4,beschoeiing,24.375,19.5,29.25,2013-01-07 08:00:00,2013-01-31 17:00:00,,2190.31997680664
18,1.2.1.5,grondwerken,13.375,10.7,16.05,2013-01-18 08:00:00,2013-01-31 17:00:00,,1152.79998779297
19,1.2.1.6,verankering beschoeiing,5.375,4.3,6.45,2013-01-24 08:00:00,2013-01-29 17:00:00,,461.119995117187
20,1.2.1.7,grondwerken,15.375,12.3,18.45,2013-01-28 08:00:00,2013-02-12 17:00:00,,1383.35998535156
21,1.2.1.8,aanpassing oprit toegang naar spoor,16.375,13.1,19.65,2013-02-05 08:00:00,2013-02-21 17:00:00,,1498.63998413086
22,1.2.1.9,afbraak wegtunnel,15.375,12.3,18.45,2013-02-11 08:00:00,2013-02-26 17:00:00,,587.519989013672
23,1.2.1.10,afbraak wegtunnel,0.375,0.3,0.45,2012-11-05 08:00:00,2012-11-05 17:00:00,,0.0799999982118606
41,1.2.2,Zone 2,214.375,212.23,216.52,2012-11-05 08:00:00,2013-06-07 17:00:00,,39355.0395642072
25,1.2.2.1,beschoeide sleuf,23.375,18.7,28.05,2012-11-13 08:00:00,2012-12-06 17:00:00,,2075.03997802734
26,1.2.2.2,opbraakwerken perron,38.375,30.7,46.05,2012-12-11 08:00:00,2013-01-18 17:00:00,,1419.83997344971
27,1.2.2.3,afbraakwerken luifel,24.375,19.5,29.25,2013-01-07 08:00:00,2013-01-31 17:00:00,,930.23998260498
28,1.2.2.4,beschoeide sleuf,38.375,30.7,46.05,2012-12-03 08:00:00,2013-01-10 17:00:00,,3343.11996459961
29,1.2.2.5,grondwerken perron op volle grond,48.375,38.7,58.05,2012-12-11 08:00:00,2013-01-28 17:00:00,,4034.79995727539
30,1.2.2.6,eerste wand koker in perron op volle grond,56.375,45.1,67.65,2012-12-20 08:00:00,2013-02-14 17:00:00,,4726.47994995117
31,1.2.2.7,beschoeiiing funderingen palen bovenleiding,17.375,13.9,20.85,2013-01-11 08:00:00,2013-01-28 17:00:00,,1383.35998535156
32,1.2.2.8,funderingsmassieven in perron,34.375,27.5,41.25,2013-01-29 08:00:00,2013-03-04 17:00:00,,2881.99996948242
33,1.2.2.9,perron volle grond,59.375,47.5,71.25,2013-02-15 08:00:00,2013-04-15 17:00:00,,4841.75994873047
34,1.2.2.10,eerste wand koker in perron volle grond,38.375,30.7,46.05,2013-03-22 08:00:00,2013-04-29 17:00:00,,3112.55996704101
35,1.2.2.11,perron volle grond,50.375,40.3,60.45,2013-04-18 08:00:00,2013-06-07 17:00:00,,4265.35995483398
36,1.2.2.12,beschoeiing,25.375,20.3,30.45,2013-01-18 08:00:00,2013-02-12 17:00:00,,2075.03997802734
37,1.2.2.13,grondwerken,16.375,13.1,19.65,2013-02-05 08:00:00,2013-02-21 17:00:00,,1498.63998413086
38,1.2.2.14,verankering beschoeiing,7.375,5.9,8.85,2013-02-11 08:00:00,2013-02-18 17:00:00,,691.679992675781
39,1.2.2.15,grondwerken,25.375,20.3,30.45,2013-02-14 08:00:00,2013-03-11 17:00:00,,2075.03997802734
40,1.2.2.16,Afbraakwerken wegtunnel,0.375,0.3,0.45,2012-11-05 08:00:00,2012-11-05 17:00:00,,0.0799999982118606
50,1.2.3,Zone 3,95.375,94.42,96.33,2012-12-21 08:00:00,2013-03-26 17:00:00,,6402.23991394043
42,1.2.3.1,Opbraakwerken perron,31.375,25.1,37.65,2012-12-21 08:00:00,2013-01-21 17:00:00,,1077.1199798584
43,1.2.3.2,afbraakwerken luifel,15.375,12.3,18.45,2013-01-17 08:00:00,2013-02-01 17:00:00,,587.519989013672
44,1.2.3.3,Afbraakwerken reizigerstunnel,3.375,2.7,4.05,2013-02-18 08:00:00,2013-02-21 17:00:00,,195.839996337891
45,1.2.3.4,Voorlopige trap toegang perron A,15.375,12.3,18.45,2013-02-18 08:00:00,2013-03-05 17:00:00,,1383.35998535156
46,1.2.3.5,Afbraakwerken reizigerstunnel,3.375,2.7,4.05,2013-03-04 08:00:00,2013-03-07 17:00:00,,195.839996337891
47,1.2.3.6,Voorlopige toegang perron A,15.375,12.3,18.45,2013-03-04 08:00:00,2013-03-19 17:00:00,,1383.35998535156
48,1.2.3.7,Afbraakwerken reizigerstunnel,3.375,2.7,4.05,2013-03-11 08:00:00,2013-03-14 17:00:00,,195.839996337891
49,1.2.3.8,grondwerken onder reizigerstunnel,15.375,12.3,18.45,2013-03-11 08:00:00,2013-03-26 17:00:00,,1383.35998535156
64,1.2.4,Zone 4,149.375,147.88,150.87,2012-11-05 08:00:00,2013-04-03 17:00:00,,11181.0398657173
51,1.2.4.1,opbraakwerken perron,25.375,20.3,30.45,2013-01-11 08:00:00,2013-02-05 17:00:00,,881.279983520508
52,1.2.4.2,afbraakwerken luifel,15.375,12.3,18.45,2013-01-24 08:00:00,2013-02-08 17:00:00,,587.519989013672
53,1.2.4.3,beschoeiing luifel,34.375,27.5,41.25,2013-02-01 08:00:00,2013-03-07 17:00:00,,2881.99996948242
54,1.2.4.4,grondwerken,16.375,13.1,19.65,2013-02-19 08:00:00,2013-03-07 17:00:00,,1498.63998413086
55,1.2.4.5,verankering beschoeiing,4.375,3.5,5.25,2013-02-25 08:00:00,2013-03-01 17:00:00,,576.399993896484
56,1.2.4.6,grondwerken tussen reizigers/dienst tunnel,15.375,12.3,18.45,2013-02-28 08:00:00,2013-03-15 17:00:00,,1383.35998535156
57,1.2.4.7,grondwerken tussen dienst/tram tunnel,15.375,12.3,18.45,2013-03-07 08:00:00,2013-03-22 17:00:00,,1383.35998535156
58,1.2.4.8,afbraakwerken diensttunnel,6.375,5.1,7.65,2013-03-15 08:00:00,2013-03-21 17:00:00,,244.799995422363
59,1.2.4.9,afbraakwerken tramtunnel,4.375,3.5,5.25,2013-03-18 08:00:00,2013-03-22 17:00:00,,244.799995422363
60,1.2.4.10,voorlopige toegang perron A,16.375,13.1,19.65,2013-03-18 08:00:00,2013-04-03 17:00:00,,1498.63998413086
61,1.2.4.11,beschoeiing aansluitend diensttunnel,0.375,0.3,0.45,2012-11-05 08:00:00,2012-11-05 17:00:00,,0.0799999982118606
62,1.2.4.12,Afbraakwerken wand en vloerplaat tramtunnel,0.375,0.3,0.45,2012-11-05 08:00:00,2012-11-05 17:00:00,,0.0799999982118606
63,1.2.4.13,Afbraakwerken wand en vloerplaat tramtunnel,0.375,0.3,0.45,2012-11-05 08:00:00,2012-11-05 17:00:00,,0.0799999982118606
89,1.3,Funderingen,151.083333333333,149.57,152.59,2013-01-28 08:00:00,2013-06-28 10:00:00,,29034.7197418213
70,1.3.1,Zone 1,70.375,69.67,71.08,2013-02-07 08:00:00,2013-04-18 17:00:00,,5971.67994689941
66,1.3.1.1,Diepe funderingen,25.375,20.3,30.45,2013-02-07 08:00:00,2013-03-04 17:00:00,,1235.51998901367
67,1.3.1.2,Funderingsmassieven,36.375,29.1,43.65,2013-02-14 08:00:00,2013-03-22 17:00:00,,1853.27998352051
68,1.3.1.3,Diepe funderingen,22.375,17.9,26.85,2013-03-07 08:00:00,2013-03-29 17:00:00,,1166.87998962402
69,1.3.1.4,Funderingsmassieven,34.375,27.5,41.25,2013-03-15 08:00:00,2013-04-18 17:00:00,,1715.99998474121
81,1.3.2,Zone 2,151.083333333333,149.57,152.59,2013-01-28 08:00:00,2013-06-28 10:00:00,,13522.0798797607
71,1.3.2.1,VP GV onder lichtstraat,24.375,19.5,29.25,2013-01-28 08:00:00,2013-02-21 17:00:00,,1304.15998840332
72,1.3.2.2,VP GV onder lichtstraat (deel 2),25.375,20.3,30.45,2013-02-15 08:00:00,2013-03-12 17:00:00,,1235.51998901367
73,1.3.2.3,VP GV onder lichtstraat (deel 3),25.375,20.3,30.45,2013-03-01 08:00:00,2013-03-26 17:00:00,,1235.51998901367
74,1.3.2.4,VP GV onder lichtstraat (deel 4),34.375,27.5,41.25,2013-03-05 08:00:00,2013-04-08 17:00:00,,1715.99998474121
75,1.3.2.5,Installaties voor baretten,7.375,5.9,8.85,2013-02-19 08:00:00,2013-02-26 17:00:00,,411.83999633789
76,1.3.2.6,Baretten,35.375,28.3,42.45,2013-02-28 08:00:00,2013-04-04 17:00:00,,1784.63998413086
77,1.3.2.7,VP op stross 1,39.375,31.5,47.25,2013-04-04 08:00:00,2013-05-13 17:00:00,,1921.91998291016
78,1.3.2.8,VP op stross 2,24.0,19.2,28.8,2013-04-30 10:00:00,2013-05-24 10:00:00,,1235.51998901367
79,1.3.2.9,VP op stross 3,28.0,22.4,33.6,2013-05-15 10:00:00,2013-06-12 10:00:00,,1372.79998779297
80,1.3.2.10,VP op stross 4,25.0,20.0,30.0,2013-06-03 10:00:00,2013-06-28 10:00:00,,1304.15998840332
88,1.3.3,Zone 3,82.375,81.55,83.2,2013-03-21 08:00:00,2013-06-11 17:00:00,,9540.95991516113
82,1.3.3.1,VP GV onder lichtstraat (deel 5),22.375,17.9,26.85,2013-03-26 08:00:00,2013-04-17 17:00:00,,1166.87998962402
83,1.3.3.2,VP GV onder lichtstraat (deel 6),34.375,27.5,41.25,2013-03-29 08:00:00,2013-05-02 17:00:00,,1715.99998474121
84,1.3.3.3,Baretten,29.375,23.5,35.25,2013-03-21 08:00:00,2013-04-19 17:00:00,,1510.07998657226
85,1.3.3.4,VP op stross 5,40.375,32.3,48.45,2013-04-24 08:00:00,2013-06-03 17:00:00,,1990.5599822998
86,1.3.3.5,VP op stross 6,23.375,18.7,28.05,2013-04-24 08:00:00,2013-05-17 17:00:00,,1235.51998901367
87,1.3.3.6,VP op stross 7,39.375,31.5,47.25,2013-05-03 08:00:00,2013-06-11 17:00:00,,1921.91998291016
160,1.4,Superstructuur,332.375,329.05,335.7,2012-11-05 08:00:00,2013-10-03 17:00:00,,130823.193422795
106,1.4.1,Zone 1,228.375,226.09,230.66,2012-11-05 08:00:00,2013-06-21 17:00:00,,35109.3582348526
90,1.4.1.1,Brugligger 1,42.375,33.9,50.85,2013-02-26 08:00:00,2013-04-09 17:00:00,,4516.07977294923
91,1.4.1.2,Brugligger 2,34.375,27.5,41.25,2013-03-08 08:00:00,2013-04-11 17:00:00,,3641.99981689454
92,1.4.1.3,Brugligger 3,34.375,27.5,41.25,2013-03-08 08:00:00,2013-04-11 17:00:00,,3641.99981689454
93,1.4.1.4,Brugligger 4,35.375,28.3,42.45,2013-04-09 08:00:00,2013-05-14 17:00:00,,3787.67980957032
94,1.4.1.5,Brugligger 5,35.375,28.3,42.45,2013-04-09 08:00:00,2013-05-14 17:00:00,,3787.67980957032
95,1.4.1.6,Beton structuur 1,28.375,22.7,34.05,2013-04-09 08:00:00,2013-05-07 17:00:00,,3059.27984619141
96,1.4.1.7,Beton structuur 2,28.375,22.7,34.05,2013-04-09 08:00:00,2013-05-07 17:00:00,,3059.27984619141
97,1.4.1.8,Beton structuur 3,30.375,24.3,36.45,2013-05-08 08:00:00,2013-06-07 17:00:00,,3350.63983154298
98,1.4.1.9,Beton structuur 4,30.375,24.3,36.45,2013-05-08 08:00:00,2013-06-07 17:00:00,,3350.63983154298
99,1.4.1.10,Beton structuur 5,25.375,20.3,30.45,2013-05-27 08:00:00,2013-06-21 17:00:00,,2913.59985351563
100,1.4.1.11,K1,0.375,0.3,0.45,2012-11-05 08:00:00,2012-11-05 17:00:00,,0.0799999982118606
101,1.4.1.12,K2,0.375,0.3,0.45,2012-11-05 08:00:00,2012-11-05 17:00:00,,0.0799999982118606
102,1.4.1.13,K3,0.375,0.3,0.45,2012-11-05 08:00:00,2012-11-05 17:00:00,,0.0799999982118606
103,1.4.1.14,K4,0.375,0.3,0.45,2012-11-05 08:00:00,2012-11-05 17:00:00,,0.0799999982118606
104,1.4.1.15,K5,0.375,0.3,0.45,2012-11-05 08:00:00,2012-11-05 17:00:00,,0.0799999982118606
105,1.4.1.16,perron op volle grond,0.375,0.3,0.45,2012-11-05 08:00:00,2012-11-05 17:00:00,,0.0799999982118606
131,1.4.2,Zone 2,324.375,321.13,327.62,2012-11-05 08:00:00,2013-09-25 17:00:00,,36275.4381762446
107,1.4.2.1,Brugligger 6,34.375,27.5,41.25,2013-05-08 08:00:00,2013-06-11 17:00:00,,3641.99981689454
108,1.4.2.2,Brugligger 7,26.375,21.1,31.65,2013-06-06 08:00:00,2013-07-02 17:00:00,,2767.91986083985
109,1.4.2.3,Brugligger 8,40.375,32.3,48.45,2013-06-27 08:00:00,2013-08-06 17:00:00,,4224.71978759767
110,1.4.2.4,Brugligger 9,47.375,37.9,56.85,2013-07-18 08:00:00,2013-09-03 17:00:00,,4953.11975097657
111,1.4.2.5,Beton structuur 6,27.375,21.9,32.85,2013-06-06 08:00:00,2013-07-03 17:00:00,,2913.59985351563
112,1.4.2.6,Beton structuur 7,41.375,33.1,49.65,2013-06-27 08:00:00,2013-08-07 17:00:00,,4370.39978027345
113,1.4.2.7,Beton structuur 8,43.375,34.7,52.05,2013-07-18 08:00:00,2013-08-30 17:00:00,,4661.75976562501
114,1.4.2.8,Beton structuur 9,27.375,21.9,32.85,2013-08-29 08:00:00,2013-09-25 17:00:00,,2913.59985351563
115,1.4.2.9,Beton structuur 10,27.375,21.9,32.85,2013-06-20 08:00:00,2013-07-17 17:00:00,,2913.59985351563
116,1.4.2.10,Beton structuur 11,27.375,21.9,32.85,2013-08-29 08:00:00,2013-09-25 17:00:00,,2913.59985351563
117,1.4.2.11,K6,0.375,0.3,0.45,2012-11-05 08:00:00,2012-11-05 17:00:00,,0.0799999982118606
118,1.4.2.12,K7,0.375,0.3,0.45,2012-11-05 08:00:00,2012-11-05 17:00:00,,0.0799999982118606
119,1.4.2.13,K8,0.375,0.3,0.45,2012-11-05 08:00:00,2012-11-05 17:00:00,,0.0799999982118606
120,1.4.2.14,K9,0.375,0.3,0.45,2012-11-05 08:00:00,2012-11-05 17:00:00,,0.0799999982118606
121,1.4.2.15,K10,0.375,0.3,0.45,2012-11-05 08:00:00,2012-11-05 17:00:00,,0.0799999982118606
122,1.4.2.16,VP1 - VP GV tussen,0.375,0.3,0.45,2012-11-05 08:00:00,2012-11-05 17:00:00,,0.0799999982118606
123,1.4.2.17,VP2 - VP GV tussen 1,0.375,0.3,0.45,2012-11-05 08:00:00,2012-11-05 17:00:00,,0.0799999982118606
124,1.4.2.18,VP2 - VP GV tussen 2,0.375,0.3,0.45,2012-11-05 08:00:00,2012-11-05 17:00:00,,0.0799999982118606
125,1.4.2.19,VP2 - VP GV tussen 3,0.375,0.3,0.45,2012-11-05 08:00:00,2012-11-05 17:00:00,,0.0799999982118606
126,1.4.2.20,Voorzetwand langs lokaal,0.375,0.3,0.45,2012-11-05 08:00:00,2012-11-05 17:00:00,,0.0799999982118606
127,1.4.2.21,Vloerplaat boven voorzetwand (deel 2),0.375,0.3,0.45,2012-11-05 08:00:00,2012-11-05 17:00:00,,0.0799999982118606
128,1.4.2.22,Perron op volle grond - riolering en L-wanden,0.375,0.3,0.45,2012-11-05 08:00:00,2012-11-05 17:00:00,,0.0799999982118606
129,1.4.2.23,Trap wanden,0.375,0.3,0.45,2012-11-05 08:00:00,2012-11-05 17:00:00,,0.0799999982118606
130,1.4.2.24,Trap plaatsing prefab,0.375,0.3,0.45,2012-11-05 08:00:00,2012-11-05 17:00:00,,0.0799999982118606
159,1.4.3,Zone 3,332.375,329.05,335.7,2012-11-05 08:00:00,2013-10-03 17:00:00,,59438.3970116974
132,1.4.3.1,Brugligger 10,62.375,49.9,74.85,2013-06-04 08:00:00,2013-08-05 17:00:00,,6555.59967041017
133,1.4.3.2,Brugligger 11,29.375,23.5,35.25,2013-05-21 08:00:00,2013-06-19 17:00:00,,3204.95983886719
134,1.4.3.3,Brugligger 12,26.375,21.1,31.65,2013-06-14 08:00:00,2013-07-10 17:00:00,,2767.91986083985
135,1.4.3.4,Brugligger 13,40.375,32.3,48.45,2013-07-05 08:00:00,2013-08-14 17:00:00,,4224.71978759767
136,1.4.3.5,Brugligger 14,28.375,22.7,34.05,2013-08-09 08:00:00,2013-09-06 17:00:00,,3059.27984619141
137,1.4.3.6,Beton structuur 12,43.375,34.7,52.05,2013-07-16 08:00:00,2013-08-28 17:00:00,,4661.75976562501
138,1.4.3.7,Beton structuur 13,43.375,34.7,52.05,2013-07-16 08:00:00,2013-08-28 17:00:00,,4661.75976562501
139,1.4.3.8,Beton structuur 14,27.375,21.9,32.85,2013-06-14 08:00:00,2013-07-11 17:00:00,,2913.59985351563
140,1.4.3.9,Beton structuur 15,45.375,36.3,54.45,2013-07-05 08:00:00,2013-08-19 17:00:00,,4661.75976562501
141,1.4.3.10,Beton structuur 16,31.375,25.1,37.65,2013-08-09 08:00:00,2013-09-09 17:00:00,,3204.95983886719
142,1.4.3.11,Beton structuur 17,43.375,34.7,52.05,2013-07-16 08:00:00,2013-08-28 17:00:00,,4661.75976562501
143,1.4.3.12,Beton structuur 18,43.375,34.7,52.05,2013-07-16 08:00:00,2013-08-28 17:00:00,,4661.75976562501
144,1.4.3.13,Beton structuur 19,41.375,33.1,49.65,2013-06-28 08:00:00,2013-08-08 17:00:00,,4370.39978027345
145,1.4.3.14,Beton structuur 20,27.375,21.9,32.85,2013-08-20 08:00:00,2013-09-16 17:00:00,,2913.59985351563
146,1.4.3.15,Beton structuur 21,27.375,21.9,32.85,2013-09-06 08:00:00,2013-10-03 17:00:00,,2913.59985351563
147,1.4.3.16,K11,0.375,0.3,0.45,2012-11-05 08:00:00,2012-11-05 17:00:00,,0.0799999982118606
148,1.4.3.17,K12,0.375,0.3,0.45,2012-11-05 08:00:00,2012-11-05 17:00:00,,0.0799999982118606
149,1.4.3.18,K13,0.375,0.3,0.45,2012-11-05 08:00:00,2012-11-05 17:00:00,,0.0799999982118606
150,1.4.3.19,K14,0.375,0.3,0.45,2012-11-05 08:00:00,2012-11-05 17:00:00,,0.0799999982118606
151,1.4.3.20,K15,0.375,0.3,0.45,2012-11-05 08:00:00,2012-11-05 17:00:00,,0.0799999982118606
152,1.4.3.21,K16,0.375,0.3,0.45,2012-11-05 08:00:00,2012-11-05 17:00:00,,0.0799999982118606
153,1.4.3.22,Aanpassing toegang reizigers perron A,0.375,0.3,0.45,2012-11-05 08:00:00,2012-11-05 17:00:00,,0.0799999982118606
154,1.4.3.23,Plaatsing bekisting,0.375,0.3,0.45,2012-11-05 08:00:00,2012-11-05 17:00:00,,0.0799999982118606
155,1.4.3.24,Zolen en kolommen,0.375,0.3,0.45,2012-11-05 08:00:00,2012-11-05 17:00:00,,0.0799999982118606
156,1.4.3.25,Verankering beschoeiing,0.375,0.3,0.45,2012-11-05 08:00:00,2012-11-05 17:00:00,,0.0799999982118606
157,1.4.3.26,VP3 - VP GV tussen,0.375,0.3,0.45,2012-11-05 08:00:00,2012-11-05 17:00:00,,0.0799999982118606
158,1.4.3.27,VP4 - VP GV tussen,0.375,0.3,0.45,2012-11-05 08:00:00,2012-11-05 17:00:00,,0.0799999982118606
167,1.5,Waterdichting,114.375,113.23,115.52,2013-05-15 08:00:00,2013-09-06 17:00:00,,8276.63981628419
161,1.5.1,Waterdichting + gietasfalt,21.375,17.1,25.65,2013-05-15 08:00:00,2013-06-05 17:00:00,,1539.83996582031
162,1.5.2,Ballastmatten,20.375,16.3,24.45,2013-05-30 08:00:00,2013-06-19 17:00:00,,1443.59996795654
163,1.5.3,Ballast,13.375,10.7,16.05,2013-06-13 08:00:00,2013-06-26 17:00:00,,962.399978637696
164,1.5.4,Waterdichting + gietasfalt,36.375,29.1,43.65,2013-07-18 08:00:00,2013-08-23 17:00:00,,2598.47994232178
165,1.5.5,Ballastmatten,9.375,7.5,11.25,2013-08-19 08:00:00,2013-08-28 17:00:00,,769.919982910157
166,1.5.6,Ballast,11.375,9.1,13.65,2013-08-26 08:00:00,2013-09-06 17:00:00,,962.399978637696
193,1.6,Infrastructuur,402.375,398.35,406.4,2012-11-05 08:00:00,2013-12-12 17:00:00,,51069.599459216
168,1.6.1,Structuur bufferbekken,53.375,42.7,64.05,2013-05-27 08:00:00,2013-07-19 17:00:00,,4611.19995117187
169,1.6.2,Liftput 1,39.375,31.5,47.25,2013-06-10 08:00:00,2013-07-19 17:00:00,,3458.3999633789
170,1.6.3,Liftput 2,43.375,34.7,52.05,2013-08-13 08:00:00,2013-09-25 17:00:00,,3688.9599609375
171,1.6.4,Structuur bufferbekken,40.375,32.3,48.45,2013-10-24 08:00:00,2013-12-03 17:00:00,,3343.11996459961
172,1.6.5,Ophanging VP GV aan brugdek 1,13.375,10.7,16.05,2013-09-10 08:00:00,2013-09-23 17:00:00,,1152.79998779297
173,1.6.6,Ophanging VP GV aan brugdek 2,27.375,21.9,32.85,2013-07-18 08:00:00,2013-08-14 17:00:00,,2305.59997558594
174,1.6.7,Ophanging VP GV aan brugdek 3,11.375,9.1,13.65,2013-09-02 08:00:00,2013-09-13 17:00:00,,1152.79998779297
175,1.6.8,Grondwerken stross,34.375,27.5,41.25,2013-09-13 08:00:00,2013-10-17 17:00:00,,2881.99996948242
176,1.6.9,Vloerplaat -1,60.375,48.3,72.45,2013-09-27 08:00:00,2013-11-26 17:00:00,,4957.03994750976
177,1.6.10,Beton bak voor roltrap,20.375,16.3,24.45,2013-10-04 08:00:00,2013-10-24 17:00:00,,1729.19998168945
178,1.6.11,Kolommen en wanden -1,56.375,45.1,67.65,2013-10-17 08:00:00,2013-12-12 17:00:00,,4726.47994995117
179,1.6.12,Grondwerken stross,36.375,29.1,43.65,2013-08-06 08:00:00,2013-09-11 17:00:00,,3112.55996704101
180,1.6.13,Vloerplaat -1,48.375,38.7,58.05,2013-08-29 08:00:00,2013-10-16 17:00:00,,4034.79995727539
181,1.6.14,Kolommen en wanden,27.375,21.9,32.85,2013-10-04 08:00:00,2013-10-31 17:00:00,,2305.59997558594
182,1.6.15,Beton bak voor roltrap,20.375,16.3,24.45,2013-10-08 08:00:00,2013-10-28 17:00:00,,1729.19998168945
183,1.6.16,Grondwerken in stross,20.375,16.3,24.45,2013-09-13 08:00:00,2013-10-03 17:00:00,,1729.19998168945
184,1.6.17,Kolommen en wanden,6.375,5.1,7.65,2013-09-24 08:00:00,2013-09-30 17:00:00,,576.399993896484
185,1.6.18,Vloerplaat -1,42.375,33.9,50.85,2013-09-26 08:00:00,2013-11-07 17:00:00,,3573.6799621582
186,1.6.19,Verwijdering ophanging VP aan brugdek,0.375,0.3,0.45,2012-11-05 08:00:00,2012-11-05 17:00:00,,0.0799999982118606
187,1.6.20,Onderschoeiing reizigerstunnel,0.375,0.3,0.45,2012-11-05 08:00:00,2012-11-05 17:00:00,,0.0799999982118606
188,1.6.21,VP5 - VP GV tussen,0.375,0.3,0.45,2012-11-05 08:00:00,2012-11-05 17:00:00,,0.0799999982118606
189,1.6.22,Funderingsmassieven en tech. putten,0.375,0.3,0.45,2012-11-05 08:00:00,2012-11-05 17:00:00,,0.0799999982118606
190,1.6.23,Spanning sankers,0.375,0.3,0.45,2012-11-05 08:00:00,2012-11-05 17:00:00,,0.0799999982118606
191,1.6.24,Waterdichting plaat GV,0.375,0.3,0.45,2012-11-05 08:00:00,2012-11-05 17:00:00,,0.0799999982118606
192,1.6.25,Betonplaat op waterdichting GV,0.375,0.3,0.45,2012-11-05 08:00:00,2012-11-05 17:00:00,,0.0799999982118606
221,1.7,Technische installaties,484.375,479.53,489.22,2012-11-05 08:00:00,2014-03-04 17:00:00,,728933.127656221
194,1.7.1,"Kabels, verlichting en branddetectie",83.375,66.7,100.05,2013-11-08 08:00:00,2014-01-30 17:00:00,,111571.201171875
195,1.7.2,Metselwerk -1,82.375,65.9,98.85,2013-10-31 08:00:00,2014-01-21 17:00:00,,109711.681152344
196,1.7.3,Installaties in techn lokalen,89.375,71.5,107.25,2013-12-05 08:00:00,2014-03-04 17:00:00,,119009.28125
197,1.7.4,"Kabels, verlichting in koker",55.375,44.3,66.45,2013-09-05 08:00:00,2013-10-30 17:00:00,,74380.8007812499
198,1.7.5,Plaatsing structuur roltrap,14.375,11.5,17.25,2013-10-23 08:00:00,2013-11-06 17:00:00,,20454.7202148437
199,1.7.6,Technische uitrusting roltrap,23.375,18.7,28.05,2013-10-30 08:00:00,2013-11-22 17:00:00,,33471.3603515625
200,1.7.7,Bekleding onderkant roltrap,22.375,17.9,26.85,2013-11-18 08:00:00,2013-12-10 17:00:00,,31611.8403320312
201,1.7.8,Plaatsing structuur roltrap,14.375,11.5,17.25,2013-10-22 08:00:00,2013-11-05 17:00:00,,20454.7202148437
202,1.7.9,Technische uitrusting roltrap,23.375,18.7,28.05,2013-10-29 08:00:00,2013-11-21 17:00:00,,33471.3603515625
203,1.7.10,Bekleding onderkant roltrap,24.375,19.5,29.25,2013-11-15 08:00:00,2013-12-09 17:00:00,,31611.8403320312
204,1.7.11,Installatie lift,106.375,85.1,127.65,2013-07-08 08:00:00,2013-10-22 17:00:00,,143183.041503906
205,1.7.12,Technische installaties in bufferbekken,0.375,0.3,0.45,2012-11-05 08:00:00,2012-11-05 17:00:00,,0.0799999982118606
206,1.7.13,Plaatsing roltrap,0.375,0.3,0.45,2012-11-05 08:00:00,2012-11-05 17:00:00,,0.0799999982118606
207,1.7.14,Plaatsing glas kanten roltrap,0.375,0.3,0.45,2012-11-05 08:00:00,2012-11-05 17:00:00,,0.0799999982118606
208,1.7.15,Plaatsing structuur kanten roltrap,0.375,0.3,0.45,2012-11-05 08:00:00,2012-11-05 17:00:00,,0.0799999982118606
209,1.7.16,Plaatsing roltrap,0.375,0.3,0.45,2012-11-05 08:00:00,2012-11-05 17:00:00,,0.0799999982118606
210,1.7.17,Plaatsing glas kanten roltrap,0.375,0.3,0.45,2012-11-05 08:00:00,2012-11-05 17:00:00,,0.0799999982118606
211,1.7.18,Metselwerk lokalen,0.375,0.3,0.45,2012-11-05 08:00:00,2012-11-05 17:00:00,,0.0799999982118606
212,1.7.19,Deuren voor technische lokalen,0.375,0.3,0.45,2012-11-05 08:00:00,2012-11-05 17:00:00,,0.0799999982118606
213,1.7.20,Trap 1 - perron C-D,0.375,0.3,0.45,2012-11-05 08:00:00,2012-11-05 17:00:00,,0.0799999982118606
214,1.7.21,Trap 2 - perron C-D,0.375,0.3,0.45,2012-11-05 08:00:00,2012-11-05 17:00:00,,0.0799999982118606
215,1.7.22,Aaanvulling en geo textiel,0.375,0.3,0.45,2012-11-05 08:00:00,2012-11-05 17:00:00,,0.0799999982118606
216,1.7.23,Leidingen en wachtbuizen aanvoer/afvoer,0.375,0.3,0.45,2012-11-05 08:00:00,2012-11-05 17:00:00,,0.0799999982118606
217,1.7.24,Waterdichting in bufferbekken,0.375,0.3,0.45,2012-11-05 08:00:00,2012-11-05 17:00:00,,0.0799999982118606
218,1.7.25,Sluitwand beton in roltrap,0.375,0.3,0.45,2012-11-05 08:00:00,2012-11-05 17:00:00,,0.0799999982118606
219,1.7.26,Integratie technieken in portiek,0.375,0.3,0.45,2012-11-05 08:00:00,2012-11-05 17:00:00,,0.0799999982118606
220,1.7.27,Plaatsing rolluik in portiek roltrap,0.375,0.3,0.45,2012-11-05 08:00:00,2012-11-05 17:00:00,,0.0799999982118606
280,1.8,GOK,471.375,466.66,476.09,2012-11-05 08:00:00,2014-02-19 17:00:00,,139054.40128535
222,1.8.1,Staalstructuur overkapping,48.375,38.7,58.05,2013-09-03 08:00:00,2013-10-21 17:00:00,,6932.8000640869
223,1.8.2,Wegnemen tijdelijke staalstructuur,11.375,9.1,13.65,2013-10-14 08:00:00,2013-10-25 17:00:00,,1980.80001831054
224,1.8.3,Herstellingen staalstructuur spoor D,30.375,24.3,36.45,2013-10-21 08:00:00,2013-11-20 17:00:00,,4555.84004211425
225,1.8.4,Onderhoudsgondel op dak boven spoor D,23.375,18.7,28.05,2013-11-05 08:00:00,2013-11-28 17:00:00,,3565.44003295898
226,1.8.5,Platen en goten hoog dak,35.375,28.3,42.45,2013-09-30 08:00:00,2013-11-04 17:00:00,,5150.08004760741
227,1.8.6,Platen en goten laag dak,43.375,34.7,52.05,2013-09-30 08:00:00,2013-11-12 17:00:00,,6338.56005859374
228,1.8.7,Staalstructuur gevel spoor C,29.375,23.5,35.25,2013-10-14 08:00:00,2013-11-12 17:00:00,,4357.7600402832
229,1.8.8,Staalstructuur gevel spoor B,31.375,25.1,37.65,2013-11-05 08:00:00,2013-12-06 17:00:00,,4753.92004394531
230,1.8.9,Beglazing gevel - spoor D,42.375,33.9,50.85,2013-09-24 08:00:00,2013-11-05 17:00:00,,6140.48005676269
231,1.8.10,Beglazing gevel - spoor C,46.375,37.1,55.65,2013-10-21 08:00:00,2013-12-06 17:00:00,,6932.8000640869
232,1.8.11,Waterdichting hoog dak,32.375,25.9,38.85,2013-10-21 08:00:00,2013-11-22 17:00:00,,4952.00004577636
233,1.8.12,Waterdichting laag dak,35.375,28.3,42.45,2013-11-05 08:00:00,2013-12-10 17:00:00,,5150.08004760741
234,1.8.13,Integratie technieken hoog dak,38.375,30.7,46.05,2013-10-07 08:00:00,2013-11-14 17:00:00,,5744.32005310058
235,1.8.14,Integratie technieken laag dak,38.375,30.7,46.05,2013-10-21 08:00:00,2013-11-28 17:00:00,,5744.32005310058
236,1.8.15,Beplating plafond staalstructuur hoog dak,40.375,32.3,48.45,2013-10-24 08:00:00,2013-12-03 17:00:00,,5744.32005310058
237,1.8.16,Beplating plafond staalstructuur laag dak,32.375,25.9,38.85,2013-11-14 08:00:00,2013-12-16 17:00:00,,4555.84004211425
238,1.8.17,Trap 1,38.375,30.7,46.05,2013-07-12 08:00:00,2013-08-19 17:00:00,,5348.16004943847
239,1.8.18,Trap 2,20.375,16.3,24.45,2013-09-12 08:00:00,2013-10-02 17:00:00,,2971.20002746582
240,1.8.19,Staalstructuur lichtstraat,20.375,16.3,24.45,2013-09-19 08:00:00,2013-10-09 17:00:00,,2971.20002746582
241,1.8.20,Integratie technieken in lichtstraat,20.375,16.3,24.45,2013-09-26 08:00:00,2013-10-16 17:00:00,,2971.20002746582
242,1.8.21,Beglazing lichtstraat,46.375,37.1,55.65,2013-10-03 08:00:00,2013-11-18 17:00:00,,6536.6400604248
243,1.8.22,Beplating lichtstraat,32.375,25.9,38.85,2013-10-24 08:00:00,2013-11-25 17:00:00,,4555.84004211425
244,1.8.23,Staalstructuur lichtstraat boven roltrap,16.375,13.1,19.65,2013-10-29 08:00:00,2013-11-14 17:00:00,,2575.04002380371
245,1.8.24,Beglazing lichtstraat boven roltrap,15.375,12.3,18.45,2013-11-04 08:00:00,2013-11-19 17:00:00,,2376.96002197265
246,1.8.25,Staalstructuur lichtstraat boven roltrap,16.375,13.1,19.65,2013-10-30 08:00:00,2013-11-15 17:00:00,,2575.04002380371
247,1.8.26,Beglazing lichtstraat boven roltrap,15.375,12.3,18.45,2013-11-05 08:00:00,2013-11-20 17:00:00,,2376.96002197265
248,1.8.27,Bevloering perron,25.375,20.3,30.45,2013-11-08 08:00:00,2013-12-03 17:00:00,,3565.44003295898
249,1.8.28,Afwerking bevloering perron D,23.375,18.7,28.05,2013-11-19 08:00:00,2013-12-12 17:00:00,,3565.44003295898
250,1.8.29,Ophangtoestellen perron,23.375,18.7,28.05,2013-11-19 08:00:00,2013-12-12 17:00:00,,3565.44003295898
251,1.8.30,Bevloering perron,72.375,57.9,86.85,2013-12-09 08:00:00,2014-02-19 17:00:00,,10498.2400970459
252,1.8.31,Structuur levenslijn,0.375,0.3,0.45,2012-11-05 08:00:00,2012-11-05 17:00:00,,0.0799999982118606
253,1.8.32,Electrische installaties op dak,0.375,0.3,0.45,2012-11-05 08:00:00,2012-11-05 17:00:00,,0.0799999982118606
254,1.8.33,Extractoren op dak,0.375,0.3,0.45,2012-11-05 08:00:00,2012-11-05 17:00:00,,0.0799999982118606
255,1.8.34,Onderhoudsuitrusting gevel,0.375,0.3,0.45,2012-11-05 08:00:00,2012-11-05 17:00:00,,0.0799999982118606
256,1.8.35,Staalstructuur overkapping 1,0.375,0.3,0.45,2012-11-05 08:00:00,2012-11-05 17:00:00,,0.0799999982118606
257,1.8.36,Staalstructuur overkapping 2,0.375,0.3,0.45,2012-11-05 08:00:00,2012-11-05 17:00:00,,0.0799999982118606
258,1.8.37,Staalstructuur overkapping 3,0.375,0.3,0.45,2012-11-05 08:00:00,2012-11-05 17:00:00,,0.0799999982118606
259,1.8.38,Staalstructuur overkapping 4,0.375,0.3,0.45,2012-11-05 08:00:00,2012-11-05 17:00:00,,0.0799999982118606
260,1.8.39,Staalstructuur overkapping 5,0.375,0.3,0.45,2012-11-05 08:00:00,2012-11-05 17:00:00,,0.0799999982118606
261,1.8.40,Plaatsing standleidingen,0.375,0.3,0.45,2012-11-05 08:00:00,2012-11-05 17:00:00,,0.0799999982118606
262,1.8.41,Plaatsing overstorten,0.375,0.3,0.45,2012-11-05 08:00:00,2012-11-05 17:00:00,,0.0799999982118606
263,1.8.42,Profielen voor handgreep,0.375,0.3,0.45,2012-11-05 08:00:00,2012-11-05 17:00:00,,0.0799999982118606
264,1.8.43,Kaders voor beglazing lichtstraat,0.375,0.3,0.45,2012-11-05 08:00:00,2012-11-05 17:00:00,,0.0799999982118606
265,1.8.44,Waterdichting op perron,0.375,0.3,0.45,2012-11-05 08:00:00,2012-11-05 17:00:00,,0.0799999982118606
266,1.8.45,Perronboorden,0.375,0.3,0.45,2012-11-05 08:00:00,2012-11-05 17:00:00,,0.0799999982118606
267,1.8.46,Bekabeling in perronboorden,0.375,0.3,0.45,2012-11-05 08:00:00,2012-11-05 17:00:00,,0.0799999982118606
268,1.8.47,Afwerken handgreep,0.375,0.3,0.45,2012-11-05 08:00:00,2012-11-05 17:00:00,,0.0799999982118606
269,1.8.48,Staalstructuur gevel spoor C 1,0.375,0.3,0.45,2012-11-05 08:00:00,2012-11-05 17:00:00,,0.0799999982118606
270,1.8.49,Staalstructuur gevel spoor C 2,0.375,0.3,0.45,2012-11-05 08:00:00,2012-11-05 17:00:00,,0.0799999982118606
271,1.8.50,Vervolledigen waterdichting spoor D,0.375,0.3,0.45,2012-11-05 08:00:00,2012-11-05 17:00:00,,0.0799999982118606
272,1.8.51,Waterdichting en gietasfalt spoorbak,0.375,0.3,0.45,2012-11-05 08:00:00,2012-11-05 17:00:00,,0.0799999982118606
273,1.8.52,Afwerking schilderwerken overkapping,0.375,0.3,0.45,2012-11-05 08:00:00,2012-11-05 17:00:00,,0.0799999982118606
274,1.8.53,Tijdelijke structuur en afvoeren spoor D,0.375,0.3,0.45,2012-11-05 08:00:00,2012-11-05 17:00:00,,0.0799999982118606
275,1.8.54,tijdelijke dichting gevel spoor D,0.375,0.3,0.45,2012-11-05 08:00:00,2012-11-05 17:00:00,,0.0799999982118606
276,1.8.55,Onderhoudstoestellen gevel,0.375,0.3,0.45,2012-11-05 08:00:00,2012-11-05 17:00:00,,0.0799999982118606
277,1.8.56,Afwerking kopgevels,0.375,0.3,0.45,2012-11-05 08:00:00,2012-11-05 17:00:00,,0.0799999982118606
278,1.8.57,Afwerking waterdichting op perron,0.375,0.3,0.45,2012-11-05 08:00:00,2012-11-05 17:00:00,,0.0799999982118606
279,1.8.58,herstelling perronboorden,0.375,0.3,0.45,2012-11-05 08:00:00,2012-11-05 17:00:00,,0.0799999982118606
306,1.9,KOK A - perron C,403.375,399.34,407.41,2012-11-05 08:00:00,2013-12-13 17:00:00,,20850.4003973156
281,1.9.1,Staalstructuur,20.375,16.3,24.45,2013-09-20 08:00:00,2013-10-10 17:00:00,,1441.20002746582
282,1.9.2,Platen en goten dak staalstructuur,27.375,21.9,32.85,2013-09-27 08:00:00,2013-10-24 17:00:00,,1921.60003662109
283,1.9.3,Integratie technieken in KOK,27.375,21.9,32.85,2013-10-04 08:00:00,2013-10-31 17:00:00,,1921.60003662109
284,1.9.4,Beglazing gevel,21.375,17.1,25.65,2013-10-18 08:00:00,2013-11-08 17:00:00,,1537.28002929687
285,1.9.5,Waterdichting dak,31.375,25.1,37.65,2013-11-04 08:00:00,2013-12-05 17:00:00,,2305.92004394531
286,1.9.6,Beplating onderkant dakstructuur,21.375,17.1,25.65,2013-10-18 08:00:00,2013-11-08 17:00:00,,1537.28002929687
287,1.9.7,Staalstructuur lichtstraat,20.375,16.3,24.45,2013-10-04 08:00:00,2013-10-24 17:00:00,,1441.20002746582
288,1.9.8,Integratie technieken in lichtstraat,20.375,16.3,24.45,2013-10-11 08:00:00,2013-10-31 17:00:00,,1441.20002746582
289,1.9.9,Beglazing lichtstraat,21.375,17.1,25.65,2013-10-18 08:00:00,2013-11-08 17:00:00,,1537.28002929687
290,1.9.10,Beplating lichtstraat,25.375,20.3,30.45,2013-10-25 08:00:00,2013-11-19 17:00:00,,1729.44003295898
291,1.9.11,Bevloering perron,31.375,25.1,37.65,2013-11-04 08:00:00,2013-12-05 17:00:00,,2305.92004394531
292,1.9.12,Ophangtoestellen op perron,23.375,18.7,28.05,2013-11-20 08:00:00,2013-12-13 17:00:00,,1729.44003295898
293,1.9.13,Structuur levenslijn,0.375,0.3,0.45,2012-11-05 08:00:00,2012-11-05 17:00:00,,0.0799999982118606
294,1.9.14,Plaatsing standleidingen,0.375,0.3,0.45,2012-11-05 08:00:00,2012-11-05 17:00:00,,0.0799999982118606
295,1.9.15,Plaatsing overstorten,0.375,0.3,0.45,2012-11-05 08:00:00,2012-11-05 17:00:00,,0.0799999982118606
296,1.9.16,Profielen ballustrades,0.375,0.3,0.45,2012-11-05 08:00:00,2012-11-05 17:00:00,,0.0799999982118606
297,1.9.17,Kaders voor beglazing lichtstraat,0.375,0.3,0.45,2012-11-05 08:00:00,2012-11-05 17:00:00,,0.0799999982118606
298,1.9.18,Waterdichting op perron,0.375,0.3,0.45,2012-11-05 08:00:00,2012-11-05 17:00:00,,0.0799999982118606
299,1.9.19,Perronboorden,0.375,0.3,0.45,2012-11-05 08:00:00,2012-11-05 17:00:00,,0.0799999982118606
300,1.9.20,Bekabeling in perronboorden,0.375,0.3,0.45,2012-11-05 08:00:00,2012-11-05 17:00:00,,0.0799999982118606
301,1.9.21,Afwerking ballustrades,0.375,0.3,0.45,2012-11-05 08:00:00,2012-11-05 17:00:00,,0.0799999982118606
302,1.9.22,Waterdichting en gietasfalt spoorbak,0.375,0.3,0.45,2012-11-05 08:00:00,2012-11-05 17:00:00,,0.0799999982118606
303,1.9.23,Beglazing lichtstraat,0.375,0.3,0.45,2012-11-05 08:00:00,2012-11-05 17:00:00,,0.0799999982118606
304,1.9.24,Afwerking glas zitbanken,0.375,0.3,0.45,2012-11-05 08:00:00,2012-11-05 17:00:00,,0.0799999982118606
305,1.9.25,Afwerking zitbanken,0.375,0.3,0.45,2012-11-05 08:00:00,2012-11-05 17:00:00,,0.0799999982118606
314,1.10,KOK A - perron B,160.375,158.77,161.98,2013-10-04 08:00:00,2014-03-13 17:00:00,,20272.8803863525
307,1.10.1,Staalstructuur,27.375,21.9,32.85,2013-10-04 08:00:00,2013-10-31 17:00:00,,1921.60003662109
308,1.10.2,Platen en gote dak staalstructuur,32.375,25.9,38.85,2013-10-25 08:00:00,2013-11-26 17:00:00,,2209.84004211425
309,1.10.3,Integratie technieken KOK,39.375,31.5,47.25,2013-11-04 08:00:00,2013-12-13 17:00:00,,2882.40005493163
310,1.10.4,Waterdichting dak,30.375,24.3,36.45,2013-11-20 08:00:00,2013-12-20 17:00:00,,2209.84004211425
311,1.10.5,Beplating onderkant dakstructuur,47.375,37.9,56.85,2013-11-28 08:00:00,2014-01-14 17:00:00,,3266.72006225585
312,1.10.6,Bevloering perron,71.375,57.1,85.65,2013-12-16 08:00:00,2014-02-25 17:00:00,,4996.16009521483
313,1.10.7,Ophangtoestellen op perron,38.375,30.7,46.05,2014-02-03 08:00:00,2014-03-13 17:00:00,,2786.32005310058
341,1.11,KOK B - perron C,396.375,392.41,400.34,2012-11-05 08:00:00,2013-12-06 17:00:00,,22579.119999975
315,1.11.1,Staalstructuur,18.375,14.7,22.05,2013-09-02 08:00:00,2013-09-20 17:00:00,,1590.0
316,1.11.2,Platen en goten dak staalstructuur,25.375,20.3,30.45,2013-09-09 08:00:00,2013-10-04 17:00:00,,2120.0
317,1.11.3,Integratie technieken in KOK,32.375,25.9,38.85,2013-09-16 08:00:00,2013-10-18 17:00:00,,2650.0
318,1.11.4,Beglazing gevel,18.375,14.7,22.05,2013-09-30 08:00:00,2013-10-18 17:00:00,,1590.0
319,1.11.5,Waterdichting dak,21.375,17.1,25.65,2013-10-14 08:00:00,2013-11-04 17:00:00,,1696.0
320,1.11.6,Beplating onderkant dakstructuur,18.375,14.7,22.05,2013-10-07 08:00:00,2013-10-25 17:00:00,,1590.0
321,1.11.7,Staalstructuur lichtstraat,18.375,14.7,22.05,2013-09-16 08:00:00,2013-10-04 17:00:00,,1590.0
322,1.11.8,Integratie technieken in lichtstraat,18.375,14.7,22.05,2013-09-23 08:00:00,2013-10-11 17:00:00,,1590.0
323,1.11.9,Beglazing lichtstraat,18.375,14.7,22.05,2013-09-30 08:00:00,2013-10-18 17:00:00,,1590.0
324,1.11.10,Beplating lichtstraat,18.375,14.7,22.05,2013-10-07 08:00:00,2013-10-25 17:00:00,,1590.0
325,1.11.11,Bevloering perron,30.375,24.3,36.45,2013-10-21 08:00:00,2013-11-20 17:00:00,,2438.0
326,1.11.12,Ophangtoestellen op perron,31.375,25.1,37.65,2013-11-05 08:00:00,2013-12-06 17:00:00,,2544.0
327,1.11.13,Structuur levenslijn,0.375,0.3,0.45,2012-11-05 08:00:00,2012-11-05 17:00:00,,0.0799999982118606
328,1.11.14,Plaatsing standleidingen,0.375,0.3,0.45,2012-11-05 08:00:00,2012-11-05 17:00:00,,0.0799999982118606
329,1.11.15,Plaatsing overstorten,0.375,0.3,0.45,2012-11-05 08:00:00,2012-11-05 17:00:00,,0.0799999982118606
330,1.11.16,Waterdichting perron,0.375,0.3,0.45,2012-11-05 08:00:00,2012-11-05 17:00:00,,0.0799999982118606
331,1.11.17,Perronboorden,0.375,0.3,0.45,2012-11-05 08:00:00,2012-11-05 17:00:00,,0.0799999982118606
332,1.11.18,Bekabeling in perronboorden,0.375,0.3,0.45,2012-11-05 08:00:00,2012-11-05 17:00:00,,0.0799999982118606
333,1.11.19,Afwerken ballustrades,0.375,0.3,0.45,2012-11-05 08:00:00,2012-11-05 17:00:00,,0.0799999982118606
334,1.11.20,Integratie schouw voor technische lokaal,0.375,0.3,0.45,2012-11-05 08:00:00,2012-11-05 17:00:00,,0.0799999982118606
335,1.11.21,Waterdichting en gietasfalt spoorbak,0.375,0.3,0.45,2012-11-05 08:00:00,2012-11-05 17:00:00,,0.0799999982118606
336,1.11.22,Afwerking voegen vloer,0.375,0.3,0.45,2012-11-05 08:00:00,2012-11-05 17:00:00,,0.0799999982118606
337,1.11.23,Afwerking beplating kolommen,0.375,0.3,0.45,2012-11-05 08:00:00,2012-11-05 17:00:00,,0.0799999982118606
338,1.11.24,Afwerking luifels en vleugels,0.375,0.3,0.45,2012-11-05 08:00:00,2012-11-05 17:00:00,,0.0799999982118606
339,1.11.25,Afwerking zitbanken,0.375,0.3,0.45,2012-11-05 08:00:00,2012-11-05 17:00:00,,0.0799999982118606
340,1.11.26,Plaatsing afwerking schouw,0.375,0.3,0.45,2012-11-05 08:00:00,2012-11-05 17:00:00,,0.0799999982118606
349,1.12,KOK B - perron B,116.375,115.21,117.54,2013-05-17 08:00:00,2013-09-10 17:00:00,,18550.0
342,1.12.1,Staalstructuur,28.375,22.7,34.05,2013-05-17 08:00:00,2013-06-14 17:00:00,,2226.0
343,1.12.2,Platen en goten dak staalstructuur,25.375,20.3,30.45,2013-06-03 08:00:00,2013-06-28 17:00:00,,2120.0
344,1.12.3,Integratie technieken in KOK,32.375,25.9,38.85,2013-06-10 08:00:00,2013-07-12 17:00:00,,2650.0
345,1.12.4,Waterdichting dak,25.375,20.3,30.45,2013-06-24 08:00:00,2013-07-19 17:00:00,,2120.0
346,1.12.5,Beplating onderkant dakstructuur,39.375,31.5,47.25,2013-07-01 08:00:00,2013-08-09 17:00:00,,3180.0
347,1.12.6,Bevloering perron,50.375,40.3,60.45,2013-07-15 08:00:00,2013-09-03 17:00:00,,3922.0
348,1.12.7,Ophangtoestellen op perron,29.375,23.5,35.25,2013-08-12 08:00:00,2013-09-10 17:00:00,,2332.0
371,1.13,Accessoires,409.375,405.28,413.47,2012-11-05 08:00:00,2013-12-19 17:00:00,,62900.3982421607
350,1.13.1,Lokaaltjes op perron,48.375,38.7,58.05,2013-10-18 08:00:00,2013-12-05 17:00:00,,15287.9995727539
351,1.13.2,Integratie technieken in accessoires,31.375,25.1,37.65,2013-11-04 08:00:00,2013-12-05 17:00:00,,10483.1997070313
352,1.13.3,Omkasting drankautomaten,31.375,25.1,37.65,2013-11-12 08:00:00,2013-12-13 17:00:00,,10483.1997070313
353,1.13.4,Zitbanken,31.375,25.1,37.65,2013-11-12 08:00:00,2013-12-13 17:00:00,,10483.1997070313
354,1.13.5,Omkasting andere automaten,31.375,25.1,37.65,2013-11-12 08:00:00,2013-12-13 17:00:00,,10483.1997070313
355,1.13.6,Afsluiting toegang reizigers,16.375,13.1,19.65,2013-12-03 08:00:00,2013-12-19 17:00:00,,5678.39984130859
356,1.13.7,Beglaasde portieken GOK - kaders,0.375,0.3,0.45,2012-11-05 08:00:00,2012-11-05 17:00:00,,0.0799999982118606
357,1.13.8,Beglaasde portieken GOK - integratie elek.,0.375,0.3,0.45,2012-11-05 08:00:00,2012-11-05 17:00:00,,0.0799999982118606
358,1.13.9,Beglaasde portieken GOK - bekledingen,0.375,0.3,0.45,2012-11-05 08:00:00,2012-11-05 17:00:00,,0.0799999982118606
359,1.13.10,Beglaasde portieken GOK - beglazing,0.375,0.3,0.45,2012-11-05 08:00:00,2012-11-05 17:00:00,,0.0799999982118606
360,1.13.11,"Afstandbordjes, etc",0.375,0.3,0.45,2012-11-05 08:00:00,2012-11-05 17:00:00,,0.0799999982118606
361,1.13.12,Installatie en afwerking technieken perron,0.375,0.3,0.45,2012-11-05 08:00:00,2012-11-05 17:00:00,,0.0799999982118606
362,1.13.13,Oplossen opmerkingen ivm indienststelling,0.375,0.3,0.45,2012-11-05 08:00:00,2012-11-05 17:00:00,,0.0799999982118606
363,1.13.14,Afwerking spoorbak,0.375,0.3,0.45,2012-11-05 08:00:00,2012-11-05 17:00:00,,0.0799999982118606
364,1.13.15,Drainageleiding,0.375,0.3,0.45,2012-11-05 08:00:00,2012-11-05 17:00:00,,0.0799999982118606
365,1.13.16,Plaatsing buizen riolering,0.375,0.3,0.45,2012-11-05 08:00:00,2012-11-05 17:00:00,,0.0799999982118606
366,1.13.17,Omkasting brandweerkast,0.375,0.3,0.45,2012-11-05 08:00:00,2012-11-05 17:00:00,,0.0799999982118606
367,1.13.18,Belettering gevel,0.375,0.3,0.45,2012-11-05 08:00:00,2012-11-05 17:00:00,,0.0799999982118606
368,1.13.19,Omkasting brandbluskasten,0.375,0.3,0.45,2012-11-05 08:00:00,2012-11-05 17:00:00,,0.0799999982118606
369,1.13.20,Schermen en ophangingen bovenleiding,0.375,0.3,0.45,2012-11-05 08:00:00,2012-11-05 17:00:00,,0.0799999982118606
370,1.13.21,Akoestische cassetten,0.375,0.3,0.45,2012-11-05 08:00:00,2012-11-05 17:00:00,,0.0799999982118606
