node_id,wbs,task_name,duration,optimistic_time,pessimistic_time,baseline_start,baseline_end,resource_demand,total_cost
0,1,Debt Collection System,208.166666666667,206.09,210.25,2013-10-24 08:00:00,2014-05-20 12:00:00,,458112.368399999
9,1.1,define,55.375,54.82,55.93,2013-10-24 08:00:00,2013-12-18 17:00:00,,41864.71
1,1.1.1,kick-off meeting,0.375,0.3,0.45,2013-10-24 08:00:00,2013-10-24 17:00:00,Employee A,558.56
266,1.1.2,project charter set,31.375,31.06,31.69,2013-11-04 08:00:00,2013-12-05 17:00:00,,37495.44
2,1.1.2.1,project charter (scope definition),31.375,25.1,37.65,2013-11-04 08:00:00,2013-12-05 17:00:00,Employee A;Employee B,36531.84
3,1.1.2.2,project security risks,0.375,0.3,0.45,2013-11-13 08:00:00,2013-11-13 17:00:00,Employee B,963.6
267,1.1.3,project charter - communication and validation,23.375,23.14,23.61,2013-11-25 08:00:00,2013-12-18 17:00:00,,3810.71
4,1.1.3.1,inform  IT governance,0.0416666666666667,0.03,0.05,2013-11-25 08:00:00,2013-11-25 09:00:00,Employee B;Employee C,240.9
5,1.1.3.2,send info,0.375,0.3,0.45,2013-11-28 08:00:00,2013-11-28 17:00:00,Employee B;Employee D,1927.2
6,1.1.3.3,send project charter for validation + delivery board validation,3.04166666666667,2.43,3.65,2013-12-13 08:00:00,2013-12-16 09:00:00,Employee B,1084.05
7,1.1.3.4,business validation,0.375,0.3,0.45,2013-12-17 08:00:00,2013-12-17 17:00:00,Employee A,558.56
8,1.1.3.5,end of define,0.0,0.0,0.0,2013-12-18 17:00:00,2013-12-18 17:00:00,,0.0
22,1.2,design,77.375,76.6,78.15,2013-11-25 08:00:00,2014-02-10 17:00:00,,107215.84
15,1.2.1,blueprint set,59.375,58.78,59.97,2013-11-25 08:00:00,2014-01-23 17:00:00,,103826.72
10,1.2.1.1,functional analysis List/file creation,32.375,25.9,38.85,2013-12-02 08:00:00,2014-01-03 17:00:00,Employee G,15056.0
11,1.2.1.2,functional analysis Monitoring,44.375,35.5,53.25,2013-11-25 08:00:00,2014-01-08 17:00:00,Employee H,19873.92
12,1.2.1.3,functional analysis Interfacing,39.375,31.5,47.25,2013-11-25 08:00:00,2014-01-03 17:00:00,Employee F;Employee I,36134.4
13,1.2.1.4,architecture analysis,32.375,25.9,38.85,2013-11-25 08:00:00,2013-12-27 17:00:00,Employee E,24090.0
14,1.2.1.5,budget &amp; planning for development + master test chapter,10.375,8.3,12.45,2014-01-13 08:00:00,2014-01-23 17:00:00,Employee B,8672.4
21,1.2.2,design phase - validations,20.375,20.17,20.58,2014-01-21 08:00:00,2014-02-10 17:00:00,,3389.12
16,1.2.2.1,presentation to Business part 1,0.166666666666667,0.13,0.2,2014-01-21 08:00:00,2014-01-21 12:00:00,Employee G;Employee F,602.24
17,1.2.2.2,presentation to Business part 2,0.166666666666667,0.13,0.2,2014-01-31 08:00:00,2014-01-31 12:00:00,Employee H,301.12
18,1.2.2.3,send to delivery board + IT governance validation,3.375,2.7,4.05,2014-02-07 08:00:00,2014-02-10 17:00:00,Employee B,1927.2
19,1.2.2.4,business validation,0.375,0.3,0.45,2014-02-07 08:00:00,2014-02-07 17:00:00,Employee A,558.56
20,1.2.2.5,end of design,0.0,0.0,0.0,2014-02-10 17:00:00,2014-02-10 17:00:00,,0.0
184,1.3,build,138.083333333333,136.7,139.46,2013-12-27 15:00:00,2014-05-14 17:00:00,,178453.6384
32,1.3.1,weekly file,68.0833333333333,67.4,68.76,2014-01-02 15:00:00,2014-03-11 17:00:00,,19499.28
23,1.3.1.1,build/technical design,7.0,5.6,8.4,2014-01-02 15:00:00,2014-01-09 15:00:00,Employee G[0.60 #1],1806.72
24,1.3.1.2,ABAP,13.0,10.4,15.6,2014-01-09 15:00:00,2014-01-22 15:00:00,ABAP,6750.0
25,1.3.1.3,UT program in general,3.79166666666667,3.03,4.55,2014-01-23 15:00:00,2014-01-27 10:00:00,Employee G,903.36
26,1.3.1.4,UT submission file,5.79166666666667,4.63,6.95,2014-01-31 15:00:00,2014-02-06 10:00:00,Employee G,2107.84
27,1.3.1.5,UT clearing file,4.0,3.2,4.8,2014-01-27 10:00:00,2014-01-31 10:00:00,Employee H,2408.96
28,1.3.1.6,UT other treatment file,6.0,4.8,7.2,2014-01-31 10:00:00,2014-02-06 10:00:00,Employee G,2408.96
29,1.3.1.7,business UT submission,4.95833333333333,3.97,5.95,2014-03-05 13:00:00,2014-03-10 12:00:00,Employee M,1908.96
30,1.3.1.8,UT sending via e-mail,0.375,0.3,0.45,2014-03-11 08:00:00,2014-03-11 17:00:00,Employee H,602.24
31,1.3.1.9,build/technical design,1.0,0.8,1.2,2014-01-22 15:00:00,2014-01-23 15:00:00,Employee G,602.24
82,1.3.2,monthly file,49.0833333333333,48.59,49.57,2013-12-27 15:00:00,2014-02-14 17:00:00,,6713.344
33,1.3.2.1,build/technical design,6.0,4.8,7.2,2013-12-27 15:00:00,2014-01-02 15:00:00,Employee G,2408.96
34,1.3.2.2,ABAP,4.16666666666667,3.33,5.0,2014-01-30 08:00:00,2014-02-03 12:00:00,ABAP[0.80 #1],1500.0
35,1.3.2.3,UT,8.16666666666667,6.53,9.8,2014-02-03 13:00:00,2014-02-11 17:00:00,Employee G[0.40 #1],1565.824
36,1.3.2.4,business UT,0.375,0.3,0.45,2014-02-13 08:00:00,2014-02-13 17:00:00,Employee M,636.32
37,1.3.2.5,UT sending via e-mail,0.375,0.3,0.45,2014-02-14 08:00:00,2014-02-14 17:00:00,Employee G,602.24
83,1.3.3,authorization check,59.1666666666667,58.58,59.76,2014-01-24 08:00:00,2014-03-24 12:00:00,,15386.2
38,1.3.3.1,IRIS-SC,5.375,4.3,6.45,2014-03-13 08:00:00,2014-03-18 17:00:00,Java,3000.0
39,1.3.3.2,build/technical design,0.375,0.3,0.45,2014-01-24 08:00:00,2014-01-24 17:00:00,Employee F,602.24
40,1.3.3.3,ABAP,14.375,11.5,17.25,2014-01-27 08:00:00,2014-02-10 17:00:00,ABAP,8250.0
41,1.3.3.4,UT,0.375,0.3,0.45,2014-02-10 08:00:00,2014-02-10 17:00:00,Employee F,602.24
42,1.3.3.5,build/technical design,0.375,0.3,0.45,2014-02-13 08:00:00,2014-02-13 17:00:00,Employee F,602.24
43,1.3.3.6,ABAP,0.958333333333333,0.77,1.15,2014-03-19 13:00:00,2014-03-20 12:00:00,ABAP,750.0
44,1.3.3.7,UT,0.958333333333333,0.77,1.15,2014-03-20 13:00:00,2014-03-21 12:00:00,Employee F,602.24
45,1.3.3.8,import WSDL,0.166666666666667,0.13,0.2,2014-03-19 08:00:00,2014-03-19 12:00:00,Java,375.0
46,1.3.3.9,ESB (pass BP to basic),2.95833333333333,2.37,3.55,2014-03-21 13:00:00,2014-03-24 12:00:00,EAI,602.24
84,1.3.4,send DMS file via e-mail,33.0833333333333,32.75,33.41,2014-02-05 15:00:00,2014-03-10 17:00:00,,13548.8944
47,1.3.4.1,build/technical design,18.0833333333333,14.47,21.7,2014-02-17 08:00:00,2014-03-07 10:00:00,Employee I[0.07 #1],600.7344
48,1.3.4.2,import WSDL,0.791666666666667,0.63,0.95,2014-02-05 15:00:00,2014-02-06 10:00:00,EAI,301.12
49,1.3.4.3,build/technical design,0.375,0.3,0.45,2014-02-07 08:00:00,2014-02-07 17:00:00,EAI,602.24
50,1.3.4.4,EAI,0.375,0.3,0.45,2014-02-10 08:00:00,2014-02-10 17:00:00,EAI,602.24
51,1.3.4.5,UT,1.375,1.1,1.65,2014-02-11 08:00:00,2014-02-12 17:00:00,EAI,1204.48
52,1.3.4.6,build/technical design,0.375,0.3,0.45,2014-02-18 08:00:00,2014-02-18 17:00:00,EAI,602.24
53,1.3.4.7,EAI,0.375,0.3,0.45,2014-02-19 08:00:00,2014-02-19 17:00:00,EAI,602.24
54,1.3.4.8,UT,0.375,0.3,0.45,2014-02-20 08:00:00,2014-02-20 17:00:00,EAI,602.24
55,1.3.4.9,design,1.375,1.1,1.65,2014-02-19 08:00:00,2014-02-20 17:00:00,EAI,1204.48
56,1.3.4.10,build,4.375,3.5,5.25,2014-02-21 08:00:00,2014-02-25 17:00:00,EAI,1806.72
57,1.3.4.11,queue handling,2.375,1.9,2.85,2014-02-26 08:00:00,2014-02-28 17:00:00,EAI,1806.72
58,1.3.4.12,UT,3.375,2.7,4.05,2014-03-03 08:00:00,2014-03-06 17:00:00,EAI,2408.96
59,1.3.4.13,deployment,3.375,2.7,4.05,2014-03-07 08:00:00,2014-03-10 17:00:00,EAI,1204.48
85,1.3.5,duplicates,42.1666666666667,41.75,42.59,2014-02-12 13:00:00,2014-03-26 17:00:00,,5261.2
60,1.3.5.1,build/technical design,1.95833333333333,1.57,2.35,2014-02-12 13:00:00,2014-02-14 12:00:00,Employee I,1204.48
61,1.3.5.2,java,2.375,1.9,2.85,2014-03-19 08:00:00,2014-03-21 17:00:00,Java,2250.0
62,1.3.5.3,UT,2.375,1.9,2.85,2014-03-24 08:00:00,2014-03-26 17:00:00,Employee I,1806.72
86,1.3.6,current saldo,9.375,9.28,9.47,2014-02-11 08:00:00,2014-02-20 17:00:00,,3943.04
63,1.3.6.1,build/technical design,1.16666666666667,0.93,1.4,2014-02-11 08:00:00,2014-02-12 12:00:00,Employee I,903.36
64,1.3.6.2,java,3.95833333333333,3.17,4.75,2014-02-14 13:00:00,2014-02-18 12:00:00,Java,1500.0
65,1.3.6.3,UT,1.16666666666667,0.93,1.4,2014-02-18 13:00:00,2014-02-19 17:00:00,Employee I,903.36
66,1.3.6.4,business UT,0.375,0.3,0.45,2014-02-20 08:00:00,2014-02-20 17:00:00,Employee N,636.32
88,1.3.7,BRM,10.0,9.9,10.1,2014-03-07 10:00:00,2014-03-17 10:00:00,,3613.44
67,1.3.7.1,BRM,10.0,8.0,12.0,2014-03-07 10:00:00,2014-03-17 10:00:00,Employee I,3613.44
87,1.3.8,account statement,65.875,65.22,66.53,2014-01-24 15:00:00,2014-03-31 12:00:00,,15044.8
68,1.3.8.1,build/technical design,14.0,11.2,16.8,2014-01-24 15:00:00,2014-02-07 15:00:00,Employee F[0.50 #1];Employee L[0.50 #1],6022.4
69,1.3.8.2,ABAP,1.375,1.1,1.65,2014-02-11 08:00:00,2014-02-12 17:00:00,ABAP,1500.0
70,1.3.8.3,UT,1.375,1.1,1.65,2014-02-13 08:00:00,2014-02-14 17:00:00,Employee F;Employee L,2408.96
71,1.3.8.4,spec proxy,2.95833333333333,2.37,3.55,2014-03-21 13:00:00,2014-03-24 12:00:00,Employee F,602.24
72,1.3.8.5,ABAP proxy,0.375,0.3,0.45,2014-02-14 08:00:00,2014-02-14 17:00:00,ABAP,750.0
73,1.3.8.6,UT proxy,0.375,0.3,0.45,2014-02-17 08:00:00,2014-02-17 17:00:00,Employee F,602.24
74,1.3.8.7,spec wrapper core,1.95833333333333,1.57,2.35,2014-03-24 13:00:00,2014-03-26 12:00:00,Employee F,1204.48
75,1.3.8.8,ABAP wrapper core,0.958333333333333,0.77,1.15,2014-03-26 13:00:00,2014-03-27 12:00:00,ABAP,750.0
76,1.3.8.9,UT wrapper core,0.958333333333333,0.77,1.15,2014-03-27 13:00:00,2014-03-28 12:00:00,Employee F,602.24
77,1.3.8.10,email functionality,2.95833333333333,2.37,3.55,2014-03-28 13:00:00,2014-03-31 12:00:00,Employee F,602.24
173,1.3.9,monitoring and reporting,35.2916666666667,34.94,35.64,2014-01-29 08:00:00,2014-03-05 15:00:00,,31228.56
78,1.3.9.1,build/technical design,5.375,4.3,6.45,2014-01-29 08:00:00,2014-02-03 17:00:00,Employee H,2408.96
79,1.3.9.2,ABAP,6.375,5.1,7.65,2014-02-06 08:00:00,2014-02-12 17:00:00,ABAP,3750.0
80,1.3.9.3,UT,6.375,5.1,7.65,2014-02-13 08:00:00,2014-02-19 17:00:00,Employee H;ABAP,6761.2
81,1.3.9.4,BI reports,27.0,21.6,32.4,2014-02-06 15:00:00,2014-03-05 15:00:00,Employee K,18308.4
174,1.3.10,weekly file,11.2916666666667,11.18,11.4,2014-03-21 08:00:00,2014-04-01 15:00:00,,3219.2
89,1.3.10.1,build/technical design,0.375,0.3,0.45,2014-03-21 08:00:00,2014-03-21 17:00:00,Employee G,602.24
90,1.3.10.2,ABAP,0.375,0.3,0.45,2014-03-24 08:00:00,2014-03-24 17:00:00,ABAP,750.0
91,1.3.10.3,UT,0.375,0.3,0.45,2014-03-25 08:00:00,2014-03-25 17:00:00,Employee G,602.24
92,1.3.10.4,build/technical design,2.79166666666667,2.23,3.35,2014-03-28 15:00:00,2014-03-31 10:00:00,Employee G,301.12
93,1.3.10.5,setup autosys,1.0,0.8,1.2,2014-03-31 15:00:00,2014-04-01 15:00:00,Employee D,963.6
175,1.3.11,monthly file,1.29166666666667,1.28,1.3,2014-03-31 10:00:00,2014-04-01 17:00:00,,1505.62
94,1.3.11.1,build/technical design,0.208333333333333,0.17,0.25,2014-03-31 10:00:00,2014-03-31 15:00:00,Employee G,301.12
95,1.3.11.2,setup autosys,1.08333333333333,0.87,1.3,2014-03-31 15:00:00,2014-04-01 17:00:00,Employee D,1204.5
176,1.3.12,list,2.29166666666667,2.27,2.31,2014-03-26 08:00:00,2014-03-28 15:00:00,,1579.48
96,1.3.12.1,build/technical design,0.375,0.3,0.45,2014-03-26 08:00:00,2014-03-26 17:00:00,Employee G,602.24
97,1.3.12.2,ABAP,0.166666666666667,0.13,0.2,2014-03-27 08:00:00,2014-03-27 12:00:00,ABAP,375.0
98,1.3.12.3,UT,1.0,0.8,1.2,2014-03-27 15:00:00,2014-03-28 15:00:00,Employee G,602.24
177,1.3.13,migration program,17.375,17.2,17.55,2014-03-21 08:00:00,2014-04-07 17:00:00,,7522.4
99,1.3.13.1,build/technical design,11.375,9.1,13.65,2014-03-21 08:00:00,2014-04-01 17:00:00,Employee H,4817.92
100,1.3.13.2,ABAP,1.375,1.1,1.65,2014-04-02 08:00:00,2014-04-03 17:00:00,ABAP,1500.0
101,1.3.13.3,UT,3.375,2.7,4.05,2014-04-04 08:00:00,2014-04-07 17:00:00,Employee H,1204.48
178,1.3.14,send DMS file via e-mail,13.2916666666667,13.16,13.42,2014-03-14 08:00:00,2014-03-27 15:00:00,,7463.06
102,1.3.14.1,WSDL update,0.0833333333333333,0.07,0.1,2014-03-14 08:00:00,2014-03-14 10:00:00,Java;Employee I,338.06
103,1.3.14.2,get cert / encrypt,7.0,5.6,8.4,2014-03-14 10:00:00,2014-03-21 10:00:00,Java,3750.0
104,1.3.14.3,error handling,4.0,3.2,4.8,2014-03-21 10:00:00,2014-03-25 10:00:00,Java,1500.0
105,1.3.14.4,UT java team,2.20833333333333,1.77,2.65,2014-03-25 10:00:00,2014-03-27 15:00:00,Java,1875.0
179,1.3.15,feedback,23.7916666666667,23.55,24.03,2014-03-11 15:00:00,2014-04-04 10:00:00,,29314.4
106,1.3.15.1,build/technical design,0.375,0.3,0.45,2014-03-13 08:00:00,2014-03-13 17:00:00,Employee G,602.24
107,1.3.15.2,ABAP,0.375,0.3,0.45,2014-03-14 08:00:00,2014-03-14 17:00:00,ABAP,750.0
108,1.3.15.3,UT,0.375,0.3,0.45,2014-03-17 08:00:00,2014-03-17 17:00:00,Employee G,602.24
109,1.3.15.4,build/technical design,0.791666666666667,0.63,0.95,2014-03-11 15:00:00,2014-03-12 10:00:00,Employee H,301.12
110,1.3.15.5,ABAP,2.79166666666667,2.23,3.35,2014-03-21 15:00:00,2014-03-24 10:00:00,ABAP,375.0
111,1.3.15.6,UT,0.0833333333333333,0.07,0.1,2014-03-24 10:00:00,2014-03-24 12:00:00,Employee H,150.56
112,1.3.15.7,build/technical design,0.166666666666667,0.13,0.2,2014-03-14 08:00:00,2014-03-14 12:00:00,Employee G,301.12
113,1.3.15.8,ABAP,0.166666666666667,0.13,0.2,2014-03-14 13:00:00,2014-03-14 17:00:00,ABAP,375.0
114,1.3.15.9,UT,0.0833333333333333,0.07,0.1,2014-03-17 08:00:00,2014-03-17 10:00:00,Employee G,150.56
115,1.3.15.10,build/technical design,1.0,0.8,1.2,2014-03-12 10:00:00,2014-03-13 10:00:00,Employee H,602.24
116,1.3.15.11,ABAP,1.0,0.8,1.2,2014-03-13 10:00:00,2014-03-14 10:00:00,ABAP,750.0
117,1.3.15.12,UT,3.0,2.4,3.6,2014-03-14 10:00:00,2014-03-17 10:00:00,Employee H,602.24
118,1.3.15.13,build/technical design,0.166666666666667,0.13,0.2,2014-03-14 13:00:00,2014-03-14 17:00:00,Employee G,301.12
119,1.3.15.14,ABAP,0.166666666666667,0.13,0.2,2014-03-17 08:00:00,2014-03-17 12:00:00,ABAP,375.0
120,1.3.15.15,UT,0.0833333333333333,0.07,0.1,2014-03-17 13:00:00,2014-03-17 15:00:00,Employee G,150.56
121,1.3.15.16,build/technical design,0.208333333333333,0.17,0.25,2014-03-17 10:00:00,2014-03-17 15:00:00,Employee H,301.12
122,1.3.15.17,ABAP,0.791666666666667,0.63,0.95,2014-03-17 15:00:00,2014-03-18 10:00:00,ABAP,375.0
123,1.3.15.18,UT,0.0833333333333333,0.07,0.1,2014-03-18 10:00:00,2014-03-18 12:00:00,Employee H,150.56
124,1.3.15.19,build/technical design,0.375,0.3,0.45,2014-03-18 08:00:00,2014-03-18 17:00:00,Employee G,602.24
125,1.3.15.20,ABAP,0.375,0.3,0.45,2014-03-19 08:00:00,2014-03-19 17:00:00,ABAP,750.0
126,1.3.15.21,UT,0.375,0.3,0.45,2014-03-20 08:00:00,2014-03-20 17:00:00,Employee G,602.24
127,1.3.15.22,build/technical design,0.166666666666667,0.13,0.2,2014-03-18 13:00:00,2014-03-18 17:00:00,Employee G,301.12
128,1.3.15.23,ABAP,0.166666666666667,0.13,0.2,2014-03-19 08:00:00,2014-03-19 12:00:00,ABAP,375.0
129,1.3.15.24,UT,0.0833333333333333,0.07,0.1,2014-03-19 13:00:00,2014-03-19 15:00:00,Employee G,150.56
130,1.3.15.25,build/technical design,0.166666666666667,0.13,0.2,2014-03-19 08:00:00,2014-03-19 12:00:00,Employee G,301.12
131,1.3.15.26,ABAP,0.166666666666667,0.13,0.2,2014-03-19 13:00:00,2014-03-19 17:00:00,ABAP,375.0
132,1.3.15.27,UT,0.0833333333333333,0.07,0.1,2014-03-20 08:00:00,2014-03-20 10:00:00,Employee G,150.56
133,1.3.15.28,build/technical design,0.791666666666667,0.63,0.95,2014-03-19 15:00:00,2014-03-20 10:00:00,Employee H,301.12
134,1.3.15.29,ABAP,0.208333333333333,0.17,0.25,2014-03-20 10:00:00,2014-03-20 15:00:00,ABAP,375.0
135,1.3.15.30,UT,0.0833333333333333,0.07,0.1,2014-03-20 15:00:00,2014-03-20 17:00:00,Employee H,150.56
136,1.3.15.31,import WSDL,0.208333333333333,0.17,0.25,2014-03-17 10:00:00,2014-03-17 15:00:00,Java,375.0
137,1.3.15.32,spec proxy,3.375,2.7,4.05,2014-03-14 08:00:00,2014-03-17 17:00:00,Employee F[0.50 #1],602.24
138,1.3.15.33,ABAP proxy,0.291666666666667,0.23,0.35,2014-03-18 08:00:00,2014-03-18 15:00:00,ABAP,562.5
139,1.3.15.34,UT proxy,1.79166666666667,1.43,2.15,2014-03-18 15:00:00,2014-03-20 10:00:00,Employee F[0.50 #1],451.68
140,1.3.15.35,spec wrapper core,1.375,1.1,1.65,2014-03-18 08:00:00,2014-03-19 17:00:00,Employee F[0.50 #1],602.24
141,1.3.15.36,ABAP wrapper core,0.291666666666667,0.23,0.35,2014-03-20 08:00:00,2014-03-20 15:00:00,ABAP,562.5
142,1.3.15.37,UT wrapper core,3.79166666666667,3.03,4.55,2014-03-20 15:00:00,2014-03-24 10:00:00,Employee F[0.50 #1],451.68
143,1.3.15.38,spec proxy,2.375,1.9,2.85,2014-03-18 08:00:00,2014-03-20 17:00:00,Employee F[0.50 #1],903.36
144,1.3.15.39,ABAP proxy,0.375,0.3,0.45,2014-03-21 08:00:00,2014-03-21 17:00:00,ABAP,750.0
145,1.3.15.40,UT proxy,2.0,1.6,2.4,2014-03-24 10:00:00,2014-03-26 10:00:00,Employee F[0.50 #1],602.24
146,1.3.15.41,spec wrapper core,5.375,4.3,6.45,2014-03-21 08:00:00,2014-03-26 17:00:00,Employee F[0.50 #1],1204.48
147,1.3.15.42,ABAP wrapper core,1.16666666666667,0.93,1.4,2014-03-27 08:00:00,2014-03-28 12:00:00,ABAP,1125.0
148,1.3.15.43,UT wrapper core,5.95833333333333,4.77,7.15,2014-03-28 13:00:00,2014-04-03 12:00:00,Employee F[0.50 #1],1204.48
149,1.3.15.44,content,0.0833333333333333,0.07,0.1,2014-03-20 10:00:00,2014-03-20 12:00:00,Employee G,150.56
150,1.3.15.45,UT,0.0833333333333333,0.07,0.1,2014-03-20 13:00:00,2014-03-20 15:00:00,Employee G,150.56
151,1.3.15.46,content,0.0833333333333333,0.07,0.1,2014-03-20 15:00:00,2014-03-20 17:00:00,Employee G,150.56
152,1.3.15.47,UT,0.0833333333333333,0.07,0.1,2014-03-21 08:00:00,2014-03-21 10:00:00,Employee G,150.56
153,1.3.15.48,content,0.0833333333333333,0.07,0.1,2014-03-21 10:00:00,2014-03-21 12:00:00,Employee G,150.56
154,1.3.15.49,UT,0.0833333333333333,0.07,0.1,2014-03-21 13:00:00,2014-03-21 15:00:00,Employee G,150.56
155,1.3.15.50,build/technical design,3.0,2.4,3.6,2014-03-17 10:00:00,2014-03-20 10:00:00,Employee I,1806.72
156,1.3.15.51,java,7.0,5.6,8.4,2014-03-20 10:00:00,2014-03-27 10:00:00,Java,3750.0
157,1.3.15.52,UT,8.0,6.4,9.6,2014-03-27 10:00:00,2014-04-04 10:00:00,Employee F[0.50 #1],1806.72
180,1.3.16,performance report,9.375,9.28,9.47,2014-05-05 08:00:00,2014-05-14 17:00:00,,4817.92
158,1.3.16.1,build/technical design,1.375,1.1,1.65,2014-05-05 08:00:00,2014-05-06 17:00:00,Employee H,1204.48
159,1.3.16.2,EAI,2.375,1.9,2.85,2014-05-07 08:00:00,2014-05-09 17:00:00,EAI,1806.72
160,1.3.16.3,UT,2.375,1.9,2.85,2014-05-12 08:00:00,2014-05-14 17:00:00,Employee H,1806.72
181,1.3.17,preparation IT test strategy,13.375,13.24,13.51,2014-02-04 08:00:00,2014-02-17 17:00:00,,3011.2
161,1.3.17.1,preparation core,0.375,0.3,0.45,2014-02-04 08:00:00,2014-02-04 17:00:00,Employee G,602.24
162,1.3.17.2,preparation migration,0.375,0.3,0.45,2014-02-17 08:00:00,2014-02-17 17:00:00,Employee H,602.24
163,1.3.17.3,preparation interfacing,0.375,0.3,0.45,2014-02-10 08:00:00,2014-02-10 17:00:00,Employee F,602.24
164,1.3.17.4,preparation reporting,0.375,0.3,0.45,2014-02-04 08:00:00,2014-02-04 17:00:00,Employee H,602.24
165,1.3.17.5,preparation interfacing,0.375,0.3,0.45,2014-02-04 08:00:00,2014-02-04 17:00:00,Employee F,602.24
182,1.3.18,service preparation,0.375,0.37,0.38,2014-04-01 08:00:00,2014-04-01 17:00:00,,2890.8
166,1.3.18.1,service manual draft,0.375,0.3,0.45,2014-04-01 08:00:00,2014-04-01 17:00:00,Employee B,963.6
167,1.3.18.2,SDM validation,0.375,0.3,0.45,2014-04-01 08:00:00,2014-04-01 17:00:00,Employee B,963.6
168,1.3.18.3,TCS validation,0.375,0.3,0.45,2014-04-01 08:00:00,2014-04-01 17:00:00,Employee B,963.6
183,1.3.19,build phase - validation,1.375,1.36,1.39,2014-04-08 08:00:00,2014-04-09 17:00:00,,2890.8
169,1.3.19.1,program manager validation,0.375,0.3,0.45,2014-04-08 08:00:00,2014-04-08 17:00:00,Employee B,963.6
170,1.3.19.2,SCM validation,0.375,0.3,0.45,2014-04-08 08:00:00,2014-04-08 17:00:00,Employee B,963.6
171,1.3.19.3,information security validation,0.375,0.3,0.45,2014-04-08 08:00:00,2014-04-08 17:00:00,Employee B,963.6
172,1.3.19.4,end of build,0.0,0.0,0.0,2014-04-09 17:00:00,2014-04-09 17:00:00,,0.0
260,1.4,implement,206.375,204.31,208.44,2013-10-25 08:00:00,2014-05-19 17:00:00,,120846.38
250,1.4.1,certificates,36.2916666666667,35.93,36.65,2014-04-02 10:00:00,2014-05-08 17:00:00,,17344.8
185,1.4.1.1,certificates on acceptance,13.0,10.4,15.6,2014-04-02 10:00:00,2014-04-15 10:00:00,Employee D,8672.4
186,1.4.1.2,certificates on production,10.375,8.3,12.45,2014-04-28 08:00:00,2014-05-08 17:00:00,Employee D,8672.4
251,1.4.2,integration testing release 1,42.2916666666667,41.87,42.71,2014-02-06 10:00:00,2014-03-20 17:00:00,,26287.92
187,1.4.2.1,backend,2.0,1.6,2.4,2014-03-03 15:00:00,2014-03-05 15:00:00,Employee H,1204.48
188,1.4.2.2,backend and extract,2.0,1.6,2.4,2014-03-05 15:00:00,2014-03-07 15:00:00,Employee H;Employee K,3131.68
189,1.4.2.3,performance testing monitoring backend,2.0,1.6,2.4,2014-03-05 15:00:00,2014-03-07 15:00:00,Employee H,1204.48
190,1.4.2.4,monitoring BI,6.375,5.1,7.65,2014-03-12 08:00:00,2014-03-18 17:00:00,Employee K,4818.0
191,1.4.2.5,weekly files,5.29166666666667,4.23,6.35,2014-02-06 10:00:00,2014-02-11 17:00:00,Employee G,2258.4
192,1.4.2.6,monthly files,4.16666666666667,3.33,5.0,2014-02-21 08:00:00,2014-02-25 12:00:00,Employee G,1505.6
193,1.4.2.7,duplicate documents,1.375,1.1,1.65,2014-03-05 08:00:00,2014-03-06 17:00:00,Employee F,1204.48
194,1.4.2.8,current saldo,1.375,1.1,1.65,2014-03-03 08:00:00,2014-03-04 17:00:00,Employee F,1204.48
195,1.4.2.9,account statement,4.375,3.5,5.25,2014-03-07 08:00:00,2014-03-11 17:00:00,Employee F,1806.72
196,1.4.2.10,defect core weekly,2.375,1.9,2.85,2014-02-12 08:00:00,2014-02-14 17:00:00,Employee G,1806.72
197,1.4.2.11,defect core monthly,2.375,1.9,2.85,2014-02-26 08:00:00,2014-02-28 17:00:00,Employee G,1806.72
198,1.4.2.12,defect interfacing,1.375,1.1,1.65,2014-03-12 08:00:00,2014-03-13 17:00:00,Employee F,1204.48
199,1.4.2.13,defect monitoring,4.0,3.2,4.8,2014-03-07 15:00:00,2014-03-11 15:00:00,Employee H,1204.48
200,1.4.2.14,defect BI reporting,1.375,1.1,1.65,2014-03-19 08:00:00,2014-03-20 17:00:00,Employee K,1927.2
252,1.4.3,integration testing release 2,22.375,22.15,22.6,2014-04-01 08:00:00,2014-04-23 17:00:00,,15056.0
201,1.4.3.1,feedback,13.375,10.7,16.05,2014-04-04 08:00:00,2014-04-17 17:00:00,Employee F[0.50 #1],3011.2
202,1.4.3.2,migration,13.375,10.7,16.05,2014-04-08 08:00:00,2014-04-21 17:00:00,Employee H[0.50 #1],3011.2
203,1.4.3.3,list batch testing,1.375,1.1,1.65,2014-04-02 08:00:00,2014-04-03 17:00:00,Employee G[0.50 #1],602.24
204,1.4.3.4,core,13.375,10.7,16.05,2014-04-04 08:00:00,2014-04-17 17:00:00,Employee G[0.50 #1],3011.2
205,1.4.3.5,mail encryption,0.375,0.3,0.45,2014-04-01 08:00:00,2014-04-01 17:00:00,Employee I,602.24
206,1.4.3.6,defect core,3.375,2.7,4.05,2014-04-18 08:00:00,2014-04-21 17:00:00,Employee G,1204.48
207,1.4.3.7,defect interfacing,3.375,2.7,4.05,2014-04-18 08:00:00,2014-04-21 17:00:00,Employee F,1204.48
208,1.4.3.8,defect migration,1.375,1.1,1.65,2014-04-22 08:00:00,2014-04-23 17:00:00,Employee H,1204.48
209,1.4.3.9,defect mail encryption,2.0,1.6,2.4,2014-04-02 10:00:00,2014-04-04 10:00:00,Employee I,1204.48
253,1.4.4,p2p testing,7.375,7.3,7.45,2014-04-15 08:00:00,2014-04-22 17:00:00,,6022.4
210,1.4.4.1,p2p weekly files,0.375,0.3,0.45,2014-04-22 08:00:00,2014-04-22 17:00:00,Employee G,602.24
211,1.4.4.2,p2p monthly files,0.375,0.3,0.45,2014-04-22 08:00:00,2014-04-22 17:00:00,Employee G,602.24
212,1.4.4.3,p2p current saldo,0.375,0.3,0.45,2014-04-15 08:00:00,2014-04-15 17:00:00,Employee F;EAI,1204.48
213,1.4.4.4,p2p duplicate documents,1.0,0.8,1.2,2014-04-16 10:00:00,2014-04-17 10:00:00,Employee F;EAI,1204.48
214,1.4.4.5,p2p account statement,0.958333333333333,0.77,1.15,2014-04-17 13:00:00,2014-04-18 12:00:00,Employee F;EAI,1204.48
215,1.4.4.6,p2p feedback,3.0,2.4,3.6,2014-04-18 15:00:00,2014-04-21 15:00:00,Employee F;EAI,1204.48
254,1.4.5,business acceptance testing release 1,161.166666666667,159.56,162.78,2013-10-25 08:00:00,2014-04-04 12:00:00,,45815.04
216,1.4.5.1,part 1 - information lists,39.1666666666667,31.33,47.0,2014-02-17 08:00:00,2014-03-28 12:00:00,Employee M,18771.44
217,1.4.5.2,part 2 - interface,4.375,3.5,5.25,2013-10-25 08:00:00,2013-10-29 17:00:00,Employee N,1908.96
218,1.4.5.3,part 3 - reporting,53.1666666666667,42.53,63.8,2014-02-10 08:00:00,2014-04-04 12:00:00,Employee P,25134.64
255,1.4.6,business acceptance testing release 2,1.375,1.36,1.39,2014-04-21 08:00:00,2014-04-22 17:00:00,,2545.28
219,1.4.6.1,test definition,0.375,0.3,0.45,2014-04-21 08:00:00,2014-04-21 17:00:00,Employee N,636.32
220,1.4.6.2,test data,0.375,0.3,0.45,2014-04-21 08:00:00,2014-04-21 17:00:00,Employee N,636.32
221,1.4.6.3,test execution,0.375,0.3,0.45,2014-04-22 08:00:00,2014-04-22 17:00:00,Employee N;Employee O,1272.64
256,1.4.7,service preparation,30.375,30.07,30.68,2014-03-24 08:00:00,2014-04-23 17:00:00,,3208.46
227,1.4.7.1,SLA review,0.0833333333333333,0.07,0.1,2014-04-23 08:00:00,2014-04-23 10:00:00,Employee B;Employee C,481.8
228,1.4.7.2,service budget agreement,0.0833333333333333,0.07,0.1,2014-03-24 08:00:00,2014-03-24 10:00:00,Employee B;Employee C,481.8
229,1.4.7.3,production handbook,0.375,0.3,0.45,2014-04-23 08:00:00,2014-04-23 17:00:00,Employee D,963.6
230,1.4.7.4,service manual,0.0833333333333333,0.07,0.1,2014-04-23 08:00:00,2014-04-23 10:00:00,Employee B;Employee C,481.8
231,1.4.7.5,SCM validation,0.0833333333333333,0.07,0.1,2014-04-23 08:00:00,2014-04-23 10:00:00,Employee B,240.9
232,1.4.7.6,CIO validation,0.375,0.3,0.45,2014-04-23 08:00:00,2014-04-23 17:00:00,Employee A,558.56
257,1.4.8,go-no go meeting,0.375,0.37,0.38,2014-05-14 08:00:00,2014-05-14 17:00:00,,1522.16
233,1.4.8.1,formal validation,0.375,0.3,0.45,2014-05-14 08:00:00,2014-05-14 17:00:00,Employee A;Employee B,1522.16
258,1.4.9,deploy on production,203.375,201.34,205.41,2013-10-25 08:00:00,2014-05-16 17:00:00,,1522.16
234,1.4.9.1,go live,0.0,0.0,0.0,2014-05-16 17:00:00,2014-05-16 17:00:00,,0.0
235,1.4.9.2,PIN testing IT,0.375,0.3,0.45,2013-10-25 08:00:00,2013-10-25 17:00:00,Employee B,963.6
236,1.4.9.3,PIN testing business,0.375,0.3,0.45,2013-10-25 08:00:00,2013-10-25 17:00:00,Employee A,558.56
259,1.4.10,validation,3.0,2.97,3.03,2014-05-16 17:00:00,2014-05-19 17:00:00,,1522.16
237,1.4.10.1,steerco validation,0.375,0.3,0.45,2014-05-19 08:00:00,2014-05-19 17:00:00,Employee A;Employee B,1522.16
238,1.4.10.2,end of implement,0.0,0.0,0.0,2014-05-16 17:00:00,2014-05-16 17:00:00,,0.0
265,1.5,close,1.16666666666667,1.16,1.18,2014-05-19 08:00:00,2014-05-20 12:00:00,,9731.8
261,1.5.1,hand-over preparation,1.16666666666667,1.16,1.18,2014-05-19 08:00:00,2014-05-20 12:00:00,,6841.0
239,1.5.1.1,project charter as built,1.16666666666667,0.93,1.4,2014-05-19 08:00:00,2014-05-20 12:00:00,Employee A;Employee B,2283.24
240,1.5.1.2,blueprint as built,0.375,0.3,0.45,2014-05-19 08:00:00,2014-05-19 17:00:00,Employee A;Employee J;Employee M;Employee N,2751.04
241,1.5.1.3,technical design as built,0.375,0.3,0.45,2014-05-19 08:00:00,2014-05-19 17:00:00,Employee F;Employee G;Employee H,1806.72
262,1.5.2,hand-over,0.375,0.37,0.38,2014-05-19 08:00:00,2014-05-19 17:00:00,,1927.2
242,1.5.2.1,service manual,0.166666666666667,0.13,0.2,2014-05-19 08:00:00,2014-05-19 12:00:00,Employee B,481.8
243,1.5.2.2,CMDB check,0.375,0.3,0.45,2014-05-19 08:00:00,2014-05-19 17:00:00,Employee C,963.6
244,1.5.2.3,SCM validation,0.166666666666667,0.13,0.2,2014-05-19 08:00:00,2014-05-19 12:00:00,Employee B,481.8
263,1.5.3,project evaluation,0.0833333333333333,0.08,0.08,2014-05-19 08:00:00,2014-05-19 10:00:00,,722.7
245,1.5.3.1,customer satisfaction survey,0.0833333333333333,0.07,0.1,2014-05-19 08:00:00,2014-05-19 10:00:00,Employee B,240.9
246,1.5.3.2,project team briefing,0.0833333333333333,0.07,0.1,2014-05-19 08:00:00,2014-05-19 10:00:00,Employee B,240.9
247,1.5.3.3,suppliers evaluation,0.0833333333333333,0.07,0.1,2014-05-19 08:00:00,2014-05-19 10:00:00,Employee B,240.9
264,1.5.4,close phase,0.375,0.37,0.38,2014-05-19 08:00:00,2014-05-19 17:00:00,,240.9
248,1.5.4.1,program manager validation,0.0833333333333333,0.07,0.1,2014-05-19 08:00:00,2014-05-19 10:00:00,Employee B,240.9
249,1.5.4.2,end of project,0.0,0.0,0.0,2014-05-19 17:00:00,2014-05-19 17:00:00,,0.0
