node_id,wbs,task_name,duration,optimistic_time,pessimistic_time,baseline_start,baseline_end,resource_demand,total_cost
0,1,Residential House Finishing Works (8),140.375,138.97,141.78,2016-03-11 08:00:00,2016-07-29 17:00:00,,56182.7098388672
27,1.1,Start uitv afwerking,48.375,47.89,48.86,2016-03-11 08:00:00,2016-04-28 17:00:00,,8857.68005371095
1,1.1.1,F1 ventilatie,6.375,5.1,7.65,2016-03-11 08:00:00,2016-03-17 17:00:00,,772.5
2,1.1.2,F1 san/cv,6.375,5.1,7.65,2016-03-18 08:00:00,2016-03-24 17:00:00,,1288.55004882813
3,1.1.3,F1 elektr,6.375,5.1,7.65,2016-03-25 08:00:00,2016-03-31 17:00:00,,887.609985351563
4,1.1.4,Aansluiting water,6.375,5.1,7.65,2016-04-01 08:00:00,2016-04-07 17:00:00,,960.0
5,1.1.5,Dakisolatie,13.375,10.7,16.05,2016-04-01 08:00:00,2016-04-14 17:00:00,,2474.51000976563
6,1.1.6,F1 pleister,13.375,10.7,16.05,2016-04-15 08:00:00,2016-04-28 17:00:00,,2474.51000976563
28,1.2,Fase 2,28.375,28.09,28.66,2016-04-29 08:00:00,2016-05-27 17:00:00,,13798.5600585938
7,1.2.1,Opm keuken,6.375,5.1,7.65,2016-04-29 08:00:00,2016-05-05 17:00:00,,2231.25
25,1.2.2,F2 san/cv,6.375,5.1,7.65,2016-04-29 08:00:00,2016-05-05 17:00:00,,1932.82995605469
8,1.2.3,F2 ventilatie,6.375,5.1,7.65,2016-05-06 08:00:00,2016-05-12 17:00:00,,1158.75
9,1.2.4,Vloerisolatie,6.375,5.1,7.65,2016-05-06 08:00:00,2016-05-12 17:00:00,,3451.52001953125
10,1.2.5,Chape,6.375,5.1,7.65,2016-05-13 08:00:00,2016-05-19 17:00:00,,2010.53002929688
11,1.2.6,Opm Binnenschr,6.375,5.1,7.65,2016-05-20 08:00:00,2016-05-26 17:00:00,,1363.51000976563
12,1.2.7,F2 elektr,6.375,5.1,7.65,2016-05-20 08:00:00,2016-05-26 17:00:00,,1331.42004394531
13,1.2.8,openen E/G/W,0.375,0.3,0.45,2016-05-27 08:00:00,2016-05-27 17:00:00,,318.75
29,1.3,Fase 3,32.375,32.05,32.7,2016-05-30 08:00:00,2016-07-01 17:00:00,,13881.5498046875
14,1.3.1,F3 san/cv,4.375,3.5,5.25,2016-05-30 08:00:00,2016-06-03 17:00:00,,3221.3798828125
15,1.3.2,Vloerwerken,4.375,3.5,5.25,2016-06-06 08:00:00,2016-06-10 17:00:00,,2301.01000976563
16,1.3.3,Trappen,4.375,3.5,5.25,2016-06-13 08:00:00,2016-06-17 17:00:00,,2488.88989257813
17,1.3.4,Binnenschrijnwerk,4.375,3.5,5.25,2016-06-20 08:00:00,2016-06-24 17:00:00,,2045.27001953125
18,1.3.5,Keuken,4.375,3.5,5.25,2016-06-27 08:00:00,2016-07-01 17:00:00,,3825.0
30,1.4,Finale afwerking,25.375,25.12,25.63,2016-07-04 08:00:00,2016-07-29 17:00:00,,19644.919921875
19,1.4.1,Afw ventilatie,11.375,9.1,13.65,2016-07-04 08:00:00,2016-07-15 17:00:00,,1931.25
20,1.4.2,Afw elektr,11.375,9.1,13.65,2016-07-04 08:00:00,2016-07-15 17:00:00,,2219.0400390625
21,1.4.3,Afw san/cv,11.375,9.1,13.65,2016-07-18 08:00:00,2016-07-29 17:00:00,,6442.75
26,1.4.4,Afw vloer,11.375,9.1,13.65,2016-07-18 08:00:00,2016-07-29 17:00:00,,5752.52978515625
24,1.4.5,Afw pleister,11.375,9.1,13.65,2016-07-18 08:00:00,2016-07-29 17:00:00,,3299.35009765625
