node_id,wbs,task_name,duration,optimistic_time,pessimistic_time,baseline_start,baseline_end,resource_demand,total_cost
0,1.0,PROJECT LEPELSTRAAT,746.708333333333,746.708333333333,746.708333333333,2015-07-30 00:00:00,2017-08-14 17:00:00,,1292979
1,1.1,maken compromis aankoop grond met 1 of meerdere huizen,0.708333333333333,0.7,0.72,2015-07-30 00:00:00,2015-07-30 17:00:00,,0
2,1.2,Aanvraag plannen architect,0.708333333333333,0.7,0.72,2015-07-31 00:00:00,2015-07-31 17:00:00,,27000
3,1.3,Wachten op plannen appartementen door architect,11.7083333333333,11.59,11.83,2015-08-03 00:00:00,2015-08-14 17:00:00,,0
4,1.4,aanvragen stedenbouwkundige vergunning ,0.708333333333333,0.7,0.72,2015-08-13 00:00:00,2015-08-13 17:00:00,,0
5,1.5,Wachten op goedkeuring vergunning,49.7083333333333,49.21,50.21,2015-08-14 00:00:00,2015-10-02 17:00:00,,0
6,1.6,aanstellen EPB verslaggever,0.708333333333333,0.7,0.72,2015-10-20 00:00:00,2015-10-20 17:00:00,,3850
7,1.7,aankoop grond ,0.708333333333333,0.7,0.72,2015-11-02 00:00:00,2015-11-02 17:00:00,,310000
8,1.8,betalen kosten notaris,0.708333333333333,0.7,0.72,2015-11-16 00:00:00,2015-11-16 17:00:00,,6300
9,1.9,"afkoppelen nutsvoorzieningen (telefoon, elektriciteit, water, gas)",1.70833333333333,1.69,1.73,2015-12-02 00:00:00,2015-12-03 17:00:00,,4370
10,1.1,aanvragen verkeersverbod voor sloopwerken + akkoord,0.708333333333333,0.7,0.72,2015-12-04 00:00:00,2015-12-04 17:00:00,,1000
11,1.11,Inrichten werf,1.70833333333333,1.69,1.73,2016-01-05 00:00:00,2016-01-06 17:00:00,,3500
12,1.12,slopen gebouwen en bijgebouwen,21.7083333333333,21.49,21.93,2016-01-07 00:00:00,2016-01-28 17:00:00,,17500
13,1.13,sondering bodem,1.70833333333333,1.69,1.73,2016-01-28 00:00:00,2016-01-29 17:00:00,,850
14,1.14,uitgraven funderingsgleuven voor appartement en garages + afvoer grond,0.708333333333333,0.7,0.72,2016-02-01 00:00:00,2016-02-01 17:00:00,,7800
15,1.15,plaatsen aardingslus,0.708333333333333,0.7,0.72,2016-02-01 00:00:00,2016-02-01 17:00:00,,550
16,1.16,storten betonnen funderingsgleuven,0.708333333333333,0.7,0.72,2016-02-10 00:00:00,2016-02-10 17:00:00,,2250
17,1.17,plaatsen pvc riolerings en afwateringsbuizen + buizen nutsvoorzieningen (app + garages)(rioleringswerken),1.70833333333333,1.69,1.73,2016-02-15 00:00:00,2016-02-16 17:00:00,,4300
18,1.18,opmetselen vorstrand + aanvullen met gewassen zand,6.70833333333333,6.64,6.78,2016-02-17 00:00:00,2016-02-23 17:00:00,,4100
19,1.19,plaatsen van bewapeningsnetten,1.70833333333333,1.69,1.73,2016-02-23 00:00:00,2016-02-24 17:00:00,,6450
20,1.2,gieten van betonnen vloerplaat,0.708333333333333,0.7,0.72,2016-02-25 00:00:00,2016-02-25 17:00:00,,5500
21,1.21,opmetselen binnenmuren appartementen gelijkvloers en de garages,15.7083333333333,15.55,15.87,2016-03-03 00:00:00,2016-03-18 17:00:00,,8400
22,1.22,plaatsen gewelven gelijkvloers en garages,3.70833333333333,3.67,3.75,2016-03-18 00:00:00,2016-03-21 17:00:00,,7300
23,1.23,plaatsen bewapening vloerplaat eerste verdiep + gieten beton,2.70833333333333,2.68,2.74,2016-03-22 00:00:00,2016-03-24 17:00:00,,9450
24,1.24,metsen van binnenmuren eerste verdiep ,13.7083333333333,13.57,13.85,2016-04-01 00:00:00,2016-04-14 17:00:00,,6200
25,1.25,plaatsen gewelven eerste verdiep,3.70833333333333,3.67,3.75,2016-04-18 00:00:00,2016-04-21 17:00:00,,7300
26,1.26,plaatsen van gevelelementen + dakbalkons met bovenbewapening,20.7083333333333,20.5,20.92,2016-04-22 00:00:00,2016-05-12 17:00:00,,72000
27,1.27,plaatsen bewapening en gieten betonnen gewelven tweede verdiep,6.70833333333333,6.64,6.78,2016-05-18 00:00:00,2016-05-24 17:00:00,,7300
28,1.28,inbinden balken,0.708333333333333,0.7,0.72,2016-05-25 00:00:00,2016-05-25 17:00:00,,5750
29,1.29,bekisting + bewapening betonnen trappen + storten beton voor trap,1.70833333333333,1.69,1.73,2016-05-30 00:00:00,2016-05-31 17:00:00,,4500
30,1.3,opmetsen borstwering tweede verdiep ,1.70833333333333,1.69,1.73,2016-06-06 00:00:00,2016-06-07 17:00:00,,8400
31,1.31,gieten van bewapende ring balk,1.70833333333333,1.69,1.73,2016-06-08 00:00:00,2016-06-09 17:00:00,,3800
32,1.32,plaatsen van houten koppelkepers als modellen voor de binnenmuren en puntgevels (deel dakconstructie),3.70833333333333,3.67,3.75,2016-06-10 00:00:00,2016-06-13 17:00:00,,2250
33,1.33,opmetsen resterende muren tweede verdiep en puntgevels ,11.7083333333333,11.59,11.83,2016-06-13 00:00:00,2016-06-24 17:00:00,,8750
34,1.34,plaatsen metalen I-profielen (waar nodig),0.708333333333333,0.7,0.72,2016-06-27 00:00:00,2016-06-27 17:00:00,,7475
35,1.35,plaatsen spouwisolatie 140mm aan buitenzijde gebouw tegen binnenmuren (voorzien van de nodige spouwankers) getaped,9.70833333333333,9.61,9.81,2016-06-29 00:00:00,2016-07-08 17:00:00,,4860
36,1.36,dichtkleven van de isolatie,0.708333333333333,0.7,0.72,2016-07-11 00:00:00,2016-07-11 17:00:00,,285
37,1.37,plaatsen opgaand metselwerk aan buitenzijde gebouw,14.7083333333333,14.56,14.86,2016-07-04 00:00:00,2016-07-18 17:00:00,,55000
38,1.38,plaatsen opgaand metselwerk aan gebouw deel 2 en  garages ,14.7083333333333,14.56,14.86,2016-08-08 00:00:00,2016-08-22 17:00:00,,100000
39,1.39,aanbrengen van isolatieplaten op de platforms en platte daken van appartementen en de garages,2.70833333333333,2.68,2.74,2016-08-30 00:00:00,2016-09-01 17:00:00,,2800
40,1.4,plaatsen van EPDM dakbedekking op de appartementen en de garages en platforms voorzien van de nodige dakranden,4.70833333333333,4.66,4.76,2016-09-05 00:00:00,2016-09-09 17:00:00,,3099
41,1.41,plaatsen dakconstructie,11.7083333333333,11.59,11.83,2016-09-12 00:00:00,2016-09-23 17:00:00,,21400
42,1.42,plaatsen van de reeds opgementen blauwe hardsteen (raamdorpels),0.708333333333333,0.7,0.72,2016-09-26 00:00:00,2016-09-26 17:00:00,,4000
43,1.43,plaatsen dakgoten en aflopen,1.70833333333333,1.69,1.73,2016-09-29 00:00:00,2016-09-30 17:00:00,,2180
44,1.44,plaatsen onderdak + inwerken van dakvlakvensters,1.70833333333333,1.69,1.73,2016-10-03 00:00:00,2016-10-04 17:00:00,,5600
45,1.45,dichtleggen dakconstructie met nodige gevel- en nokpannen,6.70833333333333,6.64,6.78,2016-10-05 00:00:00,2016-10-11 17:00:00,,14310
46,1.46,"dak doorvoeren (voor ventillatie, verluchting en liftkoker)",1.70833333333333,1.69,1.73,2016-10-10 00:00:00,2016-10-11 17:00:00,,950
47,1.47,CV doorvoer,0.708333333333333,0.7,0.72,2016-10-10 00:00:00,2016-10-10 17:00:00,,350
48,1.48,slijpen nutsvoorzieningen (water gas elektriciteit) in alle app,2.70833333333333,2.68,2.74,2016-10-17 00:00:00,2016-10-19 17:00:00,,1800
49,1.49,boren gaten in betonnen plafond voor plaatsen van spots (indien van toepassing),1.70833333333333,1.69,1.73,2016-10-18 00:00:00,2016-10-19 17:00:00,,1200
50,1.5,"leveren en plaatsen van buitenschrijnwerk (hout, alu of pvc) (ramen deuren)",3.70833333333333,3.67,3.75,2016-11-04 00:00:00,2016-11-07 17:00:00,,51200
51,1.51,"leggen sanitaire buizen, afwatering bad water en toilet",15.7083333333333,15.55,15.87,2016-11-15 00:00:00,2016-11-30 17:00:00,,18250
52,1.52,leggen elektriciteit,25.7083333333333,25.45,25.97,2016-11-21 00:00:00,2016-12-16 17:00:00,,21500
53,1.53,leggen van ventillatiekanalen,3.70833333333333,3.67,3.75,2016-11-22 00:00:00,2016-11-25 17:00:00,,30400
54,1.54,plaasten van PUR (16cm) ondervloeren op het gelijkvloers en PUR(16cm) akoestiek op de verdiepen,1.70833333333333,1.69,1.73,2017-01-16 00:00:00,2017-01-17 17:00:00,,12800
55,1.55,plaatsen van leidingen voor vloerverwarming,3.70833333333333,3.67,3.75,2017-01-23 00:00:00,2017-01-26 17:00:00,,38350
56,1.56,aanbrengen chappe (80mm - bewapend en voorzien van bijpassend product voor vloerverwarming en randuitzettingsvoeg),4.70833333333333,4.66,4.76,2017-02-03 00:00:00,2017-02-07 17:00:00,,10750
57,1.57,plaatsen lift,7.70833333333333,7.63,7.79,2017-02-10 00:00:00,2017-02-17 17:00:00,,21000
58,1.58,distributienetwerk: ondergrondse aansluitingen (water gas elektriciteit) + plaatsen tellers,0.708333333333333,0.7,0.72,2017-02-28 00:00:00,2017-02-28 17:00:00,,7380
59,1.59,isoleren van het dakgebindte met 220 mm mineraalwol voorzien van dampscherm,5.70833333333333,5.65,5.77,2017-03-01 00:00:00,2017-03-06 17:00:00,,6800
60,1.6,aanbrengen van latwerk voor later aan te brengen G-plat,3.70833333333333,3.67,3.75,2017-03-10 00:00:00,2017-03-13 17:00:00,,1975
61,1.61,plaatsen OSB platen op de zolder,1.70833333333333,1.69,1.73,2017-03-13 00:00:00,2017-03-14 17:00:00,,880
62,1.62,verder plaatsen van bedrading verlichting voor het dakgeheel,3.70833333333333,3.67,3.75,2017-03-13 00:00:00,2017-03-16 17:00:00,,1150
63,1.63,plaatsen G-plat op het bestaande latwerk ,1.70833333333333,1.69,1.73,2017-03-15 00:00:00,2017-03-16 17:00:00,,575
64,1.64,uitwerken velux,1.70833333333333,1.69,1.73,2017-03-16 00:00:00,2017-03-17 17:00:00,,1000
65,1.65,aftapen van de chappe in alle ruimtes,0.708333333333333,0.7,0.72,2017-03-22 00:00:00,2017-03-22 17:00:00,,250
66,1.66,pleisterwerken (binnenmuren),32.7083333333333,32.38,33.04,2017-03-27 00:00:00,2017-04-28 17:00:00,,10000
67,1.67,pleisterwerken (plafonds and G-plat),32.7083333333333,32.38,33.04,2017-04-03 00:00:00,2017-05-05 17:00:00,,35000
68,1.68,bevloeringswerken,41.7083333333333,41.29,42.13,2017-04-18 00:00:00,2017-05-29 17:00:00,,67000
69,1.69,plaatsen douchebakken en/of ligbaden,3.70833333333333,3.67,3.75,2017-05-05 00:00:00,2017-05-08 17:00:00,,12500
70,1.7,plaatsen muurtegels in badkamers en toiletten,4.70833333333333,4.66,4.76,2017-05-08 00:00:00,2017-05-12 17:00:00,,3750
71,1.71,"plaatsen sanitaire toestellen: CV ketel, toilet uitgietbakken",18.7083333333333,18.52,18.9,2017-05-15 00:00:00,2017-06-02 17:00:00,,4590
72,1.72,plaatsen schakelaars elektriciteit ,11.7083333333333,11.59,11.83,2017-05-22 00:00:00,2017-06-02 17:00:00,,1750
73,1.73,plaatsen ventillatie-units,2.70833333333333,2.68,2.74,2017-05-22 00:00:00,2017-05-24 17:00:00,,29000
74,1.74,bekleden traptreden met keramische tegels,1.70833333333333,1.69,1.73,2017-06-01 00:00:00,2017-06-02 17:00:00,,5500
75,1.75,plaatsen keukens,6.70833333333333,6.64,6.78,2017-06-20 00:00:00,2017-06-26 17:00:00,,42000
76,1.76,plaatsen badkamermeubels,4.70833333333333,4.66,4.76,2017-06-26 00:00:00,2017-06-30 17:00:00,,18750
77,1.77,plaatsen binnendeuren,13.7083333333333,13.57,13.85,2017-06-21 00:00:00,2017-07-04 17:00:00,,16500
78,1.78,aansluiten plinten tegen de binnendeuren en keuken,1.70833333333333,1.69,1.73,2017-08-07 00:00:00,2017-08-08 17:00:00,,350
79,1.79,plaatsen van balkonleuningen,1.70833333333333,1.69,1.73,2017-08-07 00:00:00,2017-08-08 17:00:00,,3200
80,1.8,plaatsen trapleuningen,0.708333333333333,0.7,0.72,2017-08-09 00:00:00,2017-08-09 17:00:00,,1800
81,1.81,schilderen gemeenschappelijke delen,1.70833333333333,1.69,1.73,2017-08-10 00:00:00,2017-08-11 17:00:00,,1500
82,1.82,voegwerken gevelsteen + elastische voeg tussen ramen en metselwerk,13.7083333333333,13.57,13.85,2017-08-01 00:00:00,2017-08-14 17:00:00,,8000
83,1.83,opkuis werf,0.708333333333333,0.7,0.72,2017-08-10 00:00:00,2017-08-10 17:00:00,,500
84,1.84,oplevering met architect,0.708333333333333,0.7,0.72,2017-08-14 00:00:00,2017-08-14 17:00:00,,0
85,1.85,afleveren ASS BUILD dossier van EPB verslaggever,0.708333333333333,0.7,0.72,2017-08-14 00:00:00,2017-08-14 17:00:00,,5000
86,1.86,heraanleg stoep (voetpad) +buitenaanleg,0.708333333333333,0.7,0.72,2017-08-04 00:00:00,2017-08-04 17:00:00,,20000
