node_id,wbs,task_name,duration,optimistic_time,pessimistic_time,baseline_start,baseline_end,resource_demand,total_cost
0,1.0,PROJECT GLUING MACHINE,207.375,207.375,207.375,2017-09-11 08:00:00,2018-04-06 17:00:00,,107500
1,1.1,test PU lijm,11.375,11.26,11.49,2017-09-11 08:00:00,2017-09-22 17:00:00,,1000
2,1.2,aankoop rollenwals + vatsmelter,116.375,115.21,117.54,2017-09-25 08:00:00,2018-01-19 17:00:00,,92000
3,1.3,voorbereidende werken afzuiging,13.375,13.24,13.51,2017-12-07 08:00:00,2017-12-20 17:00:00,,2500
4,1.4,voorbereidende werken (elektrisch),13.375,13.24,13.51,2017-12-07 08:00:00,2017-12-20 17:00:00,,3000
5,1.5,"testfase productie, opleiding, eerste keer in MTO",18.375,18.19,18.56,2018-01-22 08:00:00,2018-02-09 17:00:00,,3000
6,1.6,haalbaarheidsstudie,18.375,18.19,18.56,2018-01-22 08:00:00,2018-02-09 17:00:00,,2000
7,1.7,bijkomend onderzoek naar belijmde mdf panelen met release coat,21.375,21.16,21.59,2018-03-09 08:00:00,2018-03-30 17:00:00,,1000
8,1.8,volledige implementatie en opstart in productie,16.375,16.21,16.54,2018-03-21 08:00:00,2018-04-06 17:00:00,,3000
