node_id,wbs,task_name,duration,optimistic_time,pessimistic_time,baseline_start,baseline_end,resource_demand,total_cost
0,1,Project,1682.375,1665.55,1699.2,2016-03-01 08:00:00,2020-10-08 17:00:00,,0
1,1.1,DP1 Leien,1682.375,1665.55,1699.2,2016-03-01 08:00:00,2020-10-08 17:00:00,,0
2,1.1.1,1 LEIEN,1682.375,1665.55,1699.2,2016-03-01 08:00:00,2020-10-08 17:00:00,,0
3,1.1.1.1,START MS LEIEN,0.625,0.5,0.75,2016-03-01 08:00:00,2016-02-29 17:00:00,,0
4,1.1.1.2,Inkomende relaties naar DP1,0.0,0.0,0.0,2018-08-31 17:00:00,2018-08-31 17:00:00,,0
5,1.1.1.2.1,RV015 Nader te bepalen raakvlak,0.0,0.0,0.0,2018-08-31 17:00:00,2018-08-31 17:00:00,,0
6,1.1.1.3,Uitgaande relaties vanuit DP1,867.0,858.33,875.67,2018-05-25 17:00:00,2020-10-08 17:00:00,,0
7,1.1.1.3.1,Contractmijlpaal uit DP1 NAAR DMP VO-05 (Weg Kempenstraat + Asiadok Oostkaai),0.0,0.0,0.0,2020-06-11 17:00:00,2020-06-11 17:00:00,,0
8,1.1.1.3.2,Contractmijlpaal uit DP1 NAAR DMP VO-07a Weg Italiëlei tot en met Noorderplaats (tot ca 20m1 voorbij bocht richting Hardenvoort),0.0,0.0,0.0,2019-09-16 17:00:00,2019-09-16 17:00:00,,0
9,1.1.1.3.3,"Contractmijlpaal uit DP1 NAAR DMP VO-07b Weg Hardenvoortviaduct tot en met Ijzerlaan, scheduled ontvangst VO",0.0,0.0,0.0,2020-05-29 17:00:00,2020-05-29 17:00:00,,0
10,1.1.1.3.4,Contractmijlpaal uit DP1 naar DMP VO-7b afgifte VO,0.0,0.0,0.0,2020-07-13 17:00:00,2020-07-13 17:00:00,,0
11,1.1.1.3.5,Contractmijlpaal uit DP1 NAAR DMP WOG-15 Fietstunnel,0.0,0.0,0.0,2020-10-08 17:00:00,2020-10-08 17:00:00,,0
12,1.1.1.3.6,"RV verval uit DP1, DP2 én DP3 naar DP1: DP1, DP2 én DP3 gereed voor afrol bovenleiding Rd-09 en Rd-10 (Kipdorpvest - Kipdorpbrug - tot nèt vóór Tunnelplaats)",0.0,0.0,0.0,2018-11-27 17:00:00,2018-11-27 17:00:00,,0
13,1.1.1.3.7,RV019 uit DP1 naar DP2: Ventweg naast tunneluitrit NO gereed ten behoeve van bussen ná gereed KW-NoordWest (KW3),0.0,0.0,0.0,2018-12-19 17:00:00,2018-12-19 17:00:00,,0
14,1.1.1.3.8,"Contractmijlpaal uit DP1 naar VO-11light, Aansluiting wegenis Leien op tunneluitrit ATN-oost",0.0,0.0,0.0,2018-06-14 17:00:00,2018-06-14 17:00:00,,0
15,1.1.1.3.9,"Contractmijlpaal uit DP1 naar BCT5, Tram Operaplein-Leien bovengronds Noord-Zuid",0.0,0.0,0.0,2019-06-20 17:00:00,2019-06-20 17:00:00,,0
16,1.1.1.3.10,Contractmijlpaal uit DP1 naar DMP testperiode OG en ON BCT5 Tram Operaplein-Leien Noord-Zuid),0.0,0.0,0.0,2019-07-19 17:00:00,2019-07-19 17:00:00,,0
17,1.1.1.3.11,Contractmijlpaal uit DP1 naar DMP testperiode OG BCT5 Tram Operaplein-Leien Noord-Zuid),0.0,0.0,0.0,2019-10-04 17:00:00,2019-10-04 17:00:00,,0
18,1.1.1.3.12,RV101 UIT DP1 NAAR DMP FINISH MS LEIEN,0.0,0.0,0.0,2019-09-16 17:00:00,2019-09-16 17:00:00,,0
19,1.1.1.3.13,MIJLPAAL UIT DP1 NAAR DMP BCT4 (Tram Eilandje-Groenendaallaan),0.0,0.0,0.0,2018-05-25 17:00:00,2018-05-25 17:00:00,,0
20,1.1.1.3.14,Testperiode testtram ON,7.375,7.3,7.45,2019-07-19 08:00:00,2019-07-26 17:00:00,,0
21,1.1.1.3.14.1,Rijden met de testtram (ON en OG samen) ,1.375,1.1,1.65,2019-07-25 08:00:00,2019-07-26 17:00:00,,0
22,1.1.1.3.14.2,"Bct5 gereed voor rijden met testtram, Geen beschikbaarheid matrieel van OG",0.375,0.3,0.45,2019-07-19 08:00:00,2019-07-19 17:00:00,,0
23,1.1.1.4,11 Frankrijklei,925.1666666667006,915.92,934.42,2016-03-01 08:00:00,2018-09-12 12:00:00,,0
24,1.1.1.4.1,110 Frankrijklei,925.1666666667006,915.92,934.42,2016-03-01 08:00:00,2018-09-12 12:00:00,,0
25,1.1.1.4.1.1,Werken nutsleidingen (restant verplaatsingswerken en overkoppelingen),1.0416666667006211,0.83,1.25,2016-03-01 08:00:00,2016-03-02 09:00:00,,0
26,1.1.1.4.1.2,Voorbereidingen ifv omleiding verkeer via ventwegen (tot aan Gemeentestr),6.375,6.31,6.44,2016-03-01 08:00:00,2016-03-07 17:00:00,,0
27,1.1.1.4.1.2.1,Aanpassingswerken ifv vlotte doorgang verkeer thv kruispunten,3.375,2.7,4.05,2016-03-01 08:00:00,2016-03-04 17:00:00,,0
28,1.1.1.4.1.2.2,"Inrichten tijdelijk fietspad op huidig voetpad, verwijderen objecten",2.375,1.9,2.85,2016-03-01 08:00:00,2016-03-03 17:00:00,,0
29,1.1.1.4.1.2.3,VRI kruispunt Stoopstraat,0.375,0.3,0.45,2016-03-04 08:00:00,2016-03-04 17:00:00,,0
30,1.1.1.4.1.2.4,VRI kruispunt Maria-Theresia (uit dienst),0.375,0.3,0.45,2016-03-07 08:00:00,2016-03-07 17:00:00,,0
31,1.1.1.4.1.2.5,VRI kruispunt Keyserlei,1.375,1.1,1.65,2016-03-03 08:00:00,2016-03-04 17:00:00,,0
32,1.1.1.4.1.2.6,VRI kruispunt Gemeentestraat,3.375,2.7,4.05,2016-03-01 08:00:00,2016-03-04 17:00:00,,0
33,1.1.1.4.1.2.7,"Plaatsing wegmarkeringen, incl op fietspaden",0.375,0.3,0.45,2016-03-04 08:00:00,2016-03-04 17:00:00,,0
34,1.1.1.4.1.2.8,Plaatsing signalisatie,0.375,0.3,0.45,2016-03-04 08:00:00,2016-03-04 17:00:00,,0
35,1.1.1.4.1.2.9,Nieuwe verkeerssituatie in werking (verkeer via ventwegen),0.0,0.0,0.0,2016-03-07 17:00:00,2016-03-07 17:00:00,,0
36,1.1.1.4.1.3,Tijdelijke tramspoor (richting zuid) omleggen naast Open Helling,272.375,269.65,275.1,2016-03-08 08:00:00,2016-12-05 17:00:00,,0
37,1.1.1.4.1.3.1,Verwijderen verkeerslichten kruising tram-weg,0.375,0.3,0.45,2016-03-08 08:00:00,2016-03-08 17:00:00,,0
38,1.1.1.4.1.3.2,Opbraak wegenis tijdelijk tramtracé,2.375,1.9,2.85,2016-03-08 08:00:00,2016-03-10 17:00:00,,0
39,1.1.1.4.1.3.3,Bovenleidingen (aanpassen),6.375,5.1,7.65,2016-03-08 08:00:00,2016-03-14 17:00:00,,0
40,1.1.1.4.1.3.4,Rooien deel bomen,6.375,5.1,7.65,2016-03-08 08:00:00,2016-03-14 17:00:00,,0
41,1.1.1.4.1.3.5,Spoorbedding,2.375,1.9,2.85,2016-03-15 08:00:00,2016-03-17 17:00:00,,0
42,1.1.1.4.1.3.6,Spoorwerken (normale werktijden),4.375,3.5,5.25,2016-03-18 08:00:00,2016-03-22 17:00:00,,0
43,1.1.1.4.1.3.7,Verharding trambaan,7.375,5.9,8.85,2016-03-21 08:00:00,2016-03-28 17:00:00,,0
44,1.1.1.4.1.3.8,Spoorwerken (BDS 's nachts),0.375,0.3,0.45,2016-03-30 08:00:00,2016-03-30 17:00:00,,0
45,1.1.1.4.1.3.9,Tram op tijdelijk tracé,246.375,197.1,295.65,2016-03-30 08:00:00,2016-12-01 17:00:00,,0
46,1.1.1.4.1.3.10,Opbraak oud tramtracé,3.375,2.7,4.05,2016-12-02 08:00:00,2016-12-05 17:00:00,,0
47,1.1.1.4.1.4,Tijdelijk tramtracé Frankrijklei + Operaplein,304.375,301.33,307.42,2016-03-08 08:00:00,2017-01-06 17:00:00,,0
48,1.1.1.4.1.4.1,Bovenleidingen aanpassen (spinnenweb),7.375,5.9,8.85,2016-03-08 08:00:00,2016-03-15 17:00:00,,0
49,1.1.1.4.1.4.2,Rooien bomen vanop centrale werfzone,3.375,2.7,4.05,2016-03-08 08:00:00,2016-03-11 17:00:00,,0
50,1.1.1.4.1.4.3,Tramsporen thv voetgangersoversteek Keyserlei,8.375,6.7,10.05,2016-03-08 08:00:00,2016-03-16 17:00:00,,0
51,1.1.1.4.1.4.4,Opbraakwerken,7.375,5.9,8.85,2016-03-17 08:00:00,2016-03-24 17:00:00,,0
52,1.1.1.4.1.4.5,Funderingen tijdelijke bovenleidingspalen,3.375,2.7,4.05,2016-03-25 08:00:00,2016-03-28 17:00:00,,0
53,1.1.1.4.1.4.6,Spoorbedding,7.375,5.9,8.85,2016-03-29 08:00:00,2016-04-05 17:00:00,,0
54,1.1.1.4.1.4.7,Spoorwerken,6.375,5.1,7.65,2016-04-06 08:00:00,2016-04-12 17:00:00,,0
55,1.1.1.4.1.4.8,Verharding trambaan,7.375,5.9,8.85,2016-04-13 08:00:00,2016-04-20 17:00:00,,0
56,1.1.1.4.1.4.9,Bovenleidingen (ifv nieuw tracé),6.375,5.1,7.65,2016-04-21 08:00:00,2016-04-27 17:00:00,,0
57,1.1.1.4.1.4.10,Aansluiting tramsporen aan bestaand (BDS 's nachts),5.375,4.3,6.45,2016-04-28 08:00:00,2016-05-03 17:00:00,,0
58,1.1.1.4.1.4.11,Tram op tijdelijk tracé westzijde,1.375,1.1,1.65,2016-05-09 08:00:00,2016-05-10 17:00:00,,0
59,1.1.1.4.1.4.12,Inrichten tijdelijk perron ten zuiden van kruispunt Stoopstr,19.375,15.5,23.25,2016-12-02 08:00:00,2016-12-21 17:00:00,,0
60,1.1.1.4.1.4.13,Tijdelijk perron in dienst,10.375,8.3,12.45,2016-12-23 08:00:00,2017-01-02 17:00:00,,0
61,1.1.1.4.1.4.14,Afbraak bestaand perron,3.375,2.7,4.05,2017-01-03 08:00:00,2017-01-06 17:00:00,,0
62,1.1.1.4.1.4.15,Aanpassen wegenis,13.375,10.7,16.05,2016-04-13 08:00:00,2016-04-26 17:00:00,,0
63,1.1.1.4.1.4.16,Inrichten fietspad naast rijweg,7.375,5.9,8.85,2016-04-19 08:00:00,2016-04-26 17:00:00,,0
64,1.1.1.4.1.4.17,Omschakeling wegverkeer,0.0,0.0,0.0,2017-01-06 17:00:00,2017-01-06 17:00:00,,0
65,1.1.1.4.1.5,Wegenis Stoopstraat-Maria Theresialei - Oostzijde,212.375,210.25,214.5,2016-11-02 08:00:00,2017-06-02 17:00:00,,0
66,1.1.1.4.1.5.1,Zone kruispunt: Louiza Marialei,155.375,153.82,156.93,2016-11-07 08:00:00,2017-04-11 17:00:00,,0
67,1.1.1.4.1.5.1.1,Signalisatie,0.375,0.3,0.45,2016-11-07 08:00:00,2016-11-07 17:00:00,,0
68,1.1.1.4.1.5.1.2,Voorbereidende werken,0.375,0.3,0.45,2016-11-07 08:00:00,2016-11-07 17:00:00,,0
69,1.1.1.4.1.5.1.3,Opbraak rijweg en voetpaden,1.375,1.1,1.65,2016-11-08 08:00:00,2016-11-09 17:00:00,,0
70,1.1.1.4.1.5.1.4,Riool + D62 aanstorting,4.375,3.5,5.25,2016-11-10 08:00:00,2016-11-14 17:00:00,,0
71,1.1.1.4.1.5.1.5,Slagsonde,0.375,0.3,0.45,2016-11-16 08:00:00,2016-11-16 17:00:00,,0
72,1.1.1.4.1.5.1.6,Grondwerk,1.375,1.1,1.65,2017-01-09 08:00:00,2017-01-10 17:00:00,,0
73,1.1.1.4.1.5.1.7,Onderfundering type II,1.375,1.1,1.65,2017-01-11 08:00:00,2017-01-12 17:00:00,,0
74,1.1.1.4.1.5.1.8,Plaatproef,0.375,0.3,0.45,2017-01-13 08:00:00,2017-01-13 17:00:00,,0
75,1.1.1.4.1.5.1.9,Borduur ,5.375,4.3,6.45,2017-01-13 08:00:00,2017-01-18 17:00:00,,0
76,1.1.1.4.1.5.1.10,Fundering type I,0.375,0.3,0.45,2017-02-20 08:00:00,2017-02-20 17:00:00,,0
77,1.1.1.4.1.5.1.11,Fundering type II,0.375,0.3,0.45,2017-02-20 08:00:00,2017-02-20 17:00:00,,0
78,1.1.1.4.1.5.1.12,Plaatproef,0.375,0.3,0.45,2017-02-21 08:00:00,2017-02-21 17:00:00,,0
79,1.1.1.4.1.5.1.13,Greppel in graniet,1.375,1.1,1.65,2017-02-21 08:00:00,2017-02-22 17:00:00,,0
80,1.1.1.4.1.5.1.14,Voorbereidende werken voetpad,4.375,3.5,5.25,2017-03-06 08:00:00,2017-03-10 17:00:00,,0
81,1.1.1.4.1.5.1.15,Voetpad in graniet,2.375,1.9,2.85,2017-03-27 08:00:00,2017-03-29 17:00:00,,0
82,1.1.1.4.1.5.1.16,Asfalt OL,0.375,0.3,0.45,2017-02-28 08:00:00,2017-02-28 17:00:00,,0
83,1.1.1.4.1.5.1.17,Verharding betonstraatstenen,1.375,1.1,1.65,2017-03-14 08:00:00,2017-03-15 17:00:00,,0
84,1.1.1.4.1.5.1.18,Asfalt fietspad,0.375,0.3,0.45,2017-04-11 08:00:00,2017-04-11 17:00:00,,0
85,1.1.1.4.1.5.2,Zone hoofdrijweg: Leien Louiza Marialei - Marie Theresialei Oostzijde,162.375,160.75,164.0,2016-11-09 08:00:00,2017-04-20 17:00:00,,0
86,1.1.1.4.1.5.2.1,Signalisatie,0.375,0.3,0.45,2016-11-09 08:00:00,2016-11-09 17:00:00,,0
87,1.1.1.4.1.5.2.2,Grondwerk,1.375,1.1,1.65,2017-01-09 08:00:00,2017-01-10 17:00:00,,0
88,1.1.1.4.1.5.2.3,Onderfundering type II,2.375,1.9,2.85,2017-01-11 08:00:00,2017-01-13 17:00:00,,0
89,1.1.1.4.1.5.2.4,Plaatproef onderfundering,0.375,0.3,0.45,2017-01-17 08:00:00,2017-01-17 17:00:00,,0
90,1.1.1.4.1.5.2.5,WS ,1.375,1.1,1.65,2017-01-18 08:00:00,2017-01-19 17:00:00,,0
91,1.1.1.4.1.5.2.6,Boordstenen,2.375,1.9,2.85,2017-01-23 08:00:00,2017-01-25 17:00:00,,0
92,1.1.1.4.1.5.2.7,Funderingspalen bovenleidingsmasten MN 0102;0106; 0118; 0119; 0117,4.375,3.5,5.25,2017-02-27 08:00:00,2017-03-03 17:00:00,,0
93,1.1.1.4.1.5.2.8,WB OV,1.375,1.1,1.65,2017-02-06 08:00:00,2017-02-07 17:00:00,,0
94,1.1.1.4.1.5.2.9,Fundering,1.375,1.1,1.65,2017-02-20 08:00:00,2017-02-21 17:00:00,,0
95,1.1.1.4.1.5.2.10,Plaatproef fundering,0.375,0.3,0.45,2017-02-22 08:00:00,2017-02-22 17:00:00,,0
96,1.1.1.4.1.5.2.11,Asfalt,1.375,1.1,1.65,2017-02-28 08:00:00,2017-03-01 17:00:00,,0
97,1.1.1.4.1.5.2.12,Trambusbaan,92.375,91.45,93.3,2017-01-18 08:00:00,2017-04-20 17:00:00,,0
98,1.1.1.4.1.5.2.12.1,Grondwerk,1.375,1.1,1.65,2017-01-18 08:00:00,2017-01-19 17:00:00,,0
99,1.1.1.4.1.5.2.12.2,WB ,2.375,1.9,2.85,2017-01-23 08:00:00,2017-01-25 17:00:00,,0
100,1.1.1.4.1.5.2.12.3,Drainage,2.375,1.9,2.85,2017-01-23 08:00:00,2017-01-25 17:00:00,,0
101,1.1.1.4.1.5.2.12.4,Fundering,1.375,1.1,1.65,2017-02-27 08:00:00,2017-02-28 17:00:00,,0
102,1.1.1.4.1.5.2.12.5,Plaatproef fund. TBB,0.375,0.3,0.45,2017-03-07 08:00:00,2017-03-07 17:00:00,,0
103,1.1.1.4.1.5.2.12.6,Opmeting fundering TBB,0.375,0.3,0.45,2017-02-27 08:00:00,2017-02-27 17:00:00,,0
104,1.1.1.4.1.5.2.12.7,Spooraanleg,7.375,5.9,8.85,2017-03-15 08:00:00,2017-03-22 17:00:00,,0
105,1.1.1.4.1.5.2.12.8,Opmeting spoor ,0.375,0.3,0.45,2017-03-23 08:00:00,2017-03-23 17:00:00,,0
106,1.1.1.4.1.5.2.12.9,Boordsteen tegen tramtunnel,1.375,1.1,1.65,2017-03-08 08:00:00,2017-03-09 17:00:00,,0
107,1.1.1.4.1.5.2.12.10,Kiftbeton,3.375,2.7,4.05,2017-03-24 08:00:00,2017-03-27 17:00:00,,0
108,1.1.1.4.1.5.2.12.11,Wapening betonverharding,1.375,1.1,1.65,2017-03-28 08:00:00,2017-03-29 17:00:00,,0
109,1.1.1.4.1.5.2.12.12,Betonverharding,7.375,5.9,8.85,2017-03-30 08:00:00,2017-04-06 17:00:00,,0
110,1.1.1.4.1.5.2.12.13,"VRI palen A09,10",1.375,1.1,1.65,2017-03-22 08:00:00,2017-03-23 17:00:00,,0
111,1.1.1.4.1.5.2.12.14,Aansluiting aan het kruispunt Stoopstraat,2.375,1.9,2.85,2017-04-12 08:00:00,2017-04-14 17:00:00,,0
112,1.1.1.4.1.5.2.12.15,Aansluiting kruispunt Stoopstraat klaar voor verkeer oostzijde,0.0,0.0,0.0,2017-04-20 17:00:00,2017-04-20 17:00:00,,0
113,1.1.1.4.1.5.3,Zone ventweg en voetpad: Louiza Marialei -Maria Theresialei Oostzijde,92.375,91.45,93.3,2017-03-02 08:00:00,2017-06-02 17:00:00,,0
114,1.1.1.4.1.5.3.1,Signalisatie,0.375,0.3,0.45,2017-03-02 08:00:00,2017-03-02 17:00:00,,0
115,1.1.1.4.1.5.3.2,Opbraak verharding ,1.375,1.1,1.65,2017-03-06 08:00:00,2017-03-07 17:00:00,,0
116,1.1.1.4.1.5.3.3,Riool D62 - D50,19.375,15.5,23.25,2017-03-16 08:00:00,2017-04-04 17:00:00,,0
117,1.1.1.4.1.5.3.4,Riool RS01 -RS02,0.375,0.3,0.45,2017-03-17 08:00:00,2017-03-17 17:00:00,,0
118,1.1.1.4.1.5.3.5,Riool RS01- R190,0.375,0.3,0.45,2017-03-20 08:00:00,2017-03-20 17:00:00,,0
119,1.1.1.4.1.5.3.6,Riool RS01 - R77,2.375,1.9,2.85,2017-03-21 08:00:00,2017-03-23 17:00:00,,0
120,1.1.1.4.1.5.3.7,Bomenvisie,6.375,5.1,7.65,2017-03-21 08:00:00,2017-03-27 17:00:00,,0
121,1.1.1.4.1.5.3.8,Uitgraving,1.375,1.1,1.65,2017-03-21 08:00:00,2017-03-22 17:00:00,,0
122,1.1.1.4.1.5.3.9,Verluchtings- drainagebuis,5.375,4.3,6.45,2017-03-22 08:00:00,2017-03-27 17:00:00,,0
123,1.1.1.4.1.5.3.10,HA +WB WS,22.375,17.9,26.85,2017-03-14 08:00:00,2017-04-05 17:00:00,,0
124,1.1.1.4.1.5.3.11,WB OV,1.375,1.1,1.65,2017-04-10 08:00:00,2017-04-11 17:00:00,,0
125,1.1.1.4.1.5.3.12,Grondwerk ventweg,4.375,3.5,5.25,2017-04-03 08:00:00,2017-04-07 17:00:00,,0
126,1.1.1.4.1.5.3.13,Onderfundering II ventweg,4.375,3.5,5.25,2017-04-03 08:00:00,2017-04-07 17:00:00,,0
127,1.1.1.4.1.5.3.14,HA aankoppelen,21.375,17.1,25.65,2017-04-10 08:00:00,2017-05-01 17:00:00,,0
128,1.1.1.4.1.5.3.15,Fundering ventweg + parkeerstrook,2.375,1.9,2.85,2017-05-15 08:00:00,2017-05-17 17:00:00,,0
129,1.1.1.4.1.5.3.16,Plaatproef fundering ventweg,0.375,0.3,0.45,2017-05-18 08:00:00,2017-05-18 17:00:00,,0
130,1.1.1.4.1.5.3.17,Verharding parkeerstrook,1.375,1.1,1.65,2017-05-23 08:00:00,2017-05-24 17:00:00,,0
131,1.1.1.4.1.5.3.18,Verharding Ventweg,1.375,1.1,1.65,2017-05-30 08:00:00,2017-05-31 17:00:00,,0
132,1.1.1.4.1.5.3.19,OV Engie V-TN 01001 ->01011,2.375,1.9,2.85,2017-05-22 08:00:00,2017-05-24 17:00:00,,0
133,1.1.1.4.1.5.3.20,"VRI palen A06,07,08",1.375,1.1,1.65,2017-05-23 08:00:00,2017-05-24 17:00:00,,0
134,1.1.1.4.1.5.3.21,"VRI palen A06,07,08",1.375,1.1,1.65,2017-05-30 08:00:00,2017-05-31 17:00:00,,0
135,1.1.1.4.1.5.3.22,Opbraak voetpad,9.375,7.5,11.25,2017-05-03 08:00:00,2017-05-12 17:00:00,,0
136,1.1.1.4.1.5.3.23,Huisaansluitingen voetpad,15.375,12.3,18.45,2017-04-18 08:00:00,2017-05-03 17:00:00,,0
137,1.1.1.4.1.5.3.24,Boordstenen voetpad + WS,2.375,1.9,2.85,2017-05-08 08:00:00,2017-05-10 17:00:00,,0
138,1.1.1.4.1.5.3.25,Fundering voetpad,1.375,1.1,1.65,2017-05-11 08:00:00,2017-05-12 17:00:00,,0
139,1.1.1.4.1.5.3.26,Verharding voetpad,12.375,9.9,14.85,2017-05-17 08:00:00,2017-05-29 17:00:00,,0
140,1.1.1.4.1.5.3.27,Onderfundering fietspad,1.375,1.1,1.65,2017-04-06 08:00:00,2017-04-07 17:00:00,,0
141,1.1.1.4.1.5.3.28,Plaatproef onderfundering fietspad,0.375,0.3,0.45,2017-04-10 08:00:00,2017-04-10 17:00:00,,0
142,1.1.1.4.1.5.3.29,Boordstenen fietspad,1.375,1.1,1.65,2017-04-06 08:00:00,2017-04-07 17:00:00,,0
143,1.1.1.4.1.5.3.30,Fundering IA en IIA fietspad,0.375,0.3,0.45,2017-04-10 08:00:00,2017-04-10 17:00:00,,0
144,1.1.1.4.1.5.3.31,Plaatproef fundering fietspad,0.375,0.3,0.45,2017-04-10 08:00:00,2017-04-10 17:00:00,,0
145,1.1.1.4.1.5.3.32,Asfalt fietspad OL + TL,0.375,0.3,0.45,2017-04-11 08:00:00,2017-04-11 17:00:00,,0
146,1.1.1.4.1.5.3.33,OV Engie V-MN 01101-> 01106 en 01109,2.375,1.9,2.85,2017-05-29 08:00:00,2017-05-31 17:00:00,,0
147,1.1.1.4.1.5.3.34,Afwerken bermen,1.375,1.1,1.65,2017-06-01 08:00:00,2017-06-02 17:00:00,,0
148,1.1.1.4.1.5.3.35,Opruimen werf,1.375,1.1,1.65,2017-06-01 08:00:00,2017-06-02 17:00:00,,0
149,1.1.1.4.1.5.4,Zone voet- en fietspad: Maria Theresialei - Keyserlei,212.375,210.25,214.5,2016-11-02 08:00:00,2017-06-02 17:00:00,,0
150,1.1.1.4.1.5.4.1,Aanvulling Livantunnel ,50.375,40.3,60.45,2016-11-02 08:00:00,2016-12-22 17:00:00,,0
151,1.1.1.4.1.5.4.2,D60 - D59,4.375,3.5,5.25,2017-01-09 08:00:00,2017-01-13 17:00:00,,0
152,1.1.1.4.1.5.4.3,RS06 - R63,3.375,2.7,4.05,2017-01-17 08:00:00,2017-01-20 17:00:00,,0
153,1.1.1.4.1.5.4.4,Tijdelijke werfweg,2.375,1.9,2.85,2016-12-20 08:00:00,2016-12-22 17:00:00,,0
154,1.1.1.4.1.5.4.5,HA,43.375,34.7,52.05,2017-03-15 08:00:00,2017-04-27 17:00:00,,0
155,1.1.1.4.1.5.4.6,Opbraak voetpad + grondwerk,5.375,4.3,6.45,2017-05-19 08:00:00,2017-05-24 17:00:00,,0
156,1.1.1.4.1.5.4.7,WB OV ,2.375,1.9,2.85,2017-05-24 08:00:00,2017-05-26 17:00:00,,0
157,1.1.1.4.1.5.4.8,Fundering voetpad ,2.375,1.9,2.85,2017-05-24 08:00:00,2017-05-26 17:00:00,,0
158,1.1.1.4.1.5.4.9,OV Engie V-TN 01009 -> 02006,4.375,3.5,5.25,2017-05-29 08:00:00,2017-06-02 17:00:00,,0
159,1.1.1.4.1.5.4.10,Onderfundering fietspad,2.375,1.9,2.85,2017-05-24 08:00:00,2017-05-26 17:00:00,,0
160,1.1.1.4.1.5.4.11,Boordstenen fietspad,0.375,0.3,0.45,2017-05-24 08:00:00,2017-05-24 17:00:00,,0
161,1.1.1.4.1.5.4.12,Fundering IA en IIA fietspad + voetpad,1.375,1.1,1.65,2017-05-29 08:00:00,2017-05-30 17:00:00,,0
162,1.1.1.4.1.5.4.13,Asfalt fietspad OL,1.375,1.1,1.65,2017-05-30 08:00:00,2017-05-31 17:00:00,,0
163,1.1.1.4.1.6,Alle werken klaar voor knip,0.0,0.0,0.0,2017-06-02 17:00:00,2017-06-02 17:00:00,,0
164,1.1.1.4.1.7,"Wegenis Stoopstraat-Maria Theresialei - West (restant ventweg, fiets- en voetpaden)",464.1666666667006,459.53,468.81,2017-06-05 08:00:00,2018-09-12 12:00:00,,0
165,1.1.1.4.1.7.1,Fasewissel Frankrijklei (Stoopstr-Maria-Theresia) Start,282.375,225.9,338.85,2017-06-05 08:00:00,2018-03-14 17:00:00,,0
166,1.1.1.4.1.7.2,"Voorbereidingen, signalisatie en opbraakwerken",13.375,10.7,16.05,2018-03-15 08:00:00,2018-03-28 17:00:00,,0
167,1.1.1.4.1.7.3,Aanleg tijdelijk fietspad (mogelijks),0.375,0.3,0.45,2018-03-15 08:00:00,2018-03-15 17:00:00,,0
168,1.1.1.4.1.7.4,Archeologie,11.375,9.1,13.65,2018-03-29 08:00:00,2018-04-09 17:00:00,,0
169,1.1.1.4.1.7.5,Rioleringen + dwarse wachtbuizen,8.375,6.7,10.05,2018-03-29 08:00:00,2018-04-06 17:00:00,,0
170,1.1.1.4.1.7.6,"Ingegraven leidingen, trekputten",0.0,0.0,0.0,2018-04-06 17:00:00,2018-04-06 17:00:00,,0
171,1.1.1.4.1.7.7,Grondwerk,3.375,2.7,4.05,2018-04-09 08:00:00,2018-04-12 17:00:00,,0
172,1.1.1.4.1.7.8,Onderfundering + eerste funderingslaag,4.375,3.5,5.25,2018-04-13 08:00:00,2018-04-17 17:00:00,,0
173,1.1.1.4.1.7.9,Waterslikkers plaatsen,0.0,0.0,0.0,2018-04-17 17:00:00,2018-04-17 17:00:00,,0
174,1.1.1.4.1.7.10,Fundering trambaan ,6.375,5.1,7.65,2018-04-18 08:00:00,2018-04-24 17:00:00,,0
175,1.1.1.4.1.7.11,Boordstenen,0.0,0.0,0.0,2018-04-17 17:00:00,2018-04-17 17:00:00,,0
176,1.1.1.4.1.7.12,Spoor,7.375,5.9,8.85,2018-04-25 08:00:00,2018-05-02 17:00:00,,0
177,1.1.1.4.1.7.13,Kiftbeton,3.375,2.7,4.05,2018-04-27 08:00:00,2018-04-30 17:00:00,,0
178,1.1.1.4.1.7.14,Wapening,4.375,3.5,5.25,2018-05-03 08:00:00,2018-05-07 17:00:00,,0
179,1.1.1.4.1.7.15,Betonverharding TBB,2.375,1.9,2.85,2018-05-08 08:00:00,2018-05-10 17:00:00,,0
180,1.1.1.4.1.7.16,Greppel,1.375,1.1,1.65,2017-09-05 08:00:00,2017-09-06 17:00:00,,0
181,1.1.1.4.1.7.17,Fundering rijweg,6.375,5.1,7.65,2017-09-07 08:00:00,2017-09-13 17:00:00,,0
182,1.1.1.4.1.7.18,Onderlaag asfalt,1.375,1.1,1.65,2017-09-14 08:00:00,2017-09-15 17:00:00,,0
183,1.1.1.4.1.7.19,Ophalen IP,0.375,0.3,0.45,2017-09-18 08:00:00,2017-09-18 17:00:00,,0
184,1.1.1.4.1.7.20,Toplaag asfalt,0.375,0.3,0.45,2017-09-19 08:00:00,2017-09-19 17:00:00,,0
185,1.1.1.4.1.7.21,Belijning,0.375,0.3,0.45,2017-09-20 08:00:00,2017-09-20 17:00:00,,0
186,1.1.1.4.1.7.22,Fasewissel Frankrijklei (Stoopstr-Maria-Theresia),0.0,0.0,0.0,2017-09-20 17:00:00,2017-09-20 17:00:00,,0
187,1.1.1.4.1.7.23,Opbraak voetpad,6.375,5.1,7.65,2017-09-21 08:00:00,2017-09-27 17:00:00,,0
188,1.1.1.4.1.7.24,"Peilen, (ver)plaatsen en aanpassen nutsleidingen",30.375,24.3,36.45,2017-09-25 08:00:00,2017-10-25 17:00:00,,0
189,1.1.1.4.1.7.25,Opbraak verharding,1.375,1.1,1.65,2017-10-30 08:00:00,2017-10-31 17:00:00,,0
190,1.1.1.4.1.7.26,Archeologie,4.375,3.5,5.25,2017-11-02 08:00:00,2017-11-06 17:00:00,,0
191,1.1.1.4.1.7.27,Riolering,6.375,5.1,7.65,2017-11-03 08:00:00,2017-11-09 17:00:00,,0
192,1.1.1.4.1.7.28,Overstort,4.375,3.5,5.25,2017-11-10 08:00:00,2017-11-14 17:00:00,,0
193,1.1.1.4.1.7.29,Huisaansluitingen,20.375,16.3,24.45,2017-11-29 08:00:00,2017-12-19 17:00:00,,0
194,1.1.1.4.1.7.30,Bomenvisie,6.375,5.1,7.65,2018-01-09 08:00:00,2018-01-15 17:00:00,,0
195,1.1.1.4.1.7.31,"Grondwerk, onderfundering en fundering ventweg + parkeerstrook en gedeelte van het voetpad",27.375,21.9,32.85,2018-01-19 08:00:00,2018-02-15 17:00:00,,0
196,1.1.1.4.1.7.32,Fundering boordstenen,0.375,0.3,0.45,2018-02-16 08:00:00,2018-02-16 17:00:00,,0
197,1.1.1.4.1.7.33,Fundering type II,0.375,0.3,0.45,2018-02-19 08:00:00,2018-02-19 17:00:00,,0
198,1.1.1.4.1.7.34,Waterslikkers,3.375,2.7,4.05,2018-02-23 08:00:00,2018-02-26 17:00:00,,0
199,1.1.1.4.1.7.35,Boordstenen ventweg,6.375,5.1,7.65,2018-02-20 08:00:00,2018-02-26 17:00:00,,0
200,1.1.1.4.1.7.36,Greppel in graniet,7.375,5.9,8.85,2018-02-27 08:00:00,2018-03-06 17:00:00,,0
201,1.1.1.4.1.7.37,Verharding ventweg,6.375,5.1,7.65,2018-03-07 08:00:00,2018-03-13 17:00:00,,0
202,1.1.1.4.1.7.38,"Opbraak voetpad, grondwerk naast parkeerstrook",2.375,1.9,2.85,2018-03-14 08:00:00,2018-03-16 17:00:00,,0
203,1.1.1.4.1.7.39,Wachtbuis OV,1.375,1.1,1.65,2018-03-19 08:00:00,2018-03-20 17:00:00,,0
204,1.1.1.4.1.7.40,Dienstriolering en huisaansluitingen,18.375,14.7,22.05,2018-03-19 08:00:00,2018-04-06 17:00:00,,0
205,1.1.1.4.1.7.41,Verharding voetpad,156.16666666670062,124.93,187.4,2018-04-09 08:00:00,2018-09-12 12:00:00,,0
206,1.1.1.4.1.7.42,Onderfundering fietspad,1.375,1.1,1.65,2018-02-19 08:00:00,2018-02-20 17:00:00,,0
207,1.1.1.4.1.7.43,Boordstenen fietspad,1.375,1.1,1.65,2018-02-21 08:00:00,2018-02-22 17:00:00,,0
208,1.1.1.4.1.7.44,Fundering fietspad,4.375,3.5,5.25,2018-02-23 08:00:00,2018-02-27 17:00:00,,0
209,1.1.1.4.1.7.45,Asfalt fietspad OL + TL,1.375,1.1,1.65,2018-02-28 08:00:00,2018-03-01 17:00:00,,0
210,1.1.1.4.1.7.46,Openbare verlichting,7.375,5.9,8.85,2018-03-02 08:00:00,2018-03-09 17:00:00,,0
211,1.1.1.4.1.7.47,Grindgazon,0.375,0.3,0.45,2018-03-12 08:00:00,2018-03-12 17:00:00,,0
212,1.1.1.4.2,111 Tunnel prémetrostation -3,584.375,578.53,590.22,2016-03-01 08:00:00,2017-10-06 17:00:00,,0
213,1.1.1.4.2.1,Voorbereidingen,456.375,451.81,460.94,2016-03-01 08:00:00,2017-05-31 17:00:00,,0
214,1.1.1.4.2.1.1,Rooien bomen vanop centrale werfzone,13.375,10.7,16.05,2016-03-09 08:00:00,2016-03-22 17:00:00,,0
215,1.1.1.4.2.1.2,Frezen asfaltverharding hoofdrijweg,1.375,1.1,1.65,2016-03-09 08:00:00,2016-03-10 17:00:00,,0
216,1.1.1.4.2.1.3,Opbraakwerken,9.375,7.5,11.25,2016-03-01 08:00:00,2016-03-10 17:00:00,,0
217,1.1.1.4.2.1.4,Opbraak oud tramtracé + ventweg oost,14.375,11.5,17.25,2016-05-04 08:00:00,2016-05-18 17:00:00,,0
218,1.1.1.4.2.1.5,Opzoekingswerk archeologie - bovenste deel bastion,7.375,5.9,8.85,2016-03-11 08:00:00,2016-03-18 17:00:00,,0
219,1.1.1.4.2.1.6,Opzoekingswerk archeologie - muren bastion (na uitgraving),12.375,9.9,14.85,2016-04-15 08:00:00,2016-04-27 17:00:00,,0
220,1.1.1.4.2.1.7,Bemaling,414.375,410.23,418.52,2016-04-12 08:00:00,2017-05-31 17:00:00,,0
221,1.1.1.4.2.1.7.1,installatie bemaling,2.375,1.9,2.85,2016-04-12 08:00:00,2016-04-14 17:00:00,,0
222,1.1.1.4.2.1.7.2,demontage bemaling,1.375,1.1,1.65,2017-05-30 08:00:00,2017-05-31 17:00:00,,0
223,1.1.1.4.2.2,Open helling (open bouwputmethode),484.375,479.53,489.22,2016-03-21 08:00:00,2017-07-18 17:00:00,,0
224,1.1.1.4.2.2.1,Berlinerwand (ca 100m),24.375,24.13,24.62,2016-03-21 08:00:00,2016-04-14 17:00:00,,0
225,1.1.1.4.2.2.1.1,heien profielen,4.375,3.5,5.25,2016-03-21 08:00:00,2016-03-25 17:00:00,,0
226,1.1.1.4.2.2.1.2,plaatsen plaatjes,9.375,7.5,11.25,2016-04-05 08:00:00,2016-04-14 17:00:00,,0
227,1.1.1.4.2.2.2,Uitgraving bouwput - deel 1,10.375,8.3,12.45,2016-04-15 08:00:00,2016-04-25 17:00:00,,0
228,1.1.1.4.2.2.3,Uitgraving bouwput - deel 2,8.375,6.7,10.05,2016-05-16 08:00:00,2016-05-24 17:00:00,,0
229,1.1.1.4.2.2.4,Funderingsplaat - Fase 1,31.375,31.06,31.69,2016-04-26 08:00:00,2016-05-27 17:00:00,,0
230,1.1.1.4.2.2.4.1,zuiverheidslaag,1.375,1.1,1.65,2016-04-26 08:00:00,2016-04-27 17:00:00,,0
231,1.1.1.4.2.2.4.2,wapening,13.375,10.7,16.05,2016-04-28 08:00:00,2016-05-11 17:00:00,,0
232,1.1.1.4.2.2.4.3,in te storten elementen,5.375,4.3,6.45,2016-05-20 08:00:00,2016-05-25 17:00:00,,0
233,1.1.1.4.2.2.4.4,storten beton,1.375,1.1,1.65,2016-05-26 08:00:00,2016-05-27 17:00:00,,0
234,1.1.1.4.2.2.5,Funderingsplaat - Fase 2,47.375,46.9,47.85,2017-06-01 08:00:00,2017-07-18 17:00:00,,0
235,1.1.1.4.2.2.5.1,zuiverheidslaag,1.375,1.1,1.65,2017-06-01 08:00:00,2017-06-02 17:00:00,,0
236,1.1.1.4.2.2.5.2,wapening,25.375,20.3,30.45,2017-06-05 08:00:00,2017-06-30 17:00:00,,0
237,1.1.1.4.2.2.5.3,in te storten elementen,9.375,7.5,11.25,2017-07-03 08:00:00,2017-07-12 17:00:00,,0
238,1.1.1.4.2.2.5.4,storten beton,5.375,4.3,6.45,2017-07-13 08:00:00,2017-07-18 17:00:00,,0
239,1.1.1.4.2.2.6,Betonwanden dikte 60cm - west,39.375,31.5,47.25,2016-08-22 08:00:00,2016-09-30 17:00:00,,0
240,1.1.1.4.2.2.7,Betonwanden dikte 60cm - oost,46.375,37.1,55.65,2016-08-22 08:00:00,2016-10-07 17:00:00,,0
241,1.1.1.4.2.2.8,Betonnen borstwering,43.375,34.7,52.05,2016-09-05 08:00:00,2016-10-18 17:00:00,,0
242,1.1.1.4.2.2.9,Aanvulling bouwput,11.375,9.1,13.65,2016-09-19 08:00:00,2016-09-30 17:00:00,,0
243,1.1.1.4.2.2.10,Verwijderen berlinerwand,4.375,3.5,5.25,2016-10-03 08:00:00,2016-10-07 17:00:00,,0
244,1.1.1.4.2.2.11,Helling berijdbaar (1 rijvak),0.0,0.0,0.0,2016-10-14 17:00:00,2016-10-14 17:00:00,,0
245,1.1.1.4.2.2.12,Afwerkingen NA ruwbouwwerken tunnel,205.375,203.32,207.43,2016-10-19 08:00:00,2017-05-12 17:00:00,,0
246,1.1.1.4.2.2.12.1,Betonnen looppad,23.375,18.7,28.05,2016-10-19 08:00:00,2016-11-11 17:00:00,,0
247,1.1.1.4.2.2.12.2,Plaatsen van kabels en leidingen,27.375,21.9,32.85,2016-11-22 08:00:00,2016-12-19 17:00:00,,0
248,1.1.1.4.2.2.12.3,Masten bovenleidingen,7.375,5.9,8.85,2017-02-20 08:00:00,2017-02-27 17:00:00,,0
249,1.1.1.4.2.2.12.4,Plaatsen van akoestische panelen,22.375,17.9,26.85,2017-01-09 08:00:00,2017-01-31 17:00:00,,0
250,1.1.1.4.2.2.12.5,Plaatsen van verlichting,6.375,5.1,7.65,2017-02-16 08:00:00,2017-02-22 17:00:00,,0
251,1.1.1.4.2.2.12.6,Plaatsen van natuursteen bekledingen,51.375,41.1,61.65,2017-02-22 08:00:00,2017-04-14 17:00:00,,0
252,1.1.1.4.2.2.12.7,Borstweringen (opmeting + productie + plaatsing),40.375,32.3,48.45,2017-03-22 08:00:00,2017-05-01 17:00:00,,0
253,1.1.1.4.2.2.12.8,Plaatsen LED verlichting borstwerking (FABRICOM),4.375,3.5,5.25,2017-05-08 08:00:00,2017-05-12 17:00:00,,0
254,1.1.1.4.2.2.12.9,Plaatsen poort (elek),2.375,1.9,2.85,2017-04-25 08:00:00,2017-04-27 17:00:00,,0
255,1.1.1.4.2.2.12.10,Plaatsen deksels voetpad,2.375,1.9,2.85,2017-05-02 08:00:00,2017-05-04 17:00:00,,0
256,1.1.1.4.2.2.12.11,Plaatsen pictogrammen tunnel,17.375,13.9,20.85,2017-04-03 08:00:00,2017-04-20 17:00:00,,0
257,1.1.1.4.2.3,Tramtunnel,465.375,460.72,470.03,2016-03-07 08:00:00,2017-06-15 17:00:00,,0
258,1.1.1.4.2.3.1,Ruwbouwwerken Tramtunnel,336.375,333.01,339.74,2016-03-07 08:00:00,2017-02-06 17:00:00,,0
259,1.1.1.4.2.3.1.1,Speciale funderingen,336.375,333.01,339.74,2016-03-07 08:00:00,2017-02-06 17:00:00,,0
260,1.1.1.4.2.3.1.1.1,Secanspalen Zone 1,21.375,17.1,25.65,2016-03-17 08:00:00,2016-04-07 17:00:00,,0
261,1.1.1.4.2.3.1.1.2,Uitgraving Zone 1,3.375,2.7,4.05,2016-04-11 08:00:00,2016-04-14 17:00:00,,0
262,1.1.1.4.2.3.1.1.3,Secanspalen Zone 2,9.375,7.5,11.25,2016-03-07 08:00:00,2016-03-16 17:00:00,,0
263,1.1.1.4.2.3.1.1.4,Beschoeide sleuven thv Belgacomkoker Zone 2,13.375,10.7,16.05,2016-03-17 08:00:00,2016-03-30 17:00:00,,0
264,1.1.1.4.2.3.1.1.5,Secanspalen Zone 2,28.375,22.7,34.05,2016-04-11 08:00:00,2016-05-09 17:00:00,,0
265,1.1.1.4.2.3.1.1.6,Secanspalen Zone 3,36.375,29.1,43.65,2016-05-23 08:00:00,2016-06-28 17:00:00,,0
266,1.1.1.4.2.3.1.1.7,Secanspalen Zone 4,21.375,17.1,25.65,2017-01-16 08:00:00,2017-02-06 17:00:00,,0
267,1.1.1.4.2.3.1.1.8,Jet-grouting thv aansluiting bestaande constructie,0.375,0.3,0.45,2017-01-16 08:00:00,2017-01-16 17:00:00,,0
268,1.1.1.4.2.3.1.2,MOOT 1 (210-235m),179.375,177.58,181.17,2016-05-09 08:00:00,2016-11-04 17:00:00,,0
269,1.1.1.4.2.3.1.2.1,Uitbraak bastion,2.375,1.9,2.85,2016-05-09 08:00:00,2016-05-11 17:00:00,,0
270,1.1.1.4.2.3.1.2.2,Nivelleren en zuiverheidslaag,1.375,1.1,1.65,2016-05-12 08:00:00,2016-05-13 17:00:00,,0
271,1.1.1.4.2.3.1.2.3,Dakplaat tunnel,17.375,17.2,17.55,2016-05-17 08:00:00,2016-06-03 17:00:00,,0
272,1.1.1.4.2.3.1.2.3.1,Uitkappen secans + chem ankers,6.375,5.1,7.65,2016-05-17 08:00:00,2016-05-23 17:00:00,,0
273,1.1.1.4.2.3.1.2.3.2,Bekisten dakplaat,2.375,1.9,2.85,2016-05-24 08:00:00,2016-05-26 17:00:00,,0
274,1.1.1.4.2.3.1.2.3.3,Wapening dakplaat,6.375,5.1,7.65,2016-05-27 08:00:00,2016-06-02 17:00:00,,0
275,1.1.1.4.2.3.1.2.3.4,Betonneren dakplaat,0.375,0.3,0.45,2016-06-03 08:00:00,2016-06-03 17:00:00,,0
276,1.1.1.4.2.3.1.2.4,Uitgraving in stross,6.375,5.1,7.65,2016-07-05 08:00:00,2016-07-11 17:00:00,,0
277,1.1.1.4.2.3.1.2.5,Schoonmaken secanswand,0.375,0.3,0.45,2016-07-12 08:00:00,2016-07-12 17:00:00,,0
278,1.1.1.4.2.3.1.2.6,Vloerplaat tunnel,18.375,18.19,18.56,2016-08-08 08:00:00,2016-08-26 17:00:00,,0
279,1.1.1.4.2.3.1.2.6.1,Uitkappen secans + chem ankers,3.375,2.7,4.05,2016-08-08 08:00:00,2016-08-11 17:00:00,,0
280,1.1.1.4.2.3.1.2.6.2,Wapening + riolering vloerplaat,11.375,9.1,13.65,2016-08-12 08:00:00,2016-08-23 17:00:00,,0
281,1.1.1.4.2.3.1.2.6.3,Betonneren vloerplaat,1.375,1.1,1.65,2016-08-25 08:00:00,2016-08-26 17:00:00,,0
282,1.1.1.4.2.3.1.2.7,Voorzetwanden,17.375,17.2,17.55,2016-09-05 08:00:00,2016-09-22 17:00:00,,0
283,1.1.1.4.2.3.1.2.7.1,Wapening voorzetwanden,11.375,9.1,13.65,2016-09-05 08:00:00,2016-09-16 17:00:00,,0
284,1.1.1.4.2.3.1.2.7.2,Bekisten (éénzijdig),13.375,10.7,16.05,2016-09-07 08:00:00,2016-09-20 17:00:00,,0
285,1.1.1.4.2.3.1.2.7.3,Betonneren voorzetwanden,13.375,10.7,16.05,2016-09-09 08:00:00,2016-09-22 17:00:00,,0
286,1.1.1.4.2.3.1.2.8,Looppad breedte 75cm,7.375,7.3,7.45,2016-09-23 08:00:00,2016-09-30 17:00:00,,0
287,1.1.1.4.2.3.1.2.8.1,Bekisten looppad,6.375,5.1,7.65,2016-09-23 08:00:00,2016-09-29 17:00:00,,0
288,1.1.1.4.2.3.1.2.8.2,Betonneren looppad + ontkisten,4.375,3.5,5.25,2016-09-26 08:00:00,2016-09-30 17:00:00,,0
289,1.1.1.4.2.3.1.2.9,Dakdichting en aanvulling,32.375,32.05,32.7,2016-10-03 08:00:00,2016-11-04 17:00:00,,0
290,1.1.1.4.2.3.1.2.9.1,Inboren openingen in secans,2.375,1.9,2.85,2016-10-03 08:00:00,2016-10-05 17:00:00,,0
291,1.1.1.4.2.3.1.2.9.2,Dakdichting,1.375,1.1,1.65,2016-10-06 08:00:00,2016-10-07 17:00:00,,0
292,1.1.1.4.2.3.1.2.9.3,Aanvulling,2.375,1.9,2.85,2016-11-02 08:00:00,2016-11-04 17:00:00,,0
293,1.1.1.4.2.3.1.3,MOOT 2 (235-260m),176.375,174.61,178.14,2016-05-12 08:00:00,2016-11-04 17:00:00,,0
294,1.1.1.4.2.3.1.3.1,Uitbraak bastion,6.375,5.1,7.65,2016-05-12 08:00:00,2016-05-18 17:00:00,,0
295,1.1.1.4.2.3.1.3.2,Nivelleren en zuiverheidslaag,4.375,3.5,5.25,2016-05-20 08:00:00,2016-05-24 17:00:00,,0
296,1.1.1.4.2.3.1.3.3,Dakplaat tunnel,21.375,21.16,21.59,2016-05-25 08:00:00,2016-06-15 17:00:00,,0
297,1.1.1.4.2.3.1.3.3.1,Uitkappen secans + chem ankers,6.375,5.1,7.65,2016-05-25 08:00:00,2016-05-31 17:00:00,,0
298,1.1.1.4.2.3.1.3.3.2,Bekisten dakplaat,2.375,1.9,2.85,2016-06-01 08:00:00,2016-06-03 17:00:00,,0
299,1.1.1.4.2.3.1.3.3.3,Wapening dakplaat,8.375,6.7,10.05,2016-06-06 08:00:00,2016-06-14 17:00:00,,0
300,1.1.1.4.2.3.1.3.3.4,Betonneren dakplaat,0.375,0.3,0.45,2016-06-15 08:00:00,2016-06-15 17:00:00,,0
301,1.1.1.4.2.3.1.3.4,Uitgraving in stross,10.375,8.3,12.45,2016-07-15 08:00:00,2016-07-25 17:00:00,,0
302,1.1.1.4.2.3.1.3.5,Schoonmaken secanswand,0.375,0.3,0.45,2016-07-26 08:00:00,2016-07-26 17:00:00,,0
303,1.1.1.4.2.3.1.3.6,Vloerplaat tunnel,24.375,24.13,24.62,2016-08-22 08:00:00,2016-09-15 17:00:00,,0
304,1.1.1.4.2.3.1.3.6.1,Uitkappen secans + chem ankers,7.375,5.9,8.85,2016-08-22 08:00:00,2016-08-29 17:00:00,,0
305,1.1.1.4.2.3.1.3.6.2,Wapening + riolering vloerplaat,13.375,10.7,16.05,2016-08-30 08:00:00,2016-09-12 17:00:00,,0
306,1.1.1.4.2.3.1.3.6.3,Betonneren vloerplaat,2.375,1.9,2.85,2016-09-13 08:00:00,2016-09-15 17:00:00,,0
307,1.1.1.4.2.3.1.3.7,Voorzetwanden,6.375,6.31,6.44,2016-09-21 08:00:00,2016-09-27 17:00:00,,0
308,1.1.1.4.2.3.1.3.7.1,Wapening voorzetwanden,5.375,4.3,6.45,2016-09-21 08:00:00,2016-09-26 17:00:00,,0
309,1.1.1.4.2.3.1.3.7.2,Bekisten (éénzijdig),4.375,3.5,5.25,2016-09-22 08:00:00,2016-09-26 17:00:00,,0
310,1.1.1.4.2.3.1.3.7.3,Betonneren voorzetwanden,4.375,3.5,5.25,2016-09-23 08:00:00,2016-09-27 17:00:00,,0
311,1.1.1.4.2.3.1.3.8,Looppad breedte 75cm,6.375,6.31,6.44,2016-10-05 08:00:00,2016-10-11 17:00:00,,0
312,1.1.1.4.2.3.1.3.8.1,Bekisten looppad,5.375,4.3,6.45,2016-10-05 08:00:00,2016-10-10 17:00:00,,0
313,1.1.1.4.2.3.1.3.8.2,Betonneren looppad + ontkisten,5.375,4.3,6.45,2016-10-06 08:00:00,2016-10-11 17:00:00,,0
314,1.1.1.4.2.3.1.3.9,Dakdichting en aanvulling,25.375,25.12,25.63,2016-10-10 08:00:00,2016-11-04 17:00:00,,0
315,1.1.1.4.2.3.1.3.9.1,Inboren openingen in secans,2.375,1.9,2.85,2016-10-10 08:00:00,2016-10-12 17:00:00,,0
316,1.1.1.4.2.3.1.3.9.2,Dakdichting,1.375,1.1,1.65,2016-10-13 08:00:00,2016-10-14 17:00:00,,0
317,1.1.1.4.2.3.1.3.9.3,Aanvulling,2.375,1.9,2.85,2016-11-02 08:00:00,2016-11-04 17:00:00,,0
318,1.1.1.4.2.3.1.4,MOOT 3 (260-285m),163.375,161.74,165.01,2016-05-30 08:00:00,2016-11-09 17:00:00,,0
319,1.1.1.4.2.3.1.4.1,Uitgraving,4.375,3.5,5.25,2016-05-30 08:00:00,2016-06-03 17:00:00,,0
320,1.1.1.4.2.3.1.4.2,Plaatsen stempels tunnelwanden,3.375,2.7,4.05,2016-05-31 08:00:00,2016-06-03 17:00:00,,0
321,1.1.1.4.2.3.1.4.3,Dakplaat tunnel,17.375,17.2,17.55,2016-06-06 08:00:00,2016-06-23 17:00:00,,0
322,1.1.1.4.2.3.1.4.3.1,Uitkappen secans + chem ankers,4.375,3.5,5.25,2016-06-06 08:00:00,2016-06-10 17:00:00,,0
323,1.1.1.4.2.3.1.4.3.2,Bekisten dakplaat,2.375,1.9,2.85,2016-06-13 08:00:00,2016-06-15 17:00:00,,0
324,1.1.1.4.2.3.1.4.3.3,Wapening dakplaat,6.375,5.1,7.65,2016-06-16 08:00:00,2016-06-22 17:00:00,,0
325,1.1.1.4.2.3.1.4.3.4,Betonneren dakplaat,0.375,0.3,0.45,2016-06-23 08:00:00,2016-06-23 17:00:00,,0
326,1.1.1.4.2.3.1.4.4,Uitgraving in stross,4.375,3.5,5.25,2016-07-25 08:00:00,2016-07-29 17:00:00,,0
327,1.1.1.4.2.3.1.4.5,Schoonmaken secanswand,0.375,0.3,0.45,2016-08-01 08:00:00,2016-08-01 17:00:00,,0
328,1.1.1.4.2.3.1.4.6,Vloerplaat tunnel,17.375,17.2,17.55,2016-08-30 08:00:00,2016-09-16 17:00:00,,0
329,1.1.1.4.2.3.1.4.6.1,Uitkappen secans + chem ankers,3.375,2.7,4.05,2016-08-30 08:00:00,2016-09-02 17:00:00,,0
330,1.1.1.4.2.3.1.4.6.2,Wapening + riolering vloerplaat,9.375,7.5,11.25,2016-09-05 08:00:00,2016-09-14 17:00:00,,0
331,1.1.1.4.2.3.1.4.6.3,Betonneren vloerplaat,1.375,1.1,1.65,2016-09-15 08:00:00,2016-09-16 17:00:00,,0
332,1.1.1.4.2.3.1.4.7,Voorzetwanden,13.375,13.24,13.51,2016-09-22 08:00:00,2016-10-05 17:00:00,,0
333,1.1.1.4.2.3.1.4.7.1,Wapening voorzetwanden,13.375,10.7,16.05,2016-09-22 08:00:00,2016-10-05 17:00:00,,0
334,1.1.1.4.2.3.1.4.7.2,Bekisten (éénzijdig),11.375,9.1,13.65,2016-09-23 08:00:00,2016-10-04 17:00:00,,0
335,1.1.1.4.2.3.1.4.7.3,Betonneren voorzetwanden,9.375,7.5,11.25,2016-09-26 08:00:00,2016-10-05 17:00:00,,0
336,1.1.1.4.2.3.1.4.8,Looppad breedte 75cm,6.375,6.31,6.44,2016-10-13 08:00:00,2016-10-19 17:00:00,,0
337,1.1.1.4.2.3.1.4.8.1,Bekisten looppad,5.375,4.3,6.45,2016-10-13 08:00:00,2016-10-18 17:00:00,,0
338,1.1.1.4.2.3.1.4.8.2,Betonneren looppad + ontkisten,5.375,4.3,6.45,2016-10-14 08:00:00,2016-10-19 17:00:00,,0
339,1.1.1.4.2.3.1.4.9,Dakdichting en aanvulling,23.375,23.14,23.61,2016-10-17 08:00:00,2016-11-09 17:00:00,,0
340,1.1.1.4.2.3.1.4.9.1,Inboren openingen in secans,2.375,1.9,2.85,2016-10-17 08:00:00,2016-10-19 17:00:00,,0
341,1.1.1.4.2.3.1.4.9.2,Dakdichting,1.375,1.1,1.65,2016-10-20 08:00:00,2016-10-21 17:00:00,,0
342,1.1.1.4.2.3.1.4.9.3,Aanvulling,2.375,1.9,2.85,2016-11-07 08:00:00,2016-11-09 17:00:00,,0
343,1.1.1.4.2.3.1.5,MOOT 4 (285-310m),156.375,154.81,157.94,2016-06-06 08:00:00,2016-11-09 17:00:00,,0
344,1.1.1.4.2.3.1.5.1,Uitgraving,4.375,3.5,5.25,2016-06-06 08:00:00,2016-06-10 17:00:00,,0
345,1.1.1.4.2.3.1.5.2,Plaatsen stempels tunnelwanden,3.375,2.7,4.05,2016-06-07 08:00:00,2016-06-10 17:00:00,,0
346,1.1.1.4.2.3.1.5.3,Dakplaat tunnel,17.375,17.2,17.55,2016-06-13 08:00:00,2016-06-30 17:00:00,,0
347,1.1.1.4.2.3.1.5.3.1,Uitkappen secans + chem ankers,4.375,3.5,5.25,2016-06-13 08:00:00,2016-06-17 17:00:00,,0
348,1.1.1.4.2.3.1.5.3.2,Bekisten dakplaat,2.375,1.9,2.85,2016-06-20 08:00:00,2016-06-22 17:00:00,,0
349,1.1.1.4.2.3.1.5.3.3,Wapening dakplaat,6.375,5.1,7.65,2016-06-23 08:00:00,2016-06-29 17:00:00,,0
350,1.1.1.4.2.3.1.5.3.4,Betonneren dakplaat,0.375,0.3,0.45,2016-06-30 08:00:00,2016-06-30 17:00:00,,0
351,1.1.1.4.2.3.1.5.4,Uitgraving in stross (strossgat),4.375,3.5,5.25,2016-08-01 08:00:00,2016-08-05 17:00:00,,0
352,1.1.1.4.2.3.1.5.5,Schoonmaken secanswand,0.375,0.3,0.45,2016-08-08 08:00:00,2016-08-08 17:00:00,,0
353,1.1.1.4.2.3.1.5.6,Vloerplaat tunnel,20.375,20.17,20.58,2016-09-06 08:00:00,2016-09-26 17:00:00,,0
354,1.1.1.4.2.3.1.5.6.1,Uitkappen secans + chem ankers,3.375,2.7,4.05,2016-09-06 08:00:00,2016-09-09 17:00:00,,0
355,1.1.1.4.2.3.1.5.6.2,Wapening + riolering vloerplaat,9.375,7.5,11.25,2016-09-13 08:00:00,2016-09-22 17:00:00,,0
356,1.1.1.4.2.3.1.5.6.3,Betonneren vloerplaat,3.375,2.7,4.05,2016-09-23 08:00:00,2016-09-26 17:00:00,,0
357,1.1.1.4.2.3.1.5.7,Voorzetwanden,4.375,4.33,4.42,2016-10-03 08:00:00,2016-10-07 17:00:00,,0
358,1.1.1.4.2.3.1.5.7.1,Wapening voorzetwanden,3.375,2.7,4.05,2016-10-03 08:00:00,2016-10-06 17:00:00,,0
359,1.1.1.4.2.3.1.5.7.2,Bekisten (éénzijdig),2.375,1.9,2.85,2016-10-04 08:00:00,2016-10-06 17:00:00,,0
360,1.1.1.4.2.3.1.5.7.3,Betonneren voorzetwanden,2.375,1.9,2.85,2016-10-05 08:00:00,2016-10-07 17:00:00,,0
361,1.1.1.4.2.3.1.5.8,Looppad breedte 75cm,4.375,4.33,4.42,2016-10-10 08:00:00,2016-10-14 17:00:00,,0
362,1.1.1.4.2.3.1.5.8.1,Bekisten looppad,3.375,2.7,4.05,2016-10-10 08:00:00,2016-10-13 17:00:00,,0
363,1.1.1.4.2.3.1.5.8.2,Betonneren looppad + ontkisten,3.375,2.7,4.05,2016-10-11 08:00:00,2016-10-14 17:00:00,,0
364,1.1.1.4.2.3.1.5.9,Dakdichting en aanvulling,16.375,16.21,16.54,2016-10-24 08:00:00,2016-11-09 17:00:00,,0
365,1.1.1.4.2.3.1.5.9.1,Inboren openingen in secans,2.375,1.9,2.85,2016-10-24 08:00:00,2016-10-26 17:00:00,,0
366,1.1.1.4.2.3.1.5.9.2,Dakdichting,1.375,1.1,1.65,2016-10-27 08:00:00,2016-10-28 17:00:00,,0
367,1.1.1.4.2.3.1.5.9.3,Aanvulling,2.375,1.9,2.85,2016-11-07 08:00:00,2016-11-09 17:00:00,,0
368,1.1.1.4.2.3.1.6,MOOT 5 (310-330m),127.375,126.1,128.65,2016-07-05 08:00:00,2016-11-09 17:00:00,,0
369,1.1.1.4.2.3.1.6.1,Uitgraving,6.375,5.1,7.65,2016-07-05 08:00:00,2016-07-11 17:00:00,,0
370,1.1.1.4.2.3.1.6.2,Plaatsen stempels tunnelwanden,5.375,4.3,6.45,2016-07-06 08:00:00,2016-07-11 17:00:00,,0
371,1.1.1.4.2.3.1.6.3,Dakplaat tunnel,24.375,24.13,24.62,2016-07-12 08:00:00,2016-08-05 17:00:00,,0
372,1.1.1.4.2.3.1.6.3.1,Uitkappen secans + chem ankers,6.375,5.1,7.65,2016-07-12 08:00:00,2016-07-18 17:00:00,,0
373,1.1.1.4.2.3.1.6.3.2,Bekisten dakplaat,2.375,1.9,2.85,2016-07-26 08:00:00,2016-07-28 17:00:00,,0
374,1.1.1.4.2.3.1.6.3.3,Wapening dakplaat,6.375,5.1,7.65,2016-07-29 08:00:00,2016-08-04 17:00:00,,0
375,1.1.1.4.2.3.1.6.3.4,Betonneren dakplaat,0.375,0.3,0.45,2016-08-05 08:00:00,2016-08-05 17:00:00,,0
376,1.1.1.4.2.3.1.6.4,Uitgraving in stross (strossgat),6.375,5.1,7.65,2016-09-06 08:00:00,2016-09-12 17:00:00,,0
377,1.1.1.4.2.3.1.6.5,Schoonmaken secanswand,0.375,0.3,0.45,2016-09-13 08:00:00,2016-09-13 17:00:00,,0
378,1.1.1.4.2.3.1.6.6,Vloerplaat tunnel,17.375,17.2,17.55,2016-09-26 08:00:00,2016-10-13 17:00:00,,0
379,1.1.1.4.2.3.1.6.6.1,Uitkappen secans + chem ankers,3.375,2.7,4.05,2016-09-26 08:00:00,2016-09-29 17:00:00,,0
380,1.1.1.4.2.3.1.6.6.2,Wapening + riolering vloerplaat,11.375,9.1,13.65,2016-09-30 08:00:00,2016-10-11 17:00:00,,0
381,1.1.1.4.2.3.1.6.6.3,Betonneren vloerplaat,1.375,1.1,1.65,2016-10-12 08:00:00,2016-10-13 17:00:00,,0
382,1.1.1.4.2.3.1.6.7,Voorzetwanden,6.375,6.31,6.44,2016-10-19 08:00:00,2016-10-25 17:00:00,,0
383,1.1.1.4.2.3.1.6.7.1,Wapening voorzetwanden,5.375,4.3,6.45,2016-10-19 08:00:00,2016-10-24 17:00:00,,0
384,1.1.1.4.2.3.1.6.7.2,Bekisten (éénzijdig),4.375,3.5,5.25,2016-10-20 08:00:00,2016-10-24 17:00:00,,0
385,1.1.1.4.2.3.1.6.7.3,Betonneren voorzetwanden,4.375,3.5,5.25,2016-10-21 08:00:00,2016-10-25 17:00:00,,0
386,1.1.1.4.2.3.1.6.8,Looppad breedte 75cm,6.375,6.31,6.44,2016-10-26 08:00:00,2016-11-01 17:00:00,,0
387,1.1.1.4.2.3.1.6.8.1,Bekisten looppad,5.375,4.3,6.45,2016-10-26 08:00:00,2016-10-31 17:00:00,,0
388,1.1.1.4.2.3.1.6.8.2,Betonneren looppad + ontkisten,5.375,4.3,6.45,2016-10-27 08:00:00,2016-11-01 17:00:00,,0
389,1.1.1.4.2.3.1.6.9,Dakdichting en aanvulling,7.375,7.3,7.45,2016-11-02 08:00:00,2016-11-09 17:00:00,,0
390,1.1.1.4.2.3.1.6.9.1,Inboren openingen in secans,2.375,1.9,2.85,2016-11-02 08:00:00,2016-11-04 17:00:00,,0
391,1.1.1.4.2.3.1.6.9.2,Dakdichting,1.375,1.1,1.65,2016-11-07 08:00:00,2016-11-08 17:00:00,,0
392,1.1.1.4.2.3.1.6.9.3,Aanvulling,2.375,1.9,2.85,2016-11-07 08:00:00,2016-11-09 17:00:00,,0
393,1.1.1.4.2.3.1.7,Aanpassingswerken Belgacom-put thv Maria-Theresialei,32.375,25.9,38.85,2016-12-12 08:00:00,2017-01-13 17:00:00,,0
394,1.1.1.4.2.3.1.8,MOOT 6 (330-360m),161.375,159.76,162.99,2016-06-20 08:00:00,2016-11-28 17:00:00,,0
395,1.1.1.4.2.3.1.8.1,Beschoeide sleuf,18.375,14.7,22.05,2016-06-20 08:00:00,2016-07-08 17:00:00,,0
396,1.1.1.4.2.3.1.8.2,Uitgraving,4.375,3.5,5.25,2016-07-11 08:00:00,2016-07-15 17:00:00,,0
397,1.1.1.4.2.3.1.8.3,Plaatsen stempels tunnelwanden,3.375,2.7,4.05,2016-07-12 08:00:00,2016-07-15 17:00:00,,0
398,1.1.1.4.2.3.1.8.4,Dakplaat tunnel,17.375,17.2,17.55,2016-08-30 08:00:00,2016-09-16 17:00:00,,0
399,1.1.1.4.2.3.1.8.4.1,Uitkappen secans + chem ankers,6.375,5.1,7.65,2016-08-30 08:00:00,2016-09-05 17:00:00,,0
400,1.1.1.4.2.3.1.8.4.2,Bekisten dakplaat,2.375,1.9,2.85,2016-09-06 08:00:00,2016-09-08 17:00:00,,0
401,1.1.1.4.2.3.1.8.4.3,Wapening dakplaat,6.375,5.1,7.65,2016-09-09 08:00:00,2016-09-15 17:00:00,,0
402,1.1.1.4.2.3.1.8.4.4,Betonneren dakplaat,0.375,0.3,0.45,2016-09-16 08:00:00,2016-09-16 17:00:00,,0
403,1.1.1.4.2.3.1.8.5,Uitgraving in stross (strossgat),6.375,5.1,7.65,2016-10-18 08:00:00,2016-10-24 17:00:00,,0
404,1.1.1.4.2.3.1.8.6,Schoonmaken secanswand,0.375,0.3,0.45,2016-10-25 08:00:00,2016-10-25 17:00:00,,0
405,1.1.1.4.2.3.1.8.7,Vloerplaat tunnel,19.375,19.18,19.57,2016-10-26 08:00:00,2016-11-14 17:00:00,,0
406,1.1.1.4.2.3.1.8.7.1,Uitkappen secans + chem ankers,5.375,4.3,6.45,2016-10-26 08:00:00,2016-10-31 17:00:00,,0
407,1.1.1.4.2.3.1.8.7.2,Wapening + riolering vloerplaat,9.375,7.5,11.25,2016-11-01 08:00:00,2016-11-10 17:00:00,,0
408,1.1.1.4.2.3.1.8.7.3,Betonneren vloerplaat,3.375,2.7,4.05,2016-11-11 08:00:00,2016-11-14 17:00:00,,0
409,1.1.1.4.2.3.1.8.8,Voorzetwanden,6.375,6.31,6.44,2016-11-15 08:00:00,2016-11-21 17:00:00,,0
410,1.1.1.4.2.3.1.8.8.1,Wapening voorzetwanden,3.375,2.7,4.05,2016-11-15 08:00:00,2016-11-18 17:00:00,,0
411,1.1.1.4.2.3.1.8.8.2,Bekisten (éénzijdig),2.375,1.9,2.85,2016-11-16 08:00:00,2016-11-18 17:00:00,,0
412,1.1.1.4.2.3.1.8.8.3,Betonneren voorzetwanden,4.375,3.5,5.25,2016-11-17 08:00:00,2016-11-21 17:00:00,,0
413,1.1.1.4.2.3.1.8.9,Looppad breedte 75cm,6.375,6.31,6.44,2016-11-22 08:00:00,2016-11-28 17:00:00,,0
414,1.1.1.4.2.3.1.8.9.1,Bekisten looppad,3.375,2.7,4.05,2016-11-22 08:00:00,2016-11-25 17:00:00,,0
415,1.1.1.4.2.3.1.8.9.2,Betonneren looppad + ontkisten,5.375,4.3,6.45,2016-11-23 08:00:00,2016-11-28 17:00:00,,0
416,1.1.1.4.2.3.1.8.10,Dakdichting en aanvulling,10.375,10.27,10.48,2016-11-07 08:00:00,2016-11-17 17:00:00,,0
417,1.1.1.4.2.3.1.8.10.1,Inboren openingen in secans,2.375,1.9,2.85,2016-11-07 08:00:00,2016-11-09 17:00:00,,0
418,1.1.1.4.2.3.1.8.10.2,Dakdichting,1.375,1.1,1.65,2016-11-10 08:00:00,2016-11-11 17:00:00,,0
419,1.1.1.4.2.3.1.8.10.3,Aanvulling,2.375,1.9,2.85,2016-11-15 08:00:00,2016-11-17 17:00:00,,0
420,1.1.1.4.2.3.1.9,MOOT 7 (360-385m),129.375,128.08,130.67,2016-07-25 08:00:00,2016-12-01 17:00:00,,0
421,1.1.1.4.2.3.1.9.1,Uitgraving,4.375,3.5,5.25,2016-07-25 08:00:00,2016-07-29 17:00:00,,0
422,1.1.1.4.2.3.1.9.2,Plaatsen stempels tunnelwanden,3.375,2.7,4.05,2016-07-26 08:00:00,2016-07-29 17:00:00,,0
423,1.1.1.4.2.3.1.9.3,Dakplaat tunnel,17.375,17.2,17.55,2016-08-23 08:00:00,2016-09-09 17:00:00,,0
424,1.1.1.4.2.3.1.9.3.1,Uitkappen secans + chem ankers,6.375,5.1,7.65,2016-08-23 08:00:00,2016-08-29 17:00:00,,0
425,1.1.1.4.2.3.1.9.3.2,Bekisten dakplaat,2.375,1.9,2.85,2016-08-30 08:00:00,2016-09-01 17:00:00,,0
426,1.1.1.4.2.3.1.9.3.3,Wapening dakplaat,6.375,5.1,7.65,2016-09-02 08:00:00,2016-09-08 17:00:00,,0
427,1.1.1.4.2.3.1.9.3.4,Betonneren dakplaat,0.375,0.3,0.45,2016-09-09 08:00:00,2016-09-09 17:00:00,,0
428,1.1.1.4.2.3.1.9.4,Uitgraving in stross (strossgat),2.375,1.9,2.85,2016-10-11 08:00:00,2016-10-13 17:00:00,,0
429,1.1.1.4.2.3.1.9.5,Schoonmaken secanswand,0.375,0.3,0.45,2016-10-14 08:00:00,2016-10-14 17:00:00,,0
430,1.1.1.4.2.3.1.9.6,Vloerplaat tunnel,14.375,14.23,14.52,2016-10-31 08:00:00,2016-11-14 17:00:00,,0
431,1.1.1.4.2.3.1.9.6.1,Uitkappen secans + chem ankers,2.375,1.9,2.85,2016-10-31 08:00:00,2016-11-02 17:00:00,,0
432,1.1.1.4.2.3.1.9.6.2,Wapening + riolering vloerplaat,7.375,5.9,8.85,2016-11-03 08:00:00,2016-11-10 17:00:00,,0
433,1.1.1.4.2.3.1.9.6.3,Betonneren vloerplaat,3.375,2.7,4.05,2016-11-11 08:00:00,2016-11-14 17:00:00,,0
434,1.1.1.4.2.3.1.9.7,Voorzetwanden,6.375,6.31,6.44,2016-11-18 08:00:00,2016-11-24 17:00:00,,0
435,1.1.1.4.2.3.1.9.7.1,Wapening voorzetwanden,5.375,4.3,6.45,2016-11-18 08:00:00,2016-11-23 17:00:00,,0
436,1.1.1.4.2.3.1.9.7.2,Bekisten (éénzijdig),2.375,1.9,2.85,2016-11-21 08:00:00,2016-11-23 17:00:00,,0
437,1.1.1.4.2.3.1.9.7.3,Betonneren voorzetwanden,2.375,1.9,2.85,2016-11-22 08:00:00,2016-11-24 17:00:00,,0
438,1.1.1.4.2.3.1.9.8,Looppad breedte 75cm,6.375,6.31,6.44,2016-11-25 08:00:00,2016-12-01 17:00:00,,0
439,1.1.1.4.2.3.1.9.8.1,Bekisten looppad,5.375,4.3,6.45,2016-11-25 08:00:00,2016-11-30 17:00:00,,0
440,1.1.1.4.2.3.1.9.8.2,Betonneren looppad + ontkisten,3.375,2.7,4.05,2016-11-28 08:00:00,2016-12-01 17:00:00,,0
441,1.1.1.4.2.3.1.9.9,Dakdichting en aanvulling,10.375,10.27,10.48,2016-11-07 08:00:00,2016-11-17 17:00:00,,0
442,1.1.1.4.2.3.1.9.9.1,Inboren openingen in secans,2.375,1.9,2.85,2016-11-07 08:00:00,2016-11-09 17:00:00,,0
443,1.1.1.4.2.3.1.9.9.2,Dakdichting,1.375,1.1,1.65,2016-11-10 08:00:00,2016-11-11 17:00:00,,0
444,1.1.1.4.2.3.1.9.9.3,Aanvulling,2.375,1.9,2.85,2016-11-15 08:00:00,2016-11-17 17:00:00,,0
445,1.1.1.4.2.3.1.10,MOOT 8 (385-410m),2.375,2.35,2.4,2016-12-20 08:00:00,2016-12-22 17:00:00,,0
446,1.1.1.4.2.3.1.10.1,Aanleg tijdelijke werfweg Maria-theresialei tot Frankrijklei,2.375,1.9,2.85,2016-12-20 08:00:00,2016-12-22 17:00:00,,0
447,1.1.1.4.2.3.1.11,Alle ruwbouwwerken tramtunnel klaar,149.375,147.88,150.87,2016-07-25 08:00:00,2016-12-21 17:00:00,,0
448,1.1.1.4.2.3.1.11.1,Uitgraving,4.375,3.5,5.25,2016-07-25 08:00:00,2016-07-29 17:00:00,,0
449,1.1.1.4.2.3.1.11.2,Plaatsen stempels tunnelwanden,3.375,2.7,4.05,2016-07-26 08:00:00,2016-07-29 17:00:00,,0
450,1.1.1.4.2.3.1.11.3,Dakplaat tunnel,17.375,17.2,17.55,2016-08-16 08:00:00,2016-09-02 17:00:00,,0
451,1.1.1.4.2.3.1.11.3.1,Uitkappen secans + chem ankers,6.375,5.1,7.65,2016-08-16 08:00:00,2016-08-22 17:00:00,,0
452,1.1.1.4.2.3.1.11.3.2,Bekisten dakplaat,2.375,1.9,2.85,2016-08-23 08:00:00,2016-08-25 17:00:00,,0
453,1.1.1.4.2.3.1.11.3.3,Wapening dakplaat,6.375,5.1,7.65,2016-08-26 08:00:00,2016-09-01 17:00:00,,0
454,1.1.1.4.2.3.1.11.3.4,Betonneren dakplaat,0.375,0.3,0.45,2016-09-02 08:00:00,2016-09-02 17:00:00,,0
455,1.1.1.4.2.3.1.11.4,Ventilatieschacht,25.375,25.12,25.63,2016-11-14 08:00:00,2016-12-09 17:00:00,,0
456,1.1.1.4.2.3.1.11.4.1,niv -2,18.375,14.7,22.05,2016-11-14 08:00:00,2016-12-02 17:00:00,,0
457,1.1.1.4.2.3.1.11.4.2,niv -1,18.375,14.7,22.05,2016-11-21 08:00:00,2016-12-09 17:00:00,,0
458,1.1.1.4.2.3.1.11.5,Uitgraving in stross,6.375,5.1,7.65,2016-10-04 08:00:00,2016-10-10 17:00:00,,0
459,1.1.1.4.2.3.1.11.6,Schoonmaken secanswand,0.375,0.3,0.45,2016-10-11 08:00:00,2016-10-11 17:00:00,,0
460,1.1.1.4.2.3.1.11.7,Kloppen aardingspin,3.375,2.7,4.05,2016-09-23 08:00:00,2016-09-26 17:00:00,,0
461,1.1.1.4.2.3.1.11.8,Vloerplaat tunnel,19.375,19.18,19.57,2016-10-12 08:00:00,2016-10-31 17:00:00,,0
462,1.1.1.4.2.3.1.11.8.1,Uitkappen secans + chem ankers,5.375,4.3,6.45,2016-10-12 08:00:00,2016-10-17 17:00:00,,0
463,1.1.1.4.2.3.1.11.8.2,Wapening + riolering vloerplaat,9.375,7.5,11.25,2016-10-18 08:00:00,2016-10-27 17:00:00,,0
464,1.1.1.4.2.3.1.11.8.3,Betonneren vloerplaat,3.375,2.7,4.05,2016-10-28 08:00:00,2016-10-31 17:00:00,,0
465,1.1.1.4.2.3.1.11.9,Voorzetwanden,6.375,6.31,6.44,2016-11-04 08:00:00,2016-11-10 17:00:00,,0
466,1.1.1.4.2.3.1.11.9.1,Wapening voorzetwanden,5.375,4.3,6.45,2016-11-04 08:00:00,2016-11-09 17:00:00,,0
467,1.1.1.4.2.3.1.11.9.2,Bekisten (éénzijdig),2.375,1.9,2.85,2016-11-07 08:00:00,2016-11-09 17:00:00,,0
468,1.1.1.4.2.3.1.11.9.3,Betonneren voorzetwanden,2.375,1.9,2.85,2016-11-08 08:00:00,2016-11-10 17:00:00,,0
469,1.1.1.4.2.3.1.11.10,Looppad breedte 75cm,6.375,6.31,6.44,2016-11-11 08:00:00,2016-11-17 17:00:00,,0
470,1.1.1.4.2.3.1.11.10.1,Bekisten looppad,5.375,4.3,6.45,2016-11-11 08:00:00,2016-11-16 17:00:00,,0
471,1.1.1.4.2.3.1.11.10.2,Betonneren looppad + ontkisten,3.375,2.7,4.05,2016-11-14 08:00:00,2016-11-17 17:00:00,,0
472,1.1.1.4.2.3.1.11.11,Dakdichting en aanvulling,9.375,9.28,9.47,2016-12-12 08:00:00,2016-12-21 17:00:00,,0
473,1.1.1.4.2.3.1.11.11.1,Inboren openingen in secans,2.375,1.9,2.85,2016-12-12 08:00:00,2016-12-14 17:00:00,,0
474,1.1.1.4.2.3.1.11.11.2,Dakdichting,1.375,1.1,1.65,2016-12-15 08:00:00,2016-12-16 17:00:00,,0
475,1.1.1.4.2.3.1.11.11.3,Aanvulling,2.375,1.9,2.85,2016-12-19 08:00:00,2016-12-21 17:00:00,,0
476,1.1.1.4.2.3.1.12,MOOT 9 (410-440m),119.375,118.18,120.57,2016-07-27 08:00:00,2016-11-23 17:00:00,,0
477,1.1.1.4.2.3.1.12.1,Uitgraving,9.375,7.5,11.25,2016-07-27 08:00:00,2016-08-05 17:00:00,,0
478,1.1.1.4.2.3.1.12.2,Plaatsen stempels tunnelwanden,7.375,5.9,8.85,2016-08-02 08:00:00,2016-08-09 17:00:00,,0
479,1.1.1.4.2.3.1.12.3,Dakplaat tunnel,23.375,23.14,23.61,2016-08-10 08:00:00,2016-09-02 17:00:00,,0
480,1.1.1.4.2.3.1.12.3.1,Uitkappen secans + chem ankers,6.375,5.1,7.65,2016-08-10 08:00:00,2016-08-16 17:00:00,,0
481,1.1.1.4.2.3.1.12.3.2,Bekisten dakplaat,5.375,4.3,6.45,2016-08-18 08:00:00,2016-08-23 17:00:00,,0
482,1.1.1.4.2.3.1.12.3.3,Wapening dakplaat,8.375,6.7,10.05,2016-08-24 08:00:00,2016-09-01 17:00:00,,0
483,1.1.1.4.2.3.1.12.3.4,Betonneren dakplaat,0.375,0.3,0.45,2016-09-02 08:00:00,2016-09-02 17:00:00,,0
484,1.1.1.4.2.3.1.12.4,Ruwbouwwerken niv -1 en -2,39.375,38.98,39.77,2016-09-26 08:00:00,2016-11-04 17:00:00,,0
485,1.1.1.4.2.3.1.12.4.1,kelder niv -2,18.375,14.7,22.05,2016-09-26 08:00:00,2016-10-14 17:00:00,,0
486,1.1.1.4.2.3.1.12.4.2,kelder niv -1,18.375,14.7,22.05,2016-10-17 08:00:00,2016-11-04 17:00:00,,0
487,1.1.1.4.2.3.1.12.5,Uitgraving in stross,2.375,1.9,2.85,2016-10-04 08:00:00,2016-10-06 17:00:00,,0
488,1.1.1.4.2.3.1.12.6,Schoonmaken secanswand,0.375,0.3,0.45,2016-10-07 08:00:00,2016-10-07 17:00:00,,0
489,1.1.1.4.2.3.1.12.7,Vloerplaat tunnel,14.375,14.23,14.52,2016-10-17 08:00:00,2016-10-31 17:00:00,,0
490,1.1.1.4.2.3.1.12.7.1,Uitkappen secans + chem ankers,2.375,1.9,2.85,2016-10-17 08:00:00,2016-10-19 17:00:00,,0
491,1.1.1.4.2.3.1.12.7.2,Wapening + riolering vloerplaat,7.375,5.9,8.85,2016-10-20 08:00:00,2016-10-27 17:00:00,,0
492,1.1.1.4.2.3.1.12.7.3,Betonneren vloerplaat,3.375,2.7,4.05,2016-10-28 08:00:00,2016-10-31 17:00:00,,0
493,1.1.1.4.2.3.1.12.8,Voorzetwanden,6.375,6.31,6.44,2016-11-04 08:00:00,2016-11-10 17:00:00,,0
494,1.1.1.4.2.3.1.12.8.1,Wapening voorzetwanden,5.375,4.3,6.45,2016-11-04 08:00:00,2016-11-09 17:00:00,,0
495,1.1.1.4.2.3.1.12.8.2,Bekisten (éénzijdig),2.375,1.9,2.85,2016-11-07 08:00:00,2016-11-09 17:00:00,,0
496,1.1.1.4.2.3.1.12.8.3,Betonneren voorzetwanden,2.375,1.9,2.85,2016-11-08 08:00:00,2016-11-10 17:00:00,,0
497,1.1.1.4.2.3.1.12.9,Looppad breedte 75cm,6.375,6.31,6.44,2016-11-11 08:00:00,2016-11-17 17:00:00,,0
498,1.1.1.4.2.3.1.12.9.1,Bekisten looppad,5.375,4.3,6.45,2016-11-11 08:00:00,2016-11-16 17:00:00,,0
499,1.1.1.4.2.3.1.12.9.2,Betonneren looppad + ontkisten,3.375,2.7,4.05,2016-11-14 08:00:00,2016-11-17 17:00:00,,0
500,1.1.1.4.2.3.1.12.10,Dakdichting en aanvulling,9.375,9.28,9.47,2016-11-14 08:00:00,2016-11-23 17:00:00,,0
501,1.1.1.4.2.3.1.12.10.1,Inboren openingen in secans,2.375,1.9,2.85,2016-11-14 08:00:00,2016-11-16 17:00:00,,0
502,1.1.1.4.2.3.1.12.10.2,Dakdichting,1.375,1.1,1.65,2016-11-17 08:00:00,2016-11-18 17:00:00,,0
503,1.1.1.4.2.3.1.12.10.3,Aanvulling,2.375,1.9,2.85,2016-11-21 08:00:00,2016-11-23 17:00:00,,0
504,1.1.1.4.2.3.1.13,MOOT 10 (440-460m),128.375,127.09,129.66,2016-07-25 08:00:00,2016-11-30 17:00:00,,0
505,1.1.1.4.2.3.1.13.1,Uitgraving,9.375,7.5,11.25,2016-07-25 08:00:00,2016-08-03 17:00:00,,0
506,1.1.1.4.2.3.1.13.2,Plaatsen stempels tunnelwanden,7.375,5.9,8.85,2016-07-29 08:00:00,2016-08-05 17:00:00,,0
507,1.1.1.4.2.3.1.13.3,Dakplaat tunnel,18.375,18.19,18.56,2016-08-08 08:00:00,2016-08-26 17:00:00,,0
508,1.1.1.4.2.3.1.13.3.1,Uitkappen secans + chem ankers,4.375,3.5,5.25,2016-08-08 08:00:00,2016-08-12 17:00:00,,0
509,1.1.1.4.2.3.1.13.3.2,Bekisten dakplaat,2.375,1.9,2.85,2016-08-16 08:00:00,2016-08-18 17:00:00,,0
510,1.1.1.4.2.3.1.13.3.3,Wapening dakplaat,6.375,5.1,7.65,2016-08-19 08:00:00,2016-08-25 17:00:00,,0
511,1.1.1.4.2.3.1.13.3.4,Betonneren dakplaat,0.375,0.3,0.45,2016-08-26 08:00:00,2016-08-26 17:00:00,,0
512,1.1.1.4.2.3.1.13.4,Ruwbouwwerken niv -1 en -2,39.375,38.98,39.77,2016-09-26 08:00:00,2016-11-04 17:00:00,,0
513,1.1.1.4.2.3.1.13.4.1,kelder niv -2,18.375,14.7,22.05,2016-09-26 08:00:00,2016-10-14 17:00:00,,0
514,1.1.1.4.2.3.1.13.4.2,kelder niv -1,18.375,14.7,22.05,2016-10-17 08:00:00,2016-11-04 17:00:00,,0
515,1.1.1.4.2.3.1.13.5,Uitgraving in stross,4.375,3.5,5.25,2016-09-19 08:00:00,2016-09-23 17:00:00,,0
516,1.1.1.4.2.3.1.13.6,Schoonmaken secanswand,0.375,0.3,0.45,2016-09-26 08:00:00,2016-09-26 17:00:00,,0
517,1.1.1.4.2.3.1.13.7,Vloerplaat tunnel,17.375,17.2,17.55,2016-09-12 08:00:00,2016-09-29 17:00:00,,0
518,1.1.1.4.2.3.1.13.7.1,Uitkappen secans + chem ankers,3.375,2.7,4.05,2016-09-12 08:00:00,2016-09-15 17:00:00,,0
519,1.1.1.4.2.3.1.13.7.2,Wapening + riolering vloerplaat,11.375,9.1,13.65,2016-09-16 08:00:00,2016-09-27 17:00:00,,0
520,1.1.1.4.2.3.1.13.7.3,Betonneren vloerplaat,1.375,1.1,1.65,2016-09-28 08:00:00,2016-09-29 17:00:00,,0
521,1.1.1.4.2.3.1.13.8,Voorzetwanden,6.375,6.31,6.44,2016-10-07 08:00:00,2016-10-13 17:00:00,,0
522,1.1.1.4.2.3.1.13.8.1,Wapening voorzetwanden,5.375,4.3,6.45,2016-10-07 08:00:00,2016-10-12 17:00:00,,0
523,1.1.1.4.2.3.1.13.8.2,Bekisten (éénzijdig),2.375,1.9,2.85,2016-10-10 08:00:00,2016-10-12 17:00:00,,0
524,1.1.1.4.2.3.1.13.8.3,Betonneren voorzetwanden,2.375,1.9,2.85,2016-10-11 08:00:00,2016-10-13 17:00:00,,0
525,1.1.1.4.2.3.1.13.9,Looppad breedte 75cm,6.375,6.31,6.44,2016-10-14 08:00:00,2016-10-20 17:00:00,,0
526,1.1.1.4.2.3.1.13.9.1,Bekisten looppad,5.375,4.3,6.45,2016-10-14 08:00:00,2016-10-19 17:00:00,,0
527,1.1.1.4.2.3.1.13.9.2,Betonneren looppad + ontkisten,3.375,2.7,4.05,2016-10-17 08:00:00,2016-10-20 17:00:00,,0
528,1.1.1.4.2.3.1.13.10,Dakdichting en aanvulling,16.375,16.21,16.54,2016-11-14 08:00:00,2016-11-30 17:00:00,,0
529,1.1.1.4.2.3.1.13.10.1,Inboren openingen in secans,2.375,1.9,2.85,2016-11-14 08:00:00,2016-11-16 17:00:00,,0
530,1.1.1.4.2.3.1.13.10.2,Dakdichting,1.375,1.1,1.65,2016-11-17 08:00:00,2016-11-18 17:00:00,,0
531,1.1.1.4.2.3.1.13.10.3,Aanvulling,2.375,1.9,2.85,2016-11-28 08:00:00,2016-11-30 17:00:00,,0
532,1.1.1.4.2.3.1.14,MOOT 11 (460-480m),128.375,127.09,129.66,2016-07-25 08:00:00,2016-11-30 17:00:00,,0
533,1.1.1.4.2.3.1.14.1,Uitgraving,9.375,7.5,11.25,2016-07-25 08:00:00,2016-08-03 17:00:00,,0
534,1.1.1.4.2.3.1.14.2,Plaatsen stempels tunnelwanden,7.375,5.9,8.85,2016-07-29 08:00:00,2016-08-05 17:00:00,,0
535,1.1.1.4.2.3.1.14.3,Dakplaat tunnel,18.375,18.19,18.56,2016-08-08 08:00:00,2016-08-26 17:00:00,,0
536,1.1.1.4.2.3.1.14.3.1,Uitkappen secans + chem ankers,4.375,3.5,5.25,2016-08-08 08:00:00,2016-08-12 17:00:00,,0
537,1.1.1.4.2.3.1.14.3.2,Bekisten dakplaat,2.375,1.9,2.85,2016-08-16 08:00:00,2016-08-18 17:00:00,,0
538,1.1.1.4.2.3.1.14.3.3,Wapening dakplaat,6.375,5.1,7.65,2016-08-19 08:00:00,2016-08-25 17:00:00,,0
539,1.1.1.4.2.3.1.14.3.4,Betonneren dakplaat,0.375,0.3,0.45,2016-08-26 08:00:00,2016-08-26 17:00:00,,0
540,1.1.1.4.2.3.1.14.4,Ruwbouwwerken niv -1 en -2,39.375,38.98,39.77,2016-09-26 08:00:00,2016-11-04 17:00:00,,0
541,1.1.1.4.2.3.1.14.4.1,kelder niv -2,18.375,14.7,22.05,2016-09-26 08:00:00,2016-10-14 17:00:00,,0
542,1.1.1.4.2.3.1.14.4.2,kelder niv -1,18.375,14.7,22.05,2016-10-17 08:00:00,2016-11-04 17:00:00,,0
543,1.1.1.4.2.3.1.14.5,Uitgraving in stross,6.375,5.1,7.65,2016-09-27 08:00:00,2016-10-03 17:00:00,,0
544,1.1.1.4.2.3.1.14.6,Schoonmaken secanswand,0.375,0.3,0.45,2016-10-04 08:00:00,2016-10-04 17:00:00,,0
545,1.1.1.4.2.3.1.14.7,Vloerplaat tunnel,17.375,17.2,17.55,2016-09-13 08:00:00,2016-09-30 17:00:00,,0
546,1.1.1.4.2.3.1.14.7.1,Uitkappen secans + chem ankers,3.375,2.7,4.05,2016-09-13 08:00:00,2016-09-16 17:00:00,,0
547,1.1.1.4.2.3.1.14.7.2,Wapening + riolering vloerplaat,9.375,7.5,11.25,2016-09-19 08:00:00,2016-09-28 17:00:00,,0
548,1.1.1.4.2.3.1.14.7.3,Betonneren vloerplaat,1.375,1.1,1.65,2016-09-29 08:00:00,2016-09-30 17:00:00,,0
549,1.1.1.4.2.3.1.14.8,Voorzetwanden,6.375,6.31,6.44,2016-10-06 08:00:00,2016-10-12 17:00:00,,0
550,1.1.1.4.2.3.1.14.8.1,Wapening voorzetwanden,5.375,4.3,6.45,2016-10-06 08:00:00,2016-10-11 17:00:00,,0
551,1.1.1.4.2.3.1.14.8.2,Bekisten (éénzijdig),4.375,3.5,5.25,2016-10-07 08:00:00,2016-10-11 17:00:00,,0
552,1.1.1.4.2.3.1.14.8.3,Betonneren voorzetwanden,2.375,1.9,2.85,2016-10-10 08:00:00,2016-10-12 17:00:00,,0
553,1.1.1.4.2.3.1.14.9,Looppad breedte 75cm,6.375,6.31,6.44,2016-10-13 08:00:00,2016-10-19 17:00:00,,0
554,1.1.1.4.2.3.1.14.9.1,Bekisten looppad,5.375,4.3,6.45,2016-10-13 08:00:00,2016-10-18 17:00:00,,0
555,1.1.1.4.2.3.1.14.9.2,Betonneren looppad + ontkisten,5.375,4.3,6.45,2016-10-14 08:00:00,2016-10-19 17:00:00,,0
556,1.1.1.4.2.3.1.14.10,Dakdichting en aanvulling,16.375,16.21,16.54,2016-11-14 08:00:00,2016-11-30 17:00:00,,0
557,1.1.1.4.2.3.1.14.10.1,Inboren openingen in secans,2.375,1.9,2.85,2016-11-14 08:00:00,2016-11-16 17:00:00,,0
558,1.1.1.4.2.3.1.14.10.2,Dakdichting,1.375,1.1,1.65,2016-11-17 08:00:00,2016-11-18 17:00:00,,0
559,1.1.1.4.2.3.1.14.10.3,Aanvulling,2.375,1.9,2.85,2016-11-28 08:00:00,2016-11-30 17:00:00,,0
560,1.1.1.4.2.3.1.15,Aansluiting op bestaande constructie,14.375,14.23,14.52,2016-09-26 08:00:00,2016-10-10 17:00:00,,0
561,1.1.1.4.2.3.1.15.1,Uitkappen linteel in slibwand,3.375,2.7,4.05,2016-09-26 08:00:00,2016-09-29 17:00:00,,0
562,1.1.1.4.2.3.1.15.2,Plaatsen metaalprofiel HEB500,4.375,3.5,5.25,2016-09-30 08:00:00,2016-10-04 17:00:00,,0
563,1.1.1.4.2.3.1.15.3,Uitbreken opening onder linteel,5.375,4.3,6.45,2016-10-05 08:00:00,2016-10-10 17:00:00,,0
564,1.1.1.4.2.3.2,Inrichtingswerken in Tramtunnel (per zone ABCD),220.375,218.17,222.58,2016-10-17 08:00:00,2017-05-25 17:00:00,,0
565,1.1.1.4.2.3.2.1,Open helling,4.375,4.33,4.42,2016-10-21 08:00:00,2016-10-25 17:00:00,,0
566,1.1.1.4.2.3.2.1.1,Bekabeling voor projectoren en luminantiemeting,4.375,3.5,5.25,2016-10-21 08:00:00,2016-10-25 17:00:00,,0
567,1.1.1.4.2.3.2.2,Zone A (210-270m),87.375,86.5,88.25,2016-10-17 08:00:00,2017-01-12 17:00:00,,0
568,1.1.1.4.2.3.2.2.1,Verankeringen U-profiel in plafond,4.375,3.5,5.25,2016-10-17 08:00:00,2016-10-21 17:00:00,,0
569,1.1.1.4.2.3.2.2.2,Verankering steunen beams,1.375,1.1,1.65,2016-10-24 08:00:00,2016-10-25 17:00:00,,0
570,1.1.1.4.2.3.2.2.3,Bevestigingsstruct. en kabelbanen West,7.375,5.9,8.85,2016-10-26 08:00:00,2016-11-02 17:00:00,,0
571,1.1.1.4.2.3.2.2.4,Bevestigingselementen bovenleiding,1.375,1.1,1.65,2016-11-10 08:00:00,2016-11-11 17:00:00,,0
572,1.1.1.4.2.3.2.2.5,"Armaturen, drukknoppen, stopcontacten West",14.375,11.5,17.25,2016-11-10 08:00:00,2016-11-24 17:00:00,,0
573,1.1.1.4.2.3.2.2.6,Bevestigingsstruct. en kabelbanen Oost,7.375,5.9,8.85,2016-11-28 08:00:00,2016-12-05 17:00:00,,0
574,1.1.1.4.2.3.2.2.7,"Armaturen, drukknoppen, stopcontacten Oost",14.375,11.5,17.25,2016-12-06 08:00:00,2016-12-20 17:00:00,,0
575,1.1.1.4.2.3.2.2.8,Hydrantleidingen + haspelkasten West,2.375,1.9,2.85,2016-12-21 08:00:00,2016-12-23 17:00:00,,0
576,1.1.1.4.2.3.2.2.9,Tracing & isolatie op hydrantleidingen West,2.375,1.9,2.85,2017-01-10 08:00:00,2017-01-12 17:00:00,,0
577,1.1.1.4.2.3.2.3,Zone B (270-320m),66.375,65.71,67.04,2016-11-07 08:00:00,2017-01-12 17:00:00,,0
578,1.1.1.4.2.3.2.3.1,Verankeringen U-profiel in plafond,4.375,3.5,5.25,2016-11-07 08:00:00,2016-11-11 17:00:00,,0
579,1.1.1.4.2.3.2.3.2,Verankering steunen beams,1.375,1.1,1.65,2016-11-15 08:00:00,2016-11-16 17:00:00,,0
580,1.1.1.4.2.3.2.3.3,Bevestigingsstucturen en kabelbanen West,7.375,5.9,8.85,2016-11-17 08:00:00,2016-11-24 17:00:00,,0
581,1.1.1.4.2.3.2.3.4,Bevestigingselementen bovenleiding,3.375,2.7,4.05,2016-11-25 08:00:00,2016-11-28 17:00:00,,0
582,1.1.1.4.2.3.2.3.5,"Armaturen, drukknoppen en stopcontacten West + tunnelborden",13.375,10.7,16.05,2016-11-25 08:00:00,2016-12-08 17:00:00,,0
583,1.1.1.4.2.3.2.3.6,Bevestigingsstucturen en kabelbanen Oost,7.375,5.9,8.85,2016-12-09 08:00:00,2016-12-16 17:00:00,,0
584,1.1.1.4.2.3.2.3.7,"Armaturen, drukknoppen en stopcontacten Oost",1.375,1.1,1.65,2016-12-19 08:00:00,2016-12-20 17:00:00,,0
585,1.1.1.4.2.3.2.3.8,Hydrantleidingen + haspelkasten West,2.375,1.9,2.85,2016-12-21 08:00:00,2016-12-23 17:00:00,,0
586,1.1.1.4.2.3.2.3.9,Tracing en isolatie op hydrantleidingen West,2.375,1.9,2.85,2017-01-10 08:00:00,2017-01-12 17:00:00,,0
587,1.1.1.4.2.3.2.4,Zone C (320-400m),197.375,195.4,199.35,2016-11-09 08:00:00,2017-05-25 17:00:00,,0
588,1.1.1.4.2.3.2.4.1,Verankeringen U-profiel in plafond,6.375,5.1,7.65,2016-11-09 08:00:00,2016-11-15 17:00:00,,0
589,1.1.1.4.2.3.2.4.2,Verankering steunen beams,1.375,1.1,1.65,2016-11-17 08:00:00,2016-11-18 17:00:00,,0
590,1.1.1.4.2.3.2.4.3,Bevestigingsstucturen en kabelbanen West,9.375,7.5,11.25,2016-11-21 08:00:00,2016-11-30 17:00:00,,0
591,1.1.1.4.2.3.2.4.4,Bevestigingselementen bovenleiding,1.375,1.1,1.65,2016-12-01 08:00:00,2016-12-02 17:00:00,,0
592,1.1.1.4.2.3.2.4.5,"Armaturen, drukknoppen en stopcontacten West",4.375,3.5,5.25,2016-12-01 08:00:00,2016-12-05 17:00:00,,0
593,1.1.1.4.2.3.2.4.6,Bevestigingsstucturen en kabelbanen Oost,9.375,7.5,11.25,2016-12-06 08:00:00,2016-12-15 17:00:00,,0
594,1.1.1.4.2.3.2.4.7,"Armaturen, drukknoppen en stopcontacten Oost",3.375,2.7,4.05,2016-12-16 08:00:00,2016-12-19 17:00:00,,0
595,1.1.1.4.2.3.2.4.8,Hydrantleidingen + haspelkasten West,2.375,1.9,2.85,2016-12-20 08:00:00,2016-12-22 17:00:00,,0
596,1.1.1.4.2.3.2.4.9,Tracing en isolatie op hydrantleidingen West,2.375,1.9,2.85,2017-01-09 08:00:00,2017-01-11 17:00:00,,0
597,1.1.1.4.2.3.2.4.10,Opbouw bovenleidingsstructuur lichtput en RWA,6.375,5.1,7.65,2017-03-17 08:00:00,2017-03-23 17:00:00,,0
598,1.1.1.4.2.3.2.4.11,Plaatsen en aansluiten RWA-bord op niveau -1,25.375,20.3,30.45,2017-03-06 08:00:00,2017-03-31 17:00:00,,0
599,1.1.1.4.2.3.2.4.12,Plaatsen roosters,23.375,18.7,28.05,2017-05-02 08:00:00,2017-05-25 17:00:00,,0
600,1.1.1.4.2.3.2.4.13,Plaatsen deuren ventilatie ,4.375,3.5,5.25,2017-03-20 08:00:00,2017-03-24 17:00:00,,0
601,1.1.1.4.2.3.2.5,Zone D (400-480m),45.375,44.92,45.83,2016-11-07 08:00:00,2016-12-22 17:00:00,,0
602,1.1.1.4.2.3.2.5.1,Verankeringen U-profiel in plafond,4.375,3.5,5.25,2016-11-07 08:00:00,2016-11-11 17:00:00,,0
603,1.1.1.4.2.3.2.5.2,Verankering steunen beams,1.375,1.1,1.65,2016-11-15 08:00:00,2016-11-16 17:00:00,,0
604,1.1.1.4.2.3.2.5.3,Bevestigingsstucturen en kabelbanen West,11.375,9.1,13.65,2016-11-17 08:00:00,2016-11-28 17:00:00,,0
605,1.1.1.4.2.3.2.5.4,Bevestigingselementen bovenleiding,1.375,1.1,1.65,2016-11-29 08:00:00,2016-11-30 17:00:00,,0
606,1.1.1.4.2.3.2.5.5,"Armaturen, drukknoppen en stopcontacten West",1.375,1.1,1.65,2016-11-29 08:00:00,2016-11-30 17:00:00,,0
607,1.1.1.4.2.3.2.5.6,Bevestigingsstucturen en kabelbanen Oost,11.375,9.1,13.65,2016-12-01 08:00:00,2016-12-12 17:00:00,,0
608,1.1.1.4.2.3.2.5.7,"Armaturen, drukknoppen en stopcontacten Oost",1.375,1.1,1.65,2016-12-13 08:00:00,2016-12-14 17:00:00,,0
609,1.1.1.4.2.3.2.5.8,Hydrantleidingen + haspelkasten West,4.375,3.5,5.25,2016-12-15 08:00:00,2016-12-19 17:00:00,,0
610,1.1.1.4.2.3.2.5.9,Tracing en isolatie op hydrantleidingen West,2.375,1.9,2.85,2016-12-20 08:00:00,2016-12-22 17:00:00,,0
611,1.1.1.4.2.3.3,Zone premetrostation niv -3,224.375,222.13,226.62,2016-09-15 08:00:00,2017-04-27 17:00:00,,0
612,1.1.1.4.2.3.3.1,Voorbereiden werkzone,13.375,10.7,16.05,2016-09-15 08:00:00,2016-09-28 17:00:00,,0
613,1.1.1.4.2.3.3.2,Metselwerk 'onderstation',25.375,20.3,30.45,2016-09-29 08:00:00,2016-10-24 17:00:00,,0
614,1.1.1.4.2.3.3.3,Dekvloer en vloerafwerking OS,13.375,10.7,16.05,2016-10-25 08:00:00,2016-11-07 17:00:00,,0
615,1.1.1.4.2.3.3.4,Schilderwerken OS,1.375,1.1,1.65,2016-11-23 08:00:00,2016-11-24 17:00:00,,0
616,1.1.1.4.2.3.3.5,Technische uitrusting onderstation (gedeelte Livan tramtunnel operationeel),124.375,99.5,149.25,2016-11-25 08:00:00,2017-03-29 17:00:00,,0
617,1.1.1.4.2.3.3.6,Binnenbrengen Elec Bord OS,1.375,1.1,1.65,2016-11-28 08:00:00,2016-11-29 17:00:00,,0
618,1.1.1.4.2.3.3.7,Tijdelijke deuren OS,1.375,1.1,1.65,2016-11-30 08:00:00,2016-12-01 17:00:00,,0
619,1.1.1.4.2.3.3.8,Plaatsen ventilatie OS,4.375,3.5,5.25,2017-01-16 08:00:00,2017-01-20 17:00:00,,0
620,1.1.1.4.2.3.3.9,Binnenbrengen HS-post,3.375,2.7,4.05,2017-01-20 08:00:00,2017-01-23 17:00:00,,0
621,1.1.1.4.2.3.3.10,Definitieve deur OS,0.375,0.3,0.45,2017-02-02 08:00:00,2017-02-02 17:00:00,,0
622,1.1.1.4.2.3.3.11,Metselwerken prémetrostation,45.375,36.3,54.45,2016-11-07 08:00:00,2016-12-22 17:00:00,,0
623,1.1.1.4.2.3.3.12,Herstellingswerken vloerplaat trambaan,11.375,9.1,13.65,2017-01-09 08:00:00,2017-01-20 17:00:00,,0
624,1.1.1.4.2.3.3.13,Injecteren dakplaat -3 boven spoor,15.375,12.3,18.45,2017-01-09 08:00:00,2017-01-24 17:00:00,,0
625,1.1.1.4.2.3.3.14,Schilderwerken muren onder perrons,11.375,9.1,13.65,2017-01-09 08:00:00,2017-01-20 17:00:00,,0
626,1.1.1.4.2.3.3.15,Afbraak  perronneuzen: oostzijde,18.375,14.7,22.05,2017-02-20 08:00:00,2017-03-10 17:00:00,,0
627,1.1.1.4.2.3.3.16,Betonwerken perronneuzen : oostzijde,13.375,10.7,16.05,2017-03-09 08:00:00,2017-03-22 17:00:00,,0
628,1.1.1.4.2.3.3.17,Afbraak perronneuzen: westzijde,18.375,14.7,22.05,2017-02-20 08:00:00,2017-03-10 17:00:00,,0
629,1.1.1.4.2.3.3.18,Inkappen bovenleidingen,3.375,2.7,4.05,2016-12-19 08:00:00,2016-12-22 17:00:00,,0
630,1.1.1.4.2.3.3.19,Plaatsen bovenleidingsprofielen,4.375,3.5,5.25,2017-01-16 08:00:00,2017-01-20 17:00:00,,0
631,1.1.1.4.2.3.3.20,Voorbereiden ondergrond,11.375,9.1,13.65,2017-01-23 08:00:00,2017-02-03 17:00:00,,0
632,1.1.1.4.2.3.3.21,Betonwerken perronneuzen : westzijde,13.375,10.7,16.05,2017-03-09 08:00:00,2017-03-22 17:00:00,,0
633,1.1.1.4.2.3.3.22,Akoestische bespuiting plafond,24.375,19.5,29.25,2017-04-03 08:00:00,2017-04-27 17:00:00,,0
634,1.1.1.4.2.3.3.23,Vloerafwerking perron binnen veiligheidsperimeter trambaan (polybeton + waarschuwingsstrook),38.375,30.7,46.05,2017-03-13 08:00:00,2017-04-20 17:00:00,,0
635,1.1.1.4.2.3.3.24,Plaatsen houten stofwand -3,11.375,9.1,13.65,2017-03-20 08:00:00,2017-03-31 17:00:00,,0
636,1.1.1.4.2.3.3.25,Tijdelijke wand afsluiting Livan wegnemen,1.375,1.1,1.65,2017-03-16 08:00:00,2017-03-17 17:00:00,,0
637,1.1.1.4.2.3.3.26,Steunen vast rookschermen plafond,11.375,9.1,13.65,2017-02-27 08:00:00,2017-03-10 17:00:00,,0
638,1.1.1.4.2.3.3.27,Seinlokaal West afgewerkt + Bordenlokaal,53.375,52.84,53.91,2017-02-06 08:00:00,2017-03-31 17:00:00,,0
639,1.1.1.4.2.3.3.27.1,Betonsokkel,11.375,9.1,13.65,2017-02-06 08:00:00,2017-02-17 17:00:00,,0
640,1.1.1.4.2.3.3.27.2,Wanden (beton/metselwerk),23.375,18.7,28.05,2017-02-20 08:00:00,2017-03-15 17:00:00,,0
641,1.1.1.4.2.3.3.27.3,dekvloer,1.375,1.1,1.65,2017-03-23 08:00:00,2017-03-24 17:00:00,,0
642,1.1.1.4.2.3.3.27.4,definitieve deur,1.375,1.1,1.65,2017-03-20 08:00:00,2017-03-21 17:00:00,,0
643,1.1.1.4.2.3.3.27.5,Schilderwerken,0.375,0.3,0.45,2017-03-27 08:00:00,2017-03-27 17:00:00,,0
644,1.1.1.4.2.3.3.27.6,technische uitrusting,3.375,2.7,4.05,2017-03-28 08:00:00,2017-03-31 17:00:00,,0
645,1.1.1.4.2.3.3.28,Brandnis West,37.375,37.0,37.75,2017-03-13 08:00:00,2017-04-19 17:00:00,,0
646,1.1.1.4.2.3.3.28.1,Metselwerk brandschakelaar nissen,4.375,3.5,5.25,2017-03-13 08:00:00,2017-03-17 17:00:00,,0
647,1.1.1.4.2.3.3.28.2,Installatie van brandschakelaars,16.375,13.1,19.65,2017-04-03 08:00:00,2017-04-19 17:00:00,,0
648,1.1.1.4.2.3.3.29,Seinlokaal Oost,85.375,84.52,86.23,2017-01-09 08:00:00,2017-04-04 17:00:00,,0
649,1.1.1.4.2.3.3.29.1,metselwerk,11.375,9.1,13.65,2017-01-09 08:00:00,2017-01-20 17:00:00,,0
650,1.1.1.4.2.3.3.29.2,kolom,1.375,1.1,1.65,2017-01-23 08:00:00,2017-01-24 17:00:00,,0
651,1.1.1.4.2.3.3.29.3,dekvloer,1.375,1.1,1.65,2017-03-23 08:00:00,2017-03-24 17:00:00,,0
652,1.1.1.4.2.3.3.29.4,definitieve deur,1.375,1.1,1.65,2017-03-27 08:00:00,2017-03-28 17:00:00,,0
653,1.1.1.4.2.3.3.29.5,Schilderwerken,0.375,0.3,0.45,2017-03-29 08:00:00,2017-03-29 17:00:00,,0
654,1.1.1.4.2.3.3.29.6,technische uitrusting,5.375,4.3,6.45,2017-03-30 08:00:00,2017-04-04 17:00:00,,0
655,1.1.1.4.2.3.3.30,Brandnis Oost,44.375,43.93,44.82,2017-03-13 08:00:00,2017-04-26 17:00:00,,0
656,1.1.1.4.2.3.3.30.1,Metselwerk brandschakelaar nissen,11.375,9.1,13.65,2017-03-13 08:00:00,2017-03-24 17:00:00,,0
657,1.1.1.4.2.3.3.30.2,Installatie van brandschakelaars (nog aan te sluiten),23.375,18.7,28.05,2017-04-03 08:00:00,2017-04-26 17:00:00,,0
658,1.1.1.4.2.3.4,Inrichtingswerken - volledig tunneltracé,192.375,190.45,194.3,2016-12-05 08:00:00,2017-06-15 17:00:00,,0
659,1.1.1.4.2.3.4.1,Hoofdvoedingskabels,4.375,3.5,5.25,2016-12-19 08:00:00,2016-12-23 17:00:00,,0
660,1.1.1.4.2.3.4.2,Plaatsen radio installatie in tunnel,4.375,3.5,5.25,2016-12-19 08:00:00,2016-12-23 17:00:00,,0
661,1.1.1.4.2.3.4.3,Aanpassen centrale apparatuur ASTRID,11.375,9.1,13.65,2017-04-03 08:00:00,2017-04-14 17:00:00,,0
662,1.1.1.4.2.3.4.4,Plaatsen branddetectie (beams) in tunnel,4.375,3.5,5.25,2016-12-19 08:00:00,2016-12-23 17:00:00,,0
663,1.1.1.4.2.3.4.5,Bekabeling tss beams en centrale in OS,1.375,1.1,1.65,2016-12-22 08:00:00,2016-12-23 17:00:00,,0
664,1.1.1.4.2.3.4.6,Plaatsen brandcentrale + aansluiten,2.375,1.9,2.85,2017-01-11 08:00:00,2017-01-13 17:00:00,,0
665,1.1.1.4.2.3.4.7,Plaatsen noodtelefoons,2.375,1.9,2.85,2017-03-01 08:00:00,2017-03-03 17:00:00,,0
666,1.1.1.4.2.3.4.8,CCTV bekabeling begin tramtunnel nr OS,2.375,1.9,2.85,2017-03-06 08:00:00,2017-03-08 17:00:00,,0
667,1.1.1.4.2.3.4.9,Plaatsen CCTV centrale + aansluiten,4.375,3.5,5.25,2017-03-09 08:00:00,2017-03-13 17:00:00,,0
668,1.1.1.4.2.3.4.10,Plaatsen bekabeling afsluitpoort,1.375,1.1,1.65,2017-03-14 08:00:00,2017-03-15 17:00:00,,0
669,1.1.1.4.2.3.4.11,Testen branddetectie + keuring,1.375,1.1,1.65,2017-04-27 08:00:00,2017-04-28 17:00:00,,0
670,1.1.1.4.2.3.4.12,Testen noodtelefonie ,1.375,1.1,1.65,2017-05-08 08:00:00,2017-05-09 17:00:00,,0
671,1.1.1.4.2.3.4.13,Aardingen ,4.375,3.5,5.25,2017-05-08 08:00:00,2017-05-12 17:00:00,,0
672,1.1.1.4.2.3.4.14,Verkenmerken plaatsen (Landmeter),4.375,3.5,5.25,2017-05-08 08:00:00,2017-05-12 17:00:00,,0
673,1.1.1.4.2.3.4.15,Testen radio installatie,11.375,9.1,13.65,2017-04-03 08:00:00,2017-04-14 17:00:00,,0
674,1.1.1.4.2.3.4.16,Spoorwerken (508m),91.375,90.46,92.29,2017-01-31 08:00:00,2017-05-02 17:00:00,,0
675,1.1.1.4.2.3.4.16.1,Tramstation (2x118m),56.375,55.81,56.94,2017-01-31 08:00:00,2017-03-28 17:00:00,,0
676,1.1.1.4.2.3.4.16.1.1,Aanbrengen en verlijmen ballastmatten,3.375,2.7,4.05,2017-03-10 08:00:00,2017-03-13 17:00:00,,0
677,1.1.1.4.2.3.4.16.1.2,Verdichten en egaliseren onderlaag,2.375,1.9,2.85,2017-03-14 08:00:00,2017-03-16 17:00:00,,0
678,1.1.1.4.2.3.4.16.1.3,Spoor Noord,1.375,1.36,1.39,2017-01-31 08:00:00,2017-02-01 17:00:00,,0
679,1.1.1.4.2.3.4.16.1.3.1,Plaatsen dwarsliggers ,1.375,1.1,1.65,2017-01-31 08:00:00,2017-02-01 17:00:00,,0
680,1.1.1.4.2.3.4.16.1.3.2,Plaatsen rugplaten en bevestigingsmiddelen,1.375,1.1,1.65,2017-01-31 08:00:00,2017-02-01 17:00:00,,0
681,1.1.1.4.2.3.4.16.1.3.3,Plaatsen spoorstaven en bevestigen,1.375,1.1,1.65,2017-01-31 08:00:00,2017-02-01 17:00:00,,0
682,1.1.1.4.2.3.4.16.1.4,Spoor Zuid,0.375,0.37,0.38,2017-03-28 08:00:00,2017-03-28 17:00:00,,0
683,1.1.1.4.2.3.4.16.1.4.1,Plaatsen dwarsliggers ,0.375,0.3,0.45,2017-03-28 08:00:00,2017-03-28 17:00:00,,0
684,1.1.1.4.2.3.4.16.1.4.2,Plaatsen rugplaten en bevestigingsmiddelen,0.375,0.3,0.45,2017-03-28 08:00:00,2017-03-28 17:00:00,,0
685,1.1.1.4.2.3.4.16.1.4.3,Opzetten spoorstaven en bevestigen,0.375,0.3,0.45,2017-03-28 08:00:00,2017-03-28 17:00:00,,0
686,1.1.1.4.2.3.4.16.2,Tunnel (2x266m),57.375,56.8,57.95,2017-02-01 08:00:00,2017-03-30 17:00:00,,0
687,1.1.1.4.2.3.4.16.2.1,Aanbrengen en verlijmen ballastmatten,5.375,4.3,6.45,2017-02-01 08:00:00,2017-02-06 17:00:00,,0
688,1.1.1.4.2.3.4.16.2.2,Verdichten en egaliseren onderlaag,2.375,1.9,2.85,2017-02-07 08:00:00,2017-02-09 17:00:00,,0
689,1.1.1.4.2.3.4.16.2.3,Spoor Noord,1.375,1.36,1.39,2017-02-13 08:00:00,2017-02-14 17:00:00,,0
690,1.1.1.4.2.3.4.16.2.3.1,Plaatsen dwarsliggers ,1.375,1.1,1.65,2017-02-13 08:00:00,2017-02-14 17:00:00,,0
691,1.1.1.4.2.3.4.16.2.3.2,Plaatsen rugplaten en bevestigingsmiddelen,1.375,1.1,1.65,2017-02-13 08:00:00,2017-02-14 17:00:00,,0
692,1.1.1.4.2.3.4.16.2.3.3,Plaatsen spoorstaven en bevestigen,1.375,1.1,1.65,2017-02-13 08:00:00,2017-02-14 17:00:00,,0
693,1.1.1.4.2.3.4.16.2.4,Spoor Zuid,1.375,1.36,1.39,2017-03-29 08:00:00,2017-03-30 17:00:00,,0
694,1.1.1.4.2.3.4.16.2.4.1,Plaatsen dwarsliggers ,1.375,1.1,1.65,2017-03-29 08:00:00,2017-03-30 17:00:00,,0
695,1.1.1.4.2.3.4.16.2.4.2,Plaatsen rugplaten en bevestigingsmiddelen,1.375,1.1,1.65,2017-03-29 08:00:00,2017-03-30 17:00:00,,0
696,1.1.1.4.2.3.4.16.2.4.3,Plaatsen spoorstaven en bevestigen,1.375,1.1,1.65,2017-03-29 08:00:00,2017-03-30 17:00:00,,0
697,1.1.1.4.2.3.4.16.3,Open helling (2x115m),58.375,57.79,58.96,2017-02-01 08:00:00,2017-03-31 17:00:00,,0
698,1.1.1.4.2.3.4.16.3.1,Aanbrengen en verlijmen ballastmatten,1.375,1.1,1.65,2017-02-01 08:00:00,2017-02-02 17:00:00,,0
699,1.1.1.4.2.3.4.16.3.2,Verdichten en egaliseren onderlaag,3.375,2.7,4.05,2017-02-17 08:00:00,2017-02-20 17:00:00,,0
700,1.1.1.4.2.3.4.16.3.3,Spoor Noord,0.375,0.37,0.38,2017-02-21 08:00:00,2017-02-21 17:00:00,,0
701,1.1.1.4.2.3.4.16.3.3.1,Plaatsen dwarsliggers,0.375,0.3,0.45,2017-02-21 08:00:00,2017-02-21 17:00:00,,0
702,1.1.1.4.2.3.4.16.3.3.2,Plaatsen rugplaten en bevestigingsmiddelen,0.375,0.3,0.45,2017-02-21 08:00:00,2017-02-21 17:00:00,,0
703,1.1.1.4.2.3.4.16.3.3.3,Plaatsen spoorstaven en bevestigen,0.375,0.3,0.45,2017-02-21 08:00:00,2017-02-21 17:00:00,,0
704,1.1.1.4.2.3.4.16.3.4,Spoor Zuid,0.375,0.37,0.38,2017-03-31 08:00:00,2017-03-31 17:00:00,,0
705,1.1.1.4.2.3.4.16.3.4.1,Plaatsen dwarsliggers,0.375,0.3,0.45,2017-03-31 08:00:00,2017-03-31 17:00:00,,0
706,1.1.1.4.2.3.4.16.3.4.2,Plaatsen rugplaten en bevestigingsmiddelen,0.375,0.3,0.45,2017-03-31 08:00:00,2017-03-31 17:00:00,,0
707,1.1.1.4.2.3.4.16.3.4.3,Plaatsen spoorstaven en bevestigen,0.375,0.3,0.45,2017-03-31 08:00:00,2017-03-31 17:00:00,,0
708,1.1.1.4.2.3.4.16.4,Afwerkingen spoor Noord,30.375,30.07,30.68,2017-02-22 08:00:00,2017-03-24 17:00:00,,0
709,1.1.1.4.2.3.4.16.4.1,Aflossen mbv krol en containerbak ,1.375,1.1,1.65,2017-02-22 08:00:00,2017-02-23 17:00:00,,0
710,1.1.1.4.2.3.4.16.4.2,Onderstoppen,29.375,23.5,35.25,2017-02-23 08:00:00,2017-03-24 17:00:00,,0
711,1.1.1.4.2.3.4.16.4.3,Borstelen spoor,1.375,1.1,1.65,2017-03-23 08:00:00,2017-03-24 17:00:00,,0
712,1.1.1.4.2.3.4.16.4.4,Maken lassen,17.375,13.9,20.85,2017-03-07 08:00:00,2017-03-24 17:00:00,,0
713,1.1.1.4.2.3.4.16.5,Afwerkingen spoor Zuid,28.375,28.09,28.66,2017-03-07 08:00:00,2017-04-04 17:00:00,,0
714,1.1.1.4.2.3.4.16.5.1,Aflossen mbv krol en containerbak ,1.375,1.1,1.65,2017-04-03 08:00:00,2017-04-04 17:00:00,,0
715,1.1.1.4.2.3.4.16.5.2,Onderstoppen,17.375,13.9,20.85,2017-03-07 08:00:00,2017-03-24 17:00:00,,0
716,1.1.1.4.2.3.4.16.5.3,Borstelen spoor,2.375,1.9,2.85,2017-03-22 08:00:00,2017-03-24 17:00:00,,0
717,1.1.1.4.2.3.4.16.5.4,Maken lassen,17.375,13.9,20.85,2017-03-07 08:00:00,2017-03-24 17:00:00,,0
718,1.1.1.4.2.3.4.16.6,Plaatsen waterafvoer rails (PVC buis + plaatsen rails),0.375,0.3,0.45,2017-03-24 08:00:00,2017-03-24 17:00:00,,0
719,1.1.1.4.2.3.4.16.7,Geisoleerde voegen (lassen 4/05),4.375,3.5,5.25,2017-04-28 08:00:00,2017-05-02 17:00:00,,0
720,1.1.1.4.2.3.4.16.8,Alternerende plaatjes dwarsliggers ,3.375,2.7,4.05,2017-04-28 08:00:00,2017-05-01 17:00:00,,0
721,1.1.1.4.2.3.4.16.9,Betonnen kabelgoot open helling,0.375,0.3,0.45,2017-04-26 08:00:00,2017-04-26 17:00:00,,0
722,1.1.1.4.2.3.4.16.10,Gabarit controle,0.375,0.3,0.45,2017-04-28 08:00:00,2017-04-28 17:00:00,,0
723,1.1.1.4.2.3.4.17,Bovenleidingen,50.375,49.87,50.88,2017-03-13 08:00:00,2017-05-02 17:00:00,,0
724,1.1.1.4.2.3.4.17.1,Plaatsen T - profiel lichtput,1.375,1.1,1.65,2017-03-13 08:00:00,2017-03-14 17:00:00,,0
725,1.1.1.4.2.3.4.17.2,Bovenleidingsprofiel Tunnel,9.375,7.5,11.25,2017-03-15 08:00:00,2017-03-24 17:00:00,,0
726,1.1.1.4.2.3.4.17.3,Alle werken mbt bovenleidingsprofiel Perron,11.375,9.1,13.65,2017-03-27 08:00:00,2017-04-07 17:00:00,,0
727,1.1.1.4.2.3.4.17.4,Uitrollen bvl draad Open Helling,7.375,5.9,8.85,2017-04-19 08:00:00,2017-04-26 17:00:00,,0
728,1.1.1.4.2.3.4.17.5,Plaatsen kasten feeder en sectiescheiders ,2.375,1.9,2.85,2017-04-24 08:00:00,2017-04-26 17:00:00,,0
729,1.1.1.4.2.3.4.17.6,Herzien van de bovenleidingsdraad,5.375,4.3,6.45,2017-04-27 08:00:00,2017-05-02 17:00:00,,0
730,1.1.1.4.2.3.4.17.7,Aansluiten feeder- en retourkabels (nachtwerk),23.375,23.14,23.61,2017-04-03 08:00:00,2017-04-26 17:00:00,,0
731,1.1.1.4.2.3.4.17.7.1,Oostzijde (nachtwerk),16.375,13.1,19.65,2017-04-03 08:00:00,2017-04-19 17:00:00,,0
732,1.1.1.4.2.3.4.17.7.2,Westzijde (nachtwerk),12.375,9.9,14.85,2017-04-14 08:00:00,2017-04-26 17:00:00,,0
733,1.1.1.4.2.3.4.18,Spoorstroomkringen en beveiliging (Siemens),113.375,112.24,114.51,2017-02-22 08:00:00,2017-06-15 17:00:00,,0
734,1.1.1.4.2.3.4.18.1,Spoorstroomkringen,113.375,90.7,136.05,2017-02-22 08:00:00,2017-06-15 17:00:00,,0
735,1.1.1.4.2.3.4.18.2,Spoorbeveiligingssysteem incl glasvezel,113.375,90.7,136.05,2017-02-22 08:00:00,2017-06-15 17:00:00,,0
736,1.1.1.4.2.3.4.18.3,Seinen,1.375,1.1,1.65,2017-06-14 08:00:00,2017-06-15 17:00:00,,0
737,1.1.1.4.2.3.4.19,Akoestische bespuiting tegen plafond,21.375,17.1,25.65,2016-12-05 08:00:00,2016-12-26 17:00:00,,0
738,1.1.1.4.2.4,Aansluiting Livantunnel kant Zuid,16.375,16.21,16.54,2017-04-18 08:00:00,2017-05-04 17:00:00,,0
739,1.1.1.4.2.4.1,Externe mijlpaal (uit DP1): wegenis aansluiting Livan klaar,0.375,0.3,0.45,2017-04-18 08:00:00,2017-04-18 17:00:00,,0
740,1.1.1.4.2.4.2,Aanleg tijdelijke wissels (2) + kruis te starten met Oostzijde (nachtwerk),2.375,1.9,2.85,2017-04-24 08:00:00,2017-04-26 17:00:00,,0
741,1.1.1.4.2.4.3,Aanleg rechte sporen en uitrusting trambaan (nachtwerk),7.375,5.9,8.85,2017-04-27 08:00:00,2017-05-04 17:00:00,,0
742,1.1.1.4.2.4.4,Aansluiting bovenleidingen (nachtwerk),8.375,6.7,10.05,2017-04-24 08:00:00,2017-05-02 17:00:00,,0
743,1.1.1.4.2.5,Alle werken voltooid om testfase OG te starten (BCT2) 06:00,8.375,6.7,10.05,2017-05-15 08:00:00,2017-05-23 17:00:00,,0
744,1.1.1.4.2.6,Laatste herziening sporen (machinaal onderstoppen) + slijpen rails,2.375,1.9,2.85,2017-05-22 08:00:00,2017-05-24 17:00:00,,0
745,1.1.1.4.2.7,Aanleg perron Oost Stoopstraat,0.0,0.0,0.0,2017-04-28 17:00:00,2017-04-28 17:00:00,,0
746,1.1.1.4.2.8,1110 Werken na indienstname tramtunnel,25.375,25.12,25.63,2017-09-11 08:00:00,2017-10-06 17:00:00,,0
747,1.1.1.4.2.8.1,Aanleg definitieve wissel 1 (buitendiensttelling nodig),18.375,14.7,22.05,2017-09-11 08:00:00,2017-09-29 17:00:00,,0
748,1.1.1.4.2.8.2,Aanleg definitieve wissel 2 (buitendiensttelling nodig),18.375,14.7,22.05,2017-09-11 08:00:00,2017-09-29 17:00:00,,0
749,1.1.1.4.2.8.3,Maken aansluiten naar sporen naast tunnel,4.375,3.5,5.25,2017-10-02 08:00:00,2017-10-06 17:00:00,,0
750,1.1.1.5,12 Italiëlei,1338.375,1324.99,1351.76,2016-03-01 08:00:00,2019-10-30 17:00:00,,0
751,1.1.1.5.1,"Peilen, (ver)plaatsen en aanpassen conflicterende dwarsende nutsleidingen (voorafgaand)",55.375,44.3,66.45,2016-03-01 08:00:00,2016-04-25 17:00:00,,0
752,1.1.1.5.2,Aanleg waterleiding AVL,291.375,233.1,349.65,2017-06-19 08:00:00,2018-04-06 17:00:00,,0
753,1.1.1.5.3,1201 Italiëlei deel Roosevelt tot Tunnelplaats,1333.375,1320.04,1346.71,2016-03-01 08:00:00,2019-10-25 17:00:00,,0
754,1.1.1.5.3.1,Nuts doorsteek 220 A Waterlink zone Paardenmarkt-tunnelplaats,6.375,5.1,7.65,2016-03-01 08:00:00,2016-03-07 17:00:00,,0
755,1.1.1.5.3.2,Nuts AVL600/210C zone Paardenmarkt Zuid,20.375,16.3,24.45,2016-03-01 08:00:00,2016-03-21 17:00:00,,0
756,1.1.1.5.3.3,Rooseveltplaats - Violierstraat,508.375,503.29,513.46,2018-06-04 08:00:00,2019-10-25 17:00:00,,0
757,1.1.1.5.3.3.1,Aansluiting Leien Tunnel Noord Oost,46.375,37.1,55.65,2019-06-03 08:00:00,2019-07-19 17:00:00,,0
758,1.1.1.5.3.3.2,Trambaan,508.375,503.29,513.46,2018-06-04 08:00:00,2019-10-25 17:00:00,,0
759,1.1.1.5.3.3.2.1,Onderfundering ,2.375,1.9,2.85,2018-06-04 08:00:00,2018-06-06 17:00:00,,0
760,1.1.1.5.3.3.2.2,Fundering BVL palen,1.375,1.1,1.65,2018-06-07 08:00:00,2018-06-08 17:00:00,,0
761,1.1.1.5.3.3.2.3,Langse wachtbuizen,6.375,5.1,7.65,2018-06-21 08:00:00,2018-06-27 17:00:00,,0
762,1.1.1.5.3.3.2.4,Fundering in porfiertseenslag,0.375,0.3,0.45,2018-06-28 08:00:00,2018-06-28 17:00:00,,0
763,1.1.1.5.3.3.2.5,Boordsteen ,0.375,0.3,0.45,2018-06-29 08:00:00,2018-06-29 17:00:00,,0
764,1.1.1.5.3.3.2.6,Spoorwerken,3.375,2.7,4.05,2018-07-02 08:00:00,2018-07-05 17:00:00,,0
765,1.1.1.5.3.3.2.7,Kiftbeton,0.375,0.3,0.45,2018-07-06 08:00:00,2018-07-06 17:00:00,,0
766,1.1.1.5.3.3.2.8,Riolering,5.375,4.3,6.45,2019-01-09 08:00:00,2019-01-14 17:00:00,,0
767,1.1.1.5.3.3.2.9,BVL palen en OV,2.375,1.9,2.85,2019-03-18 08:00:00,2019-03-20 17:00:00,,0
768,1.1.1.5.3.3.2.10,Grondwerk en onderfundering spoorwerk kruising Italiëlei - Van Boendaelestraat/Violierstraat,14.375,11.5,17.25,2019-03-01 08:00:00,2019-03-15 17:00:00,,0
769,1.1.1.5.3.3.2.11,Fundering in porfiersteenslag spoorwerk kruising Italiëlei - Van Boendaelestraat/Violierstraat,2.375,1.9,2.85,2019-03-18 08:00:00,2019-03-20 17:00:00,,0
770,1.1.1.5.3.3.2.12,Spoorwerk kruising Italiëlei - Van Boendalestraat /Violierstraat,6.375,5.1,7.65,2019-04-25 08:00:00,2019-05-01 17:00:00,,0
771,1.1.1.5.3.3.2.13,Kiftbeton,3.375,2.7,4.05,2019-05-03 08:00:00,2019-05-06 17:00:00,,0
772,1.1.1.5.3.3.2.14,L-elementen perron + WS,161.375,159.76,162.99,2019-05-17 08:00:00,2019-10-25 17:00:00,,0
773,1.1.1.5.3.3.2.14.1,Betonnen keermuur + boordstenen,13.375,10.7,16.05,2019-05-17 08:00:00,2019-05-30 17:00:00,,0
774,1.1.1.5.3.3.2.14.2,nutsleidingen omleggen,1.375,1.1,1.65,2019-06-03 08:00:00,2019-06-04 17:00:00,,0
775,1.1.1.5.3.3.2.14.3,Bomenzand,5.375,4.3,6.45,2019-06-05 08:00:00,2019-06-10 17:00:00,,0
776,1.1.1.5.3.3.2.14.4,L-profielen,7.375,5.9,8.85,2019-06-07 08:00:00,2019-06-14 17:00:00,,0
777,1.1.1.5.3.3.2.14.5,Trekputten op hoogte brengen,1.375,1.1,1.65,2019-06-17 08:00:00,2019-06-18 17:00:00,,0
778,1.1.1.5.3.3.2.14.6,Fundering ,5.375,4.3,6.45,2019-06-19 08:00:00,2019-06-24 17:00:00,,0
779,1.1.1.5.3.3.2.14.7,Boomroosters afwerking,1.375,1.1,1.65,2019-06-25 08:00:00,2019-06-26 17:00:00,,0
780,1.1.1.5.3.3.2.14.8,Leuningen (Restpunt),4.375,3.5,5.25,2019-10-21 08:00:00,2019-10-25 17:00:00,,0
781,1.1.1.5.3.3.2.14.9,Verharding perrons,11.375,9.1,13.65,2019-06-24 08:00:00,2019-07-05 17:00:00,,0
782,1.1.1.5.3.3.2.15,Verharding trambaan,9.375,7.5,11.25,2019-06-26 08:00:00,2019-07-05 17:00:00,,0
783,1.1.1.5.3.3.2.16,Afrol en montage bovenleiding Rd-09 en Rd-10 (Kipdorpvest - Kipdorpbrug - tot nèt vóór Tunnelplaats) (Nachtwerk),38.375,30.7,46.05,2019-06-10 08:00:00,2019-07-18 17:00:00,,0
784,1.1.1.5.3.3.2.17,"Bermen (12 Italiëlei, Rooseveltplaats-Violierstraat, trambaan)",13.375,10.7,16.05,2019-05-08 08:00:00,2019-05-21 17:00:00,,0
785,1.1.1.5.3.4,Violierstraat - Tunnelplaats,246.375,197.1,295.65,2017-06-19 08:00:00,2018-02-20 17:00:00,,0
786,1.1.1.5.3.5,Fase 2A - West (ventweg+parkeerstr+ voetpad+hoofdrijweg westelijk van trambaan) ,659.0,652.41,665.59,2017-09-14 17:00:00,2019-07-05 17:00:00,,0
787,1.1.1.5.3.5.1,Fasewissel Italiëlei Roosevelt-Tunnelpl - Fase 2A,0.375,0.3,0.45,2017-12-14 08:00:00,2017-12-14 17:00:00,,0
788,1.1.1.5.3.5.2,"Voorbereidingen, signalisatie en opbraakwerken",6.375,5.1,7.65,2017-12-14 08:00:00,2017-12-20 17:00:00,,0
789,1.1.1.5.3.5.3,"Peilen, (ver)plaatsen en aanpassen  traject Tunnelplaats - Paardemarkt nutsleidingen 2A",53.375,42.7,64.05,2018-02-05 08:00:00,2018-03-30 17:00:00,,0
790,1.1.1.5.3.5.4,"Peilen, (ver)plaatsen en aanpassen traject Paardemarkt - Van Boendale nutsleidingen 2A",80.375,64.3,96.45,2018-01-09 08:00:00,2018-03-30 17:00:00,,0
791,1.1.1.5.3.5.5,"Peilen, (ver)plaatsen en aanpassen Traject Van Boendale - Kipdorp nutsleidingen 2A",66.375,53.1,79.65,2018-02-05 08:00:00,2018-04-12 17:00:00,,0
792,1.1.1.5.3.5.6,Huisaansluitingen Tunnelplaats - Paardemarkt nutsleidingen,18.375,14.7,22.05,2018-03-12 08:00:00,2018-03-30 17:00:00,,0
793,1.1.1.5.3.5.7,Huisaansluitingen Paardemarkt - Van Boendale,34.375,27.5,41.25,2018-03-01 08:00:00,2018-04-04 17:00:00,,0
794,1.1.1.5.3.5.8,Huisaansluitingen Van Boendale - Kipdorp,27.375,21.9,32.85,2018-03-22 08:00:00,2018-04-18 17:00:00,,0
795,1.1.1.5.3.5.9,Archeologie,55.375,44.3,66.45,2017-12-21 08:00:00,2018-02-14 17:00:00,,0
796,1.1.1.5.3.5.10,Paardenmarkt - Van Boendaelestraat - Kipdorp ventweg + parkeerstrook + voetpad,459.375,454.78,463.97,2018-04-02 08:00:00,2019-07-05 17:00:00,,0
797,1.1.1.5.3.5.10.1,Riolering Paardenmarkt - Van Boendaelestraat,11.375,9.1,13.65,2018-04-02 08:00:00,2018-04-13 17:00:00,,0
798,1.1.1.5.3.5.10.2,Aansluiting RWA op Rui,44.375,35.5,53.25,2018-04-23 08:00:00,2018-06-06 17:00:00,,0
799,1.1.1.5.3.5.10.3,Wachtbuizen en huisaansluitingen,4.375,3.5,5.25,2018-04-23 08:00:00,2018-04-27 17:00:00,,0
800,1.1.1.5.3.5.10.4,"Grondwerk, onderfundering ",20.375,16.3,24.45,2018-05-02 08:00:00,2018-05-22 17:00:00,,0
801,1.1.1.5.3.5.10.5,Boordstenen fietspad,2.375,1.9,2.85,2018-05-28 08:00:00,2018-05-30 17:00:00,,0
802,1.1.1.5.3.5.10.6,Dienstriolering en HA,18.375,14.7,22.05,2018-06-11 08:00:00,2018-06-29 17:00:00,,0
803,1.1.1.5.3.5.10.7,Wachtbuis OV,18.375,14.7,22.05,2018-06-11 08:00:00,2018-06-29 17:00:00,,0
804,1.1.1.5.3.5.10.8,Grondwerk voetpad en parkeerstrook,18.375,14.7,22.05,2018-06-11 08:00:00,2018-06-29 17:00:00,,0
805,1.1.1.5.3.5.10.9,Fundering boordstenen,1.375,1.1,1.65,2018-07-02 08:00:00,2018-07-03 17:00:00,,0
806,1.1.1.5.3.5.10.10,Waterslikkers,2.375,1.9,2.85,2018-09-12 08:00:00,2018-09-14 17:00:00,,0
807,1.1.1.5.3.5.10.11,Boordstenen,4.375,3.5,5.25,2018-09-17 08:00:00,2018-09-21 17:00:00,,0
808,1.1.1.5.3.5.10.12,Fundering voetpad,3.375,2.7,4.05,2018-09-24 08:00:00,2018-09-27 17:00:00,,0
809,1.1.1.5.3.5.10.13,Verharding voetpad,67.375,53.9,80.85,2018-09-28 08:00:00,2018-12-04 17:00:00,,0
810,1.1.1.5.3.5.10.14,Fundering greppel Van Boendaele,11.375,9.1,13.65,2018-11-05 08:00:00,2018-11-16 17:00:00,,0
811,1.1.1.5.3.5.10.15,Fundering greppel parkeerstrook,3.375,2.7,4.05,2018-11-19 08:00:00,2018-11-22 17:00:00,,0
812,1.1.1.5.3.5.10.16,Boordstenen ventweg,4.375,3.5,5.25,2018-11-30 08:00:00,2018-12-04 17:00:00,,0
813,1.1.1.5.3.5.10.17,Boordstenen fietspad,2.375,1.9,2.85,2018-12-05 08:00:00,2018-12-07 17:00:00,,0
814,1.1.1.5.3.5.10.18,Greppel in graniet zijde boordsteen,6.375,5.1,7.65,2018-11-30 08:00:00,2018-12-06 17:00:00,,0
815,1.1.1.5.3.5.10.19,Kasseiverharding,7.375,5.9,8.85,2018-11-30 08:00:00,2018-12-07 17:00:00,,0
816,1.1.1.5.3.5.10.20,Greppel in graniet,3.375,2.7,4.05,2018-11-26 08:00:00,2018-11-29 17:00:00,,0
817,1.1.1.5.3.5.10.21,Waterslikkers,3.375,2.7,4.05,2018-11-09 08:00:00,2018-11-12 17:00:00,,0
818,1.1.1.5.3.5.10.22,Fundering fietspad,3.375,2.7,4.05,2018-11-30 08:00:00,2018-12-03 17:00:00,,0
819,1.1.1.5.3.5.10.23,Afwerking fundering ventweg,1.375,1.1,1.65,2018-12-10 08:00:00,2018-12-11 17:00:00,,0
820,1.1.1.5.3.5.10.24,Verharding ventweg BSS ,5.375,4.3,6.45,2018-12-12 08:00:00,2018-12-17 17:00:00,,0
821,1.1.1.5.3.5.10.25,Verharding fietspad OL + TL,0.375,0.3,0.45,2019-01-11 08:00:00,2019-01-11 17:00:00,,0
822,1.1.1.5.3.5.10.26,Fundering type IIA ventweg in asfalt,0.375,0.3,0.45,2018-12-10 08:00:00,2018-12-10 17:00:00,,0
823,1.1.1.5.3.5.10.27,Greppel in graniet ventweg in asfalt,0.375,0.3,0.45,2018-12-11 08:00:00,2018-12-11 17:00:00,,0
824,1.1.1.5.3.5.10.28,Verharding ventweg 2x OL,0.375,0.3,0.45,2018-12-12 08:00:00,2018-12-12 17:00:00,,0
825,1.1.1.5.3.5.10.29,Putten ophalen,0.375,0.3,0.45,2018-12-13 08:00:00,2018-12-13 17:00:00,,0
826,1.1.1.5.3.5.10.30,Verharding ventweg OL + TL,0.375,0.3,0.45,2018-12-14 08:00:00,2018-12-14 17:00:00,,0
827,1.1.1.5.3.5.10.31,"Verkeersborden (Fase 2A west, Paardenmrkt - Van Boendalestraat)",4.375,3.5,5.25,2019-07-01 08:00:00,2019-07-05 17:00:00,,0
828,1.1.1.5.3.5.11,Tunnelplaats - Paardenmarkt ventweg + parkeerstrook + voetpad,193.375,191.44,195.31,2018-06-04 08:00:00,2018-12-14 17:00:00,,0
829,1.1.1.5.3.5.11.1,Wachtbuizen en huisaansluitingen,2.375,1.9,2.85,2018-06-04 08:00:00,2018-06-06 17:00:00,,0
830,1.1.1.5.3.5.11.2,Riolering,1.375,1.1,1.65,2018-07-02 08:00:00,2018-07-03 17:00:00,,0
831,1.1.1.5.3.5.11.3,Bomenvisie,5.375,4.3,6.45,2018-07-04 08:00:00,2018-07-09 17:00:00,,0
832,1.1.1.5.3.5.11.4,"Grondwerk, onderfundering ",2.375,1.9,2.85,2018-07-10 08:00:00,2018-07-12 17:00:00,,0
833,1.1.1.5.3.5.11.5,Boordstenen fietspad,3.375,2.7,4.05,2018-07-13 08:00:00,2018-07-16 17:00:00,,0
834,1.1.1.5.3.5.11.6,Opbraak voetpad,13.375,10.7,16.05,2018-07-17 08:00:00,2018-07-30 17:00:00,,0
835,1.1.1.5.3.5.11.7,Grondwerk voetpad en parkeerstrook,10.375,8.3,12.45,2018-07-20 08:00:00,2018-07-30 17:00:00,,0
836,1.1.1.5.3.5.11.8,OV wachtbuis,14.375,11.5,17.25,2018-07-16 08:00:00,2018-07-30 17:00:00,,0
837,1.1.1.5.3.5.11.9,Fundering boordstenen,1.375,1.1,1.65,2018-07-31 08:00:00,2018-08-01 17:00:00,,0
838,1.1.1.5.3.5.11.10,Boordstenen,6.375,5.1,7.65,2018-08-02 08:00:00,2018-08-08 17:00:00,,0
839,1.1.1.5.3.5.11.11,Fundering voetpad,4.375,3.5,5.25,2018-08-09 08:00:00,2018-08-13 17:00:00,,0
840,1.1.1.5.3.5.11.12,Verharding voetpad,18.375,14.7,22.05,2018-08-20 08:00:00,2018-09-07 17:00:00,,0
841,1.1.1.5.3.5.11.13,Fundering boordsteen + greppel in graniet,2.375,1.9,2.85,2018-09-05 08:00:00,2018-09-07 17:00:00,,0
842,1.1.1.5.3.5.11.14,Fundering ventweg en parkeerstrook,1.375,1.1,1.65,2018-09-10 08:00:00,2018-09-11 17:00:00,,0
843,1.1.1.5.3.5.11.15,Boordstenen ventweg en fietspad,5.375,4.3,6.45,2018-09-12 08:00:00,2018-09-17 17:00:00,,0
844,1.1.1.5.3.5.11.16,Waterslikkers,1.375,1.1,1.65,2018-09-18 08:00:00,2018-09-19 17:00:00,,0
845,1.1.1.5.3.5.11.17,Greppel in graniet,4.375,3.5,5.25,2018-09-20 08:00:00,2018-09-24 17:00:00,,0
846,1.1.1.5.3.5.11.18,Kasseiverharding,2.375,1.9,2.85,2018-09-25 08:00:00,2018-09-27 17:00:00,,0
847,1.1.1.5.3.5.11.19,Verharding ventweg BSS ,1.375,1.1,1.65,2018-10-11 08:00:00,2018-10-12 17:00:00,,0
848,1.1.1.5.3.5.11.20,Fundering fietspad,4.375,3.5,5.25,2018-10-15 08:00:00,2018-10-19 17:00:00,,0
849,1.1.1.5.3.5.11.21,Asfalt OL + TL fietspad,1.375,1.1,1.65,2018-10-22 08:00:00,2018-10-23 17:00:00,,0
850,1.1.1.5.3.5.11.22,Fase wissel ,0.0,0.0,0.0,2018-12-14 17:00:00,2018-12-14 17:00:00,,0
851,1.1.1.5.3.5.12,Korte Winkelstraat - Kipdorp (werfdeel IV) (Deelproject 1),132.375,131.05,133.7,2019-01-08 08:00:00,2019-05-20 17:00:00,,0
852,1.1.1.5.3.5.12.1,Opbraak,2.375,1.9,2.85,2019-01-08 08:00:00,2019-01-10 17:00:00,,0
853,1.1.1.5.3.5.12.2,Riolering,29.375,23.5,35.25,2019-01-15 08:00:00,2019-02-13 17:00:00,,0
854,1.1.1.5.3.5.12.3,Huisaansluitingen,4.375,3.5,5.25,2019-02-14 08:00:00,2019-02-18 17:00:00,,0
855,1.1.1.5.3.5.12.4,Wachtbuizen,2.375,1.9,2.85,2019-02-19 08:00:00,2019-02-21 17:00:00,,0
856,1.1.1.5.3.5.12.5,Bomenvisie + OV en andere wachtbuizen,4.375,3.5,5.25,2019-02-22 08:00:00,2019-02-26 17:00:00,,0
857,1.1.1.5.3.5.12.6,"Grondwerk, onderfundering en IA ventweg",7.375,5.9,8.85,2019-02-27 08:00:00,2019-03-06 17:00:00,,0
858,1.1.1.5.3.5.12.7,Dienstriolering + OV wachtbuis,21.375,17.1,25.65,2019-03-18 08:00:00,2019-04-08 17:00:00,,0
859,1.1.1.5.3.5.12.8,Grondwerk voetpad en fietspad,3.375,2.7,4.05,2019-04-09 08:00:00,2019-04-12 17:00:00,,0
860,1.1.1.5.3.5.12.9,Onderfundering en fundering voetpad,1.375,1.1,1.65,2019-04-15 08:00:00,2019-04-16 17:00:00,,0
861,1.1.1.5.3.5.12.10,Ov kabel + gevel armaturen,6.375,5.1,7.65,2019-04-17 08:00:00,2019-04-23 17:00:00,,0
862,1.1.1.5.3.5.12.11,Eandis : afkoppelen bestaande OV kastjes,6.375,5.1,7.65,2019-04-17 08:00:00,2019-04-23 17:00:00,,0
863,1.1.1.5.3.5.12.12,Boordstenen fietspad,2.375,1.9,2.85,2019-04-17 08:00:00,2019-04-19 17:00:00,,0
864,1.1.1.5.3.5.12.13,Fundering fietspad ,1.375,1.1,1.65,2019-04-24 08:00:00,2019-04-25 17:00:00,,0
865,1.1.1.5.3.5.12.14,Verharding voetpad,10.375,8.3,12.45,2019-04-26 08:00:00,2019-05-06 17:00:00,,0
866,1.1.1.5.3.5.12.15,Waterslikkers,1.375,1.1,1.65,2019-05-06 08:00:00,2019-05-07 17:00:00,,0
867,1.1.1.5.3.5.12.16,Fundering  boordstenen ,0.375,0.3,0.45,2019-05-08 08:00:00,2019-05-08 17:00:00,,0
868,1.1.1.5.3.5.12.17,Boordstenen ,1.375,1.1,1.65,2019-05-09 08:00:00,2019-05-10 17:00:00,,0
869,1.1.1.5.3.5.12.18,Fundering greppel,1.375,1.1,1.65,2019-05-09 08:00:00,2019-05-10 17:00:00,,0
870,1.1.1.5.3.5.12.19,Fundering ventweg IIA,0.375,0.3,0.45,2019-05-13 08:00:00,2019-05-13 17:00:00,,0
871,1.1.1.5.3.5.12.20,Asfalt 2x OL rijweg,0.375,0.3,0.45,2019-05-14 08:00:00,2019-05-14 17:00:00,,0
872,1.1.1.5.3.5.12.21,Putten ophalen,1.375,1.1,1.65,2019-05-15 08:00:00,2019-05-16 17:00:00,,0
873,1.1.1.5.3.5.12.22,Afwerking bermen,2.375,1.9,2.85,2019-05-15 08:00:00,2019-05-17 17:00:00,,0
874,1.1.1.5.3.5.12.23,Asfalt OL + TL fietspad (Van Boendalestraat - Kipdorp),0.375,0.3,0.45,2019-05-20 08:00:00,2019-05-20 17:00:00,,0
875,1.1.1.5.3.5.13,Violierstraat - Tunnelplaats hoofdrijbaan oostelijk van TB,260.0,257.4,262.6,2017-09-14 17:00:00,2018-06-01 17:00:00,,0
876,1.1.1.5.3.5.13.1,Riolering Violierstraat - Tunnelplaats ten oosten van de TBB,11.375,9.1,13.65,2018-02-12 08:00:00,2018-02-23 17:00:00,,0
877,1.1.1.5.3.5.13.2,Dwarse wachtbuizen,7.375,5.9,8.85,2018-02-26 08:00:00,2018-03-05 17:00:00,,0
878,1.1.1.5.3.5.13.3,"Grondwerk, onderfundering hoofdrijbaan",6.375,5.1,7.65,2018-03-06 08:00:00,2018-03-12 17:00:00,,0
879,1.1.1.5.3.5.13.4,Bomenvisie,13.375,10.7,16.05,2018-03-13 08:00:00,2018-03-26 17:00:00,,0
880,1.1.1.5.3.5.13.5,Fundering hoofdrijbaan (1°laag),5.375,4.3,6.45,2018-03-23 08:00:00,2018-03-28 17:00:00,,0
881,1.1.1.5.3.5.13.6,Fundering boordstenen,3.375,2.7,4.05,2018-03-27 08:00:00,2018-03-30 17:00:00,,0
882,1.1.1.5.3.5.13.7,Boordstenen hoofdrijbaan,27.375,21.9,32.85,2018-03-29 08:00:00,2018-04-25 17:00:00,,0
883,1.1.1.5.3.5.13.8,Fundering hoofdrijbaan (afwerklaag),27.29166666670062,21.83,32.75,2018-04-19 08:00:00,2018-05-16 15:00:00,,0
884,1.1.1.5.3.5.13.9,Greppel in graniet,10.375,8.3,12.45,2018-04-16 08:00:00,2018-04-26 17:00:00,,0
885,1.1.1.5.3.5.13.10,Asfalt 2x onderlaag,12.375,9.9,14.85,2018-04-27 08:00:00,2018-05-09 17:00:00,,0
886,1.1.1.5.3.5.13.11,Putten ophalen,19.375,15.5,23.25,2018-05-10 08:00:00,2018-05-29 17:00:00,,0
887,1.1.1.5.3.5.13.12,Teelaarde,6.375,5.1,7.65,2018-05-16 08:00:00,2018-05-22 17:00:00,,0
888,1.1.1.5.3.5.13.13,Asfalt OL + TL,0.375,0.3,0.45,2018-06-01 08:00:00,2018-06-01 17:00:00,,0
889,1.1.1.5.3.5.13.14,Perron,22.375,17.9,26.85,2018-05-07 08:00:00,2018-05-29 17:00:00,,0
890,1.1.1.5.3.5.13.15,Externe mijlpaal (DP5): Londenbrug klaar voor gemotoriseerd verkeer,0.0,0.0,0.0,2017-09-14 17:00:00,2017-09-14 17:00:00,,0
891,1.1.1.5.3.6,Fase 3A: Oost (ventweg+parkeerstr+ voetpad) Violierstraat - Tunnelplaats,814.375,806.23,822.52,2017-06-19 08:00:00,2019-09-11 17:00:00,,0
892,1.1.1.5.3.6.1,Opbraak verharding,5.375,4.3,6.45,2018-06-08 08:00:00,2018-06-13 17:00:00,,0
893,1.1.1.5.3.6.2,Opbraak voetpad,0.375,0.3,0.45,2018-06-08 08:00:00,2018-06-08 17:00:00,,0
894,1.1.1.5.3.6.3,3A - Peilen Verplaatsen en aanpasssen langse nutsleidingen A3,66.375,53.1,79.65,2018-06-11 08:00:00,2018-08-16 17:00:00,,0
895,1.1.1.5.3.6.4,Violierstraat - Vondelstraat ,352.375,348.85,355.9,2018-09-10 08:00:00,2019-08-28 17:00:00,,0
896,1.1.1.5.3.6.4.1,Aanleg tijdelijke verharding voetpad,2.375,1.9,2.85,2018-09-10 08:00:00,2018-09-12 17:00:00,,0
897,1.1.1.5.3.6.4.2,Opbraak verharding rijweg,1.375,1.1,1.65,2018-09-13 08:00:00,2018-09-14 17:00:00,,0
898,1.1.1.5.3.6.4.3,"DWA riolering, incl zijtakken",42.375,33.9,50.85,2018-09-17 08:00:00,2018-10-29 17:00:00,,0
899,1.1.1.5.3.6.4.4,Riolering Cassierstraat,10.375,8.3,12.45,2018-10-30 08:00:00,2018-11-09 17:00:00,,0
900,1.1.1.5.3.6.4.5,Huisaansluitingen DWA ,16.375,13.1,19.65,2018-10-23 08:00:00,2018-11-08 17:00:00,,0
901,1.1.1.5.3.6.4.6,RWA riolering ,36.375,29.1,43.65,2018-11-26 08:00:00,2019-01-01 17:00:00,,0
902,1.1.1.5.3.6.4.7,Aansluiting RWA Vondelstraat,3.375,2.7,4.05,2019-01-14 08:00:00,2019-01-17 17:00:00,,0
903,1.1.1.5.3.6.4.8,Huisaanluitingen RWA ,8.375,6.7,10.05,2019-01-09 08:00:00,2019-01-17 17:00:00,,0
904,1.1.1.5.3.6.4.9,Wachtbuizen,6.375,5.1,7.65,2019-01-18 08:00:00,2019-01-24 17:00:00,,0
905,1.1.1.5.3.6.4.10,Bomenvisie,5.375,4.3,6.45,2019-01-25 08:00:00,2019-01-30 17:00:00,,0
906,1.1.1.5.3.6.4.11,Grondwerk ventweg in BSS en fietspad,7.375,5.9,8.85,2019-01-31 08:00:00,2019-02-07 17:00:00,,0
907,1.1.1.5.3.6.4.12,Onderfundering ventweg in BSS en fietspad,7.375,5.9,8.85,2019-01-31 08:00:00,2019-02-07 17:00:00,,0
908,1.1.1.5.3.6.4.13,Fundering boordstenen ventweg,5.375,4.3,6.45,2019-02-08 08:00:00,2019-02-13 17:00:00,,0
909,1.1.1.5.3.6.4.14,Boordstenen fietspad,0.375,0.3,0.45,2019-02-18 08:00:00,2019-02-18 17:00:00,,0
910,1.1.1.5.3.6.4.15,Boordstenen ventweg,1.375,1.1,1.65,2019-02-19 08:00:00,2019-02-20 17:00:00,,0
911,1.1.1.5.3.6.4.16,Opbraak voetpad + grondwerk+ OV wachtbuis,11.375,9.1,13.65,2019-02-21 08:00:00,2019-03-04 17:00:00,,0
912,1.1.1.5.3.6.4.17,Aansluiting zijstraten,16.375,13.1,19.65,2019-03-05 08:00:00,2019-03-21 17:00:00,,0
913,1.1.1.5.3.6.4.18,Fundering voetpad,26.375,21.1,31.65,2019-02-21 08:00:00,2019-03-19 17:00:00,,0
914,1.1.1.5.3.6.4.19,Ov kabel + gevel armaturen,6.375,5.1,7.65,2019-03-20 08:00:00,2019-03-26 17:00:00,,0
915,1.1.1.5.3.6.4.20,Eandis : afkoppelen bestaande OV kastjes,6.375,5.1,7.65,2019-03-20 08:00:00,2019-03-26 17:00:00,,0
916,1.1.1.5.3.6.4.21,Boordstenen ventweg zijde voetpad,1.375,1.1,1.65,2019-03-20 08:00:00,2019-03-21 17:00:00,,0
917,1.1.1.5.3.6.4.22,Verharding voetpad,13.375,10.7,16.05,2019-03-27 08:00:00,2019-04-09 17:00:00,,0
918,1.1.1.5.3.6.4.23,Aanleg ventweg en parkeerstrook in BSS en kassei,27.375,21.9,32.85,2019-04-03 08:00:00,2019-04-30 17:00:00,,0
919,1.1.1.5.3.6.4.24,Fundering fietspad,0.375,0.3,0.45,2019-05-06 08:00:00,2019-05-06 17:00:00,,0
920,1.1.1.5.3.6.4.25,Asfalt fietspad,1.375,1.1,1.65,2019-05-07 08:00:00,2019-05-08 17:00:00,,0
921,1.1.1.5.3.6.4.26,Verkeersborden,37.375,29.9,44.85,2019-07-22 08:00:00,2019-08-28 17:00:00,,0
922,1.1.1.5.3.6.4.27,"Aansluiting riolering ter hoogte van de Vondelstraat, incl. riool verbinding Vondelstraat",4.375,3.5,5.25,2019-03-04 08:00:00,2019-03-08 17:00:00,,0
923,1.1.1.5.3.6.4.28,Grondwerk aansluiting  Vondelstraat en voetpad/fietpad,5.375,4.3,6.45,2019-03-22 08:00:00,2019-03-27 17:00:00,,0
924,1.1.1.5.3.6.4.29,Onderfundering en fundering aansluiting Vondelstraat en voetpad/fietspad,5.375,4.3,6.45,2019-03-28 08:00:00,2019-04-02 17:00:00,,0
925,1.1.1.5.3.6.4.30,Waterslikkers,1.375,1.1,1.65,2019-04-03 08:00:00,2019-04-04 17:00:00,,0
926,1.1.1.5.3.6.4.31,Fundering en Boordstenen aansluiting Vondelstraat ,7.375,5.9,8.85,2019-04-03 08:00:00,2019-04-10 17:00:00,,0
927,1.1.1.5.3.6.4.32,Greppel in graniet,1.375,1.1,1.65,2019-04-15 08:00:00,2019-04-16 17:00:00,,0
928,1.1.1.5.3.6.4.33,Verharding voetpad,7.375,5.9,8.85,2019-04-03 08:00:00,2019-04-10 17:00:00,,0
929,1.1.1.5.3.6.4.34,Fundering aansluiting Vondelstraat,0.375,0.3,0.45,2019-04-16 08:00:00,2019-04-16 17:00:00,,0
930,1.1.1.5.3.6.4.35,Asfaltverharding aansluiting Vondelstraat 2x OL,0.375,0.3,0.45,2019-04-17 08:00:00,2019-04-17 17:00:00,,0
931,1.1.1.5.3.6.4.36,Putdeksels ophalen,0.375,0.3,0.45,2019-04-18 08:00:00,2019-04-18 17:00:00,,0
932,1.1.1.5.3.6.4.37,OL + Toplaag ,0.375,0.3,0.45,2019-04-23 08:00:00,2019-04-23 17:00:00,,0
933,1.1.1.5.3.6.4.38,Ventweg : Violierstraat - Goudbloemstraat,49.375,48.88,49.87,2019-03-07 08:00:00,2019-04-25 17:00:00,,0
934,1.1.1.5.3.6.4.38.1,Grondwerk + onderfundering ventweg in asfalt ,1.375,1.1,1.65,2019-03-07 08:00:00,2019-03-08 17:00:00,,0
935,1.1.1.5.3.6.4.38.2,Fundering type IA,0.375,0.3,0.45,2019-03-11 08:00:00,2019-03-11 17:00:00,,0
936,1.1.1.5.3.6.4.38.3,Bomenvisie + wachtbuis OV,1.375,1.1,1.65,2019-03-25 08:00:00,2019-03-26 17:00:00,,0
937,1.1.1.5.3.6.4.38.4,Opbraak + grondwerk voetpad + fietspad,1.375,1.1,1.65,2019-03-27 08:00:00,2019-03-28 17:00:00,,0
938,1.1.1.5.3.6.4.38.5,Fundering voetpad + OF fietspad,3.375,2.7,4.05,2019-03-29 08:00:00,2019-04-01 17:00:00,,0
939,1.1.1.5.3.6.4.38.6,Ov kabel + gevel armaturen,6.375,5.1,7.65,2019-04-02 08:00:00,2019-04-08 17:00:00,,0
940,1.1.1.5.3.6.4.38.7,Eandis : afkoppelen bestaande OV kastjes,6.375,5.1,7.65,2019-04-02 08:00:00,2019-04-08 17:00:00,,0
941,1.1.1.5.3.6.4.38.8,Boordsteen fietspad,0.375,0.3,0.45,2019-04-02 08:00:00,2019-04-02 17:00:00,,0
942,1.1.1.5.3.6.4.38.9,Verharding voetpad,13.375,10.7,16.05,2019-04-09 08:00:00,2019-04-22 17:00:00,,0
943,1.1.1.5.3.6.4.38.10,Fundering boordstenen ventweg,0.375,0.3,0.45,2019-04-03 08:00:00,2019-04-03 17:00:00,,0
944,1.1.1.5.3.6.4.38.11,Waterslikkers,0.375,0.3,0.45,2019-04-04 08:00:00,2019-04-04 17:00:00,,0
945,1.1.1.5.3.6.4.38.12,Boordstenen,4.375,3.5,5.25,2019-04-05 08:00:00,2019-04-09 17:00:00,,0
946,1.1.1.5.3.6.4.38.13,Fundering greppel,1.375,1.1,1.65,2019-04-10 08:00:00,2019-04-11 17:00:00,,0
947,1.1.1.5.3.6.4.38.14,Greppel in natuursteen,4.375,3.5,5.25,2019-04-12 08:00:00,2019-04-16 17:00:00,,0
948,1.1.1.5.3.6.4.38.15,Fundering type IIA,0.375,0.3,0.45,2019-04-17 08:00:00,2019-04-17 17:00:00,,0
949,1.1.1.5.3.6.4.38.16,2x OL ventweg ,0.375,0.3,0.45,2019-04-18 08:00:00,2019-04-18 17:00:00,,0
950,1.1.1.5.3.6.4.38.17,Putten ophalen,0.375,0.3,0.45,2019-04-23 08:00:00,2019-04-23 17:00:00,,0
951,1.1.1.5.3.6.4.38.18,Bermen,0.375,0.3,0.45,2019-04-24 08:00:00,2019-04-24 17:00:00,,0
952,1.1.1.5.3.6.4.38.19,OL + Toplaag ,0.375,0.3,0.45,2019-04-25 08:00:00,2019-04-25 17:00:00,,0
953,1.1.1.5.3.6.5,Vondelstraat - Cassierstraat,359.375,355.78,362.97,2018-09-17 08:00:00,2019-09-11 17:00:00,,0
954,1.1.1.5.3.6.5.1,Archeologie,11.375,9.1,13.65,2018-09-17 08:00:00,2018-09-28 17:00:00,,0
955,1.1.1.5.3.6.5.2,"DWA riolering, incl zijtakken",6.375,5.1,7.65,2018-11-07 08:00:00,2018-11-13 17:00:00,,0
956,1.1.1.5.3.6.5.3,Huisaansluitingen DWA ,18.375,14.7,22.05,2018-11-26 08:00:00,2018-12-14 17:00:00,,0
957,1.1.1.5.3.6.5.4,RWA riolering ,20.375,16.3,24.45,2019-01-18 08:00:00,2019-02-07 17:00:00,,0
958,1.1.1.5.3.6.5.5,Aansluiting Houwerstraat,4.375,3.5,5.25,2019-02-08 08:00:00,2019-02-12 17:00:00,,0
959,1.1.1.5.3.6.5.6,Huisaanluitingen RWA ,6.375,5.1,7.65,2019-02-06 08:00:00,2019-02-12 17:00:00,,0
960,1.1.1.5.3.6.5.7,Wachtbuizen,1.375,1.1,1.65,2019-02-13 08:00:00,2019-02-14 17:00:00,,0
961,1.1.1.5.3.6.5.8,Bomenvisie + wachtbuis OV,4.375,3.5,5.25,2019-02-15 08:00:00,2019-02-19 17:00:00,,0
962,1.1.1.5.3.6.5.9,Grondwerk ventweg en fietspad,2.375,1.9,2.85,2019-02-20 08:00:00,2019-02-22 17:00:00,,0
963,1.1.1.5.3.6.5.10,Onderfundering ventweg en fietspad,2.375,1.9,2.85,2019-02-25 08:00:00,2019-02-27 17:00:00,,0
964,1.1.1.5.3.6.5.11,Boordstenen fietspad,5.375,4.3,6.45,2019-03-06 08:00:00,2019-03-11 17:00:00,,0
965,1.1.1.5.3.6.5.12,Fundering fietspad,1.375,1.1,1.65,2019-03-12 08:00:00,2019-03-13 17:00:00,,0
966,1.1.1.5.3.6.5.13,Opbraak voetpad + grondwerk + OV wachtbuis,6.375,5.1,7.65,2019-03-29 08:00:00,2019-04-04 17:00:00,,0
967,1.1.1.5.3.6.5.14,Fundering boordstenen ventweg,3.375,2.7,4.05,2019-04-05 08:00:00,2019-04-08 17:00:00,,0
968,1.1.1.5.3.6.5.15,Boordstenen ventweg,4.375,3.5,5.25,2019-04-15 08:00:00,2019-04-19 17:00:00,,0
969,1.1.1.5.3.6.5.16,Ov kabel + gevel armaturen,6.375,5.1,7.65,2019-04-05 08:00:00,2019-04-11 17:00:00,,0
970,1.1.1.5.3.6.5.17,Eandis : afkoppelen bestaande OV kastjes,6.375,5.1,7.65,2019-04-05 08:00:00,2019-04-11 17:00:00,,0
971,1.1.1.5.3.6.5.18,Fundering voetpad,2.375,1.9,2.85,2019-04-09 08:00:00,2019-04-11 17:00:00,,0
972,1.1.1.5.3.6.5.19,Verharding voetpad,23.375,18.7,28.05,2019-04-29 08:00:00,2019-05-22 17:00:00,,0
973,1.1.1.5.3.6.5.20,Aanleg ventweg en parkeerstrook in BSS en kasseiverharding.,9.375,7.5,11.25,2019-06-03 08:00:00,2019-06-12 17:00:00,,0
974,1.1.1.5.3.6.5.21,Asfalt fietspad,3.375,2.7,4.05,2019-06-14 08:00:00,2019-06-17 17:00:00,,0
975,1.1.1.5.3.6.5.22,Verkeersborden,44.375,35.5,53.25,2019-07-29 08:00:00,2019-09-11 17:00:00,,0
976,1.1.1.5.3.6.6,Externe mijlpaal (uit DP5): Londenbrug klaar voor gemotoriseerd verkeer,0.0,0.0,0.0,2017-09-14 17:00:00,2017-09-14 17:00:00,,0
977,1.1.1.5.3.6.7,Violierstraat - Paardenmarkt,700.375,693.37,707.38,2017-06-19 08:00:00,2019-05-20 17:00:00,,0
978,1.1.1.5.3.6.7.1,Spoorbedding,15.375,12.3,18.45,2017-06-19 08:00:00,2017-07-04 17:00:00,,0
979,1.1.1.5.3.6.7.2,Boordsteen trambedding,1.375,1.1,1.65,2017-07-05 08:00:00,2017-07-06 17:00:00,,0
980,1.1.1.5.3.6.7.3,Spoorwerken & kiftbeton,39.0,38.61,39.39,2017-07-07 17:00:00,2017-08-15 17:00:00,,0
981,1.1.1.5.3.6.7.3.1,Uitleggen tegels en uitvullingen bepalen,0.0,0.0,0.0,2017-07-07 17:00:00,2017-07-07 17:00:00,,0
982,1.1.1.5.3.6.7.3.2,Leggen 2x18 panelen,0.0,0.0,0.0,2017-07-11 17:00:00,2017-07-11 17:00:00,,0
983,1.1.1.5.3.6.7.3.3,Grof afstellen panelen,0.0,0.0,0.0,2017-07-11 17:00:00,2017-07-11 17:00:00,,0
984,1.1.1.5.3.6.7.3.4,Steken waterbuizen (BCO),0.0,0.0,0.0,2017-07-18 17:00:00,2017-07-18 17:00:00,,0
985,1.1.1.5.3.6.7.3.5,Aanbrengen wapening tussen dwarsliggers tpv kruisingen betonverharding (BCO),0.0,0.0,0.0,2017-07-18 17:00:00,2017-07-18 17:00:00,,0
986,1.1.1.5.3.6.7.3.6,Wachtbuizen FAB,0.0,0.0,0.0,2017-07-18 17:00:00,2017-07-18 17:00:00,,0
987,1.1.1.5.3.6.7.3.7,Aanbrengen bakjes lussen (BTR/Fabricom),0.0,0.0,0.0,2017-07-18 17:00:00,2017-07-18 17:00:00,,0
988,1.1.1.5.3.6.7.3.8,Aansluiten spoorslikkers,0.0,0.0,0.0,2017-07-18 17:00:00,2017-07-18 17:00:00,,0
989,1.1.1.5.3.6.7.3.9,Herstellen spoor na werkzaamheden andere partijen,0.0,0.0,0.0,2017-07-20 17:00:00,2017-07-20 17:00:00,,0
990,1.1.1.5.3.6.7.3.10,Opmeting en fijnafstellen spoor 120m/dag,0.0,0.0,0.0,2017-07-20 17:00:00,2017-07-20 17:00:00,,0
991,1.1.1.5.3.6.7.3.11,Oplevering spoor door BTR,3.375,2.7,4.05,2017-07-31 08:00:00,2017-08-03 17:00:00,,0
992,1.1.1.5.3.6.7.3.12,Fijnafstelling spoor (06:00-11:00 uur),3.375,2.7,4.05,2017-07-31 08:00:00,2017-08-03 17:00:00,,0
993,1.1.1.5.3.6.7.3.13,Aanbrengen kiftbeton (BCO) a 120m/dag (vanaf 11:00 uur),3.375,2.7,4.05,2017-07-31 08:00:00,2017-08-03 17:00:00,,0
994,1.1.1.5.3.6.7.3.14,Opmeting spoor na plaatsen kiftbeton,0.375,0.3,0.45,2017-08-04 08:00:00,2017-08-04 17:00:00,,0
995,1.1.1.5.3.6.7.3.15,Aanbrengen lassen (72 sts) (16 lassen per dag -> 2 ploegen),8.375,6.7,10.05,2017-08-07 08:00:00,2017-08-15 17:00:00,,0
996,1.1.1.5.3.6.7.3.16,Spoorwijdte controleren en eventueel herstellen voor aanbrengen verharding,2.375,1.9,2.85,2017-08-09 08:00:00,2017-08-11 17:00:00,,0
997,1.1.1.5.3.6.7.3.17,Aanbrengen resterende raillijfbekleding,2.375,1.9,2.85,2017-08-09 08:00:00,2017-08-11 17:00:00,,0
998,1.1.1.5.3.6.7.4,"Ingegraven leidingen, trekputten, funderingen masten",0.375,0.3,0.45,2017-07-07 08:00:00,2017-07-07 17:00:00,,0
999,1.1.1.5.3.6.7.5,Boren verluchtingsgaten in kiftbeton,2.375,1.9,2.85,2017-08-02 08:00:00,2017-08-04 17:00:00,,0
1000,1.1.1.5.3.6.7.6,Bestrating trambusbaan,7.375,5.9,8.85,2017-11-06 08:00:00,2017-11-13 17:00:00,,0
1001,1.1.1.5.3.6.7.7,"Perrons (elementen, wachtbuizen)",30.375,24.3,36.45,2017-07-11 08:00:00,2017-08-10 17:00:00,,0
1002,1.1.1.5.3.6.7.8,Fundering perrons,3.375,2.7,4.05,2017-09-01 08:00:00,2017-09-04 17:00:00,,0
1003,1.1.1.5.3.6.7.9,Verharding perron,27.375,21.9,32.85,2019-04-23 08:00:00,2019-05-20 17:00:00,,0
1004,1.1.1.5.3.6.7.10,Rioleringen (inclusief dwarse wachtbuizen),18.375,14.7,22.05,2017-06-19 08:00:00,2017-07-07 17:00:00,,0
1005,1.1.1.5.3.6.7.11,"Grondwerk, onderfundering",11.375,9.1,13.65,2017-07-31 08:00:00,2017-08-11 17:00:00,,0
1006,1.1.1.5.3.6.7.12,Bomenvisie,13.375,10.7,16.05,2017-08-16 08:00:00,2017-08-29 17:00:00,,0
1007,1.1.1.5.3.6.7.13,Boordstenen,13.375,10.7,16.05,2017-08-30 08:00:00,2017-09-12 17:00:00,,0
1008,1.1.1.5.3.6.7.14,Funderingen rijweg,4.375,3.5,5.25,2017-09-14 08:00:00,2017-09-18 17:00:00,,0
1009,1.1.1.5.3.6.7.15,Fundering + greppel,3.375,2.7,4.05,2017-10-16 08:00:00,2017-10-19 17:00:00,,0
1010,1.1.1.5.3.6.7.16,Greppel in graniet,2.375,1.9,2.85,2017-10-16 08:00:00,2017-10-18 17:00:00,,0
1011,1.1.1.5.3.6.7.17,Verharding - asfalt,1.375,1.1,1.65,2017-11-06 08:00:00,2017-11-07 17:00:00,,0
1012,1.1.1.5.3.6.7.18,Openbare verlichting,2.375,1.9,2.85,2017-11-08 08:00:00,2017-11-10 17:00:00,,0
1013,1.1.1.5.3.6.7.19,BVL palen,1.375,1.1,1.65,2017-11-13 08:00:00,2017-11-14 17:00:00,,0
1014,1.1.1.5.3.6.7.20,Plaatsen BVL palen,1.375,1.1,1.65,2017-11-13 08:00:00,2017-11-14 17:00:00,,0
1015,1.1.1.5.3.6.7.21,Afwerken bermen,6.375,5.1,7.65,2017-11-16 08:00:00,2017-11-22 17:00:00,,0
1016,1.1.1.5.3.6.8,Paardenmarkt - Tunnelplaats,121.375,120.16,122.59,2017-08-01 08:00:00,2017-11-30 17:00:00,,0
1017,1.1.1.5.3.6.8.1,Spoorbedding,7.375,5.9,8.85,2017-08-16 08:00:00,2017-08-23 17:00:00,,0
1018,1.1.1.5.3.6.8.2,Boordsteen ,0.375,0.3,0.45,2017-08-24 08:00:00,2017-08-24 17:00:00,,0
1019,1.1.1.5.3.6.8.3,Spoorwerken,21.375,21.16,21.59,2017-08-28 08:00:00,2017-09-18 17:00:00,,0
1020,1.1.1.5.3.6.8.3.1,Aanbrengen panelen 18st,0.375,0.3,0.45,2017-08-28 08:00:00,2017-08-28 17:00:00,,0
1021,1.1.1.5.3.6.8.3.2,Aansluiten waterbakjes ,0.375,0.3,0.45,2017-08-29 08:00:00,2017-08-29 17:00:00,,0
1022,1.1.1.5.3.6.8.3.3,Afstellen sporen,2.375,1.9,2.85,2017-08-29 08:00:00,2017-08-31 17:00:00,,0
1023,1.1.1.5.3.6.8.3.4,Fijnafstellen en controlemeting,3.375,2.7,4.05,2017-09-01 08:00:00,2017-09-04 17:00:00,,0
1024,1.1.1.5.3.6.8.3.5,Plaatsen kist,3.375,2.7,4.05,2017-08-29 08:00:00,2017-09-01 17:00:00,,0
1025,1.1.1.5.3.6.8.3.6,Storten kiftbeton,2.375,1.9,2.85,2017-09-05 08:00:00,2017-09-07 17:00:00,,0
1026,1.1.1.5.3.6.8.3.7,Lassen sporen (32 stuks),5.375,4.3,6.45,2017-09-08 08:00:00,2017-09-13 17:00:00,,0
1027,1.1.1.5.3.6.8.3.8,Controle spoorwijdte,1.375,1.1,1.65,2017-09-14 08:00:00,2017-09-15 17:00:00,,0
1028,1.1.1.5.3.6.8.3.9,Afwerken raillijfbekleding,4.375,3.5,5.25,2017-09-14 08:00:00,2017-09-18 17:00:00,,0
1029,1.1.1.5.3.6.8.4,"Ingegraven leidingen, trekputten, funderingen masten",4.375,3.5,5.25,2017-09-11 08:00:00,2017-09-15 17:00:00,,0
1030,1.1.1.5.3.6.8.5,Bestrating trambusbaan,7.375,5.9,8.85,2017-11-21 08:00:00,2017-11-28 17:00:00,,0
1031,1.1.1.5.3.6.8.6,Rioleringen (inclusief dwarse wachtbuizen),9.375,7.5,11.25,2017-08-01 08:00:00,2017-08-10 17:00:00,,0
1032,1.1.1.5.3.6.8.7,"Grondwerk, onderfundering rijweg ",10.375,8.3,12.45,2017-08-11 08:00:00,2017-08-21 17:00:00,,0
1033,1.1.1.5.3.6.8.8,Bomenvisie,8.375,6.7,10.05,2017-08-28 08:00:00,2017-09-05 17:00:00,,0
1034,1.1.1.5.3.6.8.9,Boordstenen,7.375,5.9,8.85,2017-09-18 08:00:00,2017-09-25 17:00:00,,0
1035,1.1.1.5.3.6.8.10,Fundering rijweg,6.375,5.1,7.65,2017-09-26 08:00:00,2017-10-02 17:00:00,,0
1036,1.1.1.5.3.6.8.11,Fundering + greppel,5.375,4.3,6.45,2017-10-20 08:00:00,2017-10-25 17:00:00,,0
1037,1.1.1.5.3.6.8.12,Greppel in graniet,4.375,3.5,5.25,2017-10-19 08:00:00,2017-10-23 17:00:00,,0
1038,1.1.1.5.3.6.8.13,Verharding - asfalt,1.375,1.1,1.65,2017-11-29 08:00:00,2017-11-30 17:00:00,,0
1039,1.1.1.5.3.6.8.14,Openbare verlichting,3.375,2.7,4.05,2017-11-13 08:00:00,2017-11-16 17:00:00,,0
1040,1.1.1.5.3.6.8.15,BVL,4.375,3.5,5.25,2017-11-16 08:00:00,2017-11-20 17:00:00,,0
1041,1.1.1.5.3.6.8.16,Plaatsen fundering en palen BVL.,2.375,1.9,2.85,2017-11-20 08:00:00,2017-11-22 17:00:00,,0
1042,1.1.1.5.3.6.8.17,Afwerken bermen,6.375,5.1,7.65,2017-11-16 08:00:00,2017-11-22 17:00:00,,0
1043,1.1.1.5.3.6.9,Fase A1 - Zone op Paardenmarkt zuid (incl riolering),43.375,42.94,43.81,2017-08-02 08:00:00,2017-09-14 17:00:00,,0
1044,1.1.1.5.3.6.9.1,Verharding trambaan beton,2.375,1.9,2.85,2017-08-02 08:00:00,2017-08-04 17:00:00,,0
1045,1.1.1.5.3.6.9.2,Boordstenen,1.375,1.1,1.65,2017-09-04 08:00:00,2017-09-05 17:00:00,,0
1046,1.1.1.5.3.6.9.3,Fundering fiets- en voetpad,0.375,0.3,0.45,2017-09-11 08:00:00,2017-09-11 17:00:00,,0
1047,1.1.1.5.3.6.9.4,Verhardingen voetpad,2.375,1.9,2.85,2017-09-11 08:00:00,2017-09-13 17:00:00,,0
1048,1.1.1.5.3.6.9.5,Fundering rijweg ,0.375,0.3,0.45,2017-09-11 08:00:00,2017-09-11 17:00:00,,0
1049,1.1.1.5.3.6.9.6,Verharding rijweg + fietspad,2.375,1.9,2.85,2017-09-12 08:00:00,2017-09-14 17:00:00,,0
1050,1.1.1.5.3.6.10,Fase A1 - Zone op Paardenmarkt noord,72.0,71.28,72.72,2017-09-19 17:00:00,2017-11-30 17:00:00,,0
1051,1.1.1.5.3.6.10.1,Fasewissel Fase A1 - Zone op Paardenmarkt noord,0.0,0.0,0.0,2017-09-19 17:00:00,2017-09-19 17:00:00,,0
1052,1.1.1.5.3.6.10.2,Opbraak,2.375,1.9,2.85,2017-09-20 08:00:00,2017-09-22 17:00:00,,0
1053,1.1.1.5.3.6.10.3,Riolering + WB,2.375,1.9,2.85,2017-09-25 08:00:00,2017-09-27 17:00:00,,0
1054,1.1.1.5.3.6.10.4,Riolering + WB,2.375,1.9,2.85,2017-09-25 08:00:00,2017-09-27 17:00:00,,0
1055,1.1.1.5.3.6.10.5,Nuts,0.375,0.3,0.45,2017-09-28 08:00:00,2017-09-28 17:00:00,,0
1056,1.1.1.5.3.6.10.6,Spoorbedding,5.375,4.3,6.45,2017-09-29 08:00:00,2017-10-04 17:00:00,,0
1057,1.1.1.5.3.6.10.7,Spoorwerken,5.375,4.3,6.45,2017-10-06 08:00:00,2017-10-11 17:00:00,,0
1058,1.1.1.5.3.6.10.8,"Kiftbeton, incl. wapening en bekisting",0.375,0.3,0.45,2017-10-12 08:00:00,2017-10-12 17:00:00,,0
1059,1.1.1.5.3.6.10.9,Verharding trambaan beton (incl. bekisting en wapening),5.375,4.3,6.45,2017-10-13 08:00:00,2017-10-18 17:00:00,,0
1060,1.1.1.5.3.6.10.10,Boordstenen + Greppel in natuursteen,2.375,1.9,2.85,2017-11-07 08:00:00,2017-11-09 17:00:00,,0
1061,1.1.1.5.3.6.10.11,Fundering fiets- en voetpad,3.375,2.7,4.05,2017-11-10 08:00:00,2017-11-13 17:00:00,,0
1062,1.1.1.5.3.6.10.12,Verhardingen voetpad,4.375,3.5,5.25,2017-11-16 08:00:00,2017-11-20 17:00:00,,0
1063,1.1.1.5.3.6.10.13,Fundering rijweg ,2.375,1.9,2.85,2017-11-21 08:00:00,2017-11-23 17:00:00,,0
1064,1.1.1.5.3.6.10.14,Verharding rijweg + fietspad,1.375,1.1,1.65,2017-11-29 08:00:00,2017-11-30 17:00:00,,0
1065,1.1.1.5.3.6.11,Fase A1 - Zone op Kruispunt Tunnelplaats Zuid,49.375,48.88,49.87,2017-07-31 08:00:00,2017-09-18 17:00:00,,0
1066,1.1.1.5.3.6.11.1,Opbraak,1.375,1.1,1.65,2017-07-31 08:00:00,2017-08-01 17:00:00,,0
1067,1.1.1.5.3.6.11.2,Nuts doorsteek 209B & wachtbuis PE200,1.375,1.1,1.65,2017-07-31 08:00:00,2017-08-01 17:00:00,,0
1068,1.1.1.5.3.6.11.3,Spoorbedding,3.375,2.7,4.05,2017-08-21 08:00:00,2017-08-24 17:00:00,,0
1069,1.1.1.5.3.6.11.4,Spoorwerken,12.375,12.25,12.5,2017-08-25 08:00:00,2017-09-06 17:00:00,,0
1070,1.1.1.5.3.6.11.4.1,Controle/uitzetten onderbaan+ assen spoor,0.375,0.3,0.45,2017-08-25 08:00:00,2017-08-25 17:00:00,,0
1071,1.1.1.5.3.6.11.4.2,Aanbrengen panelen 4st,0.375,0.3,0.45,2017-08-28 08:00:00,2017-08-28 17:00:00,,0
1072,1.1.1.5.3.6.11.4.3,Aansluiten waterbakjes ,0.375,0.3,0.45,2017-08-29 08:00:00,2017-08-29 17:00:00,,0
1073,1.1.1.5.3.6.11.4.4,Afstellen sporen,0.375,0.3,0.45,2017-08-29 08:00:00,2017-08-29 17:00:00,,0
1074,1.1.1.5.3.6.11.4.5,Fijnafstellen en controlemeting,0.375,0.3,0.45,2017-08-30 08:00:00,2017-08-30 17:00:00,,0
1075,1.1.1.5.3.6.11.4.6,Plaatsen kist,0.375,0.3,0.45,2017-08-29 08:00:00,2017-08-29 17:00:00,,0
1076,1.1.1.5.3.6.11.4.7,Storten kiftbeton,0.375,0.3,0.45,2017-09-04 08:00:00,2017-09-04 17:00:00,,0
1077,1.1.1.5.3.6.11.4.8,Lassen sporen (4 stuks),0.375,0.3,0.45,2017-09-05 08:00:00,2017-09-05 17:00:00,,0
1078,1.1.1.5.3.6.11.4.9,Controle spoorwijdte,0.375,0.3,0.45,2017-09-06 08:00:00,2017-09-06 17:00:00,,0
1079,1.1.1.5.3.6.11.4.10,Afwerken raillijfbekleding,0.375,0.3,0.45,2017-09-06 08:00:00,2017-09-06 17:00:00,,0
1080,1.1.1.5.3.6.11.5,Verharding trambaan beton,0.375,0.3,0.45,2017-09-11 08:00:00,2017-09-11 17:00:00,,0
1081,1.1.1.5.3.6.11.6,Boordstenen,0.375,0.3,0.45,2017-09-12 08:00:00,2017-09-12 17:00:00,,0
1082,1.1.1.5.3.6.11.7,Fundering fiets- en voetpad,0.375,0.3,0.45,2017-09-13 08:00:00,2017-09-13 17:00:00,,0
1083,1.1.1.5.3.6.11.8,Verhardingen voetpad,0.375,0.3,0.45,2017-09-14 08:00:00,2017-09-14 17:00:00,,0
1084,1.1.1.5.3.6.11.9,Fundering rijweg ,0.375,0.3,0.45,2017-09-15 08:00:00,2017-09-15 17:00:00,,0
1085,1.1.1.5.3.6.11.10,Verharding rijweg + fietspad,0.375,0.3,0.45,2017-09-18 08:00:00,2017-09-18 17:00:00,,0
1086,1.1.1.5.4,1202 Italiëlei deel Tunnelplaats tot Noorderplaats,697.375,690.4,704.35,2017-10-23 08:00:00,2019-09-20 17:00:00,,0
1087,1.1.1.5.4.1,Fase B1 - Centraal (trambusbaan+ hoofdrijweg+fietspad),317.08333333340124,313.91,320.25,2017-10-23 08:00:00,2018-09-05 10:00:00,,0
1088,1.1.1.5.4.1.1,Fundering 0/32 TBB,21.375,17.1,25.65,2017-10-23 08:00:00,2017-11-13 17:00:00,,0
1089,1.1.1.5.4.1.2,Boordsteen TBB,0.375,0.3,0.45,2017-11-14 08:00:00,2017-11-14 17:00:00,,0
1090,1.1.1.5.4.1.3,Verluchtingsbuis plantvak tss TBB en rijweg,6.375,5.1,7.65,2017-11-15 08:00:00,2017-11-21 17:00:00,,0
1091,1.1.1.5.4.1.4,Ingraven leidingen en trekputten.,6.375,5.1,7.65,2017-11-22 08:00:00,2017-11-28 17:00:00,,0
1092,1.1.1.5.4.1.5,Spoorwerken,98.375,78.7,118.05,2018-01-09 08:00:00,2018-04-17 17:00:00,,0
1093,1.1.1.5.4.1.6,Kiftbeton,85.375,68.3,102.45,2018-04-18 08:00:00,2018-07-12 17:00:00,,0
1094,1.1.1.5.4.1.7,Boren van gaten in kiftbeton,35.08333333340124,28.07,42.1,2018-07-13 08:00:00,2018-08-17 10:00:00,,0
1095,1.1.1.5.4.1.8,Bestrating trambusbaan in kassei,19.0,15.2,22.8,2018-08-17 10:00:00,2018-09-05 10:00:00,,0
1096,1.1.1.5.4.1.9,Grondwerk rijweg,26.375,21.1,31.65,2018-01-17 08:00:00,2018-02-12 17:00:00,,0
1097,1.1.1.5.4.1.10,Dwarse wachtbuizen rijweg,1.375,1.1,1.65,2018-02-13 08:00:00,2018-02-14 17:00:00,,0
1098,1.1.1.5.4.1.11,Onderfundering en eerste funderingslaag,5.375,4.3,6.45,2018-02-15 08:00:00,2018-02-20 17:00:00,,0
1099,1.1.1.5.4.1.12,Waterslikkers,1.375,1.1,1.65,2018-02-21 08:00:00,2018-02-22 17:00:00,,0
1100,1.1.1.5.4.1.13,Boordstenen,13.375,10.7,16.05,2018-02-21 08:00:00,2018-03-06 17:00:00,,0
1101,1.1.1.5.4.1.14,Greppel in graniet,9.375,7.5,11.25,2018-02-28 08:00:00,2018-03-09 17:00:00,,0
1102,1.1.1.5.4.1.15,Funderingen rijweg,3.375,2.7,4.05,2018-03-12 08:00:00,2018-03-15 17:00:00,,0
1103,1.1.1.5.4.1.16,Verharding - asfalt 2x onderlaag,28.375,22.7,34.05,2018-03-16 08:00:00,2018-04-13 17:00:00,,0
1104,1.1.1.5.4.1.17,Ophalen van IP,2.375,1.9,2.85,2018-04-17 08:00:00,2018-04-19 17:00:00,,0
1105,1.1.1.5.4.1.18,Bovenleidingspalen,6.375,5.1,7.65,2018-04-17 08:00:00,2018-04-23 17:00:00,,0
1106,1.1.1.5.4.1.19,Bomenzand,6.375,5.1,7.65,2018-04-19 08:00:00,2018-04-25 17:00:00,,0
1107,1.1.1.5.4.1.20,Afwerking asfalt,0.375,0.3,0.45,2018-04-26 08:00:00,2018-04-26 17:00:00,,0
1108,1.1.1.5.4.2,Fase B2 - West (ventweg+parkeerstr +voetpad+hoofdrijweg oostelijk van trambaan),484.0,479.16,488.84,2018-05-01 17:00:00,2019-08-28 17:00:00,,0
1109,1.1.1.5.4.2.1,Fasewissel Italiëlei Tunnelpl-Noorderpl - Fase 2,0.0,0.0,0.0,2018-05-01 17:00:00,2018-05-01 17:00:00,,0
1110,1.1.1.5.4.2.2,"Voorbereidingen, signalisatie en opbraakwerken",7.375,5.9,8.85,2018-05-02 08:00:00,2018-05-09 17:00:00,,0
1111,1.1.1.5.4.2.3,"Peilen, (ver)plaatsen en aanpassen langse nutsleidingen B2",22.375,17.9,26.85,2018-06-14 08:00:00,2018-07-06 17:00:00,,0
1112,1.1.1.5.4.2.4,Archeologie,3.375,2.7,4.05,2018-05-28 08:00:00,2018-05-31 17:00:00,,0
1113,1.1.1.5.4.2.5,DWA riolering Koeikesgracht - Tunnelplaats,4.375,3.5,5.25,2018-09-10 08:00:00,2018-09-14 17:00:00,,0
1114,1.1.1.5.4.2.6,Riolering Koeikesgracht - Tunnelplaats,58.375,46.7,70.05,2018-09-10 08:00:00,2018-11-07 17:00:00,,0
1115,1.1.1.5.4.2.7,Ingraven wachtleidingen HA en WS,13.375,10.7,16.05,2018-11-08 08:00:00,2018-11-21 17:00:00,,0
1116,1.1.1.5.4.2.8,Bomenvisie,1.375,1.1,1.65,2018-11-22 08:00:00,2018-11-23 17:00:00,,0
1117,1.1.1.5.4.2.9,Afwerking verharding,295.375,292.42,298.33,2018-11-06 08:00:00,2019-08-28 17:00:00,,0
1118,1.1.1.5.4.2.9.1,Grondwerk ventweg en fietspad,24.375,19.5,29.25,2018-11-26 08:00:00,2018-12-20 17:00:00,,0
1119,1.1.1.5.4.2.9.2,OF ventweg en fietspad,19.375,15.5,23.25,2018-12-21 08:00:00,2019-01-09 17:00:00,,0
1120,1.1.1.5.4.2.9.3,Fundering boordstenen ventweg,1.375,1.1,1.65,2019-01-10 08:00:00,2019-01-11 17:00:00,,0
1121,1.1.1.5.4.2.9.4,Boordstenen ventweg,28.375,22.7,34.05,2018-11-26 08:00:00,2018-12-24 17:00:00,,0
1122,1.1.1.5.4.2.9.5,Opbraak verharding voetpad en grondwerk,15.375,12.3,18.45,2018-11-06 08:00:00,2018-11-21 17:00:00,,0
1123,1.1.1.5.4.2.9.6,Fundering  voetpad ,15.375,12.3,18.45,2018-11-06 08:00:00,2018-11-21 17:00:00,,0
1124,1.1.1.5.4.2.9.7,OV voetpad,2.375,1.9,2.85,2018-11-26 08:00:00,2018-11-28 17:00:00,,0
1125,1.1.1.5.4.2.9.8,Fundering greppel in graniet parkeerstrook,3.375,2.7,4.05,2018-12-03 08:00:00,2018-12-06 17:00:00,,0
1126,1.1.1.5.4.2.9.9,Waterslikkers,0.375,0.3,0.45,2018-12-07 08:00:00,2018-12-07 17:00:00,,0
1127,1.1.1.5.4.2.9.10,Bomenvisie,3.375,2.7,4.05,2018-12-10 08:00:00,2018-12-13 17:00:00,,0
1128,1.1.1.5.4.2.9.11,Greppel in graniet,3.375,2.7,4.05,2018-12-10 08:00:00,2018-12-13 17:00:00,,0
1129,1.1.1.5.4.2.9.12,Kasseiverharding parkeerstrook,7.375,5.9,8.85,2018-12-19 08:00:00,2018-12-26 17:00:00,,0
1130,1.1.1.5.4.2.9.13,Fundering ventweg,1.375,1.1,1.65,2019-02-13 08:00:00,2019-02-14 17:00:00,,0
1131,1.1.1.5.4.2.9.14,Putten ophalen,0.375,0.3,0.45,2019-02-15 08:00:00,2019-02-15 17:00:00,,0
1132,1.1.1.5.4.2.9.15,Verharding ventweg,4.375,3.5,5.25,2019-02-18 08:00:00,2019-02-22 17:00:00,,0
1133,1.1.1.5.4.2.9.16,Verharding voetpad ,73.375,58.7,88.05,2018-12-11 08:00:00,2019-02-22 17:00:00,,0
1134,1.1.1.5.4.2.9.17,Boordstenen fietspad,31.375,25.1,37.65,2019-01-08 08:00:00,2019-02-08 17:00:00,,0
1135,1.1.1.5.4.2.9.18,OV rijweg - fietspad,6.375,5.1,7.65,2019-02-22 08:00:00,2019-02-28 17:00:00,,0
1136,1.1.1.5.4.2.9.19,Fundering boorstenen afslagstrook Koeikesgracht - Tunnelplaats,1.375,1.1,1.65,2018-11-13 08:00:00,2018-11-14 17:00:00,,0
1137,1.1.1.5.4.2.9.20,Boordstenen afslagstrook Koeikesgracht - Tunnelplaats,6.375,5.1,7.65,2018-11-15 08:00:00,2018-11-21 17:00:00,,0
1138,1.1.1.5.4.2.9.21,Fundering ventweg Koeikesgracht - Tunnelplaats,1.375,1.1,1.65,2018-11-22 08:00:00,2018-11-23 17:00:00,,0
1139,1.1.1.5.4.2.9.22,Fundering fietspad,1.375,1.1,1.65,2019-02-25 08:00:00,2019-02-26 17:00:00,,0
1140,1.1.1.5.4.2.9.23,2x OL ventweg Koeikesgracht - Tunnelplaats,0.375,0.3,0.45,2019-03-04 08:00:00,2019-03-04 17:00:00,,0
1141,1.1.1.5.4.2.9.24,OL fietspad,1.375,1.1,1.65,2019-02-27 08:00:00,2019-02-28 17:00:00,,0
1142,1.1.1.5.4.2.9.25,Bermen bomenzand,6.375,5.1,7.65,2019-03-01 08:00:00,2019-03-07 17:00:00,,0
1143,1.1.1.5.4.2.9.26,Verkeersborden,30.375,24.3,36.45,2019-07-29 08:00:00,2019-08-28 17:00:00,,0
1144,1.1.1.5.4.2.10,Aanleg hoofdrijbaan fase B2 Tunnelplaats Ellermanstraat,72.375,71.65,73.1,2018-09-10 08:00:00,2018-11-21 17:00:00,,0
1145,1.1.1.5.4.2.10.1,"Voorbereidende werken (rooien van bomen, parkeerstrook, …)",4.375,3.5,5.25,2018-09-10 08:00:00,2018-09-14 17:00:00,,0
1146,1.1.1.5.4.2.10.2,"Grondwerk, OF opgebroken parkeerstrook",2.375,1.9,2.85,2018-09-17 08:00:00,2018-09-19 17:00:00,,0
1147,1.1.1.5.4.2.10.3,Wachtbuizen ,6.375,5.1,7.65,2018-09-20 08:00:00,2018-09-26 17:00:00,,0
1148,1.1.1.5.4.2.10.4,Fundering type IA,1.375,1.1,1.65,2018-09-27 08:00:00,2018-09-28 17:00:00,,0
1149,1.1.1.5.4.2.10.5,Fundering boordstenen in mager beton,1.375,1.1,1.65,2018-10-01 08:00:00,2018-10-02 17:00:00,,0
1150,1.1.1.5.4.2.10.6,Waterslikkers,0.375,0.3,0.45,2018-10-03 08:00:00,2018-10-03 17:00:00,,0
1151,1.1.1.5.4.2.10.7,Boordstenen en greppel,29.375,23.5,35.25,2018-10-04 08:00:00,2018-11-02 17:00:00,,0
1152,1.1.1.5.4.2.10.8,Fundering type IIA,1.375,1.1,1.65,2018-11-08 08:00:00,2018-11-09 17:00:00,,0
1153,1.1.1.5.4.2.10.9,Asfalt 2x OL rijweg,0.375,0.3,0.45,2018-11-13 08:00:00,2018-11-13 17:00:00,,0
1154,1.1.1.5.4.2.10.10,Putten ophalen,1.375,1.1,1.65,2018-11-14 08:00:00,2018-11-15 17:00:00,,0
1155,1.1.1.5.4.2.10.11,Asfalt OL + TL,3.375,2.7,4.05,2018-11-16 08:00:00,2018-11-19 17:00:00,,0
1156,1.1.1.5.4.2.10.12,Belijning,1.375,1.1,1.65,2018-11-20 08:00:00,2018-11-21 17:00:00,,0
1157,1.1.1.5.4.2.10.13,Fasewissel,0.0,0.0,0.0,2018-11-21 17:00:00,2018-11-21 17:00:00,,0
1158,1.1.1.5.4.3,Fase B3 - Oost (ventweg+ parkeerstrook+voetpad) Cassierstraat - Ellermanstraat,302.375,299.35,305.4,2018-11-22 08:00:00,2019-09-20 17:00:00,,0
1159,1.1.1.5.4.3.1,"Voorbereidingen, signalisatie en opbraakwerken",4.375,3.5,5.25,2018-11-22 08:00:00,2018-11-26 17:00:00,,0
1160,1.1.1.5.4.3.2,"Peilen, (ver)plaatsen en aanpassen langse nutsleidingen B3",29.375,23.5,35.25,2018-11-27 08:00:00,2018-12-26 17:00:00,,0
1161,1.1.1.5.4.3.3,Huisaansluitingen B3 nutsleidingen,13.375,10.7,16.05,2019-01-17 08:00:00,2019-01-30 17:00:00,,0
1162,1.1.1.5.4.3.4,Archeologie,8.375,6.7,10.05,2019-02-05 08:00:00,2019-02-13 17:00:00,,0
1163,1.1.1.5.4.3.5,"DWA riolering, incl zijtakken",29.375,23.5,35.25,2019-02-18 08:00:00,2019-03-19 17:00:00,,0
1164,1.1.1.5.4.3.6,Huisaansluitingen DWA ,10.375,8.3,12.45,2019-03-18 08:00:00,2019-03-28 17:00:00,,0
1165,1.1.1.5.4.3.7,"RWA riolering, incl zijtakken ",46.375,37.1,55.65,2019-03-29 08:00:00,2019-05-14 17:00:00,,0
1166,1.1.1.5.4.3.8,Huisaanluitingen RWA ,30.375,24.3,36.45,2019-04-03 08:00:00,2019-05-03 17:00:00,,0
1167,1.1.1.5.4.3.9,Wachtbuizen,2.375,1.9,2.85,2019-05-06 08:00:00,2019-05-08 17:00:00,,0
1168,1.1.1.5.4.3.10,Bomenvisie (Fase B3 - Oost Cassierstraat),5.375,4.3,6.45,2019-05-09 08:00:00,2019-05-14 17:00:00,,0
1169,1.1.1.5.4.3.11,Grondwerk ventweg en fietspad,12.375,9.9,14.85,2019-05-17 08:00:00,2019-05-29 17:00:00,,0
1170,1.1.1.5.4.3.12,Onderfundering ventweg en fietspad,12.375,9.9,14.85,2019-05-17 08:00:00,2019-05-29 17:00:00,,0
1171,1.1.1.5.4.3.13,Boordstenen fietspad,4.375,3.5,5.25,2019-06-03 08:00:00,2019-06-07 17:00:00,,0
1172,1.1.1.5.4.3.14,Fundering fietspad,2.375,1.9,2.85,2019-06-11 08:00:00,2019-06-13 17:00:00,,0
1173,1.1.1.5.4.3.15,Opbraak voetpad + grondwerk,6.375,5.1,7.65,2019-06-14 08:00:00,2019-06-20 17:00:00,,0
1174,1.1.1.5.4.3.16,Fundering boordstenen ventweg,6.375,5.1,7.65,2019-06-21 08:00:00,2019-06-27 17:00:00,,0
1175,1.1.1.5.4.3.17,Boordstenen ventweg,7.375,5.9,8.85,2019-06-28 08:00:00,2019-07-05 17:00:00,,0
1176,1.1.1.5.4.3.18,Fundering voetpad,4.375,3.5,5.25,2019-07-08 08:00:00,2019-07-12 17:00:00,,0
1177,1.1.1.5.4.3.19,Verharding voetpad,20.375,16.3,24.45,2019-07-10 08:00:00,2019-07-30 17:00:00,,0
1178,1.1.1.5.4.3.20,Aanleg verharding ventweg en parkeerstrook,22.375,17.9,26.85,2019-07-31 08:00:00,2019-08-22 17:00:00,,0
1179,1.1.1.5.4.3.21,Asfalt fietspad,1.375,1.1,1.65,2019-09-04 08:00:00,2019-09-05 17:00:00,,0
1180,1.1.1.5.4.3.22,"Verkeersborden(Italiëlei: Tunnelplaats - Noorderplaats, Fase B3 - Oost Cassierstraat - Ellermanstraat)",24.375,19.5,29.25,2019-08-27 08:00:00,2019-09-20 17:00:00,,0
1181,1.1.1.5.4.3.23,Afronden opleverpunten VO-07a,13.375,10.7,16.05,2019-09-03 08:00:00,2019-09-16 17:00:00,,0
1182,1.1.1.5.4.3.24,"Aansluiting riolering Ellermanstraat, incl plaatsen van overstort",48.375,38.7,58.05,2019-03-20 08:00:00,2019-05-07 17:00:00,,0
1183,1.1.1.5.5,122 Kruispunt Noorderplaats (5 deelfasen parallel met naastliggende straat),995.0,985.05,1004.95,2017-02-07 17:00:00,2019-10-30 17:00:00,,0
1184,1.1.1.5.5.1,Fase 1,140.0,138.6,141.4,2017-02-07 17:00:00,2017-06-27 17:00:00,,0
1185,1.1.1.5.5.1.1,Start fase 1 Kruispunt Noorderplaats,0.0,0.0,0.0,2017-02-07 17:00:00,2017-02-07 17:00:00,,0
1186,1.1.1.5.5.1.2,Einde,0.0,0.0,0.0,2017-06-27 17:00:00,2017-06-27 17:00:00,,0
1187,1.1.1.5.5.2,Fase 2,91.375,90.46,92.29,2017-11-21 08:00:00,2018-02-20 17:00:00,,0
1188,1.1.1.5.5.2.1,uitzetten lassen en tegels,0.375,0.3,0.45,2017-11-24 08:00:00,2017-11-24 17:00:00,,0
1189,1.1.1.5.5.2.2,"plaatsen wissels, kruis en secties",10.375,8.3,12.45,2017-11-27 08:00:00,2017-12-07 17:00:00,,0
1190,1.1.1.5.5.2.3,"Opbraak fundering, onderfundering en grondwerk TBB",1.375,1.1,1.65,2017-11-21 08:00:00,2017-11-22 17:00:00,,0
1191,1.1.1.5.5.2.4,Onderfundering en fundering,1.375,1.1,1.65,2017-11-23 08:00:00,2017-11-24 17:00:00,,0
1192,1.1.1.5.5.2.5,Spoorwerken incl. lassen,10.375,8.3,12.45,2017-12-08 08:00:00,2017-12-18 17:00:00,,0
1193,1.1.1.5.5.2.6,Bekisting + wapening kiftbeton,7.375,5.9,8.85,2017-12-11 08:00:00,2017-12-18 17:00:00,,0
1194,1.1.1.5.5.2.7,Kiftbeton,0.375,0.3,0.45,2017-12-20 08:00:00,2017-12-20 17:00:00,,0
1195,1.1.1.5.5.2.8,Ter plaatse gestorte boordsteen in antraciet (handwerk),4.375,3.5,5.25,2017-12-21 08:00:00,2017-12-25 17:00:00,,0
1196,1.1.1.5.5.2.9,Wapening,2.375,1.9,2.85,2017-12-26 08:00:00,2017-12-28 17:00:00,,0
1197,1.1.1.5.5.2.10,Betonverharding,4.375,3.5,5.25,2018-01-08 08:00:00,2018-01-12 17:00:00,,0
1198,1.1.1.5.5.2.11,Kasseiverharding,3.375,2.7,4.05,2017-12-26 08:00:00,2017-12-29 17:00:00,,0
1199,1.1.1.5.5.2.12,Voorbereidende werken afslagstrook,3.375,2.7,4.05,2018-01-09 08:00:00,2018-01-12 17:00:00,,0
1200,1.1.1.5.5.2.13,Aansluiting op betonverharding.,5.375,4.3,6.45,2018-02-15 08:00:00,2018-02-20 17:00:00,,0
1201,1.1.1.5.5.3,Herstelling Kempenstraat,132.375,131.05,133.7,2017-11-29 08:00:00,2018-04-10 17:00:00,,0
1202,1.1.1.5.5.3.1,Opbraak wissel + kruis,15.375,12.3,18.45,2017-11-29 08:00:00,2017-12-14 17:00:00,,0
1203,1.1.1.5.5.3.2,Monteren wissel + kruis,11.375,9.1,13.65,2017-12-04 08:00:00,2017-12-15 17:00:00,,0
1204,1.1.1.5.5.3.3,Opbraak sporen en verharding,1.375,1.1,1.65,2018-01-08 08:00:00,2018-01-09 17:00:00,,0
1205,1.1.1.5.5.3.4,Spoorwerken incl. lassen,10.375,8.3,12.45,2018-02-09 08:00:00,2018-02-19 17:00:00,,0
1206,1.1.1.5.5.3.5,kifbeton,0.375,0.3,0.45,2018-02-20 08:00:00,2018-02-20 17:00:00,,0
1207,1.1.1.5.5.3.6,Wapening + aansluiting spoorbakjes,6.375,5.1,7.65,2018-02-21 08:00:00,2018-02-27 17:00:00,,0
1208,1.1.1.5.5.3.7,Betonverharding,41.375,33.1,49.65,2018-02-28 08:00:00,2018-04-10 17:00:00,,0
1209,1.1.1.5.5.4,Aansluiting Londenstraat,50.375,49.87,50.88,2018-02-21 08:00:00,2018-04-12 17:00:00,,0
1210,1.1.1.5.5.4.1,Opbraak spoor en aanleg spoor,5.375,4.3,6.45,2018-02-21 08:00:00,2018-02-26 17:00:00,,0
1211,1.1.1.5.5.4.2,"Aansluiten, afvoeren riolering wissels + waterbakken",0.375,0.3,0.45,2018-02-27 08:00:00,2018-02-27 17:00:00,,0
1212,1.1.1.5.5.4.3,wachtbuizen,0.375,0.3,0.45,2018-02-28 08:00:00,2018-02-28 17:00:00,,0
1213,1.1.1.5.5.4.4,Fijnafstellen en controlemeting,5.375,4.3,6.45,2018-03-01 08:00:00,2018-03-06 17:00:00,,0
1214,1.1.1.5.5.4.5,Storten kiftbeton,1.375,1.1,1.65,2018-03-08 08:00:00,2018-03-09 17:00:00,,0
1215,1.1.1.5.5.4.6,Lassen spoorstaven + controle spoorwijdte,9.375,7.5,11.25,2018-03-12 08:00:00,2018-03-21 17:00:00,,0
1216,1.1.1.5.5.4.7,Afwerken raillijfbekleding,0.375,0.3,0.45,2018-03-22 08:00:00,2018-03-22 17:00:00,,0
1217,1.1.1.5.5.4.8,verharding / afwerking,7.375,5.9,8.85,2018-03-23 08:00:00,2018-03-30 17:00:00,,0
1218,1.1.1.5.5.4.9,asfaltering knooppunt en verwijderen bypass,1.375,1.1,1.65,2018-04-10 08:00:00,2018-04-11 17:00:00,,0
1219,1.1.1.5.5.4.10,Afwerking,0.375,0.3,0.45,2018-04-12 08:00:00,2018-04-12 17:00:00,,0
1220,1.1.1.5.5.5,Fase afslagstrook,119.375,118.18,120.57,2018-02-21 08:00:00,2018-06-20 17:00:00,,0
1221,1.1.1.5.5.5.1,Opbraak verharding,1.375,1.1,1.65,2018-02-21 08:00:00,2018-02-22 17:00:00,,0
1222,1.1.1.5.5.5.2,Doorsteek gasleiding,5.375,4.3,6.45,2018-02-23 08:00:00,2018-02-28 17:00:00,,0
1223,1.1.1.5.5.5.3,Riolering,32.375,25.9,38.85,2018-04-16 08:00:00,2018-05-18 17:00:00,,0
1224,1.1.1.5.5.5.4,Wachtbuizen,4.375,3.5,5.25,2018-05-21 08:00:00,2018-05-25 17:00:00,,0
1225,1.1.1.5.5.5.5,Grondwerk,2.375,1.9,2.85,2018-05-28 08:00:00,2018-05-30 17:00:00,,0
1226,1.1.1.5.5.5.6,Onderfundering en fundering,4.375,3.5,5.25,2018-05-31 08:00:00,2018-06-04 17:00:00,,0
1227,1.1.1.5.5.5.7,Boordstenen,7.375,5.9,8.85,2018-06-05 08:00:00,2018-06-12 17:00:00,,0
1228,1.1.1.5.5.5.8,Greppel in graniet ,0.375,0.3,0.45,2018-06-13 08:00:00,2018-06-13 17:00:00,,0
1229,1.1.1.5.5.5.9,Fundering,1.375,1.1,1.65,2018-06-14 08:00:00,2018-06-15 17:00:00,,0
1230,1.1.1.5.5.5.10,Asfalt OL,0.375,0.3,0.45,2018-06-18 08:00:00,2018-06-18 17:00:00,,0
1231,1.1.1.5.5.5.11,Putten ophaken,0.375,0.3,0.45,2018-06-19 08:00:00,2018-06-19 17:00:00,,0
1232,1.1.1.5.5.5.12,Asfalt OL + TL,0.375,0.3,0.45,2018-06-20 08:00:00,2018-06-20 17:00:00,,0
1233,1.1.1.5.5.6,Fase 3 Noorderplaats,572.0416666667006,566.32,577.76,2018-02-21 08:00:00,2019-09-16 09:00:00,,0
1234,1.1.1.5.5.6.1, Opbraak,2.375,1.9,2.85,2018-02-21 08:00:00,2018-02-23 17:00:00,,0
1235,1.1.1.5.5.6.2, Riolering R17- R11,3.375,2.7,4.05,2018-02-26 08:00:00,2018-03-01 17:00:00,,0
1236,1.1.1.5.5.6.3, HA + Wachtbuizen,54.375,43.5,65.25,2018-03-02 08:00:00,2018-04-25 17:00:00,,0
1237,1.1.1.5.5.6.4, Grondwerk (rijweg + voetpad + fietspad),0.0,0.0,0.0,2018-04-25 17:00:00,2018-04-25 17:00:00,,0
1238,1.1.1.5.5.6.5," Onderfundering rijweg, trambaan en fietspad",4.375,3.5,5.25,2018-04-26 08:00:00,2018-04-30 17:00:00,,0
1239,1.1.1.5.5.6.6, Fundering voetpad + onderfundering fietspad,24.375,19.5,29.25,2018-05-07 08:00:00,2018-05-31 17:00:00,,0
1240,1.1.1.5.5.6.7,Boordstenen fietspad,0.375,0.3,0.45,2018-06-06 08:00:00,2018-06-06 17:00:00,,0
1241,1.1.1.5.5.6.8, Fundering rijweg en trambaan.,2.375,1.9,2.85,2018-05-01 08:00:00,2018-05-03 17:00:00,,0
1242,1.1.1.5.5.6.9, Boren funderingspalen BVL,0.375,0.3,0.45,2018-05-25 08:00:00,2018-05-25 17:00:00,,0
1243,1.1.1.5.5.6.10, Bomenvisie,6.375,5.1,7.65,2018-05-04 08:00:00,2018-05-10 17:00:00,,0
1244,1.1.1.5.5.6.11,Fundering boordstenen,0.375,0.3,0.45,2018-05-11 08:00:00,2018-05-11 17:00:00,,0
1245,1.1.1.5.5.6.12, Waterslikkers,3.375,2.7,4.05,2018-05-11 08:00:00,2018-05-14 17:00:00,,0
1246,1.1.1.5.5.6.13, Boordstenen rijweg,4.375,3.5,5.25,2018-05-11 08:00:00,2018-05-15 17:00:00,,0
1247,1.1.1.5.5.6.14, Fundering fietspad,0.375,0.3,0.45,2018-06-07 08:00:00,2018-06-07 17:00:00,,0
1248,1.1.1.5.5.6.15, Fundering rijweg,0.375,0.3,0.45,2018-05-16 08:00:00,2018-05-16 17:00:00,,0
1249,1.1.1.5.5.6.16, Kabels en palen VRI ,5.375,4.3,6.45,2018-05-17 08:00:00,2018-05-22 17:00:00,,0
1250,1.1.1.5.5.6.17, Greppel in graniet ,5.375,4.3,6.45,2018-05-17 08:00:00,2018-05-22 17:00:00,,0
1251,1.1.1.5.5.6.18, 2x OL asfalt rijweg,0.375,0.3,0.45,2018-05-25 08:00:00,2018-05-25 17:00:00,,0
1252,1.1.1.5.5.6.19, OL + TL fietspad,1.375,1.1,1.65,2018-06-14 08:00:00,2018-06-15 17:00:00,,0
1253,1.1.1.5.5.6.20, OL + TL rijweg,1.375,1.1,1.65,2018-06-18 08:00:00,2018-06-19 17:00:00,,0
1254,1.1.1.5.5.6.21, OV palen ,5.375,4.3,6.45,2018-06-20 08:00:00,2018-06-25 17:00:00,,0
1255,1.1.1.5.5.6.22, BVL palen,5.375,4.3,6.45,2018-06-20 08:00:00,2018-06-25 17:00:00,,0
1256,1.1.1.5.5.6.23, Verharding voetpad,9.375,7.5,11.25,2018-06-11 08:00:00,2018-06-20 17:00:00,,0
1257,1.1.1.5.5.6.24,Aansluiting Noorderplaats met Hardenvoortviaduct.,127.375,101.9,152.85,2018-02-21 08:00:00,2018-06-28 17:00:00,,0
1258,1.1.1.5.5.6.25,Fasewissel 4b,3.0,2.4,3.6,2019-09-13 09:00:00,2019-09-16 09:00:00,,0
1259,1.1.1.5.5.7,Fase 4a - Kruispunt Noorderplaats rechterzijde (Hogeschool),448.375,443.89,452.86,2018-06-29 08:00:00,2019-09-20 17:00:00,,0
1260,1.1.1.5.5.7.1,Start fase 4a Kruispunt Noorderplaats,0.375,0.3,0.45,2018-06-29 08:00:00,2018-06-29 17:00:00,,0
1261,1.1.1.5.5.7.2,Aansluiting Noorderplaats,368.375,364.69,372.06,2018-09-17 08:00:00,2019-09-20 17:00:00,,0
1262,1.1.1.5.5.7.2.1,Wachtbuizen,2.375,1.9,2.85,2018-09-17 08:00:00,2018-09-19 17:00:00,,0
1263,1.1.1.5.5.7.2.2,Bomenvisie,5.375,4.3,6.45,2018-09-27 08:00:00,2018-10-02 17:00:00,,0
1264,1.1.1.5.5.7.2.3,Grondwerk en onderfundering,35.375,28.3,42.45,2018-10-03 08:00:00,2018-11-07 17:00:00,,0
1265,1.1.1.5.5.7.2.4,Fundering type IA,0.375,0.3,0.45,2018-11-13 08:00:00,2018-11-13 17:00:00,,0
1266,1.1.1.5.5.7.2.5,Fundering boordstenen,1.375,1.1,1.65,2018-11-14 08:00:00,2018-11-15 17:00:00,,0
1267,1.1.1.5.5.7.2.6,Fundering boordsteen en greppel in graniet,1.375,1.1,1.65,2018-11-14 08:00:00,2018-11-15 17:00:00,,0
1268,1.1.1.5.5.7.2.7,Boordstenen + greppel,5.375,4.3,6.45,2018-11-16 08:00:00,2018-11-21 17:00:00,,0
1269,1.1.1.5.5.7.2.8,Funderingtype IIA,1.375,1.1,1.65,2018-11-21 08:00:00,2018-11-22 17:00:00,,0
1270,1.1.1.5.5.7.2.9,Asfalt 2x OL rijweg,1.375,1.1,1.65,2018-11-26 08:00:00,2018-11-27 17:00:00,,0
1271,1.1.1.5.5.7.2.10,Putten ophalen,0.375,0.3,0.45,2018-11-28 08:00:00,2018-11-28 17:00:00,,0
1272,1.1.1.5.5.7.2.11,Opbraak voetpad ,0.375,0.3,0.45,2018-10-19 08:00:00,2018-10-19 17:00:00,,0
1273,1.1.1.5.5.7.2.12,Grondwerk voetpad en fietspad,2.375,1.9,2.85,2018-10-22 08:00:00,2018-10-24 17:00:00,,0
1274,1.1.1.5.5.7.2.13,Fundering voetpad en OF fietspad,1.375,1.1,1.65,2018-10-25 08:00:00,2018-10-26 17:00:00,,0
1275,1.1.1.5.5.7.2.14,Fundering voetpad,3.375,2.7,4.05,2018-11-16 08:00:00,2018-11-19 17:00:00,,0
1276,1.1.1.5.5.7.2.15,Fundering fietspad,0.375,0.3,0.45,2018-11-20 08:00:00,2018-11-20 17:00:00,,0
1277,1.1.1.5.5.7.2.16,Aansluiting Ellermanstraat,12.375,9.9,14.85,2018-11-15 08:00:00,2018-11-27 17:00:00,,0
1278,1.1.1.5.5.7.2.17,Verharding voetpad,9.375,7.5,11.25,2018-11-21 08:00:00,2018-11-30 17:00:00,,0
1279,1.1.1.5.5.7.2.18,Bermen,0.375,0.3,0.45,2018-11-28 08:00:00,2018-11-28 17:00:00,,0
1280,1.1.1.5.5.7.2.19,Asfalt OL + TL,0.375,0.3,0.45,2018-11-29 08:00:00,2018-11-29 17:00:00,,0
1281,1.1.1.5.5.7.2.20,Belijning,0.375,0.3,0.45,2018-11-30 08:00:00,2018-11-30 17:00:00,,0
1282,1.1.1.5.5.7.2.21,Verkeersborden,16.375,13.1,19.65,2019-09-04 08:00:00,2019-09-20 17:00:00,,0
1283,1.1.1.5.5.7.3,Einde fase 4a Kruispunt Noorderplaats,0.0,0.0,0.0,2019-09-20 17:00:00,2019-09-20 17:00:00,,0
1284,1.1.1.5.5.8,Fase 5 - Kruispunt Noorderplaats middenzone,258.375,255.79,260.96,2019-02-14 08:00:00,2019-10-30 17:00:00,,0
1285,1.1.1.5.5.8.1,Start fase 5 Kruispunt Noorderplaats,0.0,0.0,0.0,2019-09-20 17:00:00,2019-09-20 17:00:00,,0
1286,1.1.1.5.5.8.2,"Signalisatie, voorbereidende werken en opbraak",2.375,1.9,2.85,2019-09-23 08:00:00,2019-09-25 17:00:00,,0
1287,1.1.1.5.5.8.3,Wachtbuizen en afwateringsbuizen,8.375,6.7,10.05,2019-09-26 08:00:00,2019-10-04 17:00:00,,0
1288,1.1.1.5.5.8.4,"Grondwerk, onderfundering ",2.375,1.9,2.85,2019-10-07 08:00:00,2019-10-09 17:00:00,,0
1289,1.1.1.5.5.8.5,Fundering porfiersteenslag,3.375,2.7,4.05,2019-03-15 08:00:00,2019-03-18 17:00:00,,0
1290,1.1.1.5.5.8.6,Plaatsen van sporen (122 Fase 5 - Kruispunt Noorderplaats middenzone),6.375,5.1,7.65,2019-03-19 08:00:00,2019-03-25 17:00:00,,0
1291,1.1.1.5.5.8.7,L-elementen perron,20.375,16.3,24.45,2019-10-10 08:00:00,2019-10-30 17:00:00,,0
1292,1.1.1.5.5.8.8,Kiftbeton,2.375,1.9,2.85,2019-03-26 08:00:00,2019-03-28 17:00:00,,0
1293,1.1.1.5.5.8.9,Boren afwatering gaten in kiftbeton,3.375,2.7,4.05,2019-03-29 08:00:00,2019-04-01 17:00:00,,0
1294,1.1.1.5.5.8.10,Verharding spoor,6.375,5.1,7.65,2019-04-02 08:00:00,2019-04-08 17:00:00,,0
1295,1.1.1.5.5.8.11,"Bomenzand, fundering en boomroosters perron",28.375,22.7,34.05,2019-02-14 08:00:00,2019-03-14 17:00:00,,0
1296,1.1.1.5.5.8.12,L-profielen,14.375,11.5,17.25,2019-03-26 08:00:00,2019-04-09 17:00:00,,0
1297,1.1.1.5.5.8.13,Verharding perrons,15.375,12.3,18.45,2019-05-20 08:00:00,2019-06-04 17:00:00,,0
1298,1.1.1.5.5.8.14,Leuning perrons,6.375,5.1,7.65,2019-06-26 08:00:00,2019-07-02 17:00:00,,0
1299,1.1.1.5.5.8.15,Bermen : verhard en onverhard,4.375,3.5,5.25,2019-04-01 08:00:00,2019-04-05 17:00:00,,0
1300,1.1.1.5.5.8.16,Einde fase 5Kruispunt Noorderplaats,0.0,0.0,0.0,2019-06-06 17:00:00,2019-06-06 17:00:00,,0
1301,1.1.1.5.5.9,Afrol en montage bovenleiding,42.375,41.95,42.8,2019-04-02 08:00:00,2019-05-14 17:00:00,,0
1302,1.1.1.5.5.9.1,Voorbereiding afrol bovenleiding Tunnelplaats - Noorderplaats,9.375,7.5,11.25,2019-04-02 08:00:00,2019-04-11 17:00:00,,0
1303,1.1.1.5.5.9.2,Afrol en montage bovenleiding Rd-15 en Rd-16 (Leien vanaf Houwerstraat tot Noorderplaats naast ZNA) ,15.375,12.3,18.45,2019-04-29 08:00:00,2019-05-14 17:00:00,,0
1304,1.1.1.5.5.9.3,Afrol en montage bovenleiding Rd-38 (Noorderplaats) en Rd-39 (Noorderplaats tot Duboisstraat),19.375,15.5,23.25,2019-04-25 08:00:00,2019-05-14 17:00:00,,0
1305,1.1.1.6,13 Zone Kempenstraat/Hardenvoort,883.0,874.17,891.83,2017-02-07 17:00:00,2019-07-10 17:00:00,,0
1306,1.1.1.6.1,Kelder ZNA klaar ifv werken Brabo 2,0.0,0.0,0.0,2017-04-17 17:00:00,2017-04-17 17:00:00,,0
1307,1.1.1.6.2,Kempenstraat - Werken Brabo 2,25.375,25.12,25.63,2017-02-13 08:00:00,2017-03-10 17:00:00,,0
1308,1.1.1.6.2.1,Verplaatsingswerken nutsleiding ifv Brabo 2,25.375,20.3,30.45,2017-02-13 08:00:00,2017-03-10 17:00:00,,0
1309,1.1.1.6.3,Werken Brabo 2 buiten de werfzone ZNA (rode zone op plan),483.0,478.17,487.83,2017-02-07 17:00:00,2018-06-05 17:00:00,,0
1310,1.1.1.6.3.1,"Start werken ifv ontbrekende gegevens, studies, verplaatsingwerken, …",0.0,0.0,0.0,2017-02-07 17:00:00,2017-02-07 17:00:00,,0
1311,1.1.1.6.3.2,Signalisatie en opbraak verharding,5.375,4.3,6.45,2017-02-08 08:00:00,2017-02-13 17:00:00,,0
1312,1.1.1.6.3.3,Rioleringen,80.375,79.57,81.18,2017-02-14 08:00:00,2017-05-05 17:00:00,,0
1313,1.1.1.6.3.3.1,Riolering ZNA,16.375,13.1,19.65,2017-02-14 08:00:00,2017-03-02 17:00:00,,0
1314,1.1.1.6.3.3.2,Afvoerbuizen WS + dwarse wachtbuizen,5.375,4.3,6.45,2017-03-08 08:00:00,2017-03-13 17:00:00,,0
1315,1.1.1.6.3.3.3,Riolering Binnenvaartstraat,37.375,29.9,44.85,2017-03-22 08:00:00,2017-04-28 17:00:00,,0
1316,1.1.1.6.3.3.4,Afvoerbuizen WS + dwarse wachtbuizen,4.375,3.5,5.25,2017-05-01 08:00:00,2017-05-05 17:00:00,,0
1317,1.1.1.6.3.4,Spoorbedding,78.375,77.59,79.16,2017-03-14 08:00:00,2017-05-31 17:00:00,,0
1318,1.1.1.6.3.4.1,ZNA - Hardervoort,24.375,24.13,24.62,2017-03-14 08:00:00,2017-04-07 17:00:00,,0
1319,1.1.1.6.3.4.1.1,Grondwerk,1.375,1.1,1.65,2017-03-14 08:00:00,2017-03-15 17:00:00,,0
1320,1.1.1.6.3.4.1.2,Onderfundering,1.375,1.1,1.65,2017-03-16 08:00:00,2017-03-17 17:00:00,,0
1321,1.1.1.6.3.4.1.3,Porfiersteenslag,1.375,1.1,1.65,2017-03-21 08:00:00,2017-03-22 17:00:00,,0
1322,1.1.1.6.3.4.1.4,Waterslikkers,1.375,1.1,1.65,2017-04-06 08:00:00,2017-04-07 17:00:00,,0
1323,1.1.1.6.3.4.2,Binnenvaartstraat,16.375,16.21,16.54,2017-05-15 08:00:00,2017-05-31 17:00:00,,0
1324,1.1.1.6.3.4.2.1,Grondwerk,2.375,1.9,2.85,2017-05-15 08:00:00,2017-05-17 17:00:00,,0
1325,1.1.1.6.3.4.2.2,Onderfundering,4.375,3.5,5.25,2017-05-18 08:00:00,2017-05-22 17:00:00,,0
1326,1.1.1.6.3.4.2.3,Porfiersteenslag,1.375,1.1,1.65,2017-05-23 08:00:00,2017-05-24 17:00:00,,0
1327,1.1.1.6.3.4.2.4,Waterslikkers,2.375,1.9,2.85,2017-05-29 08:00:00,2017-05-31 17:00:00,,0
1328,1.1.1.6.3.5,"Ingegraven leidingen, trekputten",9.375,9.28,9.47,2017-07-31 08:00:00,2017-08-09 17:00:00,,0
1329,1.1.1.6.3.5.1,ZNA - Hardervoort,8.375,6.7,10.05,2017-07-31 08:00:00,2017-08-08 17:00:00,,0
1330,1.1.1.6.3.5.2,Binnenvaartstraat,8.375,6.7,10.05,2017-08-01 08:00:00,2017-08-09 17:00:00,,0
1331,1.1.1.6.3.6,Spoorwerken,73.375,72.64,74.11,2017-04-11 08:00:00,2017-06-23 17:00:00,,0
1332,1.1.1.6.3.6.1,ZNA - Hardervoort spoorwerken,24.375,24.13,24.62,2017-04-11 08:00:00,2017-05-05 17:00:00,,0
1333,1.1.1.6.3.6.1.1,Plaatsen matten en panelen,0.375,0.3,0.45,2017-04-11 08:00:00,2017-04-11 17:00:00,,0
1334,1.1.1.6.3.6.1.2,Wapening + knippen + uitzetten,1.375,1.1,1.65,2017-04-12 08:00:00,2017-04-13 17:00:00,,0
1335,1.1.1.6.3.6.1.3,Panelen plaatsen,0.375,0.3,0.45,2017-04-18 08:00:00,2017-04-18 17:00:00,,0
1336,1.1.1.6.3.6.1.4,Panelen afstellen,1.375,1.1,1.65,2017-04-19 08:00:00,2017-04-20 17:00:00,,0
1337,1.1.1.6.3.6.1.5,Bekisting kiftbeton,2.375,1.9,2.85,2017-04-19 08:00:00,2017-04-21 17:00:00,,0
1338,1.1.1.6.3.6.1.6,Fijnregelen spoor,0.375,0.3,0.45,2017-04-25 08:00:00,2017-04-25 17:00:00,,0
1339,1.1.1.6.3.6.1.7,Kiftbeton plaatsen,2.375,1.9,2.85,2017-04-26 08:00:00,2017-04-28 17:00:00,,0
1340,1.1.1.6.3.6.1.8,Lassen van de sporen,1.375,1.1,1.65,2017-05-04 08:00:00,2017-05-05 17:00:00,,0
1341,1.1.1.6.3.6.2,Binnenvaartstraat spoorwerken,25.375,25.12,25.63,2017-05-29 08:00:00,2017-06-23 17:00:00,,0
1342,1.1.1.6.3.6.2.1,Plaatsen matten + Aanvoer materialen + Plaatsen wissel 156W932,0.375,0.3,0.45,2017-05-29 08:00:00,2017-05-29 17:00:00,,0
1343,1.1.1.6.3.6.2.2,Aanbrengen wapening,1.375,1.1,1.65,2017-05-30 08:00:00,2017-05-31 17:00:00,,0
1344,1.1.1.6.3.6.2.3,Plaatsen panelen + wissels,3.375,2.7,4.05,2017-05-30 08:00:00,2017-06-02 17:00:00,,0
1345,1.1.1.6.3.6.2.4,Afstellen sporen,2.375,1.9,2.85,2017-05-31 08:00:00,2017-06-02 17:00:00,,0
1346,1.1.1.6.3.6.2.5,Afwerken sporen + plaatsen bakken,2.375,1.9,2.85,2017-06-06 08:00:00,2017-06-08 17:00:00,,0
1347,1.1.1.6.3.6.2.6,Aanbregen riolering wissels / waterbakken,0.375,0.3,0.45,2017-06-06 08:00:00,2017-06-06 17:00:00,,0
1348,1.1.1.6.3.6.2.7,Bekisting kiftbeton,3.375,2.7,4.05,2017-06-06 08:00:00,2017-06-09 17:00:00,,0
1349,1.1.1.6.3.6.2.8,Storten kiftbeton,2.375,1.9,2.85,2017-06-12 08:00:00,2017-06-14 17:00:00,,0
1350,1.1.1.6.3.6.2.9,Lassen sporen + Afwerking raillijfbekleding + controlemeting,4.375,3.5,5.25,2017-06-19 08:00:00,2017-06-23 17:00:00,,0
1351,1.1.1.6.3.7,"Grondwerk, fiets- en voetpaden",363.375,359.74,367.01,2017-06-07 08:00:00,2018-06-05 17:00:00,,0
1352,1.1.1.6.3.7.1,Bovenleidingspalen,6.375,5.1,7.65,2017-09-22 08:00:00,2017-09-28 17:00:00,,0
1353,1.1.1.6.3.7.2,Bestrating trambaan,11.375,9.1,13.65,2017-06-26 08:00:00,2017-07-07 17:00:00,,0
1354,1.1.1.6.3.7.3,Afwerking openbaar domein binnenvaartstraat,82.375,65.9,98.85,2017-06-07 08:00:00,2017-08-28 17:00:00,,0
1355,1.1.1.6.3.7.4,Grondwerk voetpad,1.375,1.1,1.65,2017-10-02 08:00:00,2017-10-03 17:00:00,,0
1356,1.1.1.6.3.7.5,Onderfundering voetpad,0.375,0.3,0.45,2017-10-04 08:00:00,2017-10-04 17:00:00,,0
1357,1.1.1.6.3.7.6,Boordstenen fietspad,1.375,1.1,1.65,2017-10-05 08:00:00,2017-10-06 17:00:00,,0
1358,1.1.1.6.3.7.7,Fundering fietspad,0.375,0.3,0.45,2017-10-09 08:00:00,2017-10-09 17:00:00,,0
1359,1.1.1.6.3.7.8,Fundering voetpad,1.375,1.1,1.65,2017-10-10 08:00:00,2017-10-11 17:00:00,,0
1360,1.1.1.6.3.7.9,Verharding voetpad,11.375,9.1,13.65,2017-10-12 08:00:00,2017-10-23 17:00:00,,0
1361,1.1.1.6.3.7.10,Verharding fietspad,1.375,1.1,1.65,2017-10-24 08:00:00,2017-10-25 17:00:00,,0
1362,1.1.1.6.3.7.11,Fundering Voetpad / fietspad zijde Porsche gebouw,0.375,0.3,0.45,2017-10-02 08:00:00,2017-10-02 17:00:00,,0
1363,1.1.1.6.3.7.12,Grondwerk + OF voetpad zijde ZNA,1.375,1.1,1.65,2017-10-03 08:00:00,2017-10-04 17:00:00,,0
1364,1.1.1.6.3.7.13,Boordstenen,4.375,3.5,5.25,2017-10-05 08:00:00,2017-10-09 17:00:00,,0
1365,1.1.1.6.3.7.14,Verharding voetpad,3.375,2.7,4.05,2017-10-10 08:00:00,2017-10-13 17:00:00,,0
1366,1.1.1.6.3.7.15,Verharding fietspad,1.375,1.1,1.65,2017-10-16 08:00:00,2017-10-17 17:00:00,,0
1367,1.1.1.6.3.7.16,Aansluiting Binnevaartstraat met …,230.375,184.3,276.45,2017-10-18 08:00:00,2018-06-05 17:00:00,,0
1368,1.1.1.6.4,Werken Brabo 2 boven op kelder ZNA (gele zone op plan),211.375,209.26,213.49,2017-04-18 08:00:00,2017-11-15 17:00:00,,0
1369,1.1.1.6.4.1,Spoorbedding boven op kelderplaat,36.375,36.01,36.74,2017-04-18 08:00:00,2017-05-24 17:00:00,,0
1370,1.1.1.6.4.1.1,Beschermlaag waterdichting,6.375,5.1,7.65,2017-04-18 08:00:00,2017-04-24 17:00:00,,0
1371,1.1.1.6.4.1.2,Plaatsen dempingsmat,23.375,18.7,28.05,2017-04-24 08:00:00,2017-05-17 17:00:00,,0
1372,1.1.1.6.4.1.3,Waterslikkers,6.375,5.1,7.65,2017-05-18 08:00:00,2017-05-24 17:00:00,,0
1373,1.1.1.6.4.1.4,Betonnen kabelgoten,5.375,4.3,6.45,2017-04-28 08:00:00,2017-05-03 17:00:00,,0
1374,1.1.1.6.4.1.5,Plaatsen wapeningsnetten,2.375,1.9,2.85,2017-05-22 08:00:00,2017-05-24 17:00:00,,0
1375,1.1.1.6.4.2,Spoorwerken,18.375,18.19,18.56,2017-06-19 08:00:00,2017-07-07 17:00:00,,0
1376,1.1.1.6.4.2.1,Plaatsen spoor,4.375,3.5,5.25,2017-06-19 08:00:00,2017-06-23 17:00:00,,0
1377,1.1.1.6.4.2.2,Afstellen spoor,11.375,9.1,13.65,2017-06-26 08:00:00,2017-07-07 17:00:00,,0
1378,1.1.1.6.4.2.3,Kiftbeton,6.375,5.1,7.65,2017-06-29 08:00:00,2017-07-05 17:00:00,,0
1379,1.1.1.6.4.3,Niet spoor,106.375,105.31,107.44,2017-08-01 08:00:00,2017-11-15 17:00:00,,0
1380,1.1.1.6.4.3.1,Aanleg feederkabel vanuit TS Artesis,11.375,9.1,13.65,2017-09-25 08:00:00,2017-10-06 17:00:00,,0
1381,1.1.1.6.4.3.2,Aanleg leidingen boven op kelderplaat,10.375,8.3,12.45,2017-09-25 08:00:00,2017-10-05 17:00:00,,0
1382,1.1.1.6.4.3.3,Bovenleidingspalen,4.375,3.5,5.25,2017-10-06 08:00:00,2017-10-10 17:00:00,,0
1383,1.1.1.6.4.3.4,Bestrating trambaan,10.375,8.3,12.45,2017-08-01 08:00:00,2017-08-11 17:00:00,,0
1384,1.1.1.6.4.3.5,Perrons (ON HOLD door WOG),28.375,22.7,34.05,2017-10-02 08:00:00,2017-10-30 17:00:00,,0
1385,1.1.1.6.4.3.6,"Wachtbuizen, kasten, ITRIS-palen",9.375,7.5,11.25,2017-11-06 08:00:00,2017-11-15 17:00:00,,0
1386,1.1.1.6.4.4,Verkeersknopen ZNA,32.375,32.05,32.7,2017-09-04 08:00:00,2017-10-06 17:00:00,,0
1387,1.1.1.6.4.4.1,Aansluitingen ZNA Kempenstraat,24.375,24.13,24.62,2017-09-04 08:00:00,2017-09-28 17:00:00,,0
1388,1.1.1.6.4.4.1.1,Aanbrengen matten aan zijkant bij stootplaten,1.375,1.1,1.65,2017-09-04 08:00:00,2017-09-05 17:00:00,,0
1389,1.1.1.6.4.4.1.2,Aanbrengen stootplaten,2.375,1.9,2.85,2017-09-06 08:00:00,2017-09-08 17:00:00,,0
1390,1.1.1.6.4.4.1.3,Aanbrengen fundering,1.375,1.1,1.65,2017-09-12 08:00:00,2017-09-13 17:00:00,,0
1391,1.1.1.6.4.4.1.4,Vrijgave onderbaan met plaatproef,0.375,0.3,0.45,2017-09-14 08:00:00,2017-09-14 17:00:00,,0
1392,1.1.1.6.4.4.1.5,Controle/uitzetten onderbaan,0.375,0.3,0.45,2017-09-15 08:00:00,2017-09-15 17:00:00,,0
1393,1.1.1.6.4.4.1.6,Aanbrengen trillingsvrije matten,1.375,1.1,1.65,2017-09-18 08:00:00,2017-09-19 17:00:00,,0
1394,1.1.1.6.4.4.1.7,Uitzetten lassen en tegels,0.375,0.3,0.45,2017-09-20 08:00:00,2017-09-20 17:00:00,,0
1395,1.1.1.6.4.4.1.8,Aanbrengen panelen 4st,0.375,0.3,0.45,2017-09-21 08:00:00,2017-09-21 17:00:00,,0
1396,1.1.1.6.4.4.1.9,Afstellen sporen,0.375,0.3,0.45,2017-09-22 08:00:00,2017-09-22 17:00:00,,0
1397,1.1.1.6.4.4.1.10,Fijnafstellen en controlemeting,0.375,0.3,0.45,2017-09-25 08:00:00,2017-09-25 17:00:00,,0
1398,1.1.1.6.4.4.1.11,Storten kiftbeton,1.375,1.1,1.65,2017-09-25 08:00:00,2017-09-26 17:00:00,,0
1399,1.1.1.6.4.4.1.12,Lassen sporen (12 stuks) Incl. Fase 1,1.375,1.1,1.65,2017-09-26 08:00:00,2017-09-27 17:00:00,,0
1400,1.1.1.6.4.4.1.13,Controle spoorwijdte,0.375,0.3,0.45,2017-09-28 08:00:00,2017-09-28 17:00:00,,0
1401,1.1.1.6.4.4.1.14,Afwerken raillijfbekleding,0.375,0.3,0.45,2017-09-28 08:00:00,2017-09-28 17:00:00,,0
1402,1.1.1.6.4.4.2,Aansluitingen ZNA Noorderplaats,29.375,29.08,29.67,2017-09-07 08:00:00,2017-10-06 17:00:00,,0
1403,1.1.1.6.4.4.2.1,Aanbrengen matten aan zijkant bij stootplaten,1.375,1.1,1.65,2017-09-07 08:00:00,2017-09-08 17:00:00,,0
1404,1.1.1.6.4.4.2.2,Aanbrengen stootplaten,2.375,1.9,2.85,2017-09-11 08:00:00,2017-09-13 17:00:00,,0
1405,1.1.1.6.4.4.2.3,Aanbrengen fundering,1.375,1.1,1.65,2017-09-14 08:00:00,2017-09-15 17:00:00,,0
1406,1.1.1.6.4.4.2.4,Vrijgave onderbaan met plaatproef,0.375,0.3,0.45,2017-09-18 08:00:00,2017-09-18 17:00:00,,0
1407,1.1.1.6.4.4.2.5,Controle/uitzetten onderbaan,0.375,0.3,0.45,2017-09-19 08:00:00,2017-09-19 17:00:00,,0
1408,1.1.1.6.4.4.2.6,Uitzetten lassen en tegels,0.375,0.3,0.45,2017-09-20 08:00:00,2017-09-20 17:00:00,,0
1409,1.1.1.6.4.4.2.7,Aanbrengen panelen 4st,0.375,0.3,0.45,2017-09-21 08:00:00,2017-09-21 17:00:00,,0
1410,1.1.1.6.4.4.2.8,Afstellen sporen,0.375,0.3,0.45,2017-09-22 08:00:00,2017-09-22 17:00:00,,0
1411,1.1.1.6.4.4.2.9,Fijnafstellen en controlemeting,0.375,0.3,0.45,2017-09-25 08:00:00,2017-09-25 17:00:00,,0
1412,1.1.1.6.4.4.2.10,Storten kiftbeton,1.375,1.1,1.65,2017-09-25 08:00:00,2017-09-26 17:00:00,,0
1413,1.1.1.6.4.4.2.11,Lassen sporen (12 stuks) Incl. Fase 1,1.375,1.1,1.65,2017-09-26 08:00:00,2017-09-27 17:00:00,,0
1414,1.1.1.6.4.4.2.12,Controle spoorwijdte,0.375,0.3,0.45,2017-09-28 08:00:00,2017-09-28 17:00:00,,0
1415,1.1.1.6.4.4.2.13,Afwerken raillijfbekleding,0.375,0.3,0.45,2017-09-28 08:00:00,2017-09-28 17:00:00,,0
1416,1.1.1.6.4.4.2.14,Verharding,7.375,5.9,8.85,2017-09-29 08:00:00,2017-10-06 17:00:00,,0
1417,1.1.1.6.5,Zone onder Hardenvoortviaduct (paarse zone op plan),793.375,785.44,801.31,2017-05-08 08:00:00,2019-07-10 17:00:00,,0
1418,1.1.1.6.5.1,"Peilen, (ver)plaatsen en aanpassen nutsleidingen",24.375,19.5,29.25,2017-05-08 08:00:00,2017-06-01 17:00:00,,0
1419,1.1.1.6.5.2,Rioleringen,4.375,3.5,5.25,2017-11-27 08:00:00,2017-12-01 17:00:00,,0
1420,1.1.1.6.5.3,"Ingegraven leidingen, trekputten, funderingen masten",4.375,3.5,5.25,2017-12-04 08:00:00,2017-12-08 17:00:00,,0
1421,1.1.1.6.5.4,Spoorbedding,4.375,3.5,5.25,2017-12-11 08:00:00,2017-12-15 17:00:00,,0
1422,1.1.1.6.5.5,Spoorwerken,4.375,3.5,5.25,2017-12-18 08:00:00,2017-12-22 17:00:00,,0
1423,1.1.1.6.5.6,Bestrating trambaan,80.375,64.3,96.45,2018-01-15 08:00:00,2018-04-05 17:00:00,,0
1424,1.1.1.6.5.7,Wegenis naast trambaan zone onder Hardevoortviaduct,460.375,368.3,552.45,2018-04-06 08:00:00,2019-07-10 17:00:00,,0
1425,1.1.1.7,14 Aziadok-Oostkaai voorbereiding,110.0,108.9,111.1,2019-01-18 17:00:00,2019-05-08 17:00:00,,0
1426,1.1.1.7.1,Opgave OG dat bouwterrein tbv werken Asiadok - Oostkaai vrij is op 16.03.2019,0.0,0.0,0.0,2019-01-18 17:00:00,2019-01-18 17:00:00,,0
1427,1.1.1.7.2,Voorbereidingstermijn tbv opstart Asiadok - Oostkaai,107.375,85.9,128.85,2019-01-21 08:00:00,2019-05-08 17:00:00,,0
1428,1.1.1.7.3,Fasewissel Asiadok-Oostkaai (op vrijgavedatum bouwterrein OG of zoveel later in functie van de voorbereidingstijd),0.0,0.0,0.0,2019-05-08 17:00:00,2019-05-08 17:00:00,,0
1429,1.1.1.8,14 Asiadok-Oostkaai + Zuidkaai (blauwe zone op plan) ON HOLD omwille werftoegang ZNA,419.375,415.18,423.57,2019-04-16 08:00:00,2020-06-08 17:00:00,,0
1430,1.1.1.8.1,"Voorbereidingen, tijdelijke asfalt, signalisatie en opbraakwerken",13.375,10.7,16.05,2019-05-09 08:00:00,2019-05-22 17:00:00,,0
1431,1.1.1.8.2,Fase 1 : aanleg rijweg (west),234.375,232.03,236.72,2019-04-16 08:00:00,2019-12-06 17:00:00,,0
1432,1.1.1.8.2.1,"Peilen, (ver)plaatsen en aanpassen nutsleidingen (Kempenstraat zone 3, fase1 westzijde)",48.375,38.7,58.05,2019-04-16 08:00:00,2019-06-03 17:00:00,,0
1433,1.1.1.8.2.2,Rioleringen,31.375,25.1,37.65,2019-06-17 08:00:00,2019-07-18 17:00:00,,0
1434,1.1.1.8.2.3,Aansluiting op dok,62.375,49.9,74.85,2019-08-09 08:00:00,2019-10-10 17:00:00,,0
1435,1.1.1.8.2.4,Wachtbuizen HA en WS na aansluiting op dok,1.375,1.1,1.65,2019-10-15 08:00:00,2019-10-16 17:00:00,,0
1436,1.1.1.8.2.5,Wachtbuizen HA en WS ,10.375,8.3,12.45,2019-08-12 08:00:00,2019-08-22 17:00:00,,0
1437,1.1.1.8.2.6,Grondwerk na aansluiting op dok,1.375,1.1,1.65,2019-10-17 08:00:00,2019-10-18 17:00:00,,0
1438,1.1.1.8.2.7,WOG622 Plaatsing betonnen beschermingspanelen op MD gas ,3.375,2.7,4.05,2019-10-21 08:00:00,2019-10-24 17:00:00,,0
1439,1.1.1.8.2.8,Grondwerk wegenis,21.375,17.1,25.65,2019-08-28 08:00:00,2019-09-18 17:00:00,,0
1440,1.1.1.8.2.9,Onderfundering na aansluiting op dok,3.375,2.7,4.05,2019-10-25 08:00:00,2019-10-28 17:00:00,,0
1441,1.1.1.8.2.10,Onderfundering wegenis,21.375,17.1,25.65,2019-08-28 08:00:00,2019-09-18 17:00:00,,0
1442,1.1.1.8.2.11,Fundering kantstrook en boordsteen,1.375,1.1,1.65,2019-10-29 08:00:00,2019-10-30 17:00:00,,0
1443,1.1.1.8.2.12,Waterslikkers,0.375,0.3,0.45,2019-10-31 08:00:00,2019-10-31 17:00:00,,0
1444,1.1.1.8.2.13,Boordsteen en kantstrook,3.375,2.7,4.05,2019-11-04 08:00:00,2019-11-07 17:00:00,,0
1445,1.1.1.8.2.14,Fundering ,5.375,4.3,6.45,2019-11-08 08:00:00,2019-11-13 17:00:00,,0
1446,1.1.1.8.2.15,Asfalt 2x OL rijweg,3.375,2.7,4.05,2019-11-15 08:00:00,2019-11-18 17:00:00,,0
1447,1.1.1.8.2.16,Putten ophalen,3.375,2.7,4.05,2019-11-19 08:00:00,2019-11-22 17:00:00,,0
1448,1.1.1.8.2.17,"Openbare verlichting (14 Asiadok-Oostkaai, aanleg fietspad)",0.375,0.3,0.45,2019-11-25 08:00:00,2019-11-25 17:00:00,,0
1449,1.1.1.8.2.18,"WOG 499 Afwerking bermen (plaatsen boordsteen, geotextiel, fundering en siergrind in kalksteen)",13.375,10.7,16.05,2019-11-08 08:00:00,2019-11-21 17:00:00,,0
1450,1.1.1.8.2.19,WOG 499 Aansluiting Asiadok Oostkaai deel1,11.375,9.1,13.65,2019-11-25 08:00:00,2019-12-06 17:00:00,,0
1451,1.1.1.8.2.20,Asfalt OL + TL rijweg,2.375,1.9,2.85,2019-11-25 08:00:00,2019-11-27 17:00:00,,0
1452,1.1.1.8.3,Fasewissel Asiadok Oostkaai,0.0,0.0,0.0,2019-12-06 17:00:00,2019-12-06 17:00:00,,0
1453,1.1.1.8.4,Fase 2 : aanleg fietspad (oost),182.375,180.55,184.2,2019-12-09 08:00:00,2020-06-08 17:00:00,,0
1454,1.1.1.8.4.1,Opbraak  tijdelijke verharding en fietspad,4.375,3.5,5.25,2019-12-09 08:00:00,2019-12-13 17:00:00,,0
1455,1.1.1.8.4.2,"Peilen, (ver)plaatsen en aanpassen nutsleidingen (Kempenstraat zone 3, fase2 oostzijde)",42.375,33.9,50.85,2019-12-16 08:00:00,2020-01-27 17:00:00,,0
1456,1.1.1.8.4.3,Wachtbuizen ,6.375,5.1,7.65,2020-02-11 08:00:00,2020-02-17 17:00:00,,0
1457,1.1.1.8.4.4,Grondwerk ,6.375,5.1,7.65,2020-02-18 08:00:00,2020-02-24 17:00:00,,0
1458,1.1.1.8.4.5,Onderfundering boorstenen fietspad,6.375,5.1,7.65,2020-02-18 08:00:00,2020-02-24 17:00:00,,0
1459,1.1.1.8.4.6,Boordstenen fietpad,6.375,5.1,7.65,2020-02-25 08:00:00,2020-03-02 17:00:00,,0
1460,1.1.1.8.4.7,Fundering fietspad en verharde bermen,6.375,5.1,7.65,2020-03-03 08:00:00,2020-03-09 17:00:00,,0
1461,1.1.1.8.4.8,Verharding fietspad,2.375,1.9,2.85,2020-03-10 08:00:00,2020-03-12 17:00:00,,0
1462,1.1.1.8.4.9,Verharding bermen,25.375,20.3,30.45,2020-03-13 08:00:00,2020-04-07 17:00:00,,0
1463,1.1.1.8.4.10,Gefaseerd : aansluiting op Ijzerlaan,13.375,10.7,16.05,2020-04-08 08:00:00,2020-04-21 17:00:00,,0
1464,1.1.1.8.4.11,WOG 499 Aansluiting Asiadok Oostkaai deel2 gefaseerd aanleggen,20.375,16.3,24.45,2020-04-24 08:00:00,2020-05-14 17:00:00,,0
1465,1.1.1.8.4.12,Afronden opleverpunten weg Asiadok Oostkaai,21.375,17.1,25.65,2020-05-18 08:00:00,2020-06-08 17:00:00,,0
1466,1.1.1.9,15 Noorderlaan van Noorderplaats tot IJzerlaan,1641.375,1624.96,1657.79,2016-04-11 08:00:00,2020-10-08 17:00:00,,0
1467,1.1.1.9.1,"Peilen, (ver)plaatsen en aanpassen dwarsende nutsleidingen",25.375,20.3,30.45,2018-01-22 08:00:00,2018-02-16 17:00:00,,0
1468,1.1.1.9.2,151 Hardenvoortviaduct,1030.375,1020.07,1040.68,2017-12-13 08:00:00,2020-10-08 17:00:00,,0
1469,1.1.1.9.2.1,Renovatiewerken viaduct (gefaseerde uitvoering),0.0,0.0,0.0,2020-05-29 17:00:00,2020-05-29 17:00:00,,0
1470,1.1.1.9.2.1.1,einde (Renovatiewerken viaduct Hardevoort),0.0,0.0,0.0,2020-05-29 17:00:00,2020-05-29 17:00:00,,0
1471,1.1.1.9.2.2,Fietstunnel voorbereidingswerken,246.0,243.54,248.46,2018-06-21 17:00:00,2019-02-22 17:00:00,,0
1472,1.1.1.9.2.2.1,Ontvangst WOG,0.0,0.0,0.0,2018-06-21 17:00:00,2018-06-21 17:00:00,,0
1473,1.1.1.9.2.2.2,Indienen offerte (raming ivm uitblijven ontwerpdossier),0.0,0.0,0.0,2018-10-12 17:00:00,2018-10-12 17:00:00,,0
1474,1.1.1.9.2.2.3,Ontvangst uitvoeringsplannen,0.0,0.0,0.0,2018-11-13 17:00:00,2018-11-13 17:00:00,,0
1475,1.1.1.9.2.2.4,Voorbereidingstijd van ontvangst uitvoeringsplannen tot start uitvoering,40.375,32.3,48.45,2018-11-14 08:00:00,2018-12-24 17:00:00,,0
1476,1.1.1.9.2.2.5,Akkoord OG op offerte,0.0,0.0,0.0,2019-01-23 17:00:00,2019-01-23 17:00:00,,0
1477,1.1.1.9.2.2.6,Voorbereidingstijd van akkoord offerte tot start uitvoering,29.375,23.5,35.25,2019-01-24 08:00:00,2019-02-22 17:00:00,,0
1478,1.1.1.9.2.3,Hardenvoortviaduct Fase 1 - van Noord naar Zuid,702.375,695.35,709.4,2017-12-13 08:00:00,2019-11-15 17:00:00,,0
1479,1.1.1.9.2.3.1,"Grondwerk, Funderingen, boordstenen en verharding bermen",157.375,125.9,188.85,2019-01-01 08:00:00,2019-06-07 17:00:00,,0
1480,1.1.1.9.2.3.2,"Grondwerk saldo, Funderingen, boordstenen en verharding bermen",51.375,41.1,61.65,2019-08-05 08:00:00,2019-09-25 17:00:00,,0
1481,1.1.1.9.2.3.3,Verharding - asfalt,4.375,3.5,5.25,2019-11-08 08:00:00,2019-11-12 17:00:00,,0
1482,1.1.1.9.2.3.4,Belijning + gietasfalt,1.375,1.1,1.65,2019-11-14 08:00:00,2019-11-15 17:00:00,,0
1483,1.1.1.9.2.3.5,Fasewissel Hardenvoortviaduct - Fase 1,0.0,0.0,0.0,2018-12-24 17:00:00,2018-12-24 17:00:00,,0
1484,1.1.1.9.2.3.6,"Voorbereidingen, signalisatie en opbraakwerken",7.375,5.9,8.85,2017-12-13 08:00:00,2017-12-20 17:00:00,,0
1485,1.1.1.9.2.3.7,Archeologie,6.375,5.1,7.65,2017-12-21 08:00:00,2017-12-27 17:00:00,,0
1486,1.1.1.9.2.3.8,Rioleringen,27.375,21.9,32.85,2018-01-11 08:00:00,2018-02-07 17:00:00,,0
1487,1.1.1.9.2.3.9,"Voorbereidingen, signalisatie en opbraakwerken",6.375,5.1,7.65,2018-12-25 08:00:00,2018-12-31 17:00:00,,0
1488,1.1.1.9.2.3.10,Fietstunnel ruwbouw noord,255.375,252.82,257.93,2019-02-25 08:00:00,2019-11-07 17:00:00,,0
1489,1.1.1.9.2.3.10.1,Uitvoering 52 secanspalen,4.375,3.5,5.25,2019-02-25 08:00:00,2019-03-01 17:00:00,,0
1490,1.1.1.9.2.3.10.2,Afbraak borstwering,1.375,1.1,1.65,2019-03-04 08:00:00,2019-03-05 17:00:00,,0
1491,1.1.1.9.2.3.10.3,Tijdelijke stutten,1.375,1.1,1.65,2019-03-06 08:00:00,2019-03-07 17:00:00,,0
1492,1.1.1.9.2.3.10.4,Verdere afbraak tot niveau onder vloerplaat,4.375,3.5,5.25,2019-03-08 08:00:00,2019-03-12 17:00:00,,0
1493,1.1.1.9.2.3.10.5,Voorboren 6 ankergaten ,1.375,1.1,1.65,2019-04-01 08:00:00,2019-04-02 17:00:00,,0
1494,1.1.1.9.2.3.10.6,Uitvoering 6 trekankers en injecteren,6.375,5.1,7.65,2019-05-24 08:00:00,2019-05-30 17:00:00,,0
1495,1.1.1.9.2.3.10.7,Aanspannen en injecteren,0.375,0.3,0.45,2019-06-14 08:00:00,2019-06-14 17:00:00,,0
1496,1.1.1.9.2.3.10.8,Verwijderen van tijdelijke stutten,0.375,0.3,0.45,2019-06-17 08:00:00,2019-06-17 17:00:00,,0
1497,1.1.1.9.2.3.10.9,Uitgraving tot peil van afkapping secans palen,0.375,0.3,0.45,2019-03-13 08:00:00,2019-03-13 17:00:00,,0
1498,1.1.1.9.2.3.10.10,Afkappen van secanspalen,4.375,3.5,5.25,2019-03-14 08:00:00,2019-03-18 17:00:00,,0
1499,1.1.1.9.2.3.10.11,Nutsleidingen omleggen,0.375,0.3,0.45,2019-03-19 08:00:00,2019-03-19 17:00:00,,0
1500,1.1.1.9.2.3.10.12,Bekisten van consoles dak,1.375,1.1,1.65,2019-03-20 08:00:00,2019-03-21 17:00:00,,0
1501,1.1.1.9.2.3.10.13,Wapenen consoles dak,0.375,0.3,0.45,2019-03-22 08:00:00,2019-03-22 17:00:00,,0
1502,1.1.1.9.2.3.10.14,Beton consoles dak,0.375,0.3,0.45,2019-03-29 08:00:00,2019-03-29 17:00:00,,0
1503,1.1.1.9.2.3.10.15,"Uitgraven tot niveau 2,00m onder dakplaat + werkvloer",2.375,1.9,2.85,2019-04-01 08:00:00,2019-04-03 17:00:00,,0
1504,1.1.1.9.2.3.10.16,Stutten en balken onder dak,4.375,3.5,5.25,2019-04-04 08:00:00,2019-04-08 17:00:00,,0
1505,1.1.1.9.2.3.10.17,Karren en profielen onder dak,2.375,1.9,2.85,2019-04-09 08:00:00,2019-04-11 17:00:00,,0
1506,1.1.1.9.2.3.10.18,Wapenen van dakplaat,17.375,13.9,20.85,2019-04-12 08:00:00,2019-04-29 17:00:00,,0
1507,1.1.1.9.2.3.10.19,Beton dakplaat,0.375,0.3,0.45,2019-05-03 08:00:00,2019-05-03 17:00:00,,0
1508,1.1.1.9.2.3.10.20,Uitgraving en zandcement vlotplaten,1.375,1.1,1.65,2019-05-06 08:00:00,2019-05-07 17:00:00,,0
1509,1.1.1.9.2.3.10.21,Bekisten 2 vlotplaten,3.375,2.7,4.05,2019-05-17 08:00:00,2019-05-20 17:00:00,,0
1510,1.1.1.9.2.3.10.22,Wapenen 2 vlotplaten,1.375,1.1,1.65,2019-05-21 08:00:00,2019-05-22 17:00:00,,0
1511,1.1.1.9.2.3.10.23,Beton 2 vlotplaten,0.375,0.3,0.45,2019-05-23 08:00:00,2019-05-23 17:00:00,,0
1512,1.1.1.9.2.3.10.24,Uitharden betonplaat,13.375,10.7,16.05,2019-05-24 08:00:00,2019-06-06 17:00:00,,0
1513,1.1.1.9.2.3.10.25,Waterdichting,3.375,2.7,4.05,2019-11-04 08:00:00,2019-11-07 17:00:00,,0
1514,1.1.1.9.2.3.10.26,Weerverlet,16.375,13.1,19.65,2019-06-12 08:00:00,2019-06-28 17:00:00,,0
1515,1.1.1.9.2.4,Hardenvoortviaduct Fase 2 - van Zuid naar Noord,122.0,120.78,123.22,2019-11-15 17:00:00,2020-03-16 17:00:00,,0
1516,1.1.1.9.2.4.1,Fasewissel Hardenvoortviaduct - Fase 2,0.0,0.0,0.0,2019-11-15 17:00:00,2019-11-15 17:00:00,,0
1517,1.1.1.9.2.4.2,"Voorbereidingen, signalisatie en opbraakwerken",9.375,7.5,11.25,2019-11-18 08:00:00,2019-11-27 17:00:00,,0
1518,1.1.1.9.2.4.3,"Grondwerk, funderingen, boordstenen en verharding bermen",66.375,53.1,79.65,2019-12-06 08:00:00,2020-02-10 17:00:00,,0
1519,1.1.1.9.2.4.4,Verharding - asfalt (Hardenvoortviaduct zuid naar noord),3.375,2.7,4.05,2020-03-10 08:00:00,2020-03-13 17:00:00,,0
1520,1.1.1.9.2.4.5,Openbare verlichting (Hardenvoortviaduct zuid naar noord),6.375,5.1,7.65,2020-03-10 08:00:00,2020-03-16 17:00:00,,0
1521,1.1.1.9.2.4.6,Fietstunnel ruwbouw zuid,106.375,105.31,107.44,2019-11-28 08:00:00,2020-03-13 17:00:00,,0
1522,1.1.1.9.2.4.6.1,Uitvoering 52 secanspalen,7.375,5.9,8.85,2019-11-28 08:00:00,2019-12-05 17:00:00,,0
1523,1.1.1.9.2.4.6.2,Afbraak borstwering,3.375,2.7,4.05,2019-12-06 08:00:00,2019-12-09 17:00:00,,0
1524,1.1.1.9.2.4.6.3,Tijdelijke stutten,1.375,1.1,1.65,2019-12-10 08:00:00,2019-12-11 17:00:00,,0
1525,1.1.1.9.2.4.6.4,Verdere afbraak tot niveau onder vloerplaat,4.375,3.5,5.25,2019-12-12 08:00:00,2019-12-16 17:00:00,,0
1526,1.1.1.9.2.4.6.5,Voorboren 6 ankergaten ,1.375,1.1,1.65,2019-12-17 08:00:00,2019-12-18 17:00:00,,0
1527,1.1.1.9.2.4.6.6,Uitboren van betonnissen,6.375,5.1,7.65,2019-12-19 08:00:00,2019-12-25 17:00:00,,0
1528,1.1.1.9.2.4.6.7,Uitvoering 6 trekankers en injecteren,1.375,1.1,1.65,2020-01-09 08:00:00,2020-01-10 17:00:00,,0
1529,1.1.1.9.2.4.6.8,Aanspannen en injecteren,0.375,0.3,0.45,2020-01-20 08:00:00,2020-01-20 17:00:00,,0
1530,1.1.1.9.2.4.6.9,Verwijderen van tijdelijke stutten,0.375,0.3,0.45,2020-01-21 08:00:00,2020-01-21 17:00:00,,0
1531,1.1.1.9.2.4.6.10,Uitgraving tot peil van afkapping secans palen,0.375,0.3,0.45,2020-01-13 08:00:00,2020-01-13 17:00:00,,0
1532,1.1.1.9.2.4.6.11,Afkappen van secanspalen,3.375,2.7,4.05,2020-01-14 08:00:00,2020-01-17 17:00:00,,0
1533,1.1.1.9.2.4.6.12,Nutsleidingen omleggen,2.375,1.9,2.85,2020-01-20 08:00:00,2020-01-22 17:00:00,,0
1534,1.1.1.9.2.4.6.13,Bekisten van consoles dak,1.375,1.1,1.65,2020-01-23 08:00:00,2020-01-24 17:00:00,,0
1535,1.1.1.9.2.4.6.14,Wapenen consoles dak,0.375,0.3,0.45,2020-01-27 08:00:00,2020-01-27 17:00:00,,0
1536,1.1.1.9.2.4.6.15,Beton consoles dak,0.375,0.3,0.45,2020-01-28 08:00:00,2020-01-28 17:00:00,,0
1537,1.1.1.9.2.4.6.16,Berlinerwand,2.375,1.9,2.85,2020-01-29 08:00:00,2020-01-31 17:00:00,,0
1538,1.1.1.9.2.4.6.17,"Uitgraven tot niveau 2,00m onder dakplaat + werkvloer",2.375,1.9,2.85,2020-02-03 08:00:00,2020-02-05 17:00:00,,0
1539,1.1.1.9.2.4.6.18,Stutten en balken onder dak,4.375,3.5,5.25,2020-02-06 08:00:00,2020-02-10 17:00:00,,0
1540,1.1.1.9.2.4.6.19,Karren en profielen onder dak,2.375,1.9,2.85,2020-02-11 08:00:00,2020-02-13 17:00:00,,0
1541,1.1.1.9.2.4.6.20,Wapenen van dakplaat,4.375,3.5,5.25,2020-02-14 08:00:00,2020-02-18 17:00:00,,0
1542,1.1.1.9.2.4.6.21,Beton dakplaat,0.375,0.3,0.45,2020-02-19 08:00:00,2020-02-19 17:00:00,,0
1543,1.1.1.9.2.4.6.22,Uitgraving en zandcement vlotplaten,1.375,1.1,1.65,2020-02-20 08:00:00,2020-02-21 17:00:00,,0
1544,1.1.1.9.2.4.6.23,Bekisten 2 vlotplaten,1.375,1.1,1.65,2020-02-24 08:00:00,2020-02-25 17:00:00,,0
1545,1.1.1.9.2.4.6.24,Wapenen 2 vlotplaten,1.375,1.1,1.65,2020-02-26 08:00:00,2020-02-27 17:00:00,,0
1546,1.1.1.9.2.4.6.25,Beton 2 vlotplaten,0.375,0.3,0.45,2020-02-28 08:00:00,2020-02-28 17:00:00,,0
1547,1.1.1.9.2.4.6.26,Ter plaatse te storten New Jersey,11.375,9.1,13.65,2020-03-02 08:00:00,2020-03-13 17:00:00,,0
1548,1.1.1.9.2.4.6.27,Uitharden betonplaat,10.375,8.3,12.45,2020-03-02 08:00:00,2020-03-12 17:00:00,,0
1549,1.1.1.9.2.4.6.28,Waterdichting,3.375,2.7,4.05,2020-03-06 08:00:00,2020-03-09 17:00:00,,0
1550,1.1.1.9.2.5,Hardevoortviaduct Fase 3 - Middenberm (excl. zone fietstunnel),60.0,59.4,60.6,2020-03-16 17:00:00,2020-05-15 17:00:00,,0
1551,1.1.1.9.2.5.1,Fasewissel Hardenvoortviaduct - Fase 3,0.0,0.0,0.0,2020-03-16 17:00:00,2020-03-16 17:00:00,,0
1552,1.1.1.9.2.5.2,"Voorbereidingen, signalisatie en opbraakwerken",2.375,1.9,2.85,2020-03-17 08:00:00,2020-03-19 17:00:00,,0
1553,1.1.1.9.2.5.3,Afwerking bovengronds,35.375,28.3,42.45,2020-03-20 08:00:00,2020-04-24 17:00:00,,0
1554,1.1.1.9.2.5.4,Verharding - asfalt,2.375,1.9,2.85,2020-04-29 08:00:00,2020-05-01 17:00:00,,0
1555,1.1.1.9.2.5.5,"Voetpad en groenzone (Hardevoortviaduct, fase 3 middenberm)",10.375,8.3,12.45,2020-05-05 08:00:00,2020-05-15 17:00:00,,0
1556,1.1.1.9.2.6,Voorlopige oplevering Niet-Tramgedeelte Stad VO 07b,56.375,55.81,56.94,2020-05-18 08:00:00,2020-07-13 17:00:00,,0
1557,1.1.1.9.2.6.1,Opleveringsperiode Tramcontractors (Hardevoortviaduct VO-07b),11.375,9.1,13.65,2020-05-18 08:00:00,2020-05-29 17:00:00,,0
1558,1.1.1.9.2.6.2,Opleveringsperiode OG (Hardevoortviaduct VO-07b),42.375,33.9,50.85,2020-06-01 08:00:00,2020-07-13 17:00:00,,0
1559,1.1.1.9.2.7,"Fietstunnel Fase 3 - Afbraak, ruwbouw incl. riolering",66.375,65.71,67.04,2020-03-20 08:00:00,2020-05-25 17:00:00,,0
1560,1.1.1.9.2.7.1,Afbraak + stros,34.375,27.5,41.25,2020-03-20 08:00:00,2020-04-23 17:00:00,,0
1561,1.1.1.9.2.7.2,Riolering + vloerplaat,27.375,21.9,32.85,2020-04-28 08:00:00,2020-05-25 17:00:00,,0
1562,1.1.1.9.2.8,Fietstunnel Fase 4 Afwerking fietstunnel,132.375,131.05,133.7,2020-05-29 08:00:00,2020-10-08 17:00:00,,0
1563,1.1.1.9.2.8.1,Afwerking fietstunnel Hardenvoortviaduct,103.375,82.7,124.05,2020-05-29 08:00:00,2020-09-09 17:00:00,,0
1564,1.1.1.9.2.8.2,Afronden opleverpunten fietstunnel Hardevoortviaduct,3.375,2.7,4.05,2020-10-05 08:00:00,2020-10-08 17:00:00,,0
1565,1.1.1.9.3,152 Keermuur aanloophelling Hardenvoortviaduct (groene zone op plan) -> Timing nog te bespreken,1250.0416666667006,1237.54,1262.54,2016-04-11 08:00:00,2019-09-13 09:00:00,,0
1566,1.1.1.9.3.1, MS Einde der werken 152 Keermuur aanloophelling Hardenvoortviaduct (groene zone op plan),0.0,0.0,0.0,2018-06-07 17:00:00,2018-06-07 17:00:00,,0
1567,1.1.1.9.3.2,Zone betonnen U-bak,759.375,751.78,766.97,2016-04-11 08:00:00,2018-05-10 17:00:00,,0
1568,1.1.1.9.3.2.1,Leeghalen en ontmantelen gebouwen,18.375,14.7,22.05,2016-04-11 08:00:00,2016-04-29 17:00:00,,0
1569,1.1.1.9.3.2.2,Asbestverwijdering in gebouwen,15.375,12.3,18.45,2016-04-25 08:00:00,2016-05-10 17:00:00,,0
1570,1.1.1.9.3.2.3,Leeghalen en ontmantelen loods,29.375,23.5,35.25,2016-04-11 08:00:00,2016-05-10 17:00:00,,0
1571,1.1.1.9.3.2.4,Afbraak bovenbouw gebouwen,38.375,30.7,46.05,2016-05-17 08:00:00,2016-06-24 17:00:00,,0
1572,1.1.1.9.3.2.5,Afbraak werkplaats COD,18.375,14.7,22.05,2016-06-20 08:00:00,2016-07-08 17:00:00,,0
1573,1.1.1.9.3.2.6,"Peilen, (ver)plaatsen en aanpassen nutsleidingen thv trambaan",79.16666666670062,63.33,95.0,2016-07-11 08:00:00,2016-09-28 12:00:00,,0
1574,1.1.1.9.3.2.7,Aanpassingswerken COD,25.375,20.3,30.45,2016-06-13 08:00:00,2016-07-08 17:00:00,,0
1575,1.1.1.9.3.2.8,Aangepast datum ELIA-kabel uit dienst: 23/01/2017,0.0,0.0,0.0,2017-01-20 17:00:00,2017-01-20 17:00:00,,0
1576,1.1.1.9.3.2.9,Beschoeiing in voetpad,59.375,47.5,71.25,2017-01-31 08:00:00,2017-03-31 17:00:00,,0
1577,1.1.1.9.3.2.10,Voorbereidende grondwerken,1.375,1.1,1.65,2017-08-01 08:00:00,2017-08-02 17:00:00,,0
1578,1.1.1.9.3.2.11,funderingspalen,4.375,3.5,5.25,2017-08-28 08:00:00,2017-09-01 17:00:00,,0
1579,1.1.1.9.3.2.12,Bijkomende grondkering,69.375,68.68,70.07,2017-09-06 08:00:00,2017-11-14 17:00:00,,0
1580,1.1.1.9.3.2.12.1,Uitgraving ,6.375,5.1,7.65,2017-09-06 08:00:00,2017-09-12 17:00:00,,0
1581,1.1.1.9.3.2.12.2,Werkvloer in magere beton,6.375,5.1,7.65,2017-09-06 08:00:00,2017-09-12 17:00:00,,0
1582,1.1.1.9.3.2.12.3,Afpikeren van funderingspalen + opkuis,11.375,9.1,13.65,2017-09-11 08:00:00,2017-09-22 17:00:00,,0
1583,1.1.1.9.3.2.12.4,Ombuigen wapening,1.375,1.1,1.65,2017-10-02 08:00:00,2017-10-03 17:00:00,,0
1584,1.1.1.9.3.2.12.5,Wapening,6.375,5.1,7.65,2017-10-03 08:00:00,2017-10-09 17:00:00,,0
1585,1.1.1.9.3.2.12.6,Storten van betonplaat onder L-elementen,0.375,0.3,0.45,2017-10-10 08:00:00,2017-10-10 17:00:00,,0
1586,1.1.1.9.3.2.12.7,L-element plaatsen,6.375,5.1,7.65,2017-10-12 08:00:00,2017-10-18 17:00:00,,0
1587,1.1.1.9.3.2.12.8,Aanstorting L-elementen,4.375,3.5,5.25,2017-10-16 08:00:00,2017-10-20 17:00:00,,0
1588,1.1.1.9.3.2.12.9,Aanvulling L-elementen,1.375,1.1,1.65,2017-11-13 08:00:00,2017-11-14 17:00:00,,0
1589,1.1.1.9.3.2.13,Overige zaken,204.375,202.33,206.42,2017-10-18 08:00:00,2018-05-10 17:00:00,,0
1590,1.1.1.9.3.2.13.1,Opbraakwerken kelders thv U bak,2.375,1.9,2.85,2017-10-18 08:00:00,2017-10-20 17:00:00,,0
1591,1.1.1.9.3.2.13.2,Aanvulling tot onderkant U-bak,1.375,1.1,1.65,2017-10-23 08:00:00,2017-10-24 17:00:00,,0
1592,1.1.1.9.3.2.13.3,Rioleringen,2.375,1.9,2.85,2017-11-21 08:00:00,2017-11-23 17:00:00,,0
1593,1.1.1.9.3.2.13.4,Vloerplaat keermuur,25.375,20.3,30.45,2017-12-04 08:00:00,2017-12-29 17:00:00,,0
1594,1.1.1.9.3.2.13.5,Opstaande wanden,46.375,37.1,55.65,2017-12-11 08:00:00,2018-01-26 17:00:00,,0
1595,1.1.1.9.3.2.13.6,Opbraak beschoeiing,4.375,3.5,5.25,2018-02-12 08:00:00,2018-02-16 17:00:00,,0
1596,1.1.1.9.3.2.13.7, Aanvulling opstaande wanden,4.375,3.5,5.25,2018-02-12 08:00:00,2018-02-16 17:00:00,,0
1597,1.1.1.9.3.2.13.8,Aanvullingen,4.375,3.5,5.25,2018-01-15 08:00:00,2018-01-19 17:00:00,,0
1598,1.1.1.9.3.2.13.9,Metselwerken,87.375,69.9,104.85,2018-01-29 08:00:00,2018-04-26 17:00:00,,0
1599,1.1.1.9.3.2.13.10,Leuningen,13.375,10.7,16.05,2018-04-27 08:00:00,2018-05-10 17:00:00,,0
1600,1.1.1.9.3.3,"Studie, goedkeuring, voorbereidingen bijkomende grondkering",246.375,243.91,248.84,2016-11-01 08:00:00,2017-07-05 17:00:00,,0
1601,1.1.1.9.3.3.1,Studie grondkering,115.375,92.3,138.45,2016-11-01 08:00:00,2017-02-24 17:00:00,,0
1602,1.1.1.9.3.3.2,Beslissingsvorming grondkering,84.375,67.5,101.25,2017-02-27 08:00:00,2017-05-22 17:00:00,,0
1603,1.1.1.9.3.3.3,Beslissing langs U-bak ook L-elementen,0.0,0.0,0.0,2017-03-31 17:00:00,2017-03-31 17:00:00,,0
1604,1.1.1.9.3.3.4,Finaliseren studie + bijkomende studie L-elementen langs U-bak,56.375,45.1,67.65,2017-04-03 08:00:00,2017-05-29 17:00:00,,0
1605,1.1.1.9.3.3.5,Voorbereiding en bestelling materialen,36.375,29.1,43.65,2017-05-30 08:00:00,2017-07-05 17:00:00,,0
1606,1.1.1.9.3.4,Zone ten zuiden van betonnen U-bak,189.375,187.48,191.27,2017-08-03 08:00:00,2018-02-08 17:00:00,,0
1607,1.1.1.9.3.4.1,Voorbereidende grondwerken,6.375,5.1,7.65,2017-08-03 08:00:00,2017-08-09 17:00:00,,0
1608,1.1.1.9.3.4.2,Funderingspalen,8.375,6.7,10.05,2017-09-04 08:00:00,2017-09-12 17:00:00,,0
1609,1.1.1.9.3.4.3,Bijkomende grondkering zuiden U-bak,62.375,61.75,63.0,2017-09-15 08:00:00,2017-11-16 17:00:00,,0
1610,1.1.1.9.3.4.3.1,Uitgraving ,6.375,5.1,7.65,2017-09-15 08:00:00,2017-09-21 17:00:00,,0
1611,1.1.1.9.3.4.3.2,Werkvloer in magere beton,6.375,5.1,7.65,2017-09-15 08:00:00,2017-09-21 17:00:00,,0
1612,1.1.1.9.3.4.3.3,Afpikeren van funderingspalen + opkuis,3.375,2.7,4.05,2017-09-25 08:00:00,2017-09-28 17:00:00,,0
1613,1.1.1.9.3.4.3.4,Ombuigen wapening,1.375,1.1,1.65,2017-10-02 08:00:00,2017-10-03 17:00:00,,0
1614,1.1.1.9.3.4.3.5,Wapening,7.375,5.9,8.85,2017-10-03 08:00:00,2017-10-10 17:00:00,,0
1615,1.1.1.9.3.4.3.6,Storten van betonplaat onder L-elementen,1.375,1.1,1.65,2017-10-11 08:00:00,2017-10-12 17:00:00,,0
1616,1.1.1.9.3.4.3.7,L-element plaatsen,12.375,9.9,14.85,2017-10-20 08:00:00,2017-11-01 17:00:00,,0
1617,1.1.1.9.3.4.3.8,Aanstorting L-elementen,10.375,8.3,12.45,2017-10-24 08:00:00,2017-11-03 17:00:00,,0
1618,1.1.1.9.3.4.3.9,Aanvulling L-elementen,3.375,2.7,4.05,2017-11-13 08:00:00,2017-11-16 17:00:00,,0
1619,1.1.1.9.3.4.4,Overige zaken,80.375,79.57,81.18,2017-11-20 08:00:00,2018-02-08 17:00:00,,0
1620,1.1.1.9.3.4.4.1,Rioleringen,9.375,7.5,11.25,2017-11-20 08:00:00,2017-11-29 17:00:00,,0
1621,1.1.1.9.3.4.4.2,"Ingegraven leidingen, trekputten, funderingen masten",10.375,8.3,12.45,2018-01-29 08:00:00,2018-02-08 17:00:00,,0
1622,1.1.1.9.3.5,Werken over volledig tracé,644.0416666667006,637.6,650.48,2017-12-08 08:00:00,2019-09-13 09:00:00,,0
1623,1.1.1.9.3.5.1,Aanleg feederkabel vanuit TS Artesis,6.375,5.1,7.65,2017-12-08 08:00:00,2017-12-14 17:00:00,,0
1624,1.1.1.9.3.5.2,Spoorbedding,18.375,14.7,22.05,2018-01-08 08:00:00,2018-01-26 17:00:00,,0
1625,1.1.1.9.3.5.3,"Spoorpanelen, lichten en shiften",41.375,33.1,49.65,2018-01-23 08:00:00,2018-03-05 17:00:00,,0
1626,1.1.1.9.3.5.4,Kift beton,5.375,4.3,6.45,2018-03-01 08:00:00,2018-03-06 17:00:00,,0
1627,1.1.1.9.3.5.5,wapening,6.375,5.1,7.65,2018-03-02 08:00:00,2018-03-08 17:00:00,,0
1628,1.1.1.9.3.5.6,Scheidingsmuur school,53.375,42.7,64.05,2017-12-11 08:00:00,2018-02-02 17:00:00,,0
1629,1.1.1.9.3.5.7,Bestrating trambaan,23.375,18.7,28.05,2018-03-05 08:00:00,2018-03-28 17:00:00,,0
1630,1.1.1.9.3.5.8,Ophangen bovenleiding,27.375,21.9,32.85,2018-03-09 08:00:00,2018-04-05 17:00:00,,0
1631,1.1.1.9.3.5.9,Testperiode OG Tram,476.0416666667006,380.83,571.25,2018-05-25 08:00:00,2019-09-13 09:00:00,,0
1632,1.1.1.9.3.5.10,Renovatiewerken viaduct (zone trambaan),137.375,109.9,164.85,2019-04-01 08:00:00,2019-08-16 17:00:00,,0
