node_id,wbs,task_name,duration,optimistic_time,pessimistic_time,baseline_start,baseline_end,resource_demand,total_cost
0,1,Project,1661.375,1644.76,1677.99,2016-03-01 08:00:00,2020-09-17 17:00:00,,0
1,1.1,DP2 OPBO,1661.375,1644.76,1677.99,2016-03-01 08:00:00,2020-09-17 17:00:00,,0
2,1.1.1,DP2 OPBO (OPERAPLEIN BOVENGROND),1661.375,1644.76,1677.99,2016-03-01 08:00:00,2020-09-17 17:00:00,,0
3,1.1.1.1,START OPBO1,0.625,0.5,0.75,2016-03-01 08:00:00,2016-02-29 17:00:00,,0
4,1.1.1.2,FINISH OPBO,0.0,0.0,0.0,2020-09-17 17:00:00,2020-09-17 17:00:00,,0
5,1.1.1.3,00 Externe relaties,1661.375,1644.76,1677.99,2016-03-01 08:00:00,2020-09-17 17:00:00,,0
6,1.1.1.3.1,Inkomende relaties naar DP2,409.0,404.91,413.09,2018-09-14 17:00:00,2019-10-28 17:00:00,,0
7,1.1.1.3.1.1,"RV007 uit DP3 naar DP2, Dakplaat Zone C Keyserlei Zuid gereed voor bestrating",0.0,0.0,0.0,2019-04-05 17:00:00,2019-04-05 17:00:00,,0
8,1.1.1.3.1.2,"RV 10 uit DP3, Dakplaat Zone W8 (Zone C Keyserlei centraal) gereed voor bestrating",0.0,0.0,0.0,2018-09-21 17:00:00,2018-09-21 17:00:00,,0
9,1.1.1.3.1.3,"RV 11 uit DP3, Dakplaat Zone W5 (Teniers zuid, trap T0 en T4) gereed voor bestrating",0.0,0.0,0.0,2018-09-14 17:00:00,2018-09-14 17:00:00,,0
10,1.1.1.3.1.4,"RV012 uit DP3-2 naar DP2, Logistieke opening gedicht (kraan- en strossgat)",0.0,0.0,0.0,2019-03-05 17:00:00,2019-03-05 17:00:00,,0
11,1.1.1.3.1.5,"RV verval uit DP2 én DP3 naar DP1: DP1, DP2 én DP3 gereed voor afrol bovenleiding Rd-09 en Rd-10 (Kipdorpvest - Kipdorpbrug - tot nèt vóór Tunnelplaats)",0.0,0.0,0.0,2019-05-24 17:00:00,2019-05-24 17:00:00,,0
12,1.1.1.3.1.6,"RV014 uit DP3 naar DP2, Middenspanningscabine zuidhoek Kipdorpvest en Operaplein verwijderd",0.0,0.0,0.0,2018-11-16 17:00:00,2018-11-16 17:00:00,,0
13,1.1.1.3.1.7,RV016-1 uit DP3 naar DP2: Installatie bemaling verwijderd tbv bestrating,0.0,0.0,0.0,2019-02-15 17:00:00,2019-02-15 17:00:00,,0
14,1.1.1.3.1.8,RV017 uit DP3 naar DP2: Lichtput gereed voor start bestrating rond lichtput,0.0,0.0,0.0,2018-11-26 17:00:00,2018-11-26 17:00:00,,0
15,1.1.1.3.1.9,RV019 uit DP1 naar DP2: Ventweg naast tunneluitrit NO gereed ten behoeve van bussen ná gereed KW-nw (KW3),0.0,0.0,0.0,2019-01-21 17:00:00,2019-01-21 17:00:00,,0
16,1.1.1.3.1.10,"RV020 Finish knip Leien, autotunnels gereed (aansluitend op VO-11 light)",0.0,0.0,0.0,2019-10-28 17:00:00,2019-10-28 17:00:00,,0
17,1.1.1.3.1.11,"RV022, MP uit DP3-2 naar DP2: Staalwerk trambrug gereed - start Gemeentestraat fase J Kipdorpbrug-Operaplein en plaatsen sporen op trambrug",0.0,0.0,0.0,2018-10-29 17:00:00,2018-10-29 17:00:00,,0
18,1.1.1.3.1.12,RV027 uit DP3 naar DP2: Einde Hijsactie 700T kraan Kipdorpbrug - Start Dwarskabels tbv Rd01 en Rd02,0.0,0.0,0.0,2019-03-15 17:00:00,2019-03-15 17:00:00,,0
19,1.1.1.3.1.13,"RV023, MP uit DP3-2 naar DP2: Einde Betonstructuren ventweg west - start Ventweg Kipdorpbrug zuidwest",0.0,0.0,0.0,2019-02-01 17:00:00,2019-02-01 17:00:00,,0
20,1.1.1.3.1.14,"RV028, MP uit DP3-2 naar DP2: Einde keerconstructie trambaan O&W - Start fundering trambaan noord van Kipdorpbrug",0.0,0.0,0.0,2019-04-05 17:00:00,2019-04-05 17:00:00,,0
21,1.1.1.3.1.15,"RV029, uit DP3-2 naar DP2: Einde metselwerken archeologische brug - start ventweg werfdeel IV",0.0,0.0,0.0,2019-08-09 17:00:00,2019-08-09 17:00:00,,0
22,1.1.1.3.1.16,"RV034, uit DP3-2 naar DP2: T28 Trappencomplex gereed- Start aanleg Perron Roosevelt",0.375,0.3,0.45,2019-06-28 08:00:00,2019-06-28 17:00:00,,0
23,1.1.1.3.2,Uitgaande relaties vanuit DP2,1661.375,1644.76,1677.99,2016-03-01 08:00:00,2020-09-17 17:00:00,,0
24,1.1.1.3.2.1,"Contractmijlpaal uit DP2 naar DMP BCT5a vol (oost -west tramlijn en noord-zuid tramlijn), (actie KVA, nog hangen aan kipdorpbrug)",0.0,0.0,0.0,2018-08-13 17:00:00,2018-08-13 17:00:00,,0
25,1.1.1.3.2.2,ContractMijlpaal uit DP2 naar DMP VO-08 light (Operaplein Bovengrond toegankelijk voor publiek excl Keyserlei en Teniersplaats),0.0,0.0,0.0,2018-07-18 17:00:00,2018-07-18 17:00:00,,0
26,1.1.1.3.2.3,Contractmijlpaal uit DP2 naar DMP VO-09a (Publiek domijn Keyserlei),0.0,0.0,0.0,2019-07-05 17:00:00,2019-07-05 17:00:00,,0
27,1.1.1.3.2.4,ContractMijlpaal uit DP2 naar DMP VO-12 (Einde der werken),0.0,0.0,0.0,2020-09-17 17:00:00,2020-09-17 17:00:00,,0
28,1.1.1.3.2.5,Contractmijlpaal uit DP2 naar DMP testperiode OG BCT5 Tram Operaplein-Leien Noord-Zuid),0.0,0.0,0.0,2019-07-19 17:00:00,2019-07-19 17:00:00,,0
29,1.1.1.3.2.6,Contractmijlpaal uit DP2 naar DMP testperiode ON BCT5 Tram Operaplein-Leien Noord-Zuid),0.0,0.0,0.0,2019-06-21 17:00:00,2019-06-21 17:00:00,,0
30,1.1.1.3.2.7,Contractmijlpaal uit DP2 naar DMP afgiftedatum  BCT5 (Tram Operaplein-Leien Noord-Zuid),0.0,0.0,0.0,2019-09-20 17:00:00,2019-09-20 17:00:00,,0
31,1.1.1.3.2.8,Raakvlak maaiveld rond lichtput gereed tbv link naar VO-08 (kopie mijlpaal van Contractmijlpaal uit DP2 naar DMP testperiode ON BCT5),0.0,0.0,0.0,2019-03-27 17:00:00,2019-03-27 17:00:00,,0
32,1.1.1.3.2.9,Contractmijlpaal uit DP2 naar DMP BCT5' (Rooseveltplaats De Lijn Buskwaranten),0.0,0.0,0.0,2019-03-21 17:00:00,2019-03-21 17:00:00,,0
33,1.1.1.3.2.10,RV016-2 uit DP2 naar DP3: Einde aanleg voetgangers en fietserscorridor - Start Kipdorpbrug,0.0,0.0,0.0,2019-03-01 17:00:00,2019-03-01 17:00:00,,0
34,1.1.1.3.2.11,"Contractmijlpaal uit DP1 NAAR DMP VO-08 (Operaplein Bovengrond, incl. Teniersplaats)",0.0,0.0,0.0,2019-06-18 17:00:00,2019-06-18 17:00:00,,0
35,1.1.1.3.2.12,RV015 Nader te bepalen raakvlak,0.0,0.0,0.0,2018-08-03 17:00:00,2018-08-03 17:00:00,,0
36,1.1.1.3.2.13,"RV021 uit DP2 naar DP3, Nieuwe feederkabel tbv aansl V015, V016, V017 en V018 aangeloten en in gebruik gesteld tbv verwijderen bestaande Feederkabels F016 en F019",0.0,0.0,0.0,2019-06-13 17:00:00,2019-06-13 17:00:00,,0
37,1.1.1.3.2.14,Testen Rooseveltplaats,0.375,0.37,0.38,2020-01-13 08:00:00,2020-01-13 17:00:00,,0
38,1.1.1.3.2.14.1,Uitvoeren type 2 testen B10 (Secundair E-Bord)  - STUURBORD - MASTER-PLC,0.375,0.3,0.45,2020-01-13 08:00:00,2020-01-13 17:00:00,,0
39,1.1.1.3.2.15,Testperiode testtram ON,1235.375,1223.02,1247.73,2016-03-01 08:00:00,2019-07-19 17:00:00,,0
40,1.1.1.3.2.15.1,11 Frankrijklei,786.375,629.1,943.65,2016-03-01 08:00:00,2018-04-26 17:00:00,,0
41,1.1.1.3.2.15.2,"Kopietaak DP1: Bct5 gereed voor rijden met testtram, Geen beschikbaarheid matrieel van OG",0.375,0.3,0.45,2019-07-19 08:00:00,2019-07-19 17:00:00,,0
42,1.1.1.3.2.16,200 voorbereidende werken + KNIP leien,45.375,44.92,45.83,2017-04-24 08:00:00,2017-06-08 17:00:00,,0
43,1.1.1.3.2.16.1,Voorbereiden uitvoering,31.375,25.1,37.65,2017-04-24 08:00:00,2017-05-25 17:00:00,,0
44,1.1.1.3.2.16.2,Uitvoering knip (3 fasen) -> Start za 8:00 - Einde ma 6:00,2.375,1.9,2.85,2017-06-06 08:00:00,2017-06-08 17:00:00,,0
45,1.1.1.4,"11 Frankrijklei (verplaatst uit bestand DP1, want geregeld door KVR)",617.375,611.2,623.55,2017-10-09 08:00:00,2019-06-18 17:00:00,,0
46,1.1.1.4.1,110 Frankrijklei,185.375,183.52,187.23,2017-11-17 08:00:00,2018-05-21 17:00:00,,0
47,1.1.1.4.1.1,Wegenis Stoopstraat-Maria Theresialei - Oostzijde,185.375,183.52,187.23,2017-11-17 08:00:00,2018-05-21 17:00:00,,0
48,1.1.1.4.1.1.1,Maria-Theresialei tot Keyserlei,185.375,183.52,187.23,2017-11-17 08:00:00,2018-05-21 17:00:00,,0
49,1.1.1.4.1.1.1.1,Ventweg Oost,104.375,83.5,125.25,2017-11-17 08:00:00,2018-03-01 17:00:00,,0
50,1.1.1.4.1.1.1.2,"Ventweg + Stoep West (staat dubbel vermeld, deze taak verwijderd)",20.375,16.3,24.45,2018-05-01 08:00:00,2018-05-21 17:00:00,,0
51,1.1.1.4.2,112 Ventwegen rond tunneltoeritten zuid,617.375,611.2,623.55,2017-10-09 08:00:00,2019-06-18 17:00:00,,0
52,1.1.1.4.2.1,Trambaan (Frankrijklei: Maria-Theresialei tot Keyserlei),121.375,120.16,122.59,2019-01-28 08:00:00,2019-05-29 17:00:00,,0
53,1.1.1.4.2.1.1,Aanleg trambaan compleet,121.375,120.16,122.59,2019-01-28 08:00:00,2019-05-29 17:00:00,,0
54,1.1.1.4.2.1.1.1,"Aanbrengen wachtbuizen (Frankrijklei, Maria Theresialei tot Keyserlei: trambaan)",29.375,23.5,35.25,2019-01-28 08:00:00,2019-02-26 17:00:00,,0
55,1.1.1.4.2.1.1.2,Aanbrengen bedding,2.375,1.9,2.85,2019-02-27 08:00:00,2019-03-01 17:00:00,,0
56,1.1.1.4.2.1.1.3,Aanleg spoor (nader te detailleren door BRO/IWI),16.375,13.1,19.65,2019-03-11 08:00:00,2019-03-27 17:00:00,,0
57,1.1.1.4.2.1.1.4,Aanbrengen Lineaire elementen,1.375,1.1,1.65,2019-03-28 08:00:00,2019-03-29 17:00:00,,0
58,1.1.1.4.2.1.1.5,Aanbrengen Kiftbeton,1.375,1.1,1.65,2019-03-28 08:00:00,2019-03-29 17:00:00,,0
59,1.1.1.4.2.1.1.6,Aanbrengen kasseiverharding in grint,28.375,22.7,34.05,2019-04-09 08:00:00,2019-05-07 17:00:00,,0
60,1.1.1.4.2.1.1.7,Keten verwijderd,0.0,0.0,0.0,2019-04-15 17:00:00,2019-04-15 17:00:00,,0
61,1.1.1.4.2.1.1.8,Vroegste start Bovenleiding Rd-01 en Rd-02 tpv ATZ (Frankrijklei: tussen Stoorpstraat-Louize Marialei en Rooseveltplaats),0.0,0.0,0.0,2019-05-10 17:00:00,2019-05-10 17:00:00,,0
62,1.1.1.4.2.1.1.9,Masten bovenleiding Rd-01 en Rd-02 deel 2 (zuiddeel),47.375,46.9,47.85,2019-02-14 08:00:00,2019-04-02 17:00:00,,0
63,1.1.1.4.2.1.1.9.1,"Funderingen BVL masten nabij U-turn (mastnrs 0209, 2010, 0211), oa t.b.v. Rd-01 en Rd-02 naar Frankrijklei",1.375,1.1,1.65,2019-02-14 08:00:00,2019-02-15 17:00:00,,0
64,1.1.1.4.2.1.1.9.2,"Plaatsen BVL masten nabij U-turn (mastnrs 0209, 2010, 0211), oa t.b.v. Rd-01 en Rd-02 naar Frankrijklei",1.375,1.1,1.65,2019-04-01 08:00:00,2019-04-02 17:00:00,,0
65,1.1.1.4.2.1.1.10,Rd-01 en Rd-02 deel 2 (U-turn - Frankrijklei tot Stoopstraat/Louiza Marialei),43.375,42.94,43.81,2019-04-16 08:00:00,2019-05-29 17:00:00,,0
66,1.1.1.4.2.1.1.10.1,Montage dwarskabels en GFK's tbv rijdraad Rd-01 en Rd-02 deel 2,6.375,5.1,7.65,2019-04-16 08:00:00,2019-04-22 17:00:00,,0
67,1.1.1.4.2.1.1.10.2,Afrol en montage BVL deel zuid Rd-01 en Rd-02 (BVL bij start taak onder spanning bij aanvang montage,9.375,7.5,11.25,2019-05-13 08:00:00,2019-05-22 17:00:00,,0
68,1.1.1.4.2.1.1.10.3,Afrol en montage BijDraadd en rijdraad Rd-01 en Rd-02,6.375,5.1,7.65,2019-05-23 08:00:00,2019-05-29 17:00:00,,0
69,1.1.1.4.2.2,1121 Zuid-oost (Maria Therasielei tot Keyserlei incl helft U-turn),617.375,611.2,623.55,2017-10-09 08:00:00,2019-06-18 17:00:00,,0
70,1.1.1.4.2.2.1,Opbraak secanspalen,4.375,3.5,5.25,2017-10-09 08:00:00,2017-10-13 17:00:00,,0
71,1.1.1.4.2.2.2,"Wachtbuizen OV, de Lijn, ….",1.375,1.1,1.65,2018-11-05 08:00:00,2018-11-06 17:00:00,,0
72,1.1.1.4.2.2.3,Grondwerk,1.375,1.1,1.65,2018-11-07 08:00:00,2018-11-08 17:00:00,,0
73,1.1.1.4.2.2.4,Sorteerstraat ,4.375,3.5,5.25,2017-10-16 08:00:00,2017-10-20 17:00:00,,0
74,1.1.1.4.2.2.5,Waterslikkers,4.375,3.5,5.25,2018-11-09 08:00:00,2018-11-13 17:00:00,,0
75,1.1.1.4.2.2.6,Fundering greppel in graniet,1.375,1.1,1.65,2018-11-15 08:00:00,2018-11-16 17:00:00,,0
76,1.1.1.4.2.2.7,Fundering afwerking.,1.375,1.1,1.65,2018-11-19 08:00:00,2018-11-20 17:00:00,,0
77,1.1.1.4.2.2.8,Greppel in graniet,1.375,1.1,1.65,2018-11-21 08:00:00,2018-11-22 17:00:00,,0
78,1.1.1.4.2.2.9,Grondwerk,3.375,2.7,4.05,2018-11-23 08:00:00,2018-11-26 17:00:00,,0
79,1.1.1.4.2.2.10,OF + fundering,1.375,1.1,1.65,2018-11-27 08:00:00,2018-11-28 17:00:00,,0
80,1.1.1.4.2.2.11,Boordstenen,29.375,23.5,35.25,2018-11-29 08:00:00,2018-12-28 17:00:00,,0
81,1.1.1.4.2.2.12,Fundering greppel in graniet,2.375,1.9,2.85,2019-01-14 08:00:00,2019-01-16 17:00:00,,0
82,1.1.1.4.2.2.13,Fundering rijweg en parkeerstrook (Zuid-oostzijde incl helft U-turn??) ,5.375,4.3,6.45,2019-01-17 08:00:00,2019-01-22 17:00:00,,0
83,1.1.1.4.2.2.14,Waterslikkers plaatsen,2.375,1.9,2.85,2019-01-23 08:00:00,2019-01-25 17:00:00,,0
84,1.1.1.4.2.2.15,Verharding parkeerstrook,7.375,5.9,8.85,2019-01-28 08:00:00,2019-02-04 17:00:00,,0
85,1.1.1.4.2.2.16,Verharding asfalt ventweg OL,5.375,4.3,6.45,2019-02-14 08:00:00,2019-02-19 17:00:00,,0
86,1.1.1.4.2.2.17,"Openbare verlichting (zuid-oost , Maria Therasielei tot Keyserlei incl helft U-turn)",6.375,5.1,7.65,2019-02-20 08:00:00,2019-02-26 17:00:00,,0
87,1.1.1.4.2.2.18,Afronden opleverpunten en wijzigingen OG,47.375,37.9,56.85,2019-02-27 08:00:00,2019-04-15 17:00:00,,0
88,1.1.1.4.2.2.19,Voet-fietspad hoek Keyserlei-Frankrijklei,85.375,84.52,86.23,2019-03-25 08:00:00,2019-06-18 17:00:00,,0
89,1.1.1.4.2.2.19.1,Plaatsen dakdichting (Voet-fietspad hoek Keyserlei-Frankrijklei),18.375,14.7,22.05,2019-03-25 08:00:00,2019-04-12 17:00:00,,0
90,1.1.1.4.2.2.19.2,Aanvullen dakplaat-verplaatsen nuts,4.375,3.5,5.25,2019-04-29 08:00:00,2019-05-03 17:00:00,,0
91,1.1.1.4.2.2.19.3,Plaatsen onder-fundering,6.375,5.1,7.65,2019-05-07 08:00:00,2019-05-13 17:00:00,,0
92,1.1.1.4.2.2.19.4,Plaatsen Lineaire elementen,2.375,1.9,2.85,2019-05-14 08:00:00,2019-05-16 17:00:00,,0
93,1.1.1.4.2.2.19.5,Bestrating voetpad,10.375,8.3,12.45,2019-05-17 08:00:00,2019-05-27 17:00:00,,0
94,1.1.1.4.2.2.19.6,Plaatsen fundering fietspad,1.375,1.1,1.65,2019-05-28 08:00:00,2019-05-29 17:00:00,,0
95,1.1.1.4.2.2.19.7,Plaatsen OL-TL asfalt (Voet-fietspad hoek Keyserlei-Frankrijklei),1.375,1.1,1.65,2019-06-17 08:00:00,2019-06-18 17:00:00,,0
96,1.1.1.4.2.3,Zuid-west (Maria Therasielei tot Keyserlei incl helft U-turn),500.375,495.37,505.38,2017-11-28 08:00:00,2019-04-12 17:00:00,,0
97,1.1.1.4.2.3.1,"Voorbereidingen, signalisatie en opbraakwerken",6.375,5.1,7.65,2017-11-28 08:00:00,2017-12-04 17:00:00,,0
98,1.1.1.4.2.3.2,"Peilen, (ver)plaatsen en aanpassen restant langse nutsleidingen (Braeckelmansstraat - Teniersplaats)2",55.375,44.3,66.45,2018-03-01 08:00:00,2018-04-25 17:00:00,,0
99,1.1.1.4.2.3.3,Archeologie,18.375,14.7,22.05,2018-07-09 08:00:00,2018-07-27 17:00:00,,0
100,1.1.1.4.2.3.4,Spoorbedding,3.375,2.7,4.05,2018-09-10 08:00:00,2018-09-13 17:00:00,,0
101,1.1.1.4.2.3.5,"Ingegraven leidingen, trekputten, funderingen masten",11.375,9.1,13.65,2018-11-19 08:00:00,2018-11-30 17:00:00,,0
102,1.1.1.4.2.3.6,Boordsteen trambaan (alléén tpvU-turn),2.375,1.9,2.85,2018-12-03 08:00:00,2018-12-05 17:00:00,,0
103,1.1.1.4.2.3.7,Spoorwerken  (alléén tpvU-turn),4.375,3.5,5.25,2018-11-22 08:00:00,2018-11-26 17:00:00,,0
104,1.1.1.4.2.3.8,Bestrating trambusbaan  (alléén tpvU-turn),8.375,6.7,10.05,2018-11-27 08:00:00,2018-12-05 17:00:00,,0
105,1.1.1.4.2.3.9,Rioleringswerken,11.375,9.1,13.65,2018-06-25 08:00:00,2018-07-06 17:00:00,,0
106,1.1.1.4.2.3.10,Slokkeraansluitingen,4.375,3.5,5.25,2018-07-09 08:00:00,2018-07-13 17:00:00,,0
107,1.1.1.4.2.3.11,Bomenvisie,4.375,3.5,5.25,2018-09-10 08:00:00,2018-09-14 17:00:00,,0
108,1.1.1.4.2.3.12,Dienstriolering + Huisaansluitingen,18.375,14.7,22.05,2018-09-24 08:00:00,2018-10-12 17:00:00,,0
109,1.1.1.4.2.3.13,Wachtbuizen OV en glasvezel,21.375,17.1,25.65,2018-09-24 08:00:00,2018-10-15 17:00:00,,0
110,1.1.1.4.2.3.14,Grondwerk wegenis,9.375,7.5,11.25,2018-10-16 08:00:00,2018-10-25 17:00:00,,0
111,1.1.1.4.2.3.15,Onderfundering wegenis + fietspad,6.375,5.1,7.65,2018-10-16 08:00:00,2018-10-22 17:00:00,,0
112,1.1.1.4.2.3.16,Grondwerk fietspad en voetpad,10.375,8.3,12.45,2018-10-16 08:00:00,2018-10-26 17:00:00,,0
113,1.1.1.4.2.3.17,Boordstenen fietpad,4.375,3.5,5.25,2018-10-25 08:00:00,2018-10-29 17:00:00,,0
114,1.1.1.4.2.3.18,Fundering voetpad en fietspad,3.375,2.7,4.05,2018-10-30 08:00:00,2018-11-02 17:00:00,,0
115,1.1.1.4.2.3.19,Fundering ventweg type IA,2.375,1.9,2.85,2018-11-07 08:00:00,2018-11-09 17:00:00,,0
116,1.1.1.4.2.3.20,Fundering mager beton,2.375,1.9,2.85,2018-11-13 08:00:00,2018-11-15 17:00:00,,0
117,1.1.1.4.2.3.21,Boordstenen ventweg,11.375,9.1,13.65,2018-11-16 08:00:00,2018-11-27 17:00:00,,0
118,1.1.1.4.2.3.22,Voetpad,20.375,16.3,24.45,2018-11-07 08:00:00,2018-11-27 17:00:00,,0
119,1.1.1.4.2.3.23,Greppel in natuursteen,5.375,4.3,6.45,2018-11-28 08:00:00,2018-12-03 17:00:00,,0
120,1.1.1.4.2.3.24,Kasseiverharding,2.375,1.9,2.85,2018-12-10 08:00:00,2018-12-12 17:00:00,,0
121,1.1.1.4.2.3.25,Fundering type IIA,0.375,0.3,0.45,2018-12-13 08:00:00,2018-12-13 17:00:00,,0
122,1.1.1.4.2.3.26,Asfalt 2x OL rijweg,0.375,0.3,0.45,2018-12-14 08:00:00,2018-12-14 17:00:00,,0
123,1.1.1.4.2.3.27,Putten ophalen,1.375,1.1,1.65,2018-12-17 08:00:00,2018-12-18 17:00:00,,0
124,1.1.1.4.2.3.28,Bermen,2.375,1.9,2.85,2018-12-17 08:00:00,2018-12-19 17:00:00,,0
125,1.1.1.4.2.3.29,Asfalt TL,0.375,0.3,0.45,2019-04-08 08:00:00,2019-04-08 17:00:00,,0
126,1.1.1.4.2.3.30,"Asfalt fietspad OL + TL (Zuid-west, Maria Therasielei tot Keyserlei excl hoek Frankrijklei - Keyserlei)",1.375,1.1,1.65,2019-04-11 08:00:00,2019-04-12 17:00:00,,0
127,1.1.1.5,20 KNIP Leien,1029.0,1018.71,1039.29,2017-06-02 17:00:00,2020-03-27 17:00:00,,0
128,1.1.1.5.1,Start knip Leien,0.0,0.0,0.0,2017-06-02 17:00:00,2017-06-02 17:00:00,,0
129,1.1.1.5.2,Einde knip leien ,0.375,0.3,0.45,2020-03-27 08:00:00,2020-03-27 17:00:00,,0
130,1.1.1.5.3,200 Algemene technische opbraakwerken over volledige zone,9.375,9.28,9.47,2017-06-06 08:00:00,2017-06-15 17:00:00,,0
131,1.1.1.5.3.1,"Opbraak en afkoppelen technische installaties (Bvl, etc)",9.375,7.5,11.25,2017-06-06 08:00:00,2017-06-15 17:00:00,,0
132,1.1.1.5.3.2,Volledige werfzone spanningsvrij,0.0,0.0,0.0,2017-06-07 17:00:00,2017-06-07 17:00:00,,0
133,1.1.1.6,21 Operaplein,1298.375,1285.39,1311.36,2016-03-01 08:00:00,2019-09-20 17:00:00,,0
134,1.1.1.6.1,"Voorbereidingen, signalisatie en opbraakwerken",20.375,16.3,24.45,2016-03-01 08:00:00,2016-03-21 17:00:00,,0
135,1.1.1.6.2,Archeologie,59.375,47.5,71.25,2016-03-15 08:00:00,2016-05-13 17:00:00,,0
136,1.1.1.6.3,Finish dakplaat W1 Oost,0.0,0.0,0.0,2018-02-12 17:00:00,2018-02-12 17:00:00,,0
137,1.1.1.6.4,Finish dakplaat W1 bis Oost,0.0,0.0,0.0,2018-02-28 17:00:00,2018-02-28 17:00:00,,0
138,1.1.1.6.5,Deel I kant Rooseveltplaats,218.375,216.19,220.56,2018-03-01 08:00:00,2018-10-05 17:00:00,,0
139,1.1.1.6.5.1,Aanvulling boven dakplaat,64.375,51.5,77.25,2018-03-01 08:00:00,2018-05-04 17:00:00,,0
140,1.1.1.6.5.2,Rioleringen huisaansluitingen-kolken,39.375,31.5,47.25,2018-05-07 08:00:00,2018-06-15 17:00:00,,0
141,1.1.1.6.5.3,Onderfundering type II,60.375,48.3,72.45,2018-05-07 08:00:00,2018-07-06 17:00:00,,0
142,1.1.1.6.5.4,Wachtbuizen + sleuf tractie,25.375,20.3,30.45,2018-07-09 08:00:00,2018-08-03 17:00:00,,0
143,1.1.1.6.5.5,Ingraven leidingen-trekputten-sokkels,18.375,14.7,22.05,2018-08-06 08:00:00,2018-08-24 17:00:00,,0
144,1.1.1.6.5.6,plaatsen kolken,4.375,3.5,5.25,2018-08-27 08:00:00,2018-08-31 17:00:00,,0
145,1.1.1.6.5.7,Fundering Mager beton,1.375,1.1,1.65,2018-09-03 08:00:00,2018-09-04 17:00:00,,0
146,1.1.1.6.5.8,Lineaire elementen,20.375,16.3,24.45,2018-09-05 08:00:00,2018-09-25 17:00:00,,0
147,1.1.1.6.5.9,Aanleg Trambaan-kiftbeton,13.375,10.7,16.05,2018-09-05 08:00:00,2018-09-18 17:00:00,,0
148,1.1.1.6.5.10,Bestrating granietverharding,30.375,24.3,36.45,2018-09-05 08:00:00,2018-10-05 17:00:00,,0
149,1.1.1.6.5.11,Finish dakplaat W2 Oost,0.0,0.0,0.0,2018-05-04 17:00:00,2018-05-04 17:00:00,,0
150,1.1.1.6.6,Deel II midden,158.0,156.42,159.58,2018-04-20 17:00:00,2018-09-25 17:00:00,,0
151,1.1.1.6.6.1,Aanvulling boven dakplaat,2.375,1.9,2.85,2018-05-07 08:00:00,2018-05-09 17:00:00,,0
152,1.1.1.6.6.2,Onderfundering type II,1.375,1.1,1.65,2018-05-10 08:00:00,2018-05-11 17:00:00,,0
153,1.1.1.6.6.3,Wachtbuizen + sleuf tractie,4.375,3.5,5.25,2018-05-28 08:00:00,2018-06-01 17:00:00,,0
154,1.1.1.6.6.4,Ingraven leidingen -trekputten ,4.375,3.5,5.25,2018-05-28 08:00:00,2018-06-01 17:00:00,,0
155,1.1.1.6.6.5,plaatsen kolken,4.375,3.5,5.25,2018-06-04 08:00:00,2018-06-08 17:00:00,,0
156,1.1.1.6.6.6,Aanleg trambaan-kiftbeton,13.375,10.7,16.05,2018-09-05 08:00:00,2018-09-18 17:00:00,,0
157,1.1.1.6.6.7,lineaire elementen,6.375,5.1,7.65,2018-09-19 08:00:00,2018-09-25 17:00:00,,0
158,1.1.1.6.6.8,Mager beton fundering,2.375,1.9,2.85,2018-06-11 08:00:00,2018-06-13 17:00:00,,0
159,1.1.1.6.6.9,Granietverharding,18.375,14.7,22.05,2018-06-11 08:00:00,2018-06-29 17:00:00,,0
160,1.1.1.6.6.10,Finish dakplaat W3 Oost,0.0,0.0,0.0,2018-04-20 17:00:00,2018-04-20 17:00:00,,0
161,1.1.1.6.6.11,Finish dakplaat W9,0.0,0.0,0.0,2018-06-29 17:00:00,2018-06-29 17:00:00,,0
162,1.1.1.6.7,Deel II kant Keyserlei,107.0,105.93,108.07,2018-04-02 17:00:00,2018-07-18 17:00:00,,0
163,1.1.1.6.7.1,Finish dakplaat W3 West,0.0,0.0,0.0,2018-04-03 17:00:00,2018-04-03 17:00:00,,0
164,1.1.1.6.7.2,Finish dakplaat W2 West,0.0,0.0,0.0,2018-04-02 17:00:00,2018-04-02 17:00:00,,0
165,1.1.1.6.7.3,Finish dakplaat W1 West,0.0,0.0,0.0,2018-04-27 17:00:00,2018-04-27 17:00:00,,0
166,1.1.1.6.7.4,Aanleg ventweg -voetpad,51.375,50.86,51.89,2018-05-28 08:00:00,2018-07-18 17:00:00,,0
167,1.1.1.6.7.4.1,Onderfundering - Aanvulling type II,4.375,3.5,5.25,2018-05-28 08:00:00,2018-06-01 17:00:00,,0
168,1.1.1.6.7.4.2,Riolering R8,1.375,1.1,1.65,2018-05-30 08:00:00,2018-05-31 17:00:00,,0
169,1.1.1.6.7.4.3,Huisaansluitingen-kolken,7.375,5.9,8.85,2018-06-01 08:00:00,2018-06-08 17:00:00,,0
170,1.1.1.6.7.4.4,Wachtbuizen + sleuf tractie,4.375,3.5,5.25,2018-06-04 08:00:00,2018-06-08 17:00:00,,0
171,1.1.1.6.7.4.5,Fundering rijwegen operaplein,4.375,3.5,5.25,2018-05-28 08:00:00,2018-06-01 17:00:00,,0
172,1.1.1.6.7.4.6,Betonverharding rijweg,1.375,1.1,1.65,2018-06-11 08:00:00,2018-06-12 17:00:00,,0
173,1.1.1.6.7.4.7,lineaire elementen,9.375,7.5,11.25,2018-06-13 08:00:00,2018-06-22 17:00:00,,0
174,1.1.1.6.7.4.8,Onderfundering voetpad,7.375,5.9,8.85,2018-06-26 08:00:00,2018-07-03 17:00:00,,0
175,1.1.1.6.7.4.9,Mager beton fundering voetpad,2.375,1.9,2.85,2018-07-04 08:00:00,2018-07-06 17:00:00,,0
176,1.1.1.6.7.4.10,"Granietverharding (DeelI kant Keyserlei, ventweg-voetpad)",9.375,7.5,11.25,2018-07-09 08:00:00,2018-07-18 17:00:00,,0
177,1.1.1.6.8,Werkzaamheden Operaplein aanleg tramspoor,199.375,197.38,201.37,2018-04-03 08:00:00,2018-10-19 17:00:00,,0
178,1.1.1.6.8.1,Finish dakplaat W10,0.0,0.0,0.0,2018-04-13 17:00:00,2018-04-13 17:00:00,,0
179,1.1.1.6.8.2,Voorbereidende werken Tram O-W fase A ,11.375,11.26,11.49,2018-04-16 08:00:00,2018-04-27 17:00:00,,0
180,1.1.1.6.8.2.1,Onderlaag beton dakplaat kipdorp,4.375,3.5,5.25,2018-04-16 08:00:00,2018-04-20 17:00:00,,0
181,1.1.1.6.8.2.2,Uitharden beton,4.375,3.5,5.25,2018-04-23 08:00:00,2018-04-27 17:00:00,,0
182,1.1.1.6.8.3,Start werkzaamheden BTR,0.0,0.0,0.0,2018-04-27 17:00:00,2018-04-27 17:00:00,,0
183,1.1.1.6.8.4,Spoorwerkzaamheden Oost-West fase A,45.375,44.92,45.83,2018-05-04 08:00:00,2018-06-18 17:00:00,,0
184,1.1.1.6.8.4.1,Trillingsdempende matten aanbrengen,0.375,0.3,0.45,2018-05-04 08:00:00,2018-05-04 17:00:00,,0
185,1.1.1.6.8.4.2,"Aanbrengen kruis 155K002 op stalen dwarsliggers, w205",11.375,11.26,11.49,2018-05-07 08:00:00,2018-05-18 17:00:00,,0
186,1.1.1.6.8.4.2.1,Inmeten en uitleggen tegels,1.375,1.1,1.65,2018-05-07 08:00:00,2018-05-08 17:00:00,,0
187,1.1.1.6.8.4.2.2,"Aanvoeren, lossen en opbouwen kruis 155K002",2.375,1.9,2.85,2018-05-09 08:00:00,2018-05-11 17:00:00,,0
188,1.1.1.6.8.4.2.3,Grof afstellen kruis ,5.375,4.3,6.45,2018-05-09 08:00:00,2018-05-14 17:00:00,,0
189,1.1.1.6.8.4.2.4,Opmeting en fijnafstellen,3.375,2.7,4.05,2018-05-15 08:00:00,2018-05-18 17:00:00,,0
190,1.1.1.6.8.4.2.5,Aanbrengen raillijfbekleding,3.375,2.7,4.05,2018-05-15 08:00:00,2018-05-18 17:00:00,,0
191,1.1.1.6.8.4.2.6,Aanbrengen event. Voorzieningen door BCO en/of Fabricom,1.375,1.1,1.65,2018-05-16 08:00:00,2018-05-17 17:00:00,,0
192,1.1.1.6.8.4.2.7,Herstellen spoor na werkzaamheden andere partijen,0.375,0.3,0.45,2018-05-18 08:00:00,2018-05-18 17:00:00,,0
193,1.1.1.6.8.4.3,"Aanbrengen kr155K005, 008, wls 155W925, 927 en 3 panelen op bet. dwls",20.375,20.17,20.58,2018-05-09 08:00:00,2018-05-29 17:00:00,,0
194,1.1.1.6.8.4.3.1,Inmeten en uitleggen tegels,1.375,1.1,1.65,2018-05-09 08:00:00,2018-05-10 17:00:00,,0
195,1.1.1.6.8.4.3.2,"Aanvoeren en inhijsen kruisen, wissels en panelen",1.375,1.1,1.65,2018-05-15 08:00:00,2018-05-16 17:00:00,,0
196,1.1.1.6.8.4.3.3,"Grof afstellen kruisen, wissels en panelen",3.375,2.7,4.05,2018-05-15 08:00:00,2018-05-18 17:00:00,,0
197,1.1.1.6.8.4.3.4,Opmeting en fijnafstellen,3.375,2.7,4.05,2018-05-21 08:00:00,2018-05-24 17:00:00,,0
198,1.1.1.6.8.4.3.5,Aanbrengen event. Voorzieningen door BCO en/of Fabricom,3.375,2.7,4.05,2018-05-25 08:00:00,2018-05-28 17:00:00,,0
199,1.1.1.6.8.4.3.6,Herstellen spoor na werkzaamheden andere partijen,0.375,0.3,0.45,2018-05-29 08:00:00,2018-05-29 17:00:00,,0
200,1.1.1.6.8.4.4,"Aanbrengen kr155K001, 155K006 en 2 panelen op stalen dwarsliggers",20.375,20.17,20.58,2018-05-11 08:00:00,2018-05-31 17:00:00,,0
201,1.1.1.6.8.4.4.1,Inmeten en uitleggen tegels,3.375,2.7,4.05,2018-05-11 08:00:00,2018-05-14 17:00:00,,0
202,1.1.1.6.8.4.4.2,"Aanvoeren, lossen en opbouwen kruisen en panelen",1.375,1.1,1.65,2018-05-17 08:00:00,2018-05-18 17:00:00,,0
203,1.1.1.6.8.4.4.3,Grof afstellen kruisen en panelen,1.375,1.1,1.65,2018-05-21 08:00:00,2018-05-22 17:00:00,,0
204,1.1.1.6.8.4.4.4,Opmeting en fijnafstellen,5.375,4.3,6.45,2018-05-25 08:00:00,2018-05-30 17:00:00,,0
205,1.1.1.6.8.4.4.5,Aanbrengen raillijfbekleding,2.375,1.9,2.85,2018-05-28 08:00:00,2018-05-30 17:00:00,,0
206,1.1.1.6.8.4.4.6,Aanbrengen event. Voorzieningen door BCO en/of Fabricom,1.375,1.1,1.65,2018-05-29 08:00:00,2018-05-30 17:00:00,,0
207,1.1.1.6.8.4.4.7,Herstellen spoor na werkzaamheden andere partijen,0.375,0.3,0.45,2018-05-31 08:00:00,2018-05-31 17:00:00,,0
208,1.1.1.6.8.4.5,Aanbrengen bovenlaag beton en laswerkzaamheden en afwerken spoor,17.375,17.2,17.55,2018-06-01 08:00:00,2018-06-18 17:00:00,,0
209,1.1.1.6.8.4.5.1,Oplevering spoor door BTR,0.375,0.3,0.45,2018-06-01 08:00:00,2018-06-01 17:00:00,,0
210,1.1.1.6.8.4.5.2,Fijnafstelling spoor (06:00-11:00 uur),3.375,2.7,4.05,2018-06-01 08:00:00,2018-06-04 17:00:00,,0
211,1.1.1.6.8.4.5.3,Aanbrengen bovenlaag beton,5.375,4.3,6.45,2018-06-01 08:00:00,2018-06-06 17:00:00,,0
212,1.1.1.6.8.4.5.4,Opmeting spoor na aanbrengen bovenlaag beton en event. aanpassen ,1.375,1.1,1.65,2018-06-07 08:00:00,2018-06-08 17:00:00,,0
213,1.1.1.6.8.4.5.5,Aanbrengen lassen (38 sts) (12sts per dag),4.375,3.5,5.25,2018-06-11 08:00:00,2018-06-15 17:00:00,,0
214,1.1.1.6.8.4.5.6,Herstellen raillijfbekleding,6.375,5.1,7.65,2018-06-12 08:00:00,2018-06-18 17:00:00,,0
215,1.1.1.6.8.5,Voorbereidende werken Tram O-W fase B,14.375,14.23,14.52,2018-04-16 08:00:00,2018-04-30 17:00:00,,0
216,1.1.1.6.8.5.1,Fase B1 Kant Van Ertbornstraat,14.375,14.23,14.52,2018-04-16 08:00:00,2018-04-30 17:00:00,,0
217,1.1.1.6.8.5.1.1,Opbraak verharding,1.375,1.1,1.65,2018-04-16 08:00:00,2018-04-17 17:00:00,,0
218,1.1.1.6.8.5.1.2,Grondwerk bedding,1.375,1.1,1.65,2018-04-18 08:00:00,2018-04-19 17:00:00,,0
219,1.1.1.6.8.5.1.3,Verlengen wachtbuizen,5.375,4.3,6.45,2018-04-20 08:00:00,2018-04-25 17:00:00,,0
220,1.1.1.6.8.5.1.4,Aanleg bedding,4.375,3.5,5.25,2018-04-26 08:00:00,2018-04-30 17:00:00,,0
221,1.1.1.6.8.6,Spoorwerkzaamheden fase Oost-West fase B1 kant Van Ertbornstraat,17.375,17.2,17.55,2018-06-18 08:00:00,2018-07-05 17:00:00,,0
222,1.1.1.6.8.6.1,"Aanbrengen wls 155W201,  206, kr. 155K004 en 10 panelen",9.375,9.28,9.47,2018-06-18 08:00:00,2018-06-27 17:00:00,,0
223,1.1.1.6.8.6.1.1,Inmeten en uitleggen tegels,1.375,1.1,1.65,2018-06-18 08:00:00,2018-06-19 17:00:00,,0
224,1.1.1.6.8.6.1.2,"Aanvoeren en inhijsen kruis, wissels en panelen",0.375,0.3,0.45,2018-06-20 08:00:00,2018-06-20 17:00:00,,0
225,1.1.1.6.8.6.1.3,"Grof afstellen kruisen, wissels en panelen",1.375,1.1,1.65,2018-06-20 08:00:00,2018-06-21 17:00:00,,0
226,1.1.1.6.8.6.1.4,Opmeting en fijnafstellen,3.375,2.7,4.05,2018-06-22 08:00:00,2018-06-25 17:00:00,,0
227,1.1.1.6.8.6.1.5,Aanbrengen event. Voorzieningen door BCO en/of Fabricom,0.375,0.3,0.45,2018-06-26 08:00:00,2018-06-26 17:00:00,,0
228,1.1.1.6.8.6.1.6,Herstellen spoor na werkzaamheden andere partijen,0.375,0.3,0.45,2018-06-27 08:00:00,2018-06-27 17:00:00,,0
229,1.1.1.6.8.6.2,Aanbrengen kiftbeton en laswerkzaamheden en afwerken spoor,7.375,7.3,7.45,2018-06-28 08:00:00,2018-07-05 17:00:00,,0
230,1.1.1.6.8.6.2.1,Oplevering spoor door BTR,0.375,0.3,0.45,2018-06-28 08:00:00,2018-06-28 17:00:00,,0
231,1.1.1.6.8.6.2.2,Fijnafstelling spoor (06:00-11:00 uur),0.375,0.3,0.45,2018-06-28 08:00:00,2018-06-28 17:00:00,,0
232,1.1.1.6.8.6.2.3,Aanbrengen kiftbeton,1.375,1.1,1.65,2018-06-28 08:00:00,2018-06-29 17:00:00,,0
233,1.1.1.6.8.6.2.4,Opmeting spoor na aanbrengen kiftbeton en event. aanpassen ,1.375,1.1,1.65,2018-07-02 08:00:00,2018-07-03 17:00:00,,0
234,1.1.1.6.8.6.2.5,Aanbrengen lassen (32 sts) (12sts per dag),1.375,1.1,1.65,2018-07-04 08:00:00,2018-07-05 17:00:00,,0
235,1.1.1.6.8.6.2.6,Herstellen raillijfbekleding,1.375,1.1,1.65,2018-07-03 08:00:00,2018-07-04 17:00:00,,0
236,1.1.1.6.8.7, fase B2 kant St Jacobsmarkt,14.375,14.23,14.52,2018-04-16 08:00:00,2018-04-30 17:00:00,,0
237,1.1.1.6.8.7.1,Opbraak verharding,1.375,1.1,1.65,2018-04-16 08:00:00,2018-04-17 17:00:00,,0
238,1.1.1.6.8.7.2,Grondwerk bedding,1.375,1.1,1.65,2018-04-18 08:00:00,2018-04-19 17:00:00,,0
239,1.1.1.6.8.7.3,Verlengen wachtbuizen,5.375,4.3,6.45,2018-04-20 08:00:00,2018-04-25 17:00:00,,0
240,1.1.1.6.8.7.4,Aanleg bedding,4.375,3.5,5.25,2018-04-26 08:00:00,2018-04-30 17:00:00,,0
241,1.1.1.6.8.8,Spoorwerkzaamheden Oost-West fase B2 kant St Jacobsmarkt,172.375,170.65,174.1,2018-04-30 08:00:00,2018-10-19 17:00:00,,0
242,1.1.1.6.8.8.1,"Aanbrengen wls 155W201,  206, kr. 155K004 en 10 panelen",6.375,6.31,6.44,2018-07-06 08:00:00,2018-07-12 17:00:00,,0
243,1.1.1.6.8.8.1.1,Inmeten en uitleggen tegels,0.375,0.3,0.45,2018-07-06 08:00:00,2018-07-06 17:00:00,,0
244,1.1.1.6.8.8.1.2,"Aanvoeren en inhijsen kruis, wissels en panelen",0.375,0.3,0.45,2018-07-09 08:00:00,2018-07-09 17:00:00,,0
245,1.1.1.6.8.8.1.3,Grof afstellen  panelen,0.375,0.3,0.45,2018-07-09 08:00:00,2018-07-09 17:00:00,,0
246,1.1.1.6.8.8.1.4,Opmeting en fijnafstellen,0.375,0.3,0.45,2018-07-10 08:00:00,2018-07-10 17:00:00,,0
247,1.1.1.6.8.8.1.5,Aanbrengen event. Voorzieningen door BCO en/of Fabricom,0.375,0.3,0.45,2018-07-11 08:00:00,2018-07-11 17:00:00,,0
248,1.1.1.6.8.8.1.6,Herstellen spoor na werkzaamheden andere partijen,0.375,0.3,0.45,2018-07-12 08:00:00,2018-07-12 17:00:00,,0
249,1.1.1.6.8.8.2,Aanbrengen kiftbeton en laswerkzaamheden en afwerken spoor,6.375,6.31,6.44,2018-07-13 08:00:00,2018-07-19 17:00:00,,0
250,1.1.1.6.8.8.2.1,Oplevering spoor door BTR,0.375,0.3,0.45,2018-07-13 08:00:00,2018-07-13 17:00:00,,0
251,1.1.1.6.8.8.2.2,Fijnafstelling spoor (06:00-11:00 uur),0.375,0.3,0.45,2018-07-13 08:00:00,2018-07-13 17:00:00,,0
252,1.1.1.6.8.8.2.3,Aanbrengen kiftbeton,3.375,2.7,4.05,2018-07-13 08:00:00,2018-07-16 17:00:00,,0
253,1.1.1.6.8.8.2.4,Opmeting spoor na aanbrengen kiftbeton en event. aanpassen ,0.375,0.3,0.45,2018-07-17 08:00:00,2018-07-17 17:00:00,,0
254,1.1.1.6.8.8.2.5,Aanbrengen lassen (32 sts) (12sts per dag),0.375,0.3,0.45,2018-07-18 08:00:00,2018-07-18 17:00:00,,0
255,1.1.1.6.8.8.2.6,Herstellen raillijfbekleding,0.375,0.3,0.45,2018-07-19 08:00:00,2018-07-19 17:00:00,,0
256,1.1.1.6.8.8.3,Werkzaamheden bovenleiding,80.375,79.57,81.18,2018-04-30 08:00:00,2018-07-19 17:00:00,,0
257,1.1.1.6.8.8.3.1,Maken proefputten (ivm vergunning),11.375,9.1,13.65,2018-04-30 08:00:00,2018-05-11 17:00:00,,0
258,1.1.1.6.8.8.3.2,Oplossen conflicten nutsleidingen,4.375,3.5,5.25,2018-05-07 08:00:00,2018-05-11 17:00:00,,0
259,1.1.1.6.8.8.3.3,Boren funderingen (ivm vergunning),11.375,9.1,13.65,2018-05-14 08:00:00,2018-05-25 17:00:00,,0
260,1.1.1.6.8.8.3.4,Plaatsen gevelankers,9.166666666700621,7.33,11.0,2018-05-14 08:00:00,2018-05-23 12:00:00,,0
261,1.1.1.6.8.8.3.5,Plaatsen masten,11.375,9.1,13.65,2018-05-28 08:00:00,2018-06-08 17:00:00,,0
262,1.1.1.6.8.8.3.6,Afwerken masten,9.375,7.5,11.25,2018-05-28 08:00:00,2018-06-06 17:00:00,,0
263,1.1.1.6.8.8.3.7,Plaatsen dwarskabels,4.375,3.5,5.25,2018-06-25 08:00:00,2018-06-29 17:00:00,,0
264,1.1.1.6.8.8.3.8,Afrollen rijdraden (niet eerder dan kifbeton fase A en B1,3.375,2.7,4.05,2018-07-02 08:00:00,2018-07-05 17:00:00,,0
265,1.1.1.6.8.8.3.9,Afstellen rijdraden,13.375,10.7,16.05,2018-07-06 08:00:00,2018-07-19 17:00:00,,0
266,1.1.1.6.8.8.4,Realiseren aansluitingen definitieve sporen Operaplein,109.375,108.28,110.47,2018-07-02 08:00:00,2018-10-19 17:00:00,,0
267,1.1.1.6.8.8.4.1,Kruispunt van Ertbornstraat,109.375,108.28,110.47,2018-07-02 08:00:00,2018-10-19 17:00:00,,0
268,1.1.1.6.8.8.4.1.1,Instellen werfzone,0.375,0.3,0.45,2018-07-02 08:00:00,2018-07-02 17:00:00,,0
269,1.1.1.6.8.8.4.1.2,Opbraak verharding loszetten sporen,9.375,7.5,11.25,2018-07-03 08:00:00,2018-07-12 17:00:00,,0
270,1.1.1.6.8.8.4.1.3,Aanleg sporen (aansluitweekend Oost-west verbinding Kipdorp-Rooseveltplaats),11.375,11.26,11.49,2018-08-03 08:00:00,2018-08-14 17:00:00,,0
271,1.1.1.6.8.8.4.1.3.1,Aanbrengen tijdelijke retourkabels,0.375,0.3,0.45,2018-08-03 08:00:00,2018-08-03 17:00:00,,0
272,1.1.1.6.8.8.4.1.3.2,Doorslijpen rails,0.375,0.3,0.45,2018-08-03 08:00:00,2018-08-03 17:00:00,,0
273,1.1.1.6.8.8.4.1.3.3,"Uitbreken spoor zijde Erdbornstraat, deponeren en afvoeren",0.375,0.3,0.45,2018-08-03 08:00:00,2018-08-03 17:00:00,,0
274,1.1.1.6.8.8.4.1.3.4,Ontgraven en aanbrengen fundering,0.375,0.3,0.45,2018-08-06 08:00:00,2018-08-06 17:00:00,,0
275,1.1.1.6.8.8.4.1.3.5,Uitvoeren plaatproef,0.375,0.3,0.45,2018-08-07 08:00:00,2018-08-07 17:00:00,,0
276,1.1.1.6.8.8.4.1.3.6,Uitleggen tegels en uitvullingen bepalen,0.375,0.3,0.45,2018-08-08 08:00:00,2018-08-08 17:00:00,,0
277,1.1.1.6.8.8.4.1.3.7,Leggen Wl 155W926 mbv trailers met hijsinrichting,0.375,0.3,0.45,2018-08-09 08:00:00,2018-08-09 17:00:00,,0
278,1.1.1.6.8.8.4.1.3.8,Leggen 15 panelen en koppelen mbv trailers met hijsrinrichting,0.375,0.3,0.45,2018-08-10 08:00:00,2018-08-10 17:00:00,,0
279,1.1.1.6.8.8.4.1.3.9,Opmeten en afstellen panelen,1.375,1.1,1.65,2018-08-13 08:00:00,2018-08-14 17:00:00,,0
280,1.1.1.6.8.8.4.1.3.10,Fixeren sporen en kruising,0.375,0.3,0.45,2018-08-10 08:00:00,2018-08-10 17:00:00,,0
281,1.1.1.6.8.8.4.1.3.11,Aanbrengen electr. Spoorverbindingen,0.375,0.3,0.45,2018-08-13 08:00:00,2018-08-13 17:00:00,,0
282,1.1.1.6.8.8.4.1.3.12,Aanbrengen PVC-buizen en aansluiten op waterbakken,0.375,0.3,0.45,2018-08-13 08:00:00,2018-08-13 17:00:00,,0
283,1.1.1.6.8.8.4.1.3.13,Signaleringswerkzaamheden,0.375,0.3,0.45,2018-08-13 08:00:00,2018-08-13 17:00:00,,0
284,1.1.1.6.8.8.4.1.3.14,Bovenleidingwerkzaamheden,0.375,0.3,0.45,2018-08-13 08:00:00,2018-08-13 17:00:00,,0
285,1.1.1.6.8.8.4.1.4,Aanbrengen kiftbeton,0.375,0.3,0.45,2018-08-13 08:00:00,2018-08-13 17:00:00,,0
286,1.1.1.6.8.8.4.1.5,"Aanpassen Rooster Livan fase rooster (opvolger is bestrating voetpad Operaplein Gemeentestraat, nog uit te plannen als strossgat dicht is)",4.375,3.5,5.25,2018-10-15 08:00:00,2018-10-19 17:00:00,,0
287,1.1.1.6.8.8.4.1.6,Fase E ,28.375,28.09,28.66,2018-08-14 08:00:00,2018-09-11 17:00:00,,0
288,1.1.1.6.8.8.4.1.6.1,Opbraak verharding kruispunt,0.375,0.3,0.45,2018-08-14 08:00:00,2018-08-14 17:00:00,,0
289,1.1.1.6.8.8.4.1.6.2,Riolering R103,6.375,5.1,7.65,2018-08-15 08:00:00,2018-08-21 17:00:00,,0
290,1.1.1.6.8.8.4.1.6.3,Grondwerk rijweg-onderfundering,2.375,1.9,2.85,2018-08-22 08:00:00,2018-08-24 17:00:00,,0
291,1.1.1.6.8.8.4.1.6.4,Plaatsen lineaire elementen,2.375,1.9,2.85,2018-08-27 08:00:00,2018-08-29 17:00:00,,0
292,1.1.1.6.8.8.4.1.6.5,Plaatsen fundering rijweg,1.375,1.1,1.65,2018-08-30 08:00:00,2018-08-31 17:00:00,,0
293,1.1.1.6.8.8.4.1.6.6,Aanbrengen verhardingen,7.375,5.9,8.85,2018-09-03 08:00:00,2018-09-10 17:00:00,,0
294,1.1.1.6.8.8.4.1.6.7,fasewissel indienstname kruispunt,0.375,0.3,0.45,2018-09-11 08:00:00,2018-09-11 17:00:00,,0
295,1.1.1.6.8.8.4.2,Kruispunt van st. Jacobsmarkt,43.375,42.94,43.81,2018-07-02 08:00:00,2018-08-14 17:00:00,,0
296,1.1.1.6.8.8.4.2.1,Instellen werfzone,0.375,0.3,0.45,2018-07-02 08:00:00,2018-07-02 17:00:00,,0
297,1.1.1.6.8.8.4.2.2,Opbraak verharding loszetten sporen,10.375,8.3,12.45,2018-07-03 08:00:00,2018-07-13 17:00:00,,0
298,1.1.1.6.8.8.4.2.3,Aanleg sporen (aansluitweekend),11.041666666598758,10.93,11.15,2018-08-03 16:00:00,2018-08-14 17:00:00,,0
299,1.1.1.6.8.8.4.2.3.1,Aanbrengen tijdelijke retourkabels,3.0,2.4,3.6,2018-08-03 16:00:00,2018-08-06 16:00:00,,0
300,1.1.1.6.8.8.4.2.3.2,Doorslijpen rails,1.0,0.8,1.2,2018-08-06 16:00:00,2018-08-07 16:00:00,,0
301,1.1.1.6.8.8.4.2.3.3,"Uitbreken spoor zijde Jacobsmarkt, deponeren en afvoeren",0.375,0.3,0.45,2018-08-06 08:00:00,2018-08-06 17:00:00,,0
302,1.1.1.6.8.8.4.2.3.4,Ontgraven en aanbrengen fundering,0.375,0.3,0.45,2018-08-07 08:00:00,2018-08-07 17:00:00,,0
303,1.1.1.6.8.8.4.2.3.5,Uitvoeren plaatproef,0.0,0.0,0.0,2018-08-07 17:00:00,2018-08-07 17:00:00,,0
304,1.1.1.6.8.8.4.2.3.6,Opmeten en uitvullingen bepalen,0.375,0.3,0.45,2018-08-08 08:00:00,2018-08-08 17:00:00,,0
305,1.1.1.6.8.8.4.2.3.7,Leggen Kr 155K007 mbv spoorkraan en rupskraan,0.375,0.3,0.45,2018-08-08 08:00:00,2018-08-08 17:00:00,,0
306,1.1.1.6.8.8.4.2.3.8,Leggen 8 panelen en koppelen mbv spoorkraan en rupskraan,0.375,0.3,0.45,2018-08-09 08:00:00,2018-08-09 17:00:00,,0
307,1.1.1.6.8.8.4.2.3.9,Op hoogte brengen kruising en panelen met tegels en uitvullingen,0.375,0.3,0.45,2018-08-10 08:00:00,2018-08-10 17:00:00,,0
308,1.1.1.6.8.8.4.2.3.10,Fixeren sporen en kruising,0.375,0.3,0.45,2018-08-10 08:00:00,2018-08-10 17:00:00,,0
309,1.1.1.6.8.8.4.2.3.11,Bovenleidingwerkzaamheden,0.375,0.3,0.45,2018-08-14 08:00:00,2018-08-14 17:00:00,,0
310,1.1.1.6.8.8.4.2.4,Aanbrengen kiftbeton,0.375,0.3,0.45,2018-08-13 08:00:00,2018-08-13 17:00:00,,0
311,1.1.1.6.8.9,Spoorwerkzaamheden Zuid (Operaplein tot Keyserlei),78.375,77.59,79.16,2018-04-03 08:00:00,2018-06-20 17:00:00,,0
312,1.1.1.6.8.9.1,Aanbrengen 4 panelen op bet. Dwls (gefaseerd op kruising met Keyserlei),10.375,10.27,10.48,2018-05-15 08:00:00,2018-05-25 17:00:00,,0
313,1.1.1.6.8.9.1.1,Voorbereiding Tram Keyserlei,10.375,10.27,10.48,2018-05-15 08:00:00,2018-05-25 17:00:00,,0
314,1.1.1.6.8.9.1.1.1,Wachtbuizen,2.375,1.9,2.85,2018-05-15 08:00:00,2018-05-17 17:00:00,,0
315,1.1.1.6.8.9.1.1.2,Bedding,3.375,2.7,4.05,2018-05-18 08:00:00,2018-05-21 17:00:00,,0
316,1.1.1.6.8.9.1.1.3,Fase A ,3.375,3.34,3.41,2018-05-22 08:00:00,2018-05-25 17:00:00,,0
317,1.1.1.6.8.9.1.1.3.1,Inmeten en uitleggen tegels,0.375,0.3,0.45,2018-05-22 08:00:00,2018-05-22 17:00:00,,0
318,1.1.1.6.8.9.1.1.3.2,Aanvoeren en lossen 2 panelen,0.375,0.3,0.45,2018-05-23 08:00:00,2018-05-23 17:00:00,,0
319,1.1.1.6.8.9.1.1.3.3,Grof afstellen panelen,0.375,0.3,0.45,2018-05-23 08:00:00,2018-05-23 17:00:00,,0
320,1.1.1.6.8.9.1.1.3.4,Opmeting en fijnafstellen,0.375,0.3,0.45,2018-05-23 08:00:00,2018-05-23 17:00:00,,0
321,1.1.1.6.8.9.1.1.3.5,Aanbrengen event. Voorzieningen door BCO en/of Fabricom,0.375,0.3,0.45,2018-05-24 08:00:00,2018-05-24 17:00:00,,0
322,1.1.1.6.8.9.1.1.3.6,Herstellen spoor na werkzaamheden andere partijen,0.375,0.3,0.45,2018-05-25 08:00:00,2018-05-25 17:00:00,,0
323,1.1.1.6.8.9.2,Voorbereiding Tram Operaplein,15.375,15.22,15.53,2018-04-03 08:00:00,2018-04-18 17:00:00,,0
324,1.1.1.6.8.9.2.1,Onderlaag beton dakplaat Opera,6.375,5.1,7.65,2018-04-03 08:00:00,2018-04-09 17:00:00,,0
325,1.1.1.6.8.9.2.2,Uitharden beton,6.375,5.1,7.65,2018-04-10 08:00:00,2018-04-16 17:00:00,,0
326,1.1.1.6.8.9.2.3,Bedding,1.375,1.1,1.65,2018-04-17 08:00:00,2018-04-18 17:00:00,,0
327,1.1.1.6.8.9.3,"Aanbrengen wls 155W02, 155W924 en 4 panelen op bet. dwls",16.375,16.21,16.54,2018-05-14 08:00:00,2018-05-30 17:00:00,,0
328,1.1.1.6.8.9.3.1,Inmeten en uitleggen tegels,1.375,1.1,1.65,2018-05-14 08:00:00,2018-05-15 17:00:00,,0
329,1.1.1.6.8.9.3.2,"Aanvoeren en inhijsen kruisen, wissels en panelen",1.375,1.1,1.65,2018-05-22 08:00:00,2018-05-23 17:00:00,,0
330,1.1.1.6.8.9.3.3,Grof afstellen wissels en panelen,1.375,1.1,1.65,2018-05-22 08:00:00,2018-05-23 17:00:00,,0
331,1.1.1.6.8.9.3.4,Opmeting en fijnafstellen,1.375,1.1,1.65,2018-05-24 08:00:00,2018-05-25 17:00:00,,0
332,1.1.1.6.8.9.3.5,Aanbrengen event. Voorzieningen door BCO en/of Fabricom,1.375,1.1,1.65,2018-05-28 08:00:00,2018-05-29 17:00:00,,0
333,1.1.1.6.8.9.3.6,Herstellen spoor na werkzaamheden andere partijen,0.375,0.3,0.45,2018-05-30 08:00:00,2018-05-30 17:00:00,,0
334,1.1.1.6.8.9.4,Aanbrengen spoor op stalen dwarsliggers (14 panelen),18.375,18.19,18.56,2018-05-14 08:00:00,2018-06-01 17:00:00,,0
335,1.1.1.6.8.9.4.1,Voorbouwen panelen,9.375,7.5,11.25,2018-05-14 08:00:00,2018-05-23 17:00:00,,0
336,1.1.1.6.8.9.4.2,Aanbrengen raillijfbekleding,9.375,7.5,11.25,2018-05-15 08:00:00,2018-05-24 17:00:00,,0
337,1.1.1.6.8.9.4.3,Inmeten en uitleggen tegels,1.375,1.1,1.65,2018-05-22 08:00:00,2018-05-23 17:00:00,,0
338,1.1.1.6.8.9.4.4,Aanvoeren en lossen 14 panelen,1.375,1.1,1.65,2018-05-24 08:00:00,2018-05-25 17:00:00,,0
339,1.1.1.6.8.9.4.5,Grof afstellen kruis ,4.375,3.5,5.25,2018-05-24 08:00:00,2018-05-28 17:00:00,,0
340,1.1.1.6.8.9.4.6,Opmeting en fijnafstellen,1.375,1.1,1.65,2018-05-29 08:00:00,2018-05-30 17:00:00,,0
341,1.1.1.6.8.9.4.7,Aanbrengen event. Voorzieningen door BCO en/of Fabricom,1.375,1.1,1.65,2018-05-30 08:00:00,2018-05-31 17:00:00,,0
342,1.1.1.6.8.9.4.8,Herstellen spoor na werkzaamheden andere partijen,1.375,1.1,1.65,2018-05-31 08:00:00,2018-06-01 17:00:00,,0
343,1.1.1.6.8.9.5,Aanbrengen bovenlaag beton en laswerkzaamheden en afwerken spoor,16.375,16.21,16.54,2018-06-04 08:00:00,2018-06-20 17:00:00,,0
344,1.1.1.6.8.9.5.1,Oplevering spoor door BTR,0.375,0.3,0.45,2018-06-04 08:00:00,2018-06-04 17:00:00,,0
345,1.1.1.6.8.9.5.2,Fijnafstelling spoor (06:00-11:00 uur),1.375,1.1,1.65,2018-06-05 08:00:00,2018-06-06 17:00:00,,0
346,1.1.1.6.8.9.5.3,Aanbrengen bovenlaag beton,1.375,1.1,1.65,2018-06-07 08:00:00,2018-06-08 17:00:00,,0
347,1.1.1.6.8.9.5.4,Opmeting spoor na aanbrengen kiftbeton en event. aanpassen ,1.375,1.1,1.65,2018-06-11 08:00:00,2018-06-12 17:00:00,,0
348,1.1.1.6.8.9.5.5,Aanbrengen lassen (32 sts) (12sts per dag),2.375,1.9,2.85,2018-06-13 08:00:00,2018-06-15 17:00:00,,0
349,1.1.1.6.8.9.5.6,Herstellen raillijfbekleding,2.375,1.9,2.85,2018-06-18 08:00:00,2018-06-20 17:00:00,,0
350,1.1.1.6.9,"Voetpad langs RVPL ZW Kwadrant 1, Stap H, werfdeel II",90.375,89.47,91.28,2019-01-16 08:00:00,2019-04-16 17:00:00,,0
351,1.1.1.6.9.1,Einde logistiek gat DP3,0.0,0.0,0.0,2019-03-05 17:00:00,2019-03-05 17:00:00,,0
352,1.1.1.6.9.2,"Grondwerk onderfundering (Operaplein, Voetpad langs RVPL ZW Kwadrant 2, Stap H, werfdeel II)",1.375,1.1,1.65,2019-03-06 08:00:00,2019-03-07 17:00:00,,0
353,1.1.1.6.9.3,"Kolken (Operaplein, Voetpad langs RVPL ZW Kwadrant 2, Stap H, werfdeel II)",4.375,3.5,5.25,2019-03-08 08:00:00,2019-03-12 17:00:00,,0
354,1.1.1.6.9.4,"Fundering  (Operaplein, Voetpad langs RVPL ZW Kwadrant 2, Stap H, werfdeel II)",16.375,13.1,19.65,2019-03-18 08:00:00,2019-04-03 17:00:00,,0
355,1.1.1.6.9.5,Verharding,6.375,5.1,7.65,2019-04-04 08:00:00,2019-04-10 17:00:00,,0
356,1.1.1.6.9.6,Aanleg tijdelijk perron,5.375,4.3,6.45,2019-04-11 08:00:00,2019-04-16 17:00:00,,0
357,1.1.1.6.9.7,Openstelling voetgangerscorridor zuidzijde trambaan oost west,0.0,0.0,0.0,2019-04-16 17:00:00,2019-04-16 17:00:00,,0
358,1.1.1.6.9.8,BVL Zuidzijde (tbv RD 01 en RD02),36.375,36.01,36.74,2019-02-11 08:00:00,2019-03-19 17:00:00,,0
359,1.1.1.6.9.8.1,"Proefputten BVL masten Werfdeel II (mastnrs0332, 0333 en 0335), oa t.b.v. Rd-01 en Rd-02 naar Frankrijklei",1.375,1.1,1.65,2019-02-11 08:00:00,2019-02-12 17:00:00,,0
360,1.1.1.6.9.8.2,"Funderingen BVL masten Werfdeel II (mastnrs0332, 0333 en 0335), oa t.b.v. Rd-01 en Rd-02 naar Frankrijklei",33.375,26.7,40.05,2019-02-13 08:00:00,2019-03-18 17:00:00,,0
361,1.1.1.6.9.8.3,"Plaatsen BVL masten Werfdeel II (mastnrs0332, 0333, 0335 en 0337), oa t.b.v. Rd-01 en Rd-02 naar Frankrijklei",0.375,0.3,0.45,2019-03-19 08:00:00,2019-03-19 17:00:00,,0
362,1.1.1.6.9.9,BVL Noordzijde (tbv RD01 en RD02),79.375,78.58,80.17,2019-01-16 08:00:00,2019-04-05 17:00:00,,0
363,1.1.1.6.9.9.1,"Proefputten BVL masten Werfdeel II noordzijde (mastnrs 0309B, 0310B en 0334B), oa t.b.v. Rd-01 en Rd-02 naar Frankrijklei",2.375,1.9,2.85,2019-01-16 08:00:00,2019-01-18 17:00:00,,0
364,1.1.1.6.9.9.2,"Funderingen BVL masten Werfdeel II noordzijde (mastnrs 0309B, 0310B en 0334B), oa t.b.v. Rd-01 en Rd-02 naar Frankrijklei",4.375,3.5,5.25,2019-02-25 08:00:00,2019-03-01 17:00:00,,0
365,1.1.1.6.9.9.3,"Plaatsen BVL masten Werfdeel II noordzijde (mastnrs 0309B, 0310B en 0334B), oa t.b.v. Rd-01 en Rd-02 naar Frankrijklei",1.375,1.1,1.65,2019-04-04 08:00:00,2019-04-05 17:00:00,,0
366,1.1.1.6.10,Afwerken rond lichtput,87.375,86.5,88.25,2019-06-25 08:00:00,2019-09-20 17:00:00,,0
367,1.1.1.6.10.1,Realiseren maaiveldafwerking rond lichtput,87.375,69.9,104.85,2019-06-25 08:00:00,2019-09-20 17:00:00,,0
368,1.1.1.7,22 Rooseveltplaats,1660.375,1643.77,1676.98,2016-03-01 08:00:00,2020-09-16 17:00:00,,0
369,1.1.1.7.1,Infopaviljoen,526.375,521.11,531.64,2016-03-01 08:00:00,2017-08-09 17:00:00,,0
370,1.1.1.7.1.1,Werken infopaviljoen,125.375,100.3,150.45,2016-03-01 08:00:00,2016-07-04 17:00:00,,0
371,1.1.1.7.1.2,"Peilen, (ver)plaatsen en aanpassen nutsleidingen (voorafgaand ifv leidingtracés over verschillende kwadranten))",155.375,124.3,186.45,2017-03-07 08:00:00,2017-08-09 17:00:00,,0
372,1.1.1.7.2,RTI borden,18.375,18.19,18.56,2017-06-01 08:00:00,2017-06-19 17:00:00,,0
373,1.1.1.7.2.1,Plaatsen nieuwe RTI borden (nacht van 1 op 2 juni),1.375,1.1,1.65,2017-06-01 08:00:00,2017-06-02 17:00:00,,0
374,1.1.1.7.2.2,Afkoppelen RTI borden,1.375,1.1,1.65,2017-06-06 08:00:00,2017-06-07 17:00:00,,0
375,1.1.1.7.2.3,Afbraak en recuperatie (Fabricom),11.375,9.1,13.65,2017-06-08 08:00:00,2017-06-19 17:00:00,,0
376,1.1.1.7.3,224 Z-W kwadrant,867.375,858.7,876.05,2017-06-06 08:00:00,2019-10-21 17:00:00,,0
377,1.1.1.7.3.1,Fasewissel Rooseveltpl - Fase 1 (ZW-kwadrant),498.375,493.39,503.36,2017-06-06 08:00:00,2018-10-17 17:00:00,,0
378,1.1.1.7.3.1.1,Voorbereidende werken,84.375,83.53,85.22,2017-06-06 08:00:00,2017-08-29 17:00:00,,0
379,1.1.1.7.3.1.1.1,Plaatsen werfafsluiting Zuid West kwadrant,1.375,1.1,1.65,2017-06-06 08:00:00,2017-06-07 17:00:00,,0
380,1.1.1.7.3.1.1.2, Rooien boom hoek Operagebouw,13.375,10.7,16.05,2017-06-08 08:00:00,2017-06-21 17:00:00,,0
381,1.1.1.7.3.1.1.3,Afbraak wachterslokaal + Imea kelder,82.375,81.55,83.2,2017-06-08 08:00:00,2017-08-29 17:00:00,,0
382,1.1.1.7.3.1.1.3.1, Afbraak reclame bord JC Decaux Westelijke Zijde,0.375,0.3,0.45,2017-06-08 08:00:00,2017-06-08 17:00:00,,0
383,1.1.1.7.3.1.1.3.2, Afbraak en buitendienst stelling voetpadkast 26,0.375,0.3,0.45,2017-06-09 08:00:00,2017-06-09 17:00:00,,0
384,1.1.1.7.3.1.1.3.3, Afbraak vuilnisbak (recuperatie?),0.375,0.3,0.45,2017-06-12 08:00:00,2017-06-12 17:00:00,,0
385,1.1.1.7.3.1.1.3.4, Afbraak wegwijzer bord Stad Antwerpen,0.375,0.3,0.45,2017-06-13 08:00:00,2017-06-13 17:00:00,,0
386,1.1.1.7.3.1.1.3.5, Afbraak km aanduidingspaddestoel noord zijde,0.375,0.3,0.45,2017-06-14 08:00:00,2017-06-14 17:00:00,,0
387,1.1.1.7.3.1.1.3.6, Afbraak en strippen wachterslokaal.,13.375,10.7,16.05,2017-08-16 08:00:00,2017-08-29 17:00:00,,0
388,1.1.1.7.3.1.1.4,Afbraak verharding (weg en stoep) ter hoogte van werkzone BS,3.375,2.7,4.05,2017-06-06 08:00:00,2017-06-09 17:00:00,,0
389,1.1.1.7.3.1.2,"Peilen, (ver)plaatsen en aanpassen nutsleidingen",83.375,82.54,84.21,2017-06-07 08:00:00,2017-08-29 17:00:00,,0
390,1.1.1.7.3.1.2.1,Nuts fase A: AVL thv Gemeentestraat,30.375,30.07,30.68,2017-06-07 08:00:00,2017-07-07 17:00:00,,0
391,1.1.1.7.3.1.2.1.1,Opbraak wegenis ,2.375,1.9,2.85,2017-06-07 08:00:00,2017-06-09 17:00:00,,0
392,1.1.1.7.3.1.2.1.2,Aanleg AVL,25.375,20.3,30.45,2017-06-12 08:00:00,2017-07-07 17:00:00,,0
393,1.1.1.7.3.1.2.2,Nuts fase B: Zone rond Z-W kwadrant,78.375,77.59,79.16,2017-06-12 08:00:00,2017-08-29 17:00:00,,0
394,1.1.1.7.3.1.2.2.1,Opbraak wegenis,4.375,3.5,5.25,2017-06-12 08:00:00,2017-06-16 17:00:00,,0
395,1.1.1.7.3.1.2.2.2,Aanleg,71.375,57.1,85.65,2017-06-19 08:00:00,2017-08-29 17:00:00,,0
396,1.1.1.7.3.1.3,Opbraakwerken,59.375,47.5,71.25,2017-08-07 08:00:00,2017-10-05 17:00:00,,0
397,1.1.1.7.3.1.4,Archeologie,23.375,18.7,28.05,2017-08-07 08:00:00,2017-08-30 17:00:00,,0
398,1.1.1.7.3.1.5,Inrichten werfterrein,1.375,1.1,1.65,2017-10-30 08:00:00,2017-10-31 17:00:00,,0
399,1.1.1.7.3.1.6,Rioleringen,147.375,145.9,148.85,2017-11-13 08:00:00,2018-04-09 17:00:00,,0
400,1.1.1.7.3.1.6.1,DWA dia 400 gres D111-D110,1.375,1.1,1.65,2017-11-13 08:00:00,2017-11-14 17:00:00,,0
401,1.1.1.7.3.1.6.2,RWA dia 600 OB R81A-R81,1.375,1.1,1.65,2017-11-16 08:00:00,2017-11-17 17:00:00,,0
402,1.1.1.7.3.1.6.3,RWA dia600 GB R81A-R54,1.375,1.1,1.65,2017-11-16 08:00:00,2017-11-17 17:00:00,,0
403,1.1.1.7.3.1.6.4,RWA dia 400 OB R54-R101,1.375,1.1,1.65,2017-11-20 08:00:00,2017-11-21 17:00:00,,0
404,1.1.1.7.3.1.6.5,KWS Afscheider voor kwadrant 3,0.375,0.3,0.45,2018-04-05 08:00:00,2018-04-05 17:00:00,,0
405,1.1.1.7.3.1.6.6,RWA dia 400 OB R81A-R109,3.375,2.7,4.05,2018-04-06 08:00:00,2018-04-09 17:00:00,,0
406,1.1.1.7.3.1.6.7,Huisaansluitingen W kolken,5.375,4.3,6.45,2017-11-22 08:00:00,2017-11-27 17:00:00,,0
407,1.1.1.7.3.1.7,Grondwerk grondkoffer-onderfundering,4.375,3.5,5.25,2018-01-08 08:00:00,2018-01-12 17:00:00,,0
408,1.1.1.7.3.1.8,"Ingegraven leidingen, trekputten, funderingen masten",11.375,9.1,13.65,2018-01-15 08:00:00,2018-01-26 17:00:00,,0
409,1.1.1.7.3.1.9,plaatsen kolken,1.375,1.1,1.65,2018-01-29 08:00:00,2018-01-30 17:00:00,,0
410,1.1.1.7.3.1.10,Plaatsen bdst voetpad,71.375,57.1,85.65,2018-05-07 08:00:00,2018-07-17 17:00:00,,0
411,1.1.1.7.3.1.11,Plaatsen bdst plein,91.375,73.1,109.65,2018-07-18 08:00:00,2018-10-17 17:00:00,,0
412,1.1.1.7.3.1.12,Plaatsen fundering busbaan,3.375,2.7,4.05,2018-04-06 08:00:00,2018-04-09 17:00:00,,0
413,1.1.1.7.3.1.13,Tussenlaag asfalt,0.375,0.3,0.45,2018-04-24 08:00:00,2018-04-24 17:00:00,,0
414,1.1.1.7.3.1.14,Betonverharding gedeuveld,2.375,1.9,2.85,2018-05-02 08:00:00,2018-05-04 17:00:00,,0
415,1.1.1.7.3.1.15,Boom-beschermende maatregelen,11.375,9.1,13.65,2018-05-07 08:00:00,2018-05-18 17:00:00,,0
416,1.1.1.7.3.1.16,Fundering voedpad,39.375,31.5,47.25,2018-05-21 08:00:00,2018-06-29 17:00:00,,0
417,1.1.1.7.3.1.17,Granietverharding,4.375,3.5,5.25,2018-05-14 08:00:00,2018-05-18 17:00:00,,0
418,1.1.1.7.3.1.18,Finish dakplaat W1 Oost,0.0,0.0,0.0,2018-02-12 17:00:00,2018-02-12 17:00:00,,0
419,1.1.1.7.3.1.19,Rioleringen,58.375,57.79,58.96,2018-02-14 08:00:00,2018-04-13 17:00:00,,0
420,1.1.1.7.3.1.19.1,DWA dia 400 gres gvk D110-T stuk,0.375,0.3,0.45,2018-02-14 08:00:00,2018-02-14 17:00:00,,0
421,1.1.1.7.3.1.19.2, RWA dia 400 GVK R54-tstuk,4.375,3.5,5.25,2018-02-15 08:00:00,2018-02-19 17:00:00,,0
422,1.1.1.7.3.1.19.3,RWA dia 600 GB R81A,0.375,0.3,0.45,2018-04-06 08:00:00,2018-04-06 17:00:00,,0
423,1.1.1.7.3.1.19.4,Huisaansluitingen-WB kolken,4.375,3.5,5.25,2018-04-09 08:00:00,2018-04-13 17:00:00,,0
424,1.1.1.7.3.1.20,"Ingegraven leidingen, trekputten, funderingen masten",4.375,3.5,5.25,2018-04-16 08:00:00,2018-04-20 17:00:00,,0
425,1.1.1.7.3.1.21,Grondwerk grondkoffer-onderfundering,2.375,1.9,2.85,2018-04-23 08:00:00,2018-04-25 17:00:00,,0
426,1.1.1.7.3.1.22,plaatsen kolken,0.375,0.3,0.45,2018-04-26 08:00:00,2018-04-26 17:00:00,,0
427,1.1.1.7.3.1.23,Plaatsen bdst voetpad,0.375,0.3,0.45,2018-07-02 08:00:00,2018-07-02 17:00:00,,0
428,1.1.1.7.3.1.24,Plaatsen bdst plein,0.375,0.3,0.45,2018-07-03 08:00:00,2018-07-03 17:00:00,,0
429,1.1.1.7.3.1.25,Plaatsen fundering,0.375,0.3,0.45,2018-07-04 08:00:00,2018-07-04 17:00:00,,0
430,1.1.1.7.3.1.26,Tussenlaag asfalt,0.375,0.3,0.45,2018-07-05 08:00:00,2018-07-05 17:00:00,,0
431,1.1.1.7.3.1.27,Betonverharding gedeuveld,0.375,0.3,0.45,2018-07-06 08:00:00,2018-07-06 17:00:00,,0
432,1.1.1.7.3.1.28,Granietverharding,0.375,0.3,0.45,2018-05-30 08:00:00,2018-05-30 17:00:00,,0
433,1.1.1.7.3.1.29,"Openbare verlichting (Rooseveltplaats, Z-W kwadrant)",2.375,1.9,2.85,2018-05-29 08:00:00,2018-05-31 17:00:00,,0
434,1.1.1.7.3.1.30,Aanpassen Rooster Livan fase dekplaat,25.375,20.3,30.45,2018-05-28 08:00:00,2018-06-22 17:00:00,,0
435,1.1.1.7.3.1.31,"Aapassen rooster, fase plaatsen rooster",6.375,5.1,7.65,2018-08-03 08:00:00,2018-08-09 17:00:00,,0
436,1.1.1.7.3.2,Afwerken busperron KW1 na einde logistieke toegang DP3 (T28),20.375,20.17,20.58,2019-10-01 08:00:00,2019-10-21 17:00:00,,0
437,1.1.1.7.3.2.1,"Aanleg perron (Rooseveltplaats, Z-W kwadrant, Afwerken perron) (na voltooiing T28)",20.375,16.3,24.45,2019-10-01 08:00:00,2019-10-21 17:00:00,,0
438,1.1.1.7.4,222 Rooseveltplaats Z-O kwadrant-Anneessensstraat (Kwadrant 2),543.375,537.94,548.81,2018-06-25 08:00:00,2019-12-20 17:00:00,,0
439,1.1.1.7.4.1,Voorbereiding INterParking,180.0,178.2,181.8,2019-03-15 17:00:00,2019-09-11 17:00:00,,0
440,1.1.1.7.4.1.1,"Ontvangst nieuw referentieontwerp OG (Wegens gebrek aan capp bij OG maakt ON RefOntw. 18.03 ON ""adviezen"" ontvangen van OG, risico uitloop = OG) ",0.0,0.0,0.0,2019-03-15 17:00:00,2019-03-15 17:00:00,,0
441,1.1.1.7.4.1.2,Opstellen Uitvoerings Ontwerp (UO) door ON (zie ook opm taak 452),58.375,46.7,70.05,2019-03-18 08:00:00,2019-05-15 17:00:00,,0
442,1.1.1.7.4.1.3,Controle UO door OG,20.375,16.3,24.45,2019-05-21 08:00:00,2019-06-10 17:00:00,,0
443,1.1.1.7.4.1.4,Verwerken opmerkingen OG op UO door ON,7.375,5.9,8.85,2019-06-14 08:00:00,2019-06-21 17:00:00,,0
444,1.1.1.7.4.1.5,Goedkeuring UO door OG,19.375,15.5,23.25,2019-07-03 08:00:00,2019-07-22 17:00:00,,0
445,1.1.1.7.4.1.6,Voorbereiding ON ten behoeve van start uitvoering,29.375,23.5,35.25,2019-08-13 08:00:00,2019-09-11 17:00:00,,0
446,1.1.1.7.4.2,Fasewissel Rooseveltpl-Fase2 (ZO-kwadrant) A1-Fase F,330.375,327.07,333.68,2018-06-25 08:00:00,2019-05-21 17:00:00,,0
447,1.1.1.7.4.2.1,"Voorbereidingen, signalisatie",0.375,0.3,0.45,2018-06-25 08:00:00,2018-06-25 17:00:00,,0
448,1.1.1.7.4.2.2,Opbraakwerken voor omleidingsweg,1.375,1.1,1.65,2018-06-26 08:00:00,2018-06-27 17:00:00,,0
449,1.1.1.7.4.2.3,Aanleggen omleidingsweg,1.375,1.1,1.65,2018-06-28 08:00:00,2018-06-29 17:00:00,,0
450,1.1.1.7.4.2.4,Opbraak omleidingsweg,6.375,5.1,7.65,2018-09-12 08:00:00,2018-09-18 17:00:00,,0
451,1.1.1.7.4.2.5,Opbraak incl dakdichting,6.375,5.1,7.65,2018-09-19 08:00:00,2018-09-25 17:00:00,,0
452,1.1.1.7.4.2.6,Renovatie dak Interparking derde partij,159.375,127.5,191.25,2018-09-26 08:00:00,2019-03-04 17:00:00,,0
453,1.1.1.7.4.2.7,voorbereiding dakdichting,8.375,6.7,10.05,2019-03-07 08:00:00,2019-03-15 17:00:00,,0
454,1.1.1.7.4.2.8,Aanpassingswerken aan dakdichting bestaande ondergrondse parking,60.375,48.3,72.45,2019-03-22 08:00:00,2019-05-21 17:00:00,,0
455,1.1.1.7.4.3,Fase F Carrefour,108.0,106.92,109.08,2019-02-15 17:00:00,2019-06-03 17:00:00,,0
456,1.1.1.7.4.3.1,Fasewissel,0.0,0.0,0.0,2019-02-15 17:00:00,2019-02-15 17:00:00,,0
457,1.1.1.7.4.3.2,Opbraak voetpad,11.375,9.1,13.65,2019-02-18 08:00:00,2019-03-01 17:00:00,,0
458,1.1.1.7.4.3.3,Vrijgave na Renovatie dak Interparking derde partij,0.375,0.3,0.45,2019-04-26 08:00:00,2019-04-26 17:00:00,,0
459,1.1.1.7.4.3.4,Aanpassingswerken aan dakdichting bestaande ondergrondse parking (Fase F Carrefour),7.375,5.9,8.85,2019-05-27 08:00:00,2019-06-03 17:00:00,,0
460,1.1.1.7.4.4,Fase G Anneessestraat,134.375,133.03,135.72,2019-06-06 08:00:00,2019-10-18 17:00:00,,0
461,1.1.1.7.4.4.1,Aanleg omleidingsweg,5.375,4.3,6.45,2019-06-06 08:00:00,2019-06-11 17:00:00,,0
462,1.1.1.7.4.4.2,fasewissel,0.375,0.3,0.45,2019-06-13 08:00:00,2019-06-13 17:00:00,,0
463,1.1.1.7.4.4.3,Opbraak verharding en vrijgraven nutsleidingen,21.375,17.1,25.65,2019-06-14 08:00:00,2019-07-05 17:00:00,,0
464,1.1.1.7.4.4.4,Aanleg noodleiding waterleiding,1.375,1.1,1.65,2019-07-08 08:00:00,2019-07-09 17:00:00,,0
465,1.1.1.7.4.4.5,herstelwerken dak door Bam (Voorheen interparking),35.375,28.3,42.45,2019-07-10 08:00:00,2019-08-14 17:00:00,,0
466,1.1.1.7.4.4.6,Dakdichting,12.375,9.9,14.85,2019-08-15 08:00:00,2019-08-27 17:00:00,,0
467,1.1.1.7.4.4.7,Nutsleidingen,31.375,25.1,37.65,2019-08-19 08:00:00,2019-09-19 17:00:00,,0
468,1.1.1.7.4.4.8,Riolering R112A-R113A,2.375,1.9,2.85,2019-10-14 08:00:00,2019-10-16 17:00:00,,0
469,1.1.1.7.4.4.9,Onderfundering rijweg,1.375,1.1,1.65,2019-10-17 08:00:00,2019-10-18 17:00:00,,0
470,1.1.1.7.4.5,Bovenleiding Gemeentestraat tussen Kw2 en Kw4 incl Ossystraat,254.375,251.83,256.92,2019-02-25 08:00:00,2019-11-06 17:00:00,,0
471,1.1.1.7.4.5.1,Noordzijde incl mast 0338,93.375,92.44,94.31,2019-02-25 08:00:00,2019-05-29 17:00:00,,0
472,1.1.1.7.4.5.1.1,"Proefputten BVL-masten tpv perron tussen KW2 en KW4 (0336B, 0338, 0339B, 0343B, 0341B en 0345) raakvlak is ??",4.375,3.5,5.25,2019-02-25 08:00:00,2019-03-01 17:00:00,,0
473,1.1.1.7.4.5.1.2,"Funderingen BVL-masten tpv perron tussen KW2 en KW4 (0336B, 0338, 0339B, 0343B, 0341B en 0345) raakvlak is ??",18.375,14.7,22.05,2019-03-04 08:00:00,2019-03-22 17:00:00,,0
474,1.1.1.7.4.5.1.3,"Plaatsen BVL-masten tpv perron tussen KW2 en KW4 (gebeurd: 0336B, 0338, 0339B, 0343B en 0345) (nog gebeuren: 0341B)",65.375,52.3,78.45,2019-03-25 08:00:00,2019-05-29 17:00:00,,0
475,1.1.1.7.4.5.2,Zuidzijde,154.375,152.83,155.92,2019-05-09 08:00:00,2019-10-10 17:00:00,,0
476,1.1.1.7.4.5.2.1,"Proefputten BVL-masten tpv perron tussen KW2 en KW4 en zuidzijde spoor (0340, 0342 en 0344) raakvlak is sloop perron",1.375,1.1,1.65,2019-05-09 08:00:00,2019-05-10 17:00:00,,0
477,1.1.1.7.4.5.2.2,"Funderingen BVL-masten tpv perron tussen KW2 en KW4 zuidzijde spoor (0340, 0342 en 0344) raakvlak is sloop perron",32.375,25.9,38.85,2019-09-02 08:00:00,2019-10-04 17:00:00,,0
478,1.1.1.7.4.5.2.3,"Plaatsen BVL-masten tpv perron tussen KW2 en KW4 zuidzijde spoor (0340, 0342 en 0344) raakvlak is sloop perron",6.375,5.1,7.65,2019-10-04 08:00:00,2019-10-10 17:00:00,,0
479,1.1.1.7.4.5.3,Noord én zuidzijde,20.375,20.17,20.58,2019-10-11 08:00:00,2019-10-31 17:00:00,,0
480,1.1.1.7.4.5.3.1,"Plaatsen Dwarskabels en gfk's (armen) tpv perron tussen KW2 en KW4 (0340, 0342 en 0344) raakvlak is sloop perron",20.375,16.3,24.45,2019-10-11 08:00:00,2019-10-31 17:00:00,,0
481,1.1.1.7.4.5.4,Fase H Spooraansluiting Anneessensstraat,32.375,32.05,32.7,2019-07-29 08:00:00,2019-08-30 17:00:00,,0
482,1.1.1.7.4.5.4.1,aanleg omleidingsweg,4.375,3.5,5.25,2019-07-29 08:00:00,2019-08-02 17:00:00,,0
483,1.1.1.7.4.5.4.2,Fasewissel afsluiten tram-busbaan,0.375,0.3,0.45,2019-08-06 08:00:00,2019-08-06 17:00:00,,0
484,1.1.1.7.4.5.4.3,Loszetten sporen ,2.375,1.9,2.85,2019-08-07 08:00:00,2019-08-09 17:00:00,,0
485,1.1.1.7.4.5.4.4,Opbraak -bedding,1.375,1.1,1.65,2019-08-12 08:00:00,2019-08-13 17:00:00,,0
486,1.1.1.7.4.5.4.5,Plaatsen sporen (Fase H Spooraansluiting Anneessensstraat),1.375,1.1,1.65,2019-08-12 08:00:00,2019-08-13 17:00:00,,0
487,1.1.1.7.4.5.4.6,Verharding tram-busbaan,16.375,13.1,19.65,2019-08-14 08:00:00,2019-08-30 17:00:00,,0
488,1.1.1.7.4.5.5,Kolken,4.375,3.5,5.25,2019-10-17 08:00:00,2019-10-21 17:00:00,,0
489,1.1.1.7.4.5.6,Lineaire elementen,2.375,1.9,2.85,2019-10-22 08:00:00,2019-10-24 17:00:00,,0
490,1.1.1.7.4.5.7,Fundering rijweg,3.375,2.7,4.05,2019-10-25 08:00:00,2019-10-28 17:00:00,,0
491,1.1.1.7.4.5.8,Verharding rijweg,8.375,6.7,10.05,2019-10-29 08:00:00,2019-11-06 17:00:00,,0
492,1.1.1.7.4.6,Afwerking buskwadrant interparking Fase J,109.375,108.28,110.47,2019-09-02 08:00:00,2019-12-20 17:00:00,,0
493,1.1.1.7.4.6.1,Zone thv inrit parking,66.375,65.71,67.04,2019-09-02 08:00:00,2019-11-07 17:00:00,,0
494,1.1.1.7.4.6.1.1,Fasewissel indienstname tram-busbaan,0.375,0.3,0.45,2019-09-02 08:00:00,2019-09-02 17:00:00,,0
495,1.1.1.7.4.6.1.2,Inrichten werfzone,1.375,1.1,1.65,2019-09-03 08:00:00,2019-09-04 17:00:00,,0
496,1.1.1.7.4.6.1.3,Afvoer-wachtbuizen,6.375,5.1,7.65,2019-09-05 08:00:00,2019-09-11 17:00:00,,0
497,1.1.1.7.4.6.1.4,Kolken,6.375,5.1,7.65,2019-09-12 08:00:00,2019-09-18 17:00:00,,0
498,1.1.1.7.4.6.1.5,Onderfundering,1.375,1.1,1.65,2019-09-19 08:00:00,2019-09-20 17:00:00,,0
499,1.1.1.7.4.6.1.6,Lineaire elementen,4.375,3.5,5.25,2019-09-23 08:00:00,2019-09-27 17:00:00,,0
500,1.1.1.7.4.6.1.7,Fundering,1.375,1.1,1.65,2019-09-30 08:00:00,2019-10-01 17:00:00,,0
501,1.1.1.7.4.6.1.8,Verharding,31.375,25.1,37.65,2019-10-07 08:00:00,2019-11-07 17:00:00,,0
502,1.1.1.7.4.6.2,Zone met busperrons,66.0,65.34,66.66,2019-10-15 17:00:00,2019-12-20 17:00:00,,0
503,1.1.1.7.4.6.2.1,Fasewissel ,0.0,0.0,0.0,2019-10-15 17:00:00,2019-10-15 17:00:00,,0
504,1.1.1.7.4.6.2.2,Nutsleidingen,9.375,7.5,11.25,2019-10-16 08:00:00,2019-10-25 17:00:00,,0
505,1.1.1.7.4.6.2.3,Rioleringen,6.375,5.1,7.65,2019-10-16 08:00:00,2019-10-22 17:00:00,,0
506,1.1.1.7.4.6.2.4,"Ingegraven leidingen, trekputten, funderingen masten",6.375,5.1,7.65,2019-10-23 08:00:00,2019-10-29 17:00:00,,0
507,1.1.1.7.4.6.2.5,Funderingen,6.375,5.1,7.65,2019-10-30 08:00:00,2019-11-05 17:00:00,,0
508,1.1.1.7.4.6.2.6,lineaire elementen,6.375,5.1,7.65,2019-11-07 08:00:00,2019-11-13 17:00:00,,0
509,1.1.1.7.4.6.2.7,Verharding busbanen,13.375,10.7,16.05,2019-11-15 08:00:00,2019-11-28 17:00:00,,0
510,1.1.1.7.4.6.2.8,"Verharding perrons-voetpad (Rooseveltplaats Z-O, afwerking fase J)",13.375,10.7,16.05,2019-11-29 08:00:00,2019-12-12 17:00:00,,0
511,1.1.1.7.4.6.2.9,"Afwerking tramperron (Rooseveltplaats Z-O, afwerking fase J)",21.375,17.1,25.65,2019-11-29 08:00:00,2019-12-20 17:00:00,,0
512,1.1.1.7.4.6.2.10,"Verlichting (Rooseveltplaats Z-O, afwerking fase J)",13.375,10.7,16.05,2019-11-29 08:00:00,2019-12-12 17:00:00,,0
513,1.1.1.7.5,223 Rooseveltplaats N-W kwadrant,131.0,129.69,132.31,2020-01-03 17:00:00,2020-05-13 17:00:00,,0
514,1.1.1.7.5.1,"Fasewissel Rooseveltpl - Fase 3 (finsh Z-O, start NW kwadrant) (Rv 15 naar DP1)",0.375,0.3,0.45,2020-01-06 08:00:00,2020-01-06 17:00:00,,0
515,1.1.1.7.5.2,Ventweg rond tunneltoerit Noord-Oost ( Violiersstraat-Roosevelt),127.375,126.1,128.65,2020-01-07 08:00:00,2020-05-13 17:00:00,,0
516,1.1.1.7.5.2.1,Voorbereiding-opbraak werfzone voor nutsleidingen,6.375,5.1,7.65,2020-01-07 08:00:00,2020-01-13 17:00:00,,0
517,1.1.1.7.5.2.2,Opbraak ventweg incl kruispunt Violiersstraat,4.375,3.5,5.25,2020-02-10 08:00:00,2020-02-14 17:00:00,,0
518,1.1.1.7.5.2.3,Riolering D63-D33 ,8.375,6.7,10.05,2020-02-17 08:00:00,2020-02-25 17:00:00,,0
519,1.1.1.7.5.2.4,Riolering R45-R102A,13.375,10.7,16.05,2020-02-26 08:00:00,2020-03-10 17:00:00,,0
520,1.1.1.7.5.2.5,Huisaansluitingen,13.375,10.7,16.05,2020-03-11 08:00:00,2020-03-24 17:00:00,,0
521,1.1.1.7.5.2.6,Wachtbuizen,6.375,5.1,7.65,2020-03-11 08:00:00,2020-03-17 17:00:00,,0
522,1.1.1.7.5.2.7,Grondwerk-Onderfundering,6.375,5.1,7.65,2020-03-25 08:00:00,2020-03-31 17:00:00,,0
523,1.1.1.7.5.2.8,Kolken,6.375,5.1,7.65,2020-04-01 08:00:00,2020-04-07 17:00:00,,0
524,1.1.1.7.5.2.9,Lineaire elementen,13.375,10.7,16.05,2020-04-08 08:00:00,2020-04-21 17:00:00,,0
525,1.1.1.7.5.2.10,Fundering verharding,6.375,5.1,7.65,2020-04-24 08:00:00,2020-04-30 17:00:00,,0
526,1.1.1.7.5.2.11,Verharding voetpad,4.375,3.5,5.25,2020-05-04 08:00:00,2020-05-08 17:00:00,,0
527,1.1.1.7.5.2.12,Verharding asfalt,1.375,1.1,1.65,2020-05-11 08:00:00,2020-05-12 17:00:00,,0
528,1.1.1.7.5.2.13,Openbare verlichting,0.375,0.3,0.45,2020-05-13 08:00:00,2020-05-13 17:00:00,,0
529,1.1.1.7.5.3,Kwadrant N-W (Kwadrant 3),122.0,120.78,123.22,2020-01-03 17:00:00,2020-05-04 17:00:00,,0
530,1.1.1.7.5.3.1,"Voorbereidingen, signalisatie (Rooseveltplaats, NW kwadrant)",0.0,0.0,0.0,2020-01-03 17:00:00,2020-01-03 17:00:00,,0
531,1.1.1.7.5.3.2,"Opbraakwerken-incl lokaal De Lijn (Rooseveltplaats, NW kwadrant)",3.375,2.7,4.05,2020-01-06 08:00:00,2020-01-09 17:00:00,,0
532,1.1.1.7.5.3.3,"Peilen, (ver)plaatsen en aanpassen nutsleidingen DP1 fase A3",46.375,37.1,55.65,2020-01-13 08:00:00,2020-02-28 17:00:00,,0
533,1.1.1.7.5.3.4,"Archeologie (Rooseveltplaats, NW kwadrant)",25.375,20.3,30.45,2020-01-06 08:00:00,2020-01-31 17:00:00,,0
534,1.1.1.7.5.3.5,Rioleringen D35-D33,5.375,4.3,6.45,2020-03-11 08:00:00,2020-03-16 17:00:00,,0
535,1.1.1.7.5.3.6,Riolering R116-R80,2.375,1.9,2.85,2020-03-17 08:00:00,2020-03-19 17:00:00,,0
536,1.1.1.7.5.3.7,Boom-beschermende maatregelen,13.375,10.7,16.05,2020-03-20 08:00:00,2020-04-02 17:00:00,,0
537,1.1.1.7.5.3.8,Heraansluiting feederkabels TS Opera,6.375,5.1,7.65,2020-03-10 08:00:00,2020-03-16 17:00:00,,0
538,1.1.1.7.5.3.9,"Ingegraven leidingen, trekputten, funderingen masten",13.375,10.7,16.05,2020-03-17 08:00:00,2020-03-30 17:00:00,,0
539,1.1.1.7.5.3.10,"Funderingen, verhardingen, bestrating",34.375,27.5,41.25,2020-03-31 08:00:00,2020-05-04 17:00:00,,0
540,1.1.1.7.5.4,Osystraat Fase kwadrant 3 fase B,38.375,37.99,38.76,2020-01-07 08:00:00,2020-02-14 17:00:00,,0
541,1.1.1.7.5.4.1,Fasewissel,0.375,0.3,0.45,2020-01-07 08:00:00,2020-01-07 17:00:00,,0
542,1.1.1.7.5.4.2,Opbraak,0.375,0.3,0.45,2020-01-08 08:00:00,2020-01-08 17:00:00,,0
543,1.1.1.7.5.4.3,Riolering D15-D17,1.375,1.1,1.65,2020-01-09 08:00:00,2020-01-10 17:00:00,,0
544,1.1.1.7.5.4.4,Riolering R105-R110,1.375,1.1,1.65,2020-01-13 08:00:00,2020-01-14 17:00:00,,0
545,1.1.1.7.5.4.5,GVK Leiding vanuit D15,13.375,10.7,16.05,2020-01-15 08:00:00,2020-01-28 17:00:00,,0
546,1.1.1.7.5.4.6,Aansluitingen,1.375,1.1,1.65,2020-01-29 08:00:00,2020-01-30 17:00:00,,0
547,1.1.1.7.5.4.7,Grondwerk-onderfundering,0.375,0.3,0.45,2020-01-31 08:00:00,2020-01-31 17:00:00,,0
548,1.1.1.7.5.4.8,Kolken,0.375,0.3,0.45,2020-02-03 08:00:00,2020-02-03 17:00:00,,0
549,1.1.1.7.5.4.9,Lineaire elementen,1.375,1.1,1.65,2020-02-04 08:00:00,2020-02-05 17:00:00,,0
550,1.1.1.7.5.4.10,Fundering,0.375,0.3,0.45,2020-02-06 08:00:00,2020-02-06 17:00:00,,0
551,1.1.1.7.5.4.11,Verharding rijweg-fietspad,3.375,2.7,4.05,2020-02-07 08:00:00,2020-02-10 17:00:00,,0
552,1.1.1.7.5.4.12,Verharding voetpad,2.375,1.9,2.85,2020-02-11 08:00:00,2020-02-13 17:00:00,,0
553,1.1.1.7.5.4.13,Openbare verlichting,0.375,0.3,0.45,2020-02-14 08:00:00,2020-02-14 17:00:00,,0
554,1.1.1.7.6,221 Rooseveltplaats N-O kwadrant- Van Stralenstraat-Osystraat (Kwadrant 4),126.0,124.74,127.26,2020-05-13 17:00:00,2020-09-16 17:00:00,,0
555,1.1.1.7.6.1,Fasewissel Rooseveltpl - Fase 4 (NO-kwadrant),0.0,0.0,0.0,2020-05-13 17:00:00,2020-05-13 17:00:00,,0
556,1.1.1.7.6.2,Kwadrant N-O,124.375,123.13,125.62,2020-05-15 08:00:00,2020-09-16 17:00:00,,0
557,1.1.1.7.6.2.1,"Voorbereidingen, signalisatie",0.375,0.3,0.45,2020-05-15 08:00:00,2020-05-15 17:00:00,,0
558,1.1.1.7.6.2.2,Opbraakwerken,4.375,3.5,5.25,2020-05-15 08:00:00,2020-05-19 17:00:00,,0
559,1.1.1.7.6.2.3,"Peilen, (ver)plaatsen en aanpassen nutsleidingen fase 4",27.375,21.9,32.85,2020-05-19 08:00:00,2020-06-15 17:00:00,,0
560,1.1.1.7.6.2.4,Archeologie,7.375,5.9,8.85,2020-06-18 08:00:00,2020-06-25 17:00:00,,0
561,1.1.1.7.6.2.5,Riolering D17-D25-D30-D116,13.375,10.7,16.05,2020-06-26 08:00:00,2020-07-09 17:00:00,,0
562,1.1.1.7.6.2.6,Riolering  R114-R106-R103,6.375,5.1,7.65,2020-07-10 08:00:00,2020-07-16 17:00:00,,0
563,1.1.1.7.6.2.7,Boom-beschermende maatregelen,13.375,10.7,16.05,2020-08-07 08:00:00,2020-08-20 17:00:00,,0
564,1.1.1.7.6.2.8,"Ingegraven leidingen, trekputten, funderingen masten",6.375,5.1,7.65,2020-08-07 08:00:00,2020-08-13 17:00:00,,0
565,1.1.1.7.6.2.9,"Funderingen, verhardingen, bestrating",33.375,26.7,40.05,2020-08-14 08:00:00,2020-09-16 17:00:00,,0
566,1.1.1.7.6.2.10,Verharding - asfalt-fietspad-voetpad,6.375,5.1,7.65,2020-08-14 08:00:00,2020-08-20 17:00:00,,0
567,1.1.1.7.6.2.11,"Openbare verlichting (Rooseveltplaats, N-O kwadrant - Van Stralenstraat)",0.375,0.3,0.45,2020-08-31 08:00:00,2020-08-31 17:00:00,,0
568,1.1.1.7.6.3,Van Stralenstraat Kwadrant 4 fase A,17.375,17.2,17.55,2020-06-23 08:00:00,2020-07-10 17:00:00,,0
569,1.1.1.7.6.3.1,Grondwerk onderfundering,1.375,1.1,1.65,2020-06-23 08:00:00,2020-06-24 17:00:00,,0
570,1.1.1.7.6.3.2,Kolken,1.375,1.1,1.65,2020-06-25 08:00:00,2020-06-26 17:00:00,,0
571,1.1.1.7.6.3.3,lineaire elementen,2.375,1.9,2.85,2020-06-29 08:00:00,2020-07-01 17:00:00,,0
572,1.1.1.7.6.3.4,Fundering rijweg,0.375,0.3,0.45,2020-07-02 08:00:00,2020-07-02 17:00:00,,0
573,1.1.1.7.6.3.5,Verharding rijweg,0.375,0.3,0.45,2020-07-03 08:00:00,2020-07-03 17:00:00,,0
574,1.1.1.7.6.3.6,Aanleg voetpad,4.375,3.5,5.25,2020-07-06 08:00:00,2020-07-10 17:00:00,,0
575,1.1.1.7.6.4,Gemeentestraat-Osystraat kwadrant 4 fase A,39.375,38.98,39.77,2020-05-14 08:00:00,2020-06-22 17:00:00,,0
576,1.1.1.7.6.4.1,Opbraak verharding,1.375,1.1,1.65,2020-05-14 08:00:00,2020-05-15 17:00:00,,0
577,1.1.1.7.6.4.2,Riolering R103,2.375,1.9,2.85,2020-05-18 08:00:00,2020-05-20 17:00:00,,0
578,1.1.1.7.6.4.3,Grondwerk onderfundering,3.375,2.7,4.05,2020-05-25 08:00:00,2020-05-28 17:00:00,,0
579,1.1.1.7.6.4.4,Kolken,5.375,4.3,6.45,2020-05-29 08:00:00,2020-06-03 17:00:00,,0
580,1.1.1.7.6.4.5,Lineaire elementen,6.375,5.1,7.65,2020-06-05 08:00:00,2020-06-11 17:00:00,,0
581,1.1.1.7.6.4.6,Fundering rijweg,5.375,4.3,6.45,2020-06-12 08:00:00,2020-06-17 17:00:00,,0
582,1.1.1.7.6.4.7,Verharding rijweg,4.375,3.5,5.25,2020-06-18 08:00:00,2020-06-22 17:00:00,,0
583,1.1.1.8,23 De Keyserlei (Af te stemmen met werken Antwerp Tower),417.0,412.83,421.17,2018-05-14 17:00:00,2019-07-05 17:00:00,,0
584,1.1.1.8.1,"Finish dakplaat W7 (Keyserlei-zuid, af testemmen met werken Antwerp Tower)",0.0,0.0,0.0,2019-04-05 17:00:00,2019-04-05 17:00:00,,0
585,1.1.1.8.2,Finish dakplaat W12,0.0,0.0,0.0,2018-05-25 17:00:00,2018-05-25 17:00:00,,0
586,1.1.1.8.3,Finish dakplaat W4,0.0,0.0,0.0,2018-05-14 17:00:00,2018-05-14 17:00:00,,0
587,1.1.1.8.4,Keyserlei Midden Publiek Toegankelijk,51.375,50.86,51.89,2018-05-28 08:00:00,2018-07-18 17:00:00,,0
588,1.1.1.8.4.1,Aanvullen dakplaat,1.375,1.1,1.65,2018-05-28 08:00:00,2018-05-29 17:00:00,,0
589,1.1.1.8.4.2,Onderfundering type II,0.375,0.3,0.45,2018-05-30 08:00:00,2018-05-30 17:00:00,,0
590,1.1.1.8.4.3,Wachtbuizen-trekputten,6.375,5.1,7.65,2018-05-31 08:00:00,2018-06-06 17:00:00,,0
591,1.1.1.8.4.4,Fundering Mager beton,1.375,1.1,1.65,2018-06-12 08:00:00,2018-06-13 17:00:00,,0
592,1.1.1.8.4.5,Lineaire elementen,6.375,5.1,7.65,2018-06-14 08:00:00,2018-06-20 17:00:00,,0
593,1.1.1.8.4.6,Blauwe betonverharding ventweg,1.375,1.1,1.65,2018-07-04 08:00:00,2018-07-05 17:00:00,,0
594,1.1.1.8.4.7,Granietverharding,6.375,5.1,7.65,2018-07-06 08:00:00,2018-07-12 17:00:00,,0
595,1.1.1.8.4.8,Afwerking,5.375,4.3,6.45,2018-07-13 08:00:00,2018-07-18 17:00:00,,0
596,1.1.1.8.5,Keyserlei afhankelijk WOG Matexi,417.0,412.83,421.17,2018-05-14 17:00:00,2019-07-05 17:00:00,,0
597,1.1.1.8.5.1,Verplaatsen Keten Matexi,4.375,3.5,5.25,2018-07-30 08:00:00,2018-08-03 17:00:00,,0
598,1.1.1.8.5.2,Afbraak verharding centrale rijweg,11.375,9.1,13.65,2018-08-13 08:00:00,2018-08-24 17:00:00,,0
599,1.1.1.8.5.3,Waterdichting dakplaat de Keyserlei centrale rijweg (W8+W16),20.375,16.3,24.45,2018-08-28 08:00:00,2018-09-17 17:00:00,,0
600,1.1.1.8.5.4,Voorbereiding fasewissel,13.375,10.7,16.05,2018-09-18 08:00:00,2018-10-01 17:00:00,,0
601,1.1.1.8.5.5,fasewissel,0.375,0.3,0.45,2018-10-02 08:00:00,2018-10-02 17:00:00,,0
602,1.1.1.8.5.6,Opbraak verharding ,13.375,10.7,16.05,2018-10-03 08:00:00,2018-10-16 17:00:00,,0
603,1.1.1.8.5.7,Nutsleidingen verplaatsen en ophangen ( deel 1),21.375,17.1,25.65,2018-10-17 08:00:00,2018-11-07 17:00:00,,0
604,1.1.1.8.5.8,Plaatsen wachtbuizen feederkabels,4.375,3.5,5.25,2019-04-08 08:00:00,2019-04-12 17:00:00,,0
605,1.1.1.8.5.9,Aanpassen ventilatierooster,18.375,14.7,22.05,2019-04-08 08:00:00,2019-04-26 17:00:00,,0
606,1.1.1.8.5.10,Nutleidingen deel 2,13.375,10.7,16.05,2019-04-23 08:00:00,2019-05-06 17:00:00,,0
607,1.1.1.8.5.11,Aanvullen,11.375,9.1,13.65,2019-04-15 08:00:00,2019-04-26 17:00:00,,0
608,1.1.1.8.5.12,"Trekken Tractiekabels V015(?), V016, V017, V018 en V019(?) Operaplein ",20.375,16.3,24.45,2019-04-30 08:00:00,2019-05-20 17:00:00,,0
609,1.1.1.8.5.13,Aansluiten en vermoffen feederkabels,19.375,15.5,23.25,2019-05-22 08:00:00,2019-06-10 17:00:00,,0
610,1.1.1.8.5.14,Aanleg voetpad,40.375,32.3,48.45,2019-05-15 08:00:00,2019-06-24 17:00:00,,0
611,1.1.1.8.5.15,Aanleg rijweg exclusief parkeerstrook (De keyserlei afhankelijk van WOG Matexi),7.375,5.9,8.85,2019-06-28 08:00:00,2019-07-05 17:00:00,,0
612,1.1.1.8.5.16,Finish dakplaat W12,0.0,0.0,0.0,2018-05-25 17:00:00,2018-05-25 17:00:00,,0
613,1.1.1.8.5.17,Finish dakplaat W4,0.0,0.0,0.0,2018-05-14 17:00:00,2018-05-14 17:00:00,,0
614,1.1.1.9,24 Van Ertbornstraat-Ossystraat,120.375,119.17,121.58,2020-05-14 08:00:00,2020-09-11 17:00:00,,0
615,1.1.1.9.1,Van Ertbornstraat,120.375,119.17,121.58,2020-05-14 08:00:00,2020-09-11 17:00:00,,0
616,1.1.1.9.1.1,"Fasewissel (24 Van Ertbornstraat-Ossystraat, Van Ertbornstraat)",0.375,0.3,0.45,2020-05-14 08:00:00,2020-05-14 17:00:00,,0
617,1.1.1.9.1.2,"Opbraak (24 Van Ertbornstraat-Ossystraat, Van Ertbornstraat)",5.375,4.3,6.45,2020-05-15 08:00:00,2020-05-20 17:00:00,,0
618,1.1.1.9.1.3,"Nutsleidingen (wachtbuizen)  (24 Van Ertbornstraat-Ossystraat, Van Ertbornstraat)",25.375,20.3,30.45,2020-05-25 08:00:00,2020-06-19 17:00:00,,0
619,1.1.1.9.1.4,Riolering,13.375,10.7,16.05,2020-06-23 08:00:00,2020-07-06 17:00:00,,0
620,1.1.1.9.1.5,Ophangen GVK riolering,13.375,10.7,16.05,2020-06-23 08:00:00,2020-07-06 17:00:00,,0
621,1.1.1.9.1.6,Grondwerk rijweg,3.375,2.7,4.05,2020-07-07 08:00:00,2020-07-10 17:00:00,,0
622,1.1.1.9.1.7,Onderfundering,3.375,2.7,4.05,2020-08-03 08:00:00,2020-08-06 17:00:00,,0
623,1.1.1.9.1.8,Lineaire elementen,6.375,5.1,7.65,2020-08-07 08:00:00,2020-08-13 17:00:00,,0
624,1.1.1.9.1.9,Fundering,5.375,4.3,6.45,2020-08-14 08:00:00,2020-08-19 17:00:00,,0
625,1.1.1.9.1.10,"Asfalt rijweg/fietspad (Van Ertbornstraat-Ossystraat, Van Ertbornstraat)",7.375,5.9,8.85,2020-08-21 08:00:00,2020-08-28 17:00:00,,0
626,1.1.1.9.1.11,Afwerking Zuid kruispunt Van Ertbornstraat Gemeentestraat,18.375,18.19,18.56,2020-08-24 08:00:00,2020-09-11 17:00:00,,0
627,1.1.1.9.1.11.1,Aanleg verharding,18.375,14.7,22.05,2020-08-24 08:00:00,2020-09-11 17:00:00,,0
628,1.1.1.10,25 Teniersplaats,462.0,457.38,466.62,2017-11-01 17:00:00,2019-02-06 17:00:00,,0
629,1.1.1.10.1,Fase 1 Teniersplaats Zuid,391.0,387.09,394.91,2017-11-01 17:00:00,2018-11-27 17:00:00,,0
630,1.1.1.10.1.1,Fasewissel,0.0,0.0,0.0,2017-11-01 17:00:00,2017-11-01 17:00:00,,0
631,1.1.1.10.1.2,Nutsleidingen,29.375,23.5,35.25,2017-11-02 08:00:00,2017-12-01 17:00:00,,0
632,1.1.1.10.1.3,Dakplaat W5 gereed voor start bestrating (Teniersplaats Zuid),0.0,0.0,0.0,2018-09-14 17:00:00,2018-09-14 17:00:00,,0
633,1.1.1.10.1.4,Aanvullen boven dakplaat,0.375,0.3,0.45,2018-09-18 08:00:00,2018-09-18 17:00:00,,0
634,1.1.1.10.1.5,Onderfundering type II,0.375,0.3,0.45,2018-09-19 08:00:00,2018-09-19 17:00:00,,0
635,1.1.1.10.1.6,Huisaansluitingen wachtbuizen,6.375,5.1,7.65,2018-09-20 08:00:00,2018-09-26 17:00:00,,0
636,1.1.1.10.1.7,Ingraven leidingen-trekputten-sokkels,6.375,5.1,7.65,2018-09-27 08:00:00,2018-10-03 17:00:00,,0
637,1.1.1.10.1.8,Wachtbuizen Tractiekabel V015 + V016 + V017 + V018,11.375,9.1,13.65,2018-10-04 08:00:00,2018-10-15 17:00:00,,0
638,1.1.1.10.1.9,Plaatsen kolken,1.375,1.1,1.65,2018-10-04 08:00:00,2018-10-05 17:00:00,,0
639,1.1.1.10.1.10,lineaire elementen,0.375,0.3,0.45,2018-10-08 08:00:00,2018-10-08 17:00:00,,0
640,1.1.1.10.1.11,Fundering mager beton,0.375,0.3,0.45,2018-10-09 08:00:00,2018-10-09 17:00:00,,0
641,1.1.1.10.1.12,Bestrating ,8.375,6.7,10.05,2018-10-10 08:00:00,2018-10-18 17:00:00,,0
642,1.1.1.10.1.13,Afbraak verharding teniers noord,6.375,5.1,7.65,2018-10-19 08:00:00,2018-10-25 17:00:00,,0
643,1.1.1.10.1.14,Aanleg roofing dakplaat teniers noord,13.375,10.7,16.05,2018-11-14 08:00:00,2018-11-27 17:00:00,,0
644,1.1.1.10.2,Fase 2 Teniersplaats Noord,433.0,428.67,437.33,2017-11-30 17:00:00,2019-02-06 17:00:00,,0
645,1.1.1.10.2.1,Fasewissel,0.0,0.0,0.0,2017-11-30 17:00:00,2017-11-30 17:00:00,,0
646,1.1.1.10.2.2,Nutsleidingen,21.375,17.1,25.65,2017-12-01 08:00:00,2017-12-22 17:00:00,,0
647,1.1.1.10.2.3,Aanvullen boven dakplaat,0.375,0.3,0.45,2018-11-28 08:00:00,2018-11-28 17:00:00,,0
648,1.1.1.10.2.4,Onderfundering type II,0.375,0.3,0.45,2018-11-29 08:00:00,2018-11-29 17:00:00,,0
649,1.1.1.10.2.5,Huisaansluitingen-wachtbuizen,6.375,5.1,7.65,2018-11-30 08:00:00,2018-12-06 17:00:00,,0
650,1.1.1.10.2.6,Ingraven leidingen-trekputten-sokkels,5.375,4.3,6.45,2018-12-07 08:00:00,2018-12-12 17:00:00,,0
651,1.1.1.10.2.7,Wachtbuizen tractiekabel V015 + V016 + V017 + V018,5.375,4.3,6.45,2018-12-13 08:00:00,2018-12-18 17:00:00,,0
652,1.1.1.10.2.8,Fundering mager beton,1.375,1.1,1.65,2018-12-19 08:00:00,2018-12-20 17:00:00,,0
653,1.1.1.10.2.9,Aanleg verharding,47.375,37.9,56.85,2018-12-21 08:00:00,2019-02-06 17:00:00,,0
654,1.1.1.10.3,26 Kipdorpbrug - St Jacobsmarkt,38.375,37.99,38.76,2018-08-14 08:00:00,2018-09-21 17:00:00,,0
655,1.1.1.10.3.1,Wacht op Beslissing OG heraanleg wegenis,11.375,9.1,13.65,2018-09-10 08:00:00,2018-09-21 17:00:00,,0
656,1.1.1.10.3.2,Fase E ,24.375,24.13,24.62,2018-08-14 08:00:00,2018-09-07 17:00:00,,0
657,1.1.1.10.3.2.1,Peilen nutsleidingen trambedding,1.375,1.1,1.65,2018-08-14 08:00:00,2018-08-15 17:00:00,,0
658,1.1.1.10.3.2.2,opbraak wegenis,1.375,1.1,1.65,2018-08-16 08:00:00,2018-08-17 17:00:00,,0
659,1.1.1.10.3.2.3,Grondwerk -onderfundering rijweg,1.375,1.1,1.65,2018-08-20 08:00:00,2018-08-21 17:00:00,,0
660,1.1.1.10.3.2.4,Lineaire elementen,2.375,1.9,2.85,2018-08-22 08:00:00,2018-08-24 17:00:00,,0
661,1.1.1.10.3.2.5,Fundering rijweg,1.375,1.1,1.65,2018-08-27 08:00:00,2018-08-28 17:00:00,,0
662,1.1.1.10.3.2.6,Verharding rijweg,0.375,0.3,0.45,2018-08-29 08:00:00,2018-08-29 17:00:00,,0
663,1.1.1.10.3.2.7,Fundering voetpad,1.375,1.1,1.65,2018-08-30 08:00:00,2018-08-31 17:00:00,,0
664,1.1.1.10.3.2.8,Verharding voetpad,4.375,3.5,5.25,2018-09-03 08:00:00,2018-09-07 17:00:00,,0
665,1.1.1.11,26 Gemeentestraat (N12)-Kipdorpbrug,419.375,415.18,423.57,2019-01-16 08:00:00,2020-03-10 17:00:00,,0
666,1.1.1.11.1,Aanleg rijdraden bovenleiding (aanleg voorbereidende werkzaamheden BVL: zie de werfdelen),172.375,170.65,174.1,2019-04-01 08:00:00,2019-09-20 17:00:00,,0
667,1.1.1.11.1.1,Rd-01 en Rd-02 deel 1 (Rooseveltplaats - Operaplein - tot 30m1 ten zuiden van U-turn),51.375,50.86,51.89,2019-04-01 08:00:00,2019-05-22 17:00:00,,0
668,1.1.1.11.1.1.1,Montage dwarskabels en GFK's tbv rijdraad Rd-01 en Rd-02 deel 1,11.375,9.1,13.65,2019-04-01 08:00:00,2019-04-12 17:00:00,,0
669,1.1.1.11.1.1.2,Afrol en montage Bovenleiding Rd-01 en Rd-02 deel 1 (BVL bij start taak onder spanning!!),9.375,7.5,11.25,2019-05-13 08:00:00,2019-05-22 17:00:00,,0
670,1.1.1.11.1.2,"BVL over Kipdorpbrug: Rd-09 en Rd-10 (Kipdorpvest - Kipdorpbrug - tot nèt vóór Tunnelplaats), Rd-05 en Rd-06 (Kipdorpbrug - Operaplein) en Rd-11 en Rd-12 (Kipdorpbrug - Rooseveltplaats - Gemeentestraat tot Van Stralenstraat)",109.375,108.28,110.47,2019-06-03 08:00:00,2019-09-20 17:00:00,,0
671,1.1.1.11.1.2.1,Montage dwarskabels en GFK's t.p.v. Kipdorpbrug,4.375,3.5,5.25,2019-06-03 08:00:00,2019-06-07 17:00:00,,0
672,1.1.1.11.1.2.2,"Afrol BVL Rd-09 en Rd-10, Rd-05 en Rd-06 en Rd-11 en Rd-12, BVL onder spanning bij aanvang montage",7.375,5.9,8.85,2019-06-24 08:00:00,2019-07-01 17:00:00,,0
673,1.1.1.11.1.2.3,"afstellen BVL Rd-09 en Rd-10, Rd-05 en Rd-06 en Rd-11 en Rd-12, BVL onder spanning bij aanvang montage",3.375,2.7,4.05,2019-07-15 08:00:00,2019-07-18 17:00:00,,0
674,1.1.1.11.1.2.4,Inbedrijfsname wissels (Kipdorpbrug) (,4.375,3.5,5.25,2019-09-16 08:00:00,2019-09-20 17:00:00,,0
675,1.1.1.11.2,"Stap H, kwadrant 2 Voetgangers- en fietserscorridoor Kipdorpbrug (werfdeel I)",44.375,43.93,44.82,2019-01-16 08:00:00,2019-03-01 17:00:00,,0
676,1.1.1.11.2.1,Proefput mast en BVL mast tpv Pizza Domino's 0312,0.375,0.3,0.45,2019-01-16 08:00:00,2019-01-16 17:00:00,,0
677,1.1.1.11.2.2,"Fundering mast en BVL mast tpv Pizza Domino's 0312 (proefput 16.01; geboord 31.01, mast volgt)",23.375,18.7,28.05,2019-01-16 08:00:00,2019-02-08 17:00:00,,0
678,1.1.1.11.2.3,Aanleg voetgangers- en fietserscorridor (werfdeel I),11.375,9.1,13.65,2019-02-18 08:00:00,2019-03-01 17:00:00,,0
679,1.1.1.11.2.4,Fasewissel naar voetgangerscorridor voor Domino's Pizza langs,0.0,0.0,0.0,2019-03-01 17:00:00,2019-03-01 17:00:00,,0
680,1.1.1.11.3,Stap J Kipdorpbrug-Operaplein (Werfdeel III),186.375,184.51,188.24,2019-04-01 08:00:00,2019-10-04 17:00:00,,0
681,1.1.1.11.3.1,Einde plaatsing Kipdorpbrug,0.0,0.0,0.0,2019-04-25 17:00:00,2019-04-25 17:00:00,,0
682,1.1.1.11.3.2,"Opbraak verharding (Gemeentestraat - Kipdorpbrug, fase J Kipdorpbrug-Operaplein)",5.375,4.3,6.45,2019-04-11 08:00:00,2019-04-16 17:00:00,,0
683,1.1.1.11.3.3,Archeologie,8.375,6.7,10.05,2019-04-01 08:00:00,2019-04-09 17:00:00,,0
684,1.1.1.11.3.4,Riolering R103A-R102A,64.375,51.5,77.25,2019-04-24 08:00:00,2019-06-27 17:00:00,,0
685,1.1.1.11.3.5,Riolering R102B-R102,64.375,51.5,77.25,2019-04-24 08:00:00,2019-06-27 17:00:00,,0
686,1.1.1.11.3.6,Wachtbuizen,6.375,5.1,7.65,2019-05-08 08:00:00,2019-05-14 17:00:00,,0
687,1.1.1.11.3.7,Plaatsen voetpadkasten wisselsturing (direct naast mast 0303),1.375,1.1,1.65,2019-05-13 08:00:00,2019-05-14 17:00:00,,0
688,1.1.1.11.3.8,Onderfundering ,62.375,49.9,74.85,2019-05-15 08:00:00,2019-07-16 17:00:00,,0
689,1.1.1.11.3.9,Kolken,4.375,3.5,5.25,2019-08-12 08:00:00,2019-08-16 17:00:00,,0
690,1.1.1.11.3.10,Lineaire elementen,16.375,13.1,19.65,2019-08-21 08:00:00,2019-09-06 17:00:00,,0
691,1.1.1.11.3.11,Verharding bestrating,25.375,20.3,30.45,2019-09-09 08:00:00,2019-10-04 17:00:00,,0
692,1.1.1.11.3.12,Verharding asfalt-rijwegbeton,25.375,20.3,30.45,2019-09-09 08:00:00,2019-10-04 17:00:00,,0
693,1.1.1.11.3.13,Nokken en waterdichting dakplaat,21.375,21.16,21.59,2019-04-15 08:00:00,2019-05-06 17:00:00,,0
694,1.1.1.11.3.13.1,Realiseren nokken,3.375,2.7,4.05,2019-04-15 08:00:00,2019-04-18 17:00:00,,0
695,1.1.1.11.3.13.2,Uitharding betonnokken,10.375,8.3,12.45,2019-04-19 08:00:00,2019-04-29 17:00:00,,0
696,1.1.1.11.3.13.3,Waterdichting Nokken en onder de sporen,6.375,5.1,7.65,2019-04-30 08:00:00,2019-05-06 17:00:00,,0
697,1.1.1.11.4,Aanleg tramsporen Kipdorpbrug (werfeel III en VII),94.375,93.43,95.32,2019-04-15 08:00:00,2019-07-18 17:00:00,,0
698,1.1.1.11.4.1,Spoor ten noorden Kipdorpbrug (werfdeel VII),43.375,42.94,43.81,2019-04-15 08:00:00,2019-05-28 17:00:00,,0
699,1.1.1.11.4.1.1,"Spoor bedding (raakvlak met DP3, keerconstructie trambaan)",8.375,6.7,10.05,2019-04-15 08:00:00,2019-04-23 17:00:00,,0
700,1.1.1.11.4.1.2,Leggen sporen (raakvlak met brug geplaatst),3.375,2.7,4.05,2019-04-26 08:00:00,2019-04-29 17:00:00,,0
701,1.1.1.11.4.1.3,Plaatsen voorzieningen wisselsturen (wachbuizen en spooraansluitingen) Engie,1.375,1.1,1.65,2019-05-13 08:00:00,2019-05-14 17:00:00,,0
702,1.1.1.11.4.1.4,Storten Kiftbeton (Spoor noord),1.375,1.1,1.65,2019-05-27 08:00:00,2019-05-28 17:00:00,,0
703,1.1.1.11.4.2,Spoor op Kipdorpbrug (Werfdeel VII),83.375,82.54,84.21,2019-04-26 08:00:00,2019-07-18 17:00:00,,0
704,1.1.1.11.4.2.1,Plaatsen spoor (raakvlak met plaatsen Kipdorpbrug gereed),14.375,11.5,17.25,2019-04-26 08:00:00,2019-05-10 17:00:00,,0
705,1.1.1.11.4.2.2,Afstellen spoor en controlemetingen,3.375,2.7,4.05,2019-05-14 08:00:00,2019-05-17 17:00:00,,0
706,1.1.1.11.4.2.3,Plaatsen voorzieningen wisselsturen (wachbuizen en spooraansluitingen) Engie,3.375,2.7,4.05,2019-05-14 08:00:00,2019-05-17 17:00:00,,0
707,1.1.1.11.4.2.4,"Ingieten sporen in Edilon (dagwerk, 2 dagen ene spoor, 2 dagen andere spoor)",3.375,2.7,4.05,2019-07-15 08:00:00,2019-07-18 17:00:00,,0
708,1.1.1.11.4.3,Spoor ten zuiden Kipdorpbrug (Werfdeel III),26.375,26.11,26.64,2019-05-10 08:00:00,2019-06-05 17:00:00,,0
709,1.1.1.11.4.3.1,Officieel moment leggen laatste spoorpaneel,0.375,0.3,0.45,2019-05-10 08:00:00,2019-05-10 17:00:00,,0
710,1.1.1.11.4.3.2,"Plaatsen, lassen en afstellen sporen",7.375,5.9,8.85,2019-05-20 08:00:00,2019-05-27 17:00:00,,0
711,1.1.1.11.4.3.3,Plaatsen voorzieningen wisselsturen (wachbuizen en spooraansluitingen) Engie,16.375,13.1,19.65,2019-05-20 08:00:00,2019-06-05 17:00:00,,0
712,1.1.1.11.4.3.4,Storten Kiftbeton (Spoor zuid),1.375,1.1,1.65,2019-05-27 08:00:00,2019-05-28 17:00:00,,0
713,1.1.1.11.5,"Stap J Kipdorpbrug tot Molenbergstraat (Werfdeel IIIa, langs Expressbar)",238.375,235.99,240.76,2019-04-26 08:00:00,2019-12-20 17:00:00,,0
714,1.1.1.11.5.1,"Opbraak verharding (Fase J, Kipdorpbrug tot Molenbergstraat)",3.375,2.7,4.05,2019-04-26 08:00:00,2019-04-29 17:00:00,,0
715,1.1.1.11.5.2,"Archeologie (Fase J, Kipdorpbrug tot Molenbergstraat)",11.375,9.1,13.65,2019-05-06 08:00:00,2019-05-17 17:00:00,,0
716,1.1.1.11.5.3,Nutsleidingen (overkopelen distributieleiding Waterlink),8.375,6.7,10.05,2019-05-20 08:00:00,2019-05-28 17:00:00,,0
717,1.1.1.11.5.4,Riolering R196-R195,6.375,5.1,7.65,2019-08-08 08:00:00,2019-08-14 17:00:00,,0
718,1.1.1.11.5.5,Grondwerk-Onderfundering,3.375,2.7,4.05,2019-11-15 08:00:00,2019-11-18 17:00:00,,0
719,1.1.1.11.5.6,Wachtbuizen,6.375,5.1,7.65,2019-11-19 08:00:00,2019-11-25 17:00:00,,0
720,1.1.1.11.5.7,Kolken,1.375,1.1,1.65,2019-11-26 08:00:00,2019-11-27 17:00:00,,0
721,1.1.1.11.5.8,Lineaire elementen,1.375,1.1,1.65,2019-11-28 08:00:00,2019-11-29 17:00:00,,0
722,1.1.1.11.5.9,Fundering,10.375,8.3,12.45,2019-12-02 08:00:00,2019-12-12 17:00:00,,0
723,1.1.1.11.5.10,Asfalt rijweg,0.375,0.3,0.45,2019-12-13 08:00:00,2019-12-13 17:00:00,,0
724,1.1.1.11.5.11,Bestrating voetpad,4.375,3.5,5.25,2019-12-16 08:00:00,2019-12-20 17:00:00,,0
725,1.1.1.11.6,"Ventweg Kipdorpbrug ZW (werfdeel IV) (Deel OP, DP2)",203.0,200.97,205.03,2019-04-25 17:00:00,2019-11-14 17:00:00,,0
726,1.1.1.11.6.1,Einde plaatsen Keerelementen archeologische tuin,0.0,0.0,0.0,2019-04-25 17:00:00,2019-04-25 17:00:00,,0
727,1.1.1.11.6.2,"Grondwerk tbv RV023 (26 Gemeentestraat (N12)-Kipdorpbrug, ventweg Kipdorpbrug ZW)",4.375,3.5,5.25,2019-04-26 08:00:00,2019-04-30 17:00:00,,0
728,1.1.1.11.6.3,"Grondwerk, kopie voor RV012 (26 Gemeentestraat (N12)-Kipdorpbrug, ventweg Kipdorpbrug ZW)",2.375,1.9,2.85,2019-05-21 08:00:00,2019-05-23 17:00:00,,0
729,1.1.1.11.6.4,Onderfundering,1.375,1.1,1.65,2019-08-19 08:00:00,2019-08-20 17:00:00,,0
730,1.1.1.11.6.5,Kolken,1.375,1.1,1.65,2019-08-21 08:00:00,2019-08-22 17:00:00,,0
731,1.1.1.11.6.6,lineaire elementen,14.375,11.5,17.25,2019-08-23 08:00:00,2019-09-06 17:00:00,,0
732,1.1.1.11.6.7,Fundering rijweg,1.375,1.1,1.65,2019-09-09 08:00:00,2019-09-10 17:00:00,,0
733,1.1.1.11.6.8,Asfalt rijweg,0.375,0.3,0.45,2019-10-01 08:00:00,2019-10-01 17:00:00,,0
734,1.1.1.11.6.9,lineaire elementen fietspad,4.375,3.5,5.25,2019-09-12 08:00:00,2019-09-16 17:00:00,,0
735,1.1.1.11.6.10,fundering fietspad,1.375,1.1,1.65,2019-09-17 08:00:00,2019-09-18 17:00:00,,0
736,1.1.1.11.6.11,Asfalt fietspad,0.375,0.3,0.45,2019-10-07 08:00:00,2019-10-07 17:00:00,,0
737,1.1.1.11.6.12,fundering voetpad,1.375,1.1,1.65,2019-09-19 08:00:00,2019-09-20 17:00:00,,0
738,1.1.1.11.6.13,bestrating voetpad,4.375,3.5,5.25,2019-09-23 08:00:00,2019-09-27 17:00:00,,0
739,1.1.1.11.6.14,Verlichting,38.375,30.7,46.05,2019-10-07 08:00:00,2019-11-14 17:00:00,,0
740,1.1.1.11.7,St Jacobsmarkt-Molenbergstraat (werfdeel V),43.375,42.94,43.81,2019-11-18 08:00:00,2019-12-31 17:00:00,,0
741,1.1.1.11.7.1,Fasewissel (St Jacobsmarkt - Molenbergstraat),0.375,0.3,0.45,2019-11-18 08:00:00,2019-11-18 17:00:00,,0
742,1.1.1.11.7.2,Archeologie,6.375,5.1,7.65,2019-11-19 08:00:00,2019-11-25 17:00:00,,0
743,1.1.1.11.7.3,Afsluiten Molenbergstraat,0.375,0.3,0.45,2019-11-26 08:00:00,2019-11-26 17:00:00,,0
744,1.1.1.11.7.4,Opbraak verharding ,1.375,1.1,1.65,2019-11-27 08:00:00,2019-11-28 17:00:00,,0
745,1.1.1.11.7.5,Riolering R195-R194,3.375,2.7,4.05,2019-11-29 08:00:00,2019-12-02 17:00:00,,0
746,1.1.1.11.7.6,wachtbuizen,1.375,1.1,1.65,2019-12-03 08:00:00,2019-12-04 17:00:00,,0
747,1.1.1.11.7.7,Grondwerk-onderfundering,1.375,1.1,1.65,2019-12-05 08:00:00,2019-12-06 17:00:00,,0
748,1.1.1.11.7.8,Kolken,1.375,1.1,1.65,2019-12-09 08:00:00,2019-12-10 17:00:00,,0
749,1.1.1.11.7.9,Lineaire elementen,1.375,1.1,1.65,2019-12-11 08:00:00,2019-12-12 17:00:00,,0
750,1.1.1.11.7.10,Fundering rijweg,0.375,0.3,0.45,2019-12-13 08:00:00,2019-12-13 17:00:00,,0
751,1.1.1.11.7.11,Asfalt rijweg,0.375,0.3,0.45,2019-12-16 08:00:00,2019-12-16 17:00:00,,0
752,1.1.1.11.7.12,Fundering voetpad,1.375,1.1,1.65,2019-12-17 08:00:00,2019-12-18 17:00:00,,0
753,1.1.1.11.7.13,Bestrating voetpad,12.375,9.9,14.85,2019-12-19 08:00:00,2019-12-31 17:00:00,,0
754,1.1.1.11.7.14,Verlichting,6.375,5.1,7.65,2019-12-19 08:00:00,2019-12-25 17:00:00,,0
755,1.1.1.11.8,Lange Nieuwstraat-Kipdorpvest (werfdeel VI),132.0,130.68,133.32,2019-10-30 17:00:00,2020-03-10 17:00:00,,0
756,1.1.1.11.8.1,Verwijderen tijdelijke HS cabine DP3,0.0,0.0,0.0,2019-10-30 17:00:00,2019-10-30 17:00:00,,0
757,1.1.1.11.8.2,"Opbraak verharding met RV014 (26 Gemeentestraat (N12)-Kipdorpbrug, Lange Nieuwstraat-Kipdorpvest (-E))",1.375,1.1,1.65,2020-01-15 08:00:00,2020-01-16 17:00:00,,0
758,1.1.1.11.8.3,"Opbraak verharding, kopie taak met RV021 (26 Gemeentestraat (N12)-Kipdorpbrug, Lange Nieuwstraat-Kipdorpvest (-E))",1.375,1.1,1.65,2020-01-15 08:00:00,2020-01-16 17:00:00,,0
759,1.1.1.11.8.4,Riolering R14,6.375,5.1,7.65,2020-01-17 08:00:00,2020-01-23 17:00:00,,0
760,1.1.1.11.8.5,Wachtbuizen,6.375,5.1,7.65,2020-01-24 08:00:00,2020-01-30 17:00:00,,0
761,1.1.1.11.8.6,Grondwerk-onderfundering,4.375,3.5,5.25,2020-01-31 08:00:00,2020-02-04 17:00:00,,0
762,1.1.1.11.8.7,Kolken,1.375,1.1,1.65,2020-02-05 08:00:00,2020-02-06 17:00:00,,0
763,1.1.1.11.8.8,lineaire elementen,4.375,3.5,5.25,2020-02-07 08:00:00,2020-02-11 17:00:00,,0
764,1.1.1.11.8.9,Fundering fietspad,0.375,0.3,0.45,2020-02-12 08:00:00,2020-02-12 17:00:00,,0
765,1.1.1.11.8.10,Asfalt fietspad,0.375,0.3,0.45,2020-02-13 08:00:00,2020-02-13 17:00:00,,0
766,1.1.1.11.8.11,Fundering voetpad,4.375,3.5,5.25,2020-02-14 08:00:00,2020-02-18 17:00:00,,0
767,1.1.1.11.8.12,Bestrating voetpad,13.375,10.7,16.05,2020-02-19 08:00:00,2020-03-03 17:00:00,,0
768,1.1.1.11.8.13,Verlichting,6.375,5.1,7.65,2020-03-04 08:00:00,2020-03-10 17:00:00,,0
