node_id,wbs,task_name,duration,optimistic_time,pessimistic_time,baseline_start,baseline_end,resource_demand,total_cost
0,1,Project,1456.375,1441.81,1470.94,2016-03-01 08:00:00,2020-02-25 17:00:00,,2691
1,1.1,DP3-1 PréMetro,1456.375,1441.81,1470.94,2016-03-01 08:00:00,2020-02-25 17:00:00,,2691
2,1.1.1,DP3 OPON (OPERAPLEIN ONDERGROND),1456.375,1441.81,1470.94,2016-03-01 08:00:00,2020-02-25 17:00:00,,2691
3,1.1.1.1,START OPON,0.625,0.5,0.75,2016-03-01 08:00:00,2016-02-29 17:00:00,,0
4,1.1.1.2,FINISH OPON - PréMetro,0.0,0.0,0.0,2019-10-15 17:00:00,2019-10-15 17:00:00,,0
5,1.1.1.3,Exteren relaties,323.0,319.77,326.23,2019-02-27 17:00:00,2020-01-16 17:00:00,,0
6,1.1.1.3.1,Inkomende relaties naar DP3-1,0.0,0.0,0.0,2019-05-03 17:00:00,2019-05-03 17:00:00,,0
7,1.1.1.3.1.1,"RV021 uit DP2 naar DP3, Nieuwe feederkabel tbv aansl V015, V016, V017 en V018 aangeloten en gebruik gesteld tbv verwijderen bestaande Feederkabels F016 en F019",0.0,0.0,0.0,2019-05-03 17:00:00,2019-05-03 17:00:00,,0
8,1.1.1.3.2,Uitgaande relaties vanuit DP3-1,323.0,319.77,326.23,2019-02-27 17:00:00,2020-01-16 17:00:00,,0
9,1.1.1.3.2.1,"ContractMijlpaal uit DP3-1 naar BCT5, Uitvoering station PréMetro gereed tbv start testen ON",0.0,0.0,0.0,2019-06-21 17:00:00,2019-06-21 17:00:00,,0
10,1.1.1.3.2.2,"ContractMijlpaal uit DP3 (station) naar BCT5, Tram Leien Operaplein volledig",0.0,0.0,0.0,2019-10-15 17:00:00,2019-10-15 17:00:00,,0
11,1.1.1.3.2.3,"ContractMijlpaal uit DP301 naar VO-10, Fietsenstalling Teniers (ondergrond)",0.0,0.0,0.0,2019-02-27 17:00:00,2019-02-27 17:00:00,,0
12,1.1.1.3.2.4,"RV007 uit DP3 naar DP2, Dakplaat Zone C Keyserlei Zuid gereed voor bestrating",0.0,0.0,0.0,2019-04-05 17:00:00,2019-04-05 17:00:00,,0
13,1.1.1.3.2.5,"ContractMijlpaal uit DP3 (station) naar BCT5, Restpunten afgewerkt",0.0,0.0,0.0,2020-01-16 17:00:00,2020-01-16 17:00:00,,0
14,1.1.1.3.2.6,RV013 uit DP3-1 naar DP3-2: Leuningen Lichtput af,0.0,0.0,0.0,2019-09-02 17:00:00,2019-09-02 17:00:00,,0
15,1.1.1.3.2.7,RV017 uit DP3 naar DP2: Lichtput gereed voor start bestrating rond lichtput,0.0,0.0,0.0,2019-06-25 17:00:00,2019-06-25 17:00:00,,0
16,1.1.1.4,31 PREMETRO,1456.375,1441.81,1470.94,2016-03-01 08:00:00,2020-02-25 17:00:00,,2691
17,1.1.1.4.1,A ) Keyserlei West (Teniers),840.375,831.97,848.78,2017-08-16 08:00:00,2019-12-04 17:00:00,,795
18,1.1.1.4.1.1,niv 0,121.375,120.16,122.59,2017-11-06 08:00:00,2018-03-07 17:00:00,,0
19,1.1.1.4.1.1.1,ruwbouw,121.375,120.16,122.59,2017-11-06 08:00:00,2018-03-07 17:00:00,,0
20,1.1.1.4.1.1.1.1,verplaatsen nutsleidingen zuid,25.375,20.3,30.45,2017-11-06 08:00:00,2017-12-01 17:00:00,,0
21,1.1.1.4.1.1.1.2,verplaatsen nutsleidingen noord,27.375,21.9,32.85,2017-12-05 08:00:00,2018-01-01 17:00:00,,0
22,1.1.1.4.1.1.1.3,vrijgave zone voor afbraak ZUID,0.0,0.0,0.0,2017-12-01 17:00:00,2017-12-01 17:00:00,,0
23,1.1.1.4.1.1.1.4,vrijgave zone voor afbraak NOORD,0.0,0.0,0.0,2018-01-11 17:00:00,2018-01-11 17:00:00,,0
24,1.1.1.4.1.1.1.5,afbraak roltrapbak en bestaande trap zuid,11.375,9.1,13.65,2017-12-04 08:00:00,2017-12-15 17:00:00,,0
25,1.1.1.4.1.1.1.6,afbraak dakplaat thv nieuwe helling zuid,11.375,9.1,13.65,2017-12-04 08:00:00,2017-12-15 17:00:00,,0
26,1.1.1.4.1.1.1.7,afbraak roltrapbak en bestaande trap noord,30.375,24.3,36.45,2018-02-05 08:00:00,2018-03-07 17:00:00,,0
27,1.1.1.4.1.1.1.8,afbraak dakplaat noord,13.375,10.7,16.05,2018-01-12 08:00:00,2018-01-25 17:00:00,,0
28,1.1.1.4.1.1.1.9,goedgekeurde plannen,0.0,0.0,0.0,2018-03-02 17:00:00,2018-03-02 17:00:00,,0
29,1.1.1.4.1.2,niv -1 (A: Keyserlei West - Teniers),800.375,792.37,808.38,2017-09-25 08:00:00,2019-12-04 17:00:00,,744
30,1.1.1.4.1.2.1,"ruwbouw (A: Keyserlei West - Teniers, niv-1)",407.375,403.3,411.45,2017-09-25 08:00:00,2018-11-06 17:00:00,,725
31,1.1.1.4.1.2.1.1,goedgekeurde afbraakplan + ondersteuningsplan wand W6,0.0,0.0,0.0,2018-03-02 17:00:00,2018-03-02 17:00:00,,0
32,1.1.1.4.1.2.1.2,afbraak wand W6  thv trap T9,45.375,36.3,54.45,2018-05-14 08:00:00,2018-06-28 17:00:00,,10
33,1.1.1.4.1.2.1.3,nieuwe trappen T4/roltrappen zuid,37.375,29.9,44.85,2018-05-30 08:00:00,2018-07-06 17:00:00,,52
34,1.1.1.4.1.2.1.4,nieuwe trappen T3 noord,20.375,16.3,24.45,2018-06-06 08:00:00,2018-06-26 17:00:00,,60
35,1.1.1.4.1.2.1.5,roltrap noord,13.375,10.7,16.05,2018-07-03 08:00:00,2018-07-16 17:00:00,,5
36,1.1.1.4.1.2.1.6,dichten vloeropeningen,25.375,20.3,30.45,2017-09-25 08:00:00,2017-10-20 17:00:00,,0
37,1.1.1.4.1.2.1.7,ontkisten vloeropeningen,13.375,10.7,16.05,2017-12-20 08:00:00,2018-01-02 17:00:00,,0
38,1.1.1.4.1.2.1.8,"aanleg nieuw fietsershelling (T0) (A: Keyserlei West - Teniers, niv-1)",197.375,195.4,199.35,2018-04-23 08:00:00,2018-11-06 17:00:00,,536
39,1.1.1.4.1.2.1.8.1,wanden tot onderzijde tussenbordes,14.375,11.5,17.25,2018-04-23 08:00:00,2018-05-07 17:00:00,,44
40,1.1.1.4.1.2.1.8.2,helling deel 1 + tussenbordes,34.375,27.5,41.25,2018-05-08 08:00:00,2018-06-11 17:00:00,,100
41,1.1.1.4.1.2.1.8.3,wand op helling deel 1,7.375,5.9,8.85,2018-06-12 08:00:00,2018-06-19 17:00:00,,24
42,1.1.1.4.1.2.1.8.4,wand op tussenbordes,7.375,5.9,8.85,2018-06-12 08:00:00,2018-06-19 17:00:00,,24
43,1.1.1.4.1.2.1.8.5,kolommen naast helling deel 1,29.375,23.5,35.25,2018-07-05 08:00:00,2018-08-03 17:00:00,,60
44,1.1.1.4.1.2.1.8.6,helling deel 2,14.375,11.5,17.25,2018-06-20 08:00:00,2018-07-04 17:00:00,,60
45,1.1.1.4.1.2.1.8.7,kolommen op helling deel 2,21.375,17.1,25.65,2018-07-05 08:00:00,2018-07-26 17:00:00,,60
46,1.1.1.4.1.2.1.8.8,wand op helling deel 2,7.375,5.9,8.85,2018-07-05 08:00:00,2018-07-12 17:00:00,,24
47,1.1.1.4.1.2.1.8.9,dakplaat,11.375,9.1,13.65,2018-07-02 08:00:00,2018-07-13 17:00:00,,40
48,1.1.1.4.1.2.1.8.10,afwerken randbalk T0,25.375,20.3,30.45,2018-07-16 08:00:00,2018-08-10 17:00:00,,20
49,1.1.1.4.1.2.1.8.11,ontkisten,13.375,10.7,16.05,2018-09-12 08:00:00,2018-09-25 17:00:00,,40
50,1.1.1.4.1.2.1.8.12,waterdichting dakplaat Teniers Zuid,13.375,10.7,16.05,2018-09-26 08:00:00,2018-10-09 17:00:00,,40
51,1.1.1.4.1.2.1.8.13,waterdichting randbalken Teniers Zuid,41.375,33.1,49.65,2018-09-26 08:00:00,2018-11-06 17:00:00,,0
52,1.1.1.4.1.2.1.9,"Overige zaken (A: Keyserlei West - Teniers, niv-1)",72.375,71.65,73.1,2018-08-06 08:00:00,2018-10-17 17:00:00,,62
53,1.1.1.4.1.2.1.9.1,betonnen sokkels glas,31.375,25.1,37.65,2018-08-06 08:00:00,2018-09-06 17:00:00,,60
54,1.1.1.4.1.2.1.9.2,metsen wanden,5.375,4.3,6.45,2018-09-26 08:00:00,2018-10-01 17:00:00,,0
55,1.1.1.4.1.2.1.9.3,polybeton bordenlokaal [B4],6.375,5.1,7.65,2018-10-11 08:00:00,2018-10-17 17:00:00,,2
56,1.1.1.4.1.2.1.9.4,metselwerk bordenlokaal [B4],3.375,2.7,4.05,2018-10-02 08:00:00,2018-10-05 17:00:00,,0
57,1.1.1.4.1.2.1.9.5,schilderen bordenlokaal [B4],2.375,1.9,2.85,2018-10-08 08:00:00,2018-10-10 17:00:00,,0
58,1.1.1.4.1.2.2,"afwerking (A: Keyserlei West - Teniers, niv-1)",597.0,591.03,602.97,2018-04-16 17:00:00,2019-12-04 17:00:00,,19
59,1.1.1.4.1.2.2.1,MS Technisch Dossier,0.0,0.0,0.0,2018-04-16 17:00:00,2018-04-16 17:00:00,,0
60,1.1.1.4.1.2.2.2,MS Opmeting,0.0,0.0,0.0,2018-06-28 17:00:00,2018-06-28 17:00:00,,0
61,1.1.1.4.1.2.2.3,Polybeton fietserszone + gang,4.375,3.5,5.25,2018-09-10 08:00:00,2018-09-14 17:00:00,,9
62,1.1.1.4.1.2.2.4,OSR8,1.375,1.36,1.39,2019-07-30 08:00:00,2019-07-31 17:00:00,,0
63,1.1.1.4.1.2.2.4.1,Glazen balustrade maaiveld,1.375,1.1,1.65,2019-07-30 08:00:00,2019-07-31 17:00:00,,0
64,1.1.1.4.1.2.2.5,T3,437.375,433.0,441.75,2018-05-18 08:00:00,2019-07-29 17:00:00,,0
65,1.1.1.4.1.2.2.5.1,Metselwerk,6.375,5.1,7.65,2018-06-27 08:00:00,2018-07-03 17:00:00,,0
66,1.1.1.4.1.2.2.5.2,Start opmeting + productie Trapontdooiing levertijd 4wk,0.375,0.3,0.45,2018-05-18 08:00:00,2018-05-18 17:00:00,,0
67,1.1.1.4.1.2.2.5.3,Trapontdooiing,4.375,3.5,5.25,2018-09-14 08:00:00,2018-09-18 17:00:00,,0
68,1.1.1.4.1.2.2.5.4,Granieten traptreden,20.375,16.3,24.45,2018-09-19 08:00:00,2018-10-09 17:00:00,,0
69,1.1.1.4.1.2.2.5.5,Wandtegels Graniet,56.375,45.1,67.65,2018-07-04 08:00:00,2018-08-29 17:00:00,,0
70,1.1.1.4.1.2.2.5.6,Opmeten leuningen,0.375,0.3,0.45,2019-01-09 08:00:00,2019-01-09 17:00:00,,0
71,1.1.1.4.1.2.2.5.7,Glazen balustrade maaiveld,2.375,1.9,2.85,2019-07-23 08:00:00,2019-07-25 17:00:00,,0
72,1.1.1.4.1.2.2.5.8,Leuning/handgreep,3.375,2.7,4.05,2019-07-26 08:00:00,2019-07-29 17:00:00,,0
73,1.1.1.4.1.2.2.6,T4/OSR12,436.375,432.01,440.74,2018-06-25 08:00:00,2019-09-04 17:00:00,,0
74,1.1.1.4.1.2.2.6.1,Metselwerk,0.0,0.0,0.0,2018-07-06 17:00:00,2018-07-06 17:00:00,,0
75,1.1.1.4.1.2.2.6.2,Start opmeting + productie Trapontdooiing levertijd 4wk,2.375,1.9,2.85,2018-06-25 08:00:00,2018-06-27 17:00:00,,0
76,1.1.1.4.1.2.2.6.3,Trapontdooiing,1.375,1.1,1.65,2018-10-24 08:00:00,2018-10-25 17:00:00,,0
77,1.1.1.4.1.2.2.6.4,Granieten traptreden,13.375,10.7,16.05,2018-10-26 08:00:00,2018-11-08 17:00:00,,0
78,1.1.1.4.1.2.2.6.5,Wandtegels Graniet,1.375,1.1,1.65,2018-08-30 08:00:00,2018-08-31 17:00:00,,0
79,1.1.1.4.1.2.2.6.6,Glazen balustrade maaiveld,1.375,1.1,1.65,2019-04-29 08:00:00,2019-04-30 17:00:00,,0
80,1.1.1.4.1.2.2.6.7,Inox goot T4,0.375,0.3,0.45,2019-05-13 08:00:00,2019-05-13 17:00:00,,0
81,1.1.1.4.1.2.2.6.8,Leuning/handgreep,23.375,18.7,28.05,2019-08-12 08:00:00,2019-09-04 17:00:00,,0
82,1.1.1.4.1.2.2.7,T0,325.375,322.12,328.63,2018-08-20 08:00:00,2019-07-11 17:00:00,,0
83,1.1.1.4.1.2.2.7.1,Metselwerk,12.375,9.9,14.85,2018-11-07 08:00:00,2018-11-19 17:00:00,,0
84,1.1.1.4.1.2.2.7.2,Start opmeting + productie  Trapontdooiing levertijd 4w,0.375,0.3,0.45,2018-08-20 08:00:00,2018-08-20 17:00:00,,0
85,1.1.1.4.1.2.2.7.3,Trapontdooiing,31.375,25.1,37.65,2018-12-17 08:00:00,2019-01-17 17:00:00,,0
86,1.1.1.4.1.2.2.7.4,Granieten traptreden,48.375,38.7,58.05,2019-01-18 08:00:00,2019-03-07 17:00:00,,0
87,1.1.1.4.1.2.2.7.5,Wandtegels Graniet,13.375,10.7,16.05,2018-11-20 08:00:00,2018-12-03 17:00:00,,0
88,1.1.1.4.1.2.2.7.6,Opmeting leuning/handgreep,0.375,0.3,0.45,2019-01-09 08:00:00,2019-01-09 17:00:00,,0
89,1.1.1.4.1.2.2.7.7,Leuning/handgreep,6.375,5.1,7.65,2019-07-05 08:00:00,2019-07-11 17:00:00,,0
90,1.1.1.4.1.2.2.8,OSR8,12.375,12.25,12.5,2018-06-21 08:00:00,2018-07-03 17:00:00,,0
91,1.1.1.4.1.2.2.8.1,Wandtegels Graniet,12.375,9.9,14.85,2018-06-21 08:00:00,2018-07-03 17:00:00,,0
92,1.1.1.4.1.2.2.9,Roltrap 7  GV -> niv. -1 (OSR12),13.375,10.7,16.05,2018-07-03 08:00:00,2018-07-16 17:00:00,,5
93,1.1.1.4.1.2.2.10,Roltrap 4  GV -> niv. -1 (OSR8),13.375,10.7,16.05,2018-07-03 08:00:00,2018-07-16 17:00:00,,5
94,1.1.1.4.1.2.2.11,Borden roltrappen (roltrap 4 en 7),18.375,14.7,22.05,2018-10-15 08:00:00,2018-11-02 17:00:00,,0
95,1.1.1.4.1.2.2.12,Overige afwerking,450.375,445.87,454.88,2018-09-10 08:00:00,2019-12-04 17:00:00,,0
96,1.1.1.4.1.2.2.12.1,Schrijnwerk deuren,6.375,5.1,7.65,2019-08-01 08:00:00,2019-08-07 17:00:00,,0
97,1.1.1.4.1.2.2.12.2,Opmeting ramen rond fietsenstalling,0.375,0.3,0.45,2018-09-10 08:00:00,2018-09-10 17:00:00,,0
98,1.1.1.4.1.2.2.12.3,Afsluiting rond fietsenstalling,8.375,6.7,10.05,2019-07-02 08:00:00,2019-07-10 17:00:00,,0
99,1.1.1.4.1.2.2.12.4,Start opmeting + productie Ramen,0.375,0.3,0.45,2018-10-10 08:00:00,2018-10-10 17:00:00,,0
100,1.1.1.4.1.2.2.12.5,Leidingen onder vloerafwerking,1.375,1.1,1.65,2018-10-02 08:00:00,2018-10-03 17:00:00,,0
101,1.1.1.4.1.2.2.12.6,akoestische en brandwerende bespuiting ,23.375,18.7,28.05,2019-01-08 08:00:00,2019-01-31 17:00:00,,0
102,1.1.1.4.1.2.2.12.7,Fietsbeugels,8.375,6.7,10.05,2019-02-18 08:00:00,2019-02-26 17:00:00,,0
103,1.1.1.4.1.2.2.12.8,Start opmeting + productie Vouwdeur (= tourniket Bracon),0.375,0.3,0.45,2018-10-10 08:00:00,2018-10-10 17:00:00,,0
104,1.1.1.4.1.2.2.12.9,"Vouwdeur (= tourniket Bracon, Keyserlei west Teniers)",4.375,3.5,5.25,2019-09-30 08:00:00,2019-10-04 17:00:00,,0
105,1.1.1.4.1.2.2.12.10,Opmeting + productie Schrijnwerk deuren,0.375,0.3,0.45,2018-10-10 08:00:00,2018-10-10 17:00:00,,0
106,1.1.1.4.1.2.2.12.11,Anti-graffiti fietsenstalling,2.375,1.9,2.85,2019-02-18 08:00:00,2019-02-20 17:00:00,,0
107,1.1.1.4.1.2.2.12.12,Gebouwensignalisatie fietsenstalling,0.375,0.3,0.45,2019-12-04 08:00:00,2019-12-04 17:00:00,,0
108,1.1.1.4.1.2.2.12.13,Start opmeting + productie Poorten/afsluitingen,0.375,0.3,0.45,2018-10-10 08:00:00,2018-10-10 17:00:00,,0
109,1.1.1.4.1.2.2.12.14,Glazen deur nis brandhaspel (technieken) (1 st.),0.375,0.3,0.45,2019-05-10 08:00:00,2019-05-10 17:00:00,,0
110,1.1.1.4.1.2.2.12.15,Poorten/afsluitingen,6.375,5.1,7.65,2019-11-27 08:00:00,2019-12-03 17:00:00,,0
111,1.1.1.4.1.2.2.12.16,"Raamtype 11, 14 & 15",6.375,5.1,7.65,2019-08-01 08:00:00,2019-08-07 17:00:00,,0
112,1.1.1.4.1.2.2.12.17,Aanwerken ramen (cementeren),1.375,1.1,1.65,2019-08-08 08:00:00,2019-08-09 17:00:00,,0
113,1.1.1.4.1.2.2.12.18,Raamtype 13,2.375,1.9,2.85,2019-07-10 08:00:00,2019-07-12 17:00:00,,0
114,1.1.1.4.1.2.2.12.19,Afsluitpoort OSR12 (technieken),2.375,1.9,2.85,2019-06-17 08:00:00,2019-06-19 17:00:00,,0
115,1.1.1.4.1.2.2.12.20,Dichtmetsen opening naar tunnel,0.375,0.3,0.45,2019-08-08 08:00:00,2019-08-08 17:00:00,,0
116,1.1.1.4.1.2.2.12.21,Afwerken cementering,7.375,5.9,8.85,2019-08-09 08:00:00,2019-08-16 17:00:00,,0
117,1.1.1.4.1.2.2.12.22,Lakken stalen deuren,1.375,1.1,1.65,2019-08-19 08:00:00,2019-08-20 17:00:00,,0
118,1.1.1.4.1.2.2.12.23,Anti-graffiti saldo Teniers,1.375,1.1,1.65,2019-08-21 08:00:00,2019-08-22 17:00:00,,0
119,1.1.1.4.1.2.2.12.24,Gebouwensignalisatie saldo Teniers -1,0.375,0.3,0.45,2019-08-23 08:00:00,2019-08-23 17:00:00,,0
120,1.1.1.4.1.2.3,"technieken (A: Keyserlei West - Teniers, niv-1)",269.375,266.68,272.07,2018-09-24 08:00:00,2019-06-20 17:00:00,,0
121,1.1.1.4.1.2.3.1,Kabelbanen + boringen West niv.-1,13.375,10.7,16.05,2018-10-18 08:00:00,2018-10-31 17:00:00,,0
122,1.1.1.4.1.2.3.2,Installatie Borden B4,11.375,9.1,13.65,2018-09-24 08:00:00,2018-10-05 17:00:00,,0
123,1.1.1.4.1.2.3.3,Kabeltrek hoofdvoedingskabels,25.375,20.3,30.45,2018-10-01 08:00:00,2018-10-26 17:00:00,,0
124,1.1.1.4.1.2.3.4,Technieken VDK circulatieruimte,11.375,9.1,13.65,2018-10-08 08:00:00,2018-10-19 17:00:00,,0
125,1.1.1.4.1.2.3.5,BBI,18.375,14.7,22.05,2018-10-22 08:00:00,2018-11-09 17:00:00,,0
126,1.1.1.4.1.2.3.6,Secundaire kabelwegen ICT,13.375,10.7,16.05,2018-11-01 08:00:00,2018-11-14 17:00:00,,0
127,1.1.1.4.1.2.3.7,Secundaire kabelwerken ICT,24.375,19.5,29.25,2018-10-05 08:00:00,2018-10-29 17:00:00,,0
128,1.1.1.4.1.2.3.8,Installatie technieken ICT (voor afwerking),11.375,9.1,13.65,2018-11-05 08:00:00,2018-11-16 17:00:00,,0
129,1.1.1.4.1.2.3.9,Technieken VDK boven RTR/TR,25.375,20.3,30.45,2018-10-22 08:00:00,2018-11-16 17:00:00,,0
130,1.1.1.4.1.2.3.10,"Installatie technieken ICT (na afwerking, inkl. fietsenstalling)",11.375,9.1,13.65,2019-02-18 08:00:00,2019-03-01 17:00:00,,0
131,1.1.1.4.1.2.3.11,Saldo toegangscontrole ICT,0.375,0.3,0.45,2019-06-20 08:00:00,2019-06-20 17:00:00,,0
132,1.1.1.4.1.2.4,technieken fietsenstalling,55.375,54.82,55.93,2018-11-01 08:00:00,2018-12-26 17:00:00,,0
133,1.1.1.4.1.2.4.1,Fietsenstalling Kabelbanen + boringen,13.375,10.7,16.05,2018-11-01 08:00:00,2018-11-14 17:00:00,,0
134,1.1.1.4.1.2.4.2,Fietsenstalling technieken VDK,20.375,16.3,24.45,2018-11-15 08:00:00,2018-12-05 17:00:00,,0
135,1.1.1.4.1.2.4.3,BBI,20.375,16.3,24.45,2018-12-06 08:00:00,2018-12-26 17:00:00,,0
136,1.1.1.4.1.2.4.4,Secundaire kabelwegen ICT,6.375,5.1,7.65,2018-11-15 08:00:00,2018-11-21 17:00:00,,0
137,1.1.1.4.1.2.4.5,Secundaire kabelwerken ICT,6.375,5.1,7.65,2018-11-22 08:00:00,2018-11-28 17:00:00,,0
138,1.1.1.4.1.2.4.6,Installatie technieken ICT,6.375,5.1,7.65,2018-11-29 08:00:00,2018-12-05 17:00:00,,0
139,1.1.1.4.1.3,niv -2,730.375,723.07,737.68,2017-08-16 08:00:00,2019-08-16 17:00:00,,51
140,1.1.1.4.1.3.1,"ruwbouw (A: Keyserlei West - Teniers, niv-2)",519.375,514.18,524.57,2017-08-16 08:00:00,2019-01-17 17:00:00,,19
141,1.1.1.4.1.3.1.1,aanleveren saldo uitvoeringsplannen,0.0,0.0,0.0,2017-10-24 17:00:00,2017-10-24 17:00:00,,0
142,1.1.1.4.1.3.1.2,opstorten wanden,13.375,10.7,16.05,2017-08-16 08:00:00,2017-08-29 17:00:00,,0
143,1.1.1.4.1.3.1.3,nieuwe trappen T9/roltrappen zuid,29.375,23.5,35.25,2018-04-23 08:00:00,2018-05-22 17:00:00,,5
144,1.1.1.4.1.3.1.4,nieuwe trappen T8/roltrappen noord,22.375,17.9,26.85,2018-05-14 08:00:00,2018-06-05 17:00:00,,5
145,1.1.1.4.1.3.1.5,metsen zone 1 (na verwijderen doorstempeling ?),4.375,3.5,5.25,2018-07-09 08:00:00,2018-07-13 17:00:00,,0
146,1.1.1.4.1.3.1.6,polybeton/tegels ?,10.375,8.3,12.45,2018-07-16 08:00:00,2018-07-26 17:00:00,,0
147,1.1.1.4.1.3.1.7,bordenlokaal Cofab -2/A1 [B7],63.375,50.7,76.05,2018-05-24 08:00:00,2018-07-26 17:00:00,,0
148,1.1.1.4.1.3.1.8,bordenlokaal Cofab -2/A2 [B6],63.375,50.7,76.05,2018-05-24 08:00:00,2018-07-26 17:00:00,,0
149,1.1.1.4.1.3.1.9,metsen zone 2  (voor fietsershelling of na weghalen doorstempeling ?),0.0,0.0,0.0,2018-01-10 17:00:00,2018-01-10 17:00:00,,0
150,1.1.1.4.1.3.1.10,polybeton,21.375,17.1,25.65,2018-04-23 08:00:00,2018-05-14 17:00:00,,6
151,1.1.1.4.1.3.1.11,"polybeton gang lokalen Zuid de Lijn (A: Keyserlei West - Teniers, niv-2)",10.375,8.3,12.45,2019-01-07 08:00:00,2019-01-17 17:00:00,,3
152,1.1.1.4.1.3.2,"afwerking (A: Keyserlei West - Teniers, niv-2)",494.0,489.06,498.94,2018-04-09 17:00:00,2019-08-16 17:00:00,,32
153,1.1.1.4.1.3.2.1,MS Technisch Dossier,0.0,0.0,0.0,2018-04-09 17:00:00,2018-04-09 17:00:00,,0
154,1.1.1.4.1.3.2.2,MS Opmeting,0.0,0.0,0.0,2018-05-11 17:00:00,2018-05-11 17:00:00,,0
155,1.1.1.4.1.3.2.3,RUWBOUW metsen zone 1 niv. -2,0.0,0.0,0.0,2018-07-13 17:00:00,2018-07-13 17:00:00,,0
156,1.1.1.4.1.3.2.4,schilderwerk gemetste wanden,1.375,1.1,1.65,2018-07-16 08:00:00,2018-07-17 17:00:00,,0
157,1.1.1.4.1.3.2.5,Polybeton ,0.0,0.0,0.0,2018-07-13 17:00:00,2018-07-13 17:00:00,,0
158,1.1.1.4.1.3.2.6,Afwerking trappen gietbeton T8+T9,14.375,11.5,17.25,2018-05-23 08:00:00,2018-06-06 17:00:00,,22
159,1.1.1.4.1.3.2.7,staalstructuur vaste rookschermen -2,84.375,67.5,101.25,2018-05-09 08:00:00,2018-08-01 17:00:00,,0
160,1.1.1.4.1.3.2.8,Start Opmeting + productie Schrijnwerk deuren,0.375,0.3,0.45,2018-05-31 08:00:00,2018-05-31 17:00:00,,0
161,1.1.1.4.1.3.2.9,Schrijnwerk deuren,5.375,4.3,6.45,2019-03-22 08:00:00,2019-03-27 17:00:00,,0
162,1.1.1.4.1.3.2.10,Cementering,4.375,3.5,5.25,2018-08-02 08:00:00,2018-08-06 17:00:00,,0
163,1.1.1.4.1.3.2.11,Wandbetegeling 20*20 langs roltrappen ,6.375,5.1,7.65,2018-08-15 08:00:00,2018-08-21 17:00:00,,0
164,1.1.1.4.1.3.2.12,cementering fase II,2.375,1.9,2.85,2018-07-30 08:00:00,2018-08-01 17:00:00,,0
165,1.1.1.4.1.3.2.13,andere wandbetegeling 20*20,6.375,5.1,7.65,2018-08-10 08:00:00,2018-08-16 17:00:00,,0
166,1.1.1.4.1.3.2.14,Start opmeting + productie Ramen,0.375,0.3,0.45,2018-08-27 08:00:00,2018-08-27 17:00:00,,0
167,1.1.1.4.1.3.2.15,Ramen,0.375,0.3,0.45,2019-06-18 08:00:00,2019-06-18 17:00:00,,0
168,1.1.1.4.1.3.2.16,Mobiele rookschermen - Bedieningsborden,85.375,68.3,102.45,2019-01-17 08:00:00,2019-04-12 17:00:00,,0
169,1.1.1.4.1.3.2.17,Mobiele rookschermen - Afwerking,29.375,23.5,35.25,2019-04-15 08:00:00,2019-05-14 17:00:00,,0
170,1.1.1.4.1.3.2.18,Betonherstellingen,18.375,14.7,22.05,2019-04-15 08:00:00,2019-05-03 17:00:00,,0
171,1.1.1.4.1.3.2.19,Anti-graffiti,1.375,1.1,1.65,2019-08-15 08:00:00,2019-08-16 17:00:00,,0
172,1.1.1.4.1.3.2.20,Borstweringen en leuningen,10.375,8.3,12.45,2019-07-12 08:00:00,2019-07-22 17:00:00,,0
173,1.1.1.4.1.3.2.21,Gebouwensignalisatie,1.375,1.1,1.65,2019-08-14 08:00:00,2019-08-15 17:00:00,,0
174,1.1.1.4.1.3.2.22,Start productie Straatmeubilair perrons,0.375,0.3,0.45,2018-07-06 08:00:00,2018-07-06 17:00:00,,0
175,1.1.1.4.1.3.2.23,Roltrap 5 niv. -1 -> niv. -2 (OSR9),11.375,9.1,13.65,2018-09-03 08:00:00,2018-09-14 17:00:00,,5
176,1.1.1.4.1.3.2.24,Roltrap 8 niv. -1 -> niv. -2 (OSR13),11.375,9.1,13.65,2018-09-03 08:00:00,2018-09-14 17:00:00,,5
177,1.1.1.4.1.3.2.25,Borden roltrappen (roltrap 5 en 8),18.375,14.7,22.05,2018-10-15 08:00:00,2018-11-02 17:00:00,,0
178,1.1.1.4.1.3.3,"technieken (A: Keyserlei West - Teniers, niv-2)",365.375,361.72,369.03,2018-04-19 08:00:00,2019-04-19 17:00:00,,0
179,1.1.1.4.1.3.3.1,Kabelbanen + boringen West niv. -2,20.375,16.3,24.45,2018-08-14 08:00:00,2018-09-03 17:00:00,,0
180,1.1.1.4.1.3.3.2,Installatie Borden B6 en B7,88.375,70.7,106.05,2018-04-19 08:00:00,2018-07-16 17:00:00,,0
181,1.1.1.4.1.3.3.3,Kabeltrek hoofdvoedingskabels,123.375,98.7,148.05,2018-04-26 08:00:00,2018-08-27 17:00:00,,0
182,1.1.1.4.1.3.3.4,Technieken VDK,119.375,95.5,143.25,2018-07-17 08:00:00,2018-11-13 17:00:00,,0
183,1.1.1.4.1.3.3.5,Pompinstallatie regenwaterput (aanduiding periode),81.375,65.1,97.65,2018-11-05 08:00:00,2019-01-25 17:00:00,,0
184,1.1.1.4.1.3.3.6,Secundaire kabelwegen ICT,108.375,86.7,130.05,2018-05-15 08:00:00,2018-08-31 17:00:00,,0
185,1.1.1.4.1.3.3.7,Secundaire kabelwerken ICT,73.375,58.7,88.05,2018-06-25 08:00:00,2018-09-06 17:00:00,,0
186,1.1.1.4.1.3.3.8,Installatie technieken ICT,4.375,3.5,5.25,2018-11-05 08:00:00,2018-11-09 17:00:00,,0
187,1.1.1.4.1.3.3.9,Technieken VDK boven RTR/TR West niv. -1 -> niv. -2,126.375,101.1,151.65,2018-10-08 08:00:00,2019-02-11 17:00:00,,0
188,1.1.1.4.1.3.3.10,Installatie technieken ICT,4.375,3.5,5.25,2019-04-15 08:00:00,2019-04-19 17:00:00,,0
189,1.1.1.4.2,B) Frankrijklei Noord en Lichtput,937.375,928.0,946.75,2017-06-06 08:00:00,2019-12-30 17:00:00,,273
190,1.1.1.4.2.1,Zone trap 2 inclusief aansluiting tussenbordessen ,28.375,28.09,28.66,2018-04-02 08:00:00,2018-04-30 17:00:00,,105
191,1.1.1.4.2.1.1,Tussenbordessen,28.375,22.7,34.05,2018-04-02 08:00:00,2018-04-30 17:00:00,,105
192,1.1.1.4.2.2,zone NK 2.10 en NK 2.09,105.0,103.95,106.05,2018-01-12 17:00:00,2018-04-27 17:00:00,,0
193,1.1.1.4.2.2.1, goedgekeurde plannen,0.0,0.0,0.0,2018-01-12 17:00:00,2018-01-12 17:00:00,,0
194,1.1.1.4.2.2.2, tot niv -2,25.375,25.12,25.63,2018-01-22 08:00:00,2018-02-16 17:00:00,,0
195,1.1.1.4.2.2.2.1, inboren;bekisten;wapenen en betonneren kolom NK 2.10 ,3.375,2.7,4.05,2018-01-22 08:00:00,2018-01-25 17:00:00,,0
196,1.1.1.4.2.2.2.2, ontkisten,0.375,0.3,0.45,2018-01-26 08:00:00,2018-01-26 17:00:00,,0
197,1.1.1.4.2.2.2.3, stelling/bekisten;wapenen en betonneren vloer -3.03,4.375,3.5,5.25,2018-01-29 08:00:00,2018-02-02 17:00:00,,0
198,1.1.1.4.2.2.2.4, bekisten;wapenen en betonneren balk BC-01 /BC-04 / BC-05,3.375,2.7,4.05,2018-02-05 08:00:00,2018-02-08 17:00:00,,0
199,1.1.1.4.2.2.2.5, bekisten;wapenen en betonneren balk BC-03,3.375,2.7,4.05,2018-02-09 08:00:00,2018-02-12 17:00:00,,0
200,1.1.1.4.2.2.2.6, ontkisten balken,0.375,0.3,0.45,2018-02-13 08:00:00,2018-02-13 17:00:00,,0
201,1.1.1.4.2.2.2.7, stelling/bekisten;wapenen en betonneren vloer -1.78,2.375,1.9,2.85,2018-02-14 08:00:00,2018-02-16 17:00:00,,0
202,1.1.1.4.2.2.3, tot niv -1,17.375,17.2,17.55,2018-02-19 08:00:00,2018-03-08 17:00:00,,0
203,1.1.1.4.2.2.3.1, bekisten;wapenen en betonneren kolom NK 2.10,1.375,1.1,1.65,2018-02-19 08:00:00,2018-02-20 17:00:00,,0
204,1.1.1.4.2.2.3.2, ontkisten,0.375,0.3,0.45,2018-02-21 08:00:00,2018-02-21 17:00:00,,0
205,1.1.1.4.2.2.3.3, stelling/bekisten;wapenen en betonneren balk BC-101,6.375,5.1,7.65,2018-02-22 08:00:00,2018-02-28 17:00:00,,0
206,1.1.1.4.2.2.3.4, ontkisten,0.375,0.3,0.45,2018-03-01 08:00:00,2018-03-01 17:00:00,,0
207,1.1.1.4.2.2.3.5, stelling/bekisten;wapenen en betonneren vloer +2.24,6.375,5.1,7.65,2018-03-02 08:00:00,2018-03-08 17:00:00,,0
208,1.1.1.4.2.2.4, tot niv 0,24.375,24.13,24.62,2018-03-09 08:00:00,2018-04-02 17:00:00,,0
209,1.1.1.4.2.2.4.1, bekisten;wapenen en betonneren kolom NK 2.10,3.375,2.7,4.05,2018-03-09 08:00:00,2018-03-12 17:00:00,,0
210,1.1.1.4.2.2.4.2, ontkisten,0.375,0.3,0.45,2018-03-13 08:00:00,2018-03-13 17:00:00,,0
211,1.1.1.4.2.2.4.3, stelling/bekisten;wapenen en betonneren balk BC-201,13.375,10.7,16.05,2018-03-14 08:00:00,2018-03-27 17:00:00,,0
212,1.1.1.4.2.2.4.4, stelling/bekisten;wapenen en betonneren vloer +7.27,13.375,10.7,16.05,2018-03-14 08:00:00,2018-03-27 17:00:00,,0
213,1.1.1.4.2.2.4.5, bekisten;wapenen en betonneren borstwering,5.375,4.3,6.45,2018-03-28 08:00:00,2018-04-02 17:00:00,,0
214,1.1.1.4.2.2.5, uitharden,19.375,15.5,23.25,2018-03-28 08:00:00,2018-04-16 17:00:00,,0
215,1.1.1.4.2.2.6, ontkisten geheel ,9.375,7.5,11.25,2018-04-18 08:00:00,2018-04-27 17:00:00,,0
216,1.1.1.4.2.3,zone NK 2.11,186.0,184.14,187.86,2018-01-12 17:00:00,2018-07-17 17:00:00,,40
217,1.1.1.4.2.3.1, goedgekeurde plannen,0.0,0.0,0.0,2018-01-12 17:00:00,2018-01-12 17:00:00,,0
218,1.1.1.4.2.3.2, tot niv -2,39.375,38.98,39.77,2018-01-22 08:00:00,2018-03-02 17:00:00,,0
219,1.1.1.4.2.3.2.1, inboren;bekisten;wapenen en betonneren kolom NK 2.11,4.375,3.5,5.25,2018-01-22 08:00:00,2018-01-26 17:00:00,,0
220,1.1.1.4.2.3.2.2, ontkisten,0.375,0.3,0.45,2018-01-29 08:00:00,2018-01-29 17:00:00,,0
221,1.1.1.4.2.3.2.3, stelling/bekisten;wapenen en betonneren vloer -3.03,13.375,10.7,16.05,2018-01-30 08:00:00,2018-02-12 17:00:00,,0
222,1.1.1.4.2.3.2.4, bekisten;wapenen en betonneren balk BC-01,2.375,1.9,2.85,2018-02-13 08:00:00,2018-02-15 17:00:00,,0
223,1.1.1.4.2.3.2.5, ontkisten balken,0.375,0.3,0.45,2018-02-16 08:00:00,2018-02-16 17:00:00,,0
224,1.1.1.4.2.3.2.6, stelling/bekisten;wapenen en betonneren vloer -1.78,11.375,9.1,13.65,2018-02-19 08:00:00,2018-03-02 17:00:00,,0
225,1.1.1.4.2.3.3, tot niv -1,31.375,31.06,31.69,2018-03-05 08:00:00,2018-04-05 17:00:00,,0
226,1.1.1.4.2.3.3.1, bekisten;wapenen en betonneren kolom NK 2.11,1.375,1.1,1.65,2018-03-05 08:00:00,2018-03-06 17:00:00,,0
227,1.1.1.4.2.3.3.2, ontkisten,0.375,0.3,0.45,2018-03-07 08:00:00,2018-03-07 17:00:00,,0
228,1.1.1.4.2.3.3.3, stelling/bekisten;wapenen en betonneren balk BC-101,13.375,10.7,16.05,2018-03-08 08:00:00,2018-03-21 17:00:00,,0
229,1.1.1.4.2.3.3.4, ontkisten,0.375,0.3,0.45,2018-03-22 08:00:00,2018-03-22 17:00:00,,0
230,1.1.1.4.2.3.3.5, stelling/bekisten;wapenen en betonneren vloer +2.24,13.375,10.7,16.05,2018-03-23 08:00:00,2018-04-05 17:00:00,,0
231,1.1.1.4.2.3.4, tot niv 0,46.375,45.91,46.84,2018-04-06 08:00:00,2018-05-22 17:00:00,,0
232,1.1.1.4.2.3.4.1, bekisten;wapenen en betonneren kolom NK 2.11,3.375,2.7,4.05,2018-04-06 08:00:00,2018-04-09 17:00:00,,0
233,1.1.1.4.2.3.4.2, ontkisten,0.375,0.3,0.45,2018-04-10 08:00:00,2018-04-10 17:00:00,,0
234,1.1.1.4.2.3.4.3, stelling/bekisten;wapenen en betonneren vloer +5.82,13.375,10.7,16.05,2018-04-11 08:00:00,2018-04-24 17:00:00,,0
235,1.1.1.4.2.3.4.4, stelling/bekisten;wapenen en betonneren balk BC-201,13.375,10.7,16.05,2018-04-25 08:00:00,2018-05-08 17:00:00,,0
236,1.1.1.4.2.3.4.5, ontkisten,0.375,0.3,0.45,2018-05-09 08:00:00,2018-05-09 17:00:00,,0
237,1.1.1.4.2.3.4.6, stelling/bekisten;wapenen en betonneren vloer +7.27,6.375,5.1,7.65,2018-05-10 08:00:00,2018-05-16 17:00:00,,0
238,1.1.1.4.2.3.4.7, bekisten;wapenen en betonneren borstwering,5.375,4.3,6.45,2018-05-17 08:00:00,2018-05-22 17:00:00,,0
239,1.1.1.4.2.3.5, uitharden,13.375,10.7,16.05,2018-05-17 08:00:00,2018-05-30 17:00:00,,0
240,1.1.1.4.2.3.6,Waterdichting W9,47.375,37.9,56.85,2018-05-31 08:00:00,2018-07-17 17:00:00,,8
241,1.1.1.4.2.3.7, ontkisten geheel ,11.375,9.1,13.65,2018-05-31 08:00:00,2018-06-11 17:00:00,,32
242,1.1.1.4.2.4,niv 0 (B: Frankrijklei noord),765.375,757.72,773.03,2017-06-06 08:00:00,2019-07-11 17:00:00,,0
243,1.1.1.4.2.4.1,"afwerking (B: Frankrijklei Noord, niv 0)",765.375,757.72,773.03,2017-06-06 08:00:00,2019-07-11 17:00:00,,0
244,1.1.1.4.2.4.1.1,afbraak dakplaat zone lichtput,31.375,25.1,37.65,2017-06-06 08:00:00,2017-07-07 17:00:00,,0
245,1.1.1.4.2.4.1.2,afbraak zone vide + saldo dakplaat lichtput,46.375,37.1,55.65,2017-08-21 08:00:00,2017-10-06 17:00:00,,0
246,1.1.1.4.2.4.1.3,betonwerken ringbalk en dakplaat (5d extra tgv chem verankering),105.375,84.3,126.45,2017-10-09 08:00:00,2018-01-22 17:00:00,,0
247,1.1.1.4.2.4.1.4,ontkisten en demob tijdelijke ondersteuning (niet volleddig klaar maar hidert metselwerk niet),13.375,10.7,16.05,2018-03-22 08:00:00,2018-04-04 17:00:00,,0
248,1.1.1.4.2.4.1.5,Plaatsen vluchthuisje T14,0.375,0.3,0.45,2019-07-05 08:00:00,2019-07-05 17:00:00,,0
249,1.1.1.4.2.4.1.6,Stalen deuren 03.0.05.1 & 03.0.05.2 (technieken),0.375,0.3,0.45,2019-07-09 08:00:00,2019-07-09 17:00:00,,0
250,1.1.1.4.2.4.1.7,Saldo ICT (niv 0),1.375,1.1,1.65,2019-07-10 08:00:00,2019-07-11 17:00:00,,0
251,1.1.1.4.2.5,niv -1 (B: Frankrijklei noord),696.375,689.41,703.34,2017-11-17 08:00:00,2019-10-14 17:00:00,,8
252,1.1.1.4.2.5.1,"ruwbouw (B: Frankrijklei Noord, niv-1)",465.375,460.72,470.03,2017-11-17 08:00:00,2019-02-25 17:00:00,,6
253,1.1.1.4.2.5.1.1,wand W03.02/wand W03.03 /NK2.07/NK2.08 /sluiten ringbalk,17.375,13.9,20.85,2017-11-17 08:00:00,2017-12-04 17:00:00,,0
254,1.1.1.4.2.5.1.2,metsen wanden,82.375,65.9,98.85,2018-04-05 08:00:00,2018-06-26 17:00:00,,0
255,1.1.1.4.2.5.1.3,polybeton,5.375,4.3,6.45,2018-06-27 08:00:00,2018-07-02 17:00:00,,3
256,1.1.1.4.2.5.1.4,bordenlokaal Cofab -1/B1 [B1],0.375,0.3,0.45,2018-07-02 08:00:00,2018-07-02 17:00:00,,3
257,1.1.1.4.2.5.1.5,kabelschacht Cofab -1/B2 [kabelschacht Noord],42.375,33.9,50.85,2018-05-21 08:00:00,2018-07-02 17:00:00,,0
258,1.1.1.4.2.5.1.6,laatste fase trappencomplex Noord,99.375,79.5,119.25,2018-07-30 08:00:00,2018-11-06 17:00:00,,0
259,1.1.1.4.2.5.1.7,trappencomplex Noord - opening naar RWA,50.375,40.3,60.45,2018-10-04 08:00:00,2018-11-23 17:00:00,,0
260,1.1.1.4.2.5.1.8,trappencomplex Noord - opening naar parking -1,20.375,16.3,24.45,2019-02-05 08:00:00,2019-02-25 17:00:00,,0
261,1.1.1.4.2.5.2,"afwerking (B: Frankrijklei Noord, niv-1)",683.0,676.17,689.83,2017-11-30 17:00:00,2019-10-14 17:00:00,,2
262,1.1.1.4.2.5.2.1,MS Technisch Dossier,0.0,0.0,0.0,2017-11-30 17:00:00,2017-11-30 17:00:00,,0
263,1.1.1.4.2.5.2.2,MS Opmeting,0.0,0.0,0.0,2018-01-11 17:00:00,2018-01-11 17:00:00,,0
264,1.1.1.4.2.5.2.3,RUWBOUW metsen wanden niv. -1,0.375,0.3,0.45,2018-06-26 08:00:00,2018-06-26 17:00:00,,0
265,1.1.1.4.2.5.2.4,Wandafwerking lokaal 1/B1 en 1/B2,4.375,3.5,5.25,2018-07-30 08:00:00,2018-08-03 17:00:00,,0
266,1.1.1.4.2.5.2.5,Start opmeting + productie verhoogde vloeren,0.375,0.3,0.45,2018-06-29 08:00:00,2018-06-29 17:00:00,,0
267,1.1.1.4.2.5.2.6,verhoogde vloeren,3.375,2.7,4.05,2018-12-25 08:00:00,2018-12-28 17:00:00,,0
268,1.1.1.4.2.5.2.7,Leidingen onder vloerafwerking,6.375,5.1,7.65,2018-06-27 08:00:00,2018-07-03 17:00:00,,0
269,1.1.1.4.2.5.2.8,Vloerafwerking lokalen polybeton HVAC,2.375,1.9,2.85,2018-07-04 08:00:00,2018-07-06 17:00:00,,0
270,1.1.1.4.2.5.2.9,"Vloerafwerking lokalen polybeton TCN (B: Frankrijklei Noord, niv-1)",4.375,3.5,5.25,2019-02-25 08:00:00,2019-03-01 17:00:00,,0
271,1.1.1.4.2.5.2.10,schilderwerken lokalen de lijn,3.375,2.7,4.05,2018-07-17 08:00:00,2018-07-20 17:00:00,,0
272,1.1.1.4.2.5.2.11,Opmeting + productie Schrijnwerk deuren,0.375,0.3,0.45,2018-10-01 08:00:00,2018-10-01 17:00:00,,0
273,1.1.1.4.2.5.2.12,Schrijnwerk deuren,2.375,1.9,2.85,2019-07-23 08:00:00,2019-07-25 17:00:00,,0
274,1.1.1.4.2.5.2.13,Saldo stalen deuren (technieken) (5 st.) (deel 1),11.375,9.1,13.65,2019-03-25 08:00:00,2019-04-05 17:00:00,,0
275,1.1.1.4.2.5.2.14,Saldo stalen deur PA.1.01.1 (technieken) (1 st.) (deel 2),0.375,0.3,0.45,2019-05-15 08:00:00,2019-05-15 17:00:00,,0
276,1.1.1.4.2.5.2.15,Betonherstellingen trappencomplex noord (passiveren),28.375,22.7,34.05,2019-08-28 08:00:00,2019-09-25 17:00:00,,0
277,1.1.1.4.2.5.2.16,Wandafwerking,2.375,1.9,2.85,2019-06-12 08:00:00,2019-06-14 17:00:00,,0
278,1.1.1.4.2.5.2.17,Blowerdoortest niveau -1 B (Frankrijklei Noord),0.375,0.3,0.45,2019-08-14 08:00:00,2019-08-14 17:00:00,,2
279,1.1.1.4.2.5.2.18,Anti-graffiti,4.375,3.5,5.25,2019-09-26 08:00:00,2019-09-30 17:00:00,,0
280,1.1.1.4.2.5.2.19,Binnenmeubilair lokalen De Lijn,4.375,3.5,5.25,2019-06-24 08:00:00,2019-06-28 17:00:00,,0
281,1.1.1.4.2.5.2.20,Borstweringen en leuningen,13.375,10.7,16.05,2019-10-01 08:00:00,2019-10-14 17:00:00,,0
282,1.1.1.4.2.5.2.21,Gebouwensignalisatie,1.375,1.1,1.65,2019-08-14 08:00:00,2019-08-15 17:00:00,,0
283,1.1.1.4.2.5.3,"technieken (B: Frankrijklei Noord, niv-1)",336.375,333.01,339.74,2018-09-03 08:00:00,2019-08-05 17:00:00,,0
284,1.1.1.4.2.5.3.1,Kabelbanen + boringen Noord niv.-1,25.375,20.3,30.45,2018-12-31 08:00:00,2019-01-25 17:00:00,,0
285,1.1.1.4.2.5.3.2,Installatie Borden B1,11.375,9.1,13.65,2018-09-03 08:00:00,2018-09-14 17:00:00,,0
286,1.1.1.4.2.5.3.3,Kabeltrek hoofdvoedingskabels,25.375,20.3,30.45,2018-09-10 08:00:00,2018-10-05 17:00:00,,0
287,1.1.1.4.2.5.3.4,Technieken VDK,18.375,14.7,22.05,2018-09-10 08:00:00,2018-09-28 17:00:00,,0
288,1.1.1.4.2.5.3.5,Secundaire kabelwegen ICT,14.375,11.5,17.25,2018-09-10 08:00:00,2018-09-24 17:00:00,,0
289,1.1.1.4.2.5.3.6,Secundaire kabelwerken ICT (kabel trekken),22.375,17.9,26.85,2018-09-24 08:00:00,2018-10-16 17:00:00,,0
290,1.1.1.4.2.5.3.7,Installatie technieken ICT (toestellen plaatsen en aansluiten),20.375,16.3,24.45,2018-10-17 08:00:00,2018-11-06 17:00:00,,0
291,1.1.1.4.2.5.3.8,HVAC,39.375,31.5,47.25,2018-10-15 08:00:00,2018-11-23 17:00:00,,0
292,1.1.1.4.2.5.3.9,Technieken VDK na plafondafwerking,0.0,0.0,0.0,2018-11-28 17:00:00,2018-11-28 17:00:00,,0
293,1.1.1.4.2.5.3.10,"Installatie technieken ICT (na vloerafwerking, zone B -1)",10.375,8.3,12.45,2019-07-26 08:00:00,2019-08-05 17:00:00,,0
294,1.1.1.4.2.5.3.11,Technieken VDK Trappencomplex Noord,41.375,33.1,49.65,2018-11-29 08:00:00,2019-01-09 17:00:00,,0
295,1.1.1.4.2.5.3.12,RWA Trappencomplex Noord,11.375,9.1,13.65,2019-03-11 08:00:00,2019-03-22 17:00:00,,0
296,1.1.1.4.2.5.3.13,Installatie technieken ICT (na afwerking RWA),25.375,20.3,30.45,2019-03-11 08:00:00,2019-04-05 17:00:00,,0
297,1.1.1.4.2.5.3.14,Saldo toegangscontrole ICT (deel 1),1.375,1.1,1.65,2019-04-08 08:00:00,2019-04-09 17:00:00,,0
298,1.1.1.4.2.5.3.15,Saldo toegangscontrole ICT (deel 2),0.375,0.3,0.45,2019-05-16 08:00:00,2019-05-16 17:00:00,,0
299,1.1.1.4.2.6,niv -2 (B: Frankrijklei Noord),784.375,776.53,792.22,2017-11-06 08:00:00,2019-12-30 17:00:00,,12
300,1.1.1.4.2.6.1,ruwbouw,270.375,267.67,273.08,2017-11-06 08:00:00,2018-08-03 17:00:00,,12
301,1.1.1.4.2.6.1.1,wand W03.02/wand W03.03 /NK2.07/NK2.08 /sluiten ringbalk,10.375,8.3,12.45,2017-11-06 08:00:00,2017-11-16 17:00:00,,0
302,1.1.1.4.2.6.1.2,metsen wanden,117.375,93.9,140.85,2018-04-05 08:00:00,2018-07-31 17:00:00,,0
303,1.1.1.4.2.6.1.3,polybeton,4.375,3.5,5.25,2018-07-30 08:00:00,2018-08-03 17:00:00,,6
304,1.1.1.4.2.6.1.4,kabelschacht Cofab -2/B2 [kabelschacht Noord],25.375,20.3,30.45,2018-07-09 08:00:00,2018-08-03 17:00:00,,6
305,1.1.1.4.2.6.2,"afwerking (B: Frankrijklei Noord, niv -2)",745.0,737.55,752.45,2017-12-15 17:00:00,2019-12-30 17:00:00,,0
306,1.1.1.4.2.6.2.1,MS Technisch Dossier,0.0,0.0,0.0,2017-12-15 17:00:00,2017-12-15 17:00:00,,0
307,1.1.1.4.2.6.2.2,MS Opmeting,0.0,0.0,0.0,2018-01-26 17:00:00,2018-01-26 17:00:00,,0
308,1.1.1.4.2.6.2.3,RUWBOUW metsen wanden niv. -2,0.0,0.0,0.0,2018-07-31 17:00:00,2018-07-31 17:00:00,,0
309,1.1.1.4.2.6.2.4,Wandafwerking schilderwerk lokalen de lijn,4.375,3.5,5.25,2018-07-02 08:00:00,2018-07-06 17:00:00,,0
310,1.1.1.4.2.6.2.5,Vloerafwerking polybeton,0.0,0.0,0.0,2018-08-03 17:00:00,2018-08-03 17:00:00,,0
311,1.1.1.4.2.6.2.6,Start opmeting + productie Verlaagde plafonds structuur,0.375,0.3,0.45,2018-11-23 08:00:00,2018-11-23 17:00:00,,0
312,1.1.1.4.2.6.2.7,Verlaagde plafonds structuur,8.375,6.7,10.05,2019-01-23 08:00:00,2019-01-31 17:00:00,,0
313,1.1.1.4.2.6.2.8,Start opmeting + productie verhoogde vloer computer,0.375,0.3,0.45,2018-05-14 08:00:00,2018-05-14 17:00:00,,0
314,1.1.1.4.2.6.2.9,verhoogde vloer computer,8.375,6.7,10.05,2018-12-31 08:00:00,2019-01-08 17:00:00,,0
315,1.1.1.4.2.6.2.10,wandtegels sanitaire ruimtes,11.375,9.1,13.65,2018-12-10 08:00:00,2018-12-21 17:00:00,,0
316,1.1.1.4.2.6.2.11,Leidingen onder vloerafwerking,1.375,1.1,1.65,2018-07-23 08:00:00,2018-07-24 17:00:00,,0
317,1.1.1.4.2.6.2.12,Opmeting + productie Schrijnwerk deuren,0.375,0.3,0.45,2019-01-09 08:00:00,2019-01-09 17:00:00,,0
318,1.1.1.4.2.6.2.13,Schrijnwerk deuren,6.375,5.1,7.65,2019-10-31 08:00:00,2019-11-06 17:00:00,,0
319,1.1.1.4.2.6.2.14,Wandafwerking cementering of verven,18.375,14.7,22.05,2019-11-11 08:00:00,2019-11-29 17:00:00,,0
320,1.1.1.4.2.6.2.15,Start opmeting + productie Ramen,0.375,0.3,0.45,2018-09-06 08:00:00,2018-09-06 17:00:00,,0
321,1.1.1.4.2.6.2.16,Ramen,1.375,1.1,1.65,2019-11-07 08:00:00,2019-11-08 17:00:00,,0
322,1.1.1.4.2.6.2.17,Opmeten saldo stalen deuren (technieken) (2 st.),0.375,0.3,0.45,2019-02-15 08:00:00,2019-02-15 17:00:00,,0
323,1.1.1.4.2.6.2.18,Saldo stalen deuren (technieken) (2 st.),6.375,5.1,7.65,2019-08-13 08:00:00,2019-08-19 17:00:00,,0
324,1.1.1.4.2.6.2.19,Betonherstellingen trappencomplex noord (passiveren),7.375,5.9,8.85,2019-08-20 08:00:00,2019-08-27 17:00:00,,0
325,1.1.1.4.2.6.2.20,"Sanitaire installatie (afwerking) (Frankrijklei noord, niveau -2)",28.375,22.7,34.05,2019-12-02 08:00:00,2019-12-30 17:00:00,,0
326,1.1.1.4.2.6.2.21,Binnenmeubilair lokalen De Lijn,4.375,3.5,5.25,2019-07-01 08:00:00,2019-07-05 17:00:00,,0
327,1.1.1.4.2.6.2.22,Borstweringen en leuningen,13.375,10.7,16.05,2019-09-05 08:00:00,2019-09-18 17:00:00,,0
328,1.1.1.4.2.6.2.23,Gebouwensignalisatie,1.375,1.1,1.65,2019-08-14 08:00:00,2019-08-15 17:00:00,,0
329,1.1.1.4.2.6.3,"technieken (B: Frankrijklei Noord, niv-2)",371.375,367.66,375.09,2018-08-14 08:00:00,2019-08-20 17:00:00,,0
330,1.1.1.4.2.6.3.1,Kabelbanen + boringen Noord niv. -2,27.375,21.9,32.85,2018-08-14 08:00:00,2018-09-10 17:00:00,,0
331,1.1.1.4.2.6.3.2,Kabeltrek hoofdvoedingskabels,44.375,35.5,53.25,2018-08-29 08:00:00,2018-10-12 17:00:00,,0
332,1.1.1.4.2.6.3.3,Technieken VDK,41.375,33.1,49.65,2018-08-28 08:00:00,2018-10-08 17:00:00,,0
333,1.1.1.4.2.6.3.4,HVAC,41.375,33.1,49.65,2018-10-02 08:00:00,2018-11-12 17:00:00,,0
334,1.1.1.4.2.6.3.5,Secundaire kabelwegen ICT,14.375,11.5,17.25,2018-09-10 08:00:00,2018-09-24 17:00:00,,0
335,1.1.1.4.2.6.3.6,Secundaire kabelwerken ICT,22.375,17.9,26.85,2018-09-17 08:00:00,2018-10-09 17:00:00,,0
336,1.1.1.4.2.6.3.7,Installatie technieken ICT,9.375,7.5,11.25,2018-10-10 08:00:00,2018-10-19 17:00:00,,0
337,1.1.1.4.2.6.3.8,Installatie technieken ICT (voor verlaagd plafond),11.375,9.1,13.65,2018-10-22 08:00:00,2018-11-02 17:00:00,,0
338,1.1.1.4.2.6.3.9,Technieken VDK na vals plafond,13.375,10.7,16.05,2019-02-01 08:00:00,2019-02-14 17:00:00,,0
339,1.1.1.4.2.6.3.10,Saldo toegangscontrole ICT,0.375,0.3,0.45,2019-08-20 08:00:00,2019-08-20 17:00:00,,0
340,1.1.1.4.2.7,niv -3 (B: Frankrijklei Noord),811.0,802.89,819.11,2017-06-29 17:00:00,2019-09-18 17:00:00,,12
341,1.1.1.4.2.7.1,ruwbouw,126.0,124.74,127.26,2017-06-29 17:00:00,2017-11-02 17:00:00,,0
342,1.1.1.4.2.7.1.1,wand W03.02/wand W03.03 /NK2.07/NK2.08 /sluiten ringbalk,10.375,8.3,12.45,2017-10-23 08:00:00,2017-11-02 17:00:00,,0
343,1.1.1.4.2.7.1.2,bordenlokaal Cofab -3/B1,0.0,0.0,0.0,2017-06-29 17:00:00,2017-06-29 17:00:00,,0
344,1.1.1.4.2.7.2,"afwerking (B: Frankrijklei Noord, niv-3)",772.0,764.28,779.72,2017-08-07 17:00:00,2019-09-18 17:00:00,,12
345,1.1.1.4.2.7.2.1,Mobiele rookschermen - Bedieningsborden,80.375,64.3,96.45,2019-01-15 08:00:00,2019-04-05 17:00:00,,0
346,1.1.1.4.2.7.2.2,MS Technisch Dossier,0.0,0.0,0.0,2017-08-07 17:00:00,2017-08-07 17:00:00,,0
347,1.1.1.4.2.7.2.3,MS Opmeting,0.0,0.0,0.0,2017-09-06 17:00:00,2017-09-06 17:00:00,,0
348,1.1.1.4.2.7.2.4,RUWBOUW wand 3.02 niv. -3,0.375,0.3,0.45,2017-11-03 08:00:00,2017-11-03 17:00:00,,0
349,1.1.1.4.2.7.2.5,wandafwerking bordenlokaal 3B1,0.375,0.3,0.45,2018-03-02 08:00:00,2018-03-02 17:00:00,,0
350,1.1.1.4.2.7.2.6,Polybeton niveau -3 bordelokaal,4.375,3.5,5.25,2018-03-05 08:00:00,2018-03-09 17:00:00,,0
351,1.1.1.4.2.7.2.7,Plaatsen staalstructuur vaste rookschermen -3,18.375,14.7,22.05,2018-02-12 08:00:00,2018-03-02 17:00:00,,0
352,1.1.1.4.2.7.2.8,Schilderwerk lokalen de lijn bordenlokaal,4.375,3.5,5.25,2018-02-26 08:00:00,2018-03-02 17:00:00,,0
353,1.1.1.4.2.7.2.9,"Akoestische en brandwerende bespuiting  oost (B: Frankrijklei Noord, niv-3)",31.375,25.1,37.65,2019-02-05 08:00:00,2019-03-08 17:00:00,,0
354,1.1.1.4.2.7.2.10,Mobiele rookschermen - Afwerking,36.375,29.1,43.65,2019-04-08 08:00:00,2019-05-14 17:00:00,,0
355,1.1.1.4.2.7.2.11,Schrijnwerk stalen deuren (3 st.),1.375,1.1,1.65,2019-04-15 08:00:00,2019-04-16 17:00:00,,0
356,1.1.1.4.2.7.2.12,Stalen deur PA.3.01 (technieken),0.375,0.3,0.45,2019-06-26 08:00:00,2019-06-26 17:00:00,,0
357,1.1.1.4.2.7.2.13,Saldo ICT (niv -3),6.375,5.1,7.65,2019-06-27 08:00:00,2019-07-03 17:00:00,,0
358,1.1.1.4.2.7.2.14,Anti-graffiti perron oost,2.375,1.9,2.85,2019-07-08 08:00:00,2019-07-10 17:00:00,,0
359,1.1.1.4.2.7.2.15,Afwerking zwarte verf bespuiting SPOOR oost ('s nachts),4.375,3.5,5.25,2019-04-08 08:00:00,2019-04-12 17:00:00,,0
360,1.1.1.4.2.7.2.16,"Akoestische en brandwerende bespuiting  PERRON west (B: Frankrijklei Noord, niv-3)",25.375,20.3,30.45,2019-03-18 08:00:00,2019-04-12 17:00:00,,0
361,1.1.1.4.2.7.2.17,Akoestische en brandwerende bespuiting SPOOR West (D: Frankrijklei Zuid INCL techn perron bouwdeel B),11.375,9.1,13.65,2019-04-01 08:00:00,2019-04-12 17:00:00,,0
362,1.1.1.4.2.7.2.18,"Leidingen onder vloerafwerking, incl. plaatsen septische put",29.375,23.5,35.25,2018-09-03 08:00:00,2018-10-02 17:00:00,,0
363,1.1.1.4.2.7.2.19,Polybeton perrons oost,11.375,9.1,13.65,2018-10-01 08:00:00,2018-10-12 17:00:00,,12
364,1.1.1.4.2.7.2.20,"Polybeton perrons west (B: Frankrijklei Noord, niv-3)",27.375,21.9,32.85,2018-11-16 08:00:00,2018-12-13 17:00:00,,0
365,1.1.1.4.2.7.2.21,Opmeting + productie Schrijnwerk deuren,0.375,0.3,0.45,2018-09-17 08:00:00,2018-09-17 17:00:00,,0
366,1.1.1.4.2.7.2.22,Glazen deuren nissen brandhaspel/stroomonderbreker (technieken) (3 st.),1.375,1.1,1.65,2019-05-13 08:00:00,2019-05-14 17:00:00,,0
367,1.1.1.4.2.7.2.23,Saldo stalen deuren (met technieken) (3 st.) (deel 1),13.375,10.7,16.05,2019-07-09 08:00:00,2019-07-22 17:00:00,,0
368,1.1.1.4.2.7.2.24,Saldo stalen deur PA.3.01 (met technieken) (1 st.) (deel 2),0.375,0.3,0.45,2019-05-13 08:00:00,2019-05-13 17:00:00,,0
369,1.1.1.4.2.7.2.25,Anti-graffiti perron west,1.375,1.1,1.65,2019-08-15 08:00:00,2019-08-16 17:00:00,,0
370,1.1.1.4.2.7.2.26,Cementering perron oost,13.375,10.7,16.05,2018-09-04 08:00:00,2018-09-17 17:00:00,,0
371,1.1.1.4.2.7.2.27,Wandbetegeling 20*20 perron oost,6.375,5.1,7.65,2018-09-18 08:00:00,2018-09-24 17:00:00,,0
372,1.1.1.4.2.7.2.28,Cementering perron west,2.375,1.9,2.85,2018-10-29 08:00:00,2018-10-31 17:00:00,,0
373,1.1.1.4.2.7.2.29,Straatmeubilair perrons,1.375,1.1,1.65,2019-04-23 08:00:00,2019-04-24 17:00:00,,0
374,1.1.1.4.2.7.2.30,Blindegeleidetegels,18.375,14.7,22.05,2019-04-25 08:00:00,2019-05-13 17:00:00,,0
375,1.1.1.4.2.7.2.31,Borstweringen en leuningen,13.375,10.7,16.05,2019-09-05 08:00:00,2019-09-18 17:00:00,,0
376,1.1.1.4.2.7.2.32,"Dichtzetten Vaste rookschermen west (B: Frankrijklei Noord, niv-3)",3.375,2.7,4.05,2019-06-24 08:00:00,2019-06-27 17:00:00,,0
377,1.1.1.4.2.7.2.33,"Dichtzetten Vaste rookschermen Oost (B: Frankrijklei Noord, niv-3)",4.375,3.5,5.25,2019-06-28 08:00:00,2019-07-02 17:00:00,,0
378,1.1.1.4.2.7.2.34,Gebouwensignalisatie,8.375,6.7,10.05,2019-08-07 08:00:00,2019-08-15 17:00:00,,0
379,1.1.1.4.2.7.2.35,Start Opmeting + productie Straatmeubilair perrons,0.375,0.3,0.45,2018-07-02 08:00:00,2018-07-02 17:00:00,,0
380,1.1.1.4.2.7.3,"technieken (B: Frankrijklei Noord, niv-3, EXCL perron, techn  perron zit in D.)",593.375,587.44,599.31,2017-12-08 08:00:00,2019-07-24 17:00:00,,0
381,1.1.1.4.2.7.3.1,Eerste fase technieken kabelbanen en lokalen,27.375,21.9,32.85,2017-12-08 08:00:00,2018-01-04 17:00:00,,0
382,1.1.1.4.2.7.3.2,Kabelbanen + boringen Noord niv. -3,25.375,20.3,30.45,2018-07-30 08:00:00,2018-08-24 17:00:00,,0
383,1.1.1.4.2.7.3.3,Installatie Borden B9,11.375,9.1,13.65,2018-08-13 08:00:00,2018-08-24 17:00:00,,0
384,1.1.1.4.2.7.3.4,Kabeltrek hoofdvoedingskabels (excl perrons),27.375,21.9,32.85,2018-08-28 08:00:00,2018-09-24 17:00:00,,0
385,1.1.1.4.2.7.3.5,Technieken VDK (excl perrons),27.375,21.9,32.85,2018-08-28 08:00:00,2018-09-24 17:00:00,,0
386,1.1.1.4.2.7.3.6,Secundaire kabelwegen ICT (excl perrons),38.375,30.7,46.05,2018-08-13 08:00:00,2018-09-20 17:00:00,,0
387,1.1.1.4.2.7.3.7,Secundaire kabelwerken ICT (excl perrons),16.375,13.1,19.65,2018-09-17 08:00:00,2018-10-03 17:00:00,,0
388,1.1.1.4.2.7.3.8,Installatie technieken ICT (excl perrons),28.375,22.7,34.05,2018-10-04 08:00:00,2018-11-01 17:00:00,,0
389,1.1.1.4.2.7.3.9,Pompinstallatie septische put (aanduiding periode) (excl perrons),81.375,65.1,97.65,2018-09-03 08:00:00,2018-11-23 17:00:00,,0
390,1.1.1.4.2.7.3.10,Installatie technieken ICT (excl perrons),18.375,14.7,22.05,2019-02-25 08:00:00,2019-03-15 17:00:00,,0
391,1.1.1.4.2.7.3.11,Saldo toegangscontrole ICT (deel 1),1.375,1.1,1.65,2019-07-23 08:00:00,2019-07-24 17:00:00,,0
392,1.1.1.4.2.7.3.12,Saldo toegangscontrole ICT (deel 2),0.375,0.3,0.45,2019-05-14 08:00:00,2019-05-14 17:00:00,,0
393,1.1.1.4.2.7.3.13,"Verwijderen oude Feederkabels F019 en F016 zone -2C, -3B, -3C en -3D (aansl VO15 en VO16)",13.375,10.7,16.05,2019-06-14 08:00:00,2019-06-27 17:00:00,,0
394,1.1.1.4.2.7.3.14,Saldo afwerking na verwijderen oude feederkabels,10.375,8.3,12.45,2019-06-18 08:00:00,2019-06-28 17:00:00,,0
395,1.1.1.4.2.8,lichtput,750.375,742.87,757.88,2017-11-21 08:00:00,2019-12-11 17:00:00,,96
396,1.1.1.4.2.8.1,afwerking lichtput,750.375,742.87,757.88,2017-11-21 08:00:00,2019-12-11 17:00:00,,96
397,1.1.1.4.2.8.1.1,Plaatsen prefab trap T2,99.375,79.5,119.25,2018-08-01 08:00:00,2018-11-08 17:00:00,,52
398,1.1.1.4.2.8.1.2,Spiderglas lift,18.375,14.7,22.05,2018-05-28 08:00:00,2018-06-15 17:00:00,,0
399,1.1.1.4.2.8.1.3,Lift A en B,73.375,58.7,88.05,2018-06-18 08:00:00,2018-08-30 17:00:00,,0
400,1.1.1.4.2.8.1.4,Borden liften,36.375,29.1,43.65,2018-10-22 08:00:00,2018-11-27 17:00:00,,0
401,1.1.1.4.2.8.1.5,Definitief plaatsen roltrap 2a niv. -2->niv. -1,0.375,0.3,0.45,2018-11-19 08:00:00,2018-11-19 17:00:00,,0
402,1.1.1.4.2.8.1.6,Roltrap 1a GV -> niv. -1 (ODR1),9.375,7.5,11.25,2018-11-20 08:00:00,2018-11-29 17:00:00,,5
403,1.1.1.4.2.8.1.7,Roltrap 1b GV -> niv. -1 (OSR2),9.375,7.5,11.25,2018-11-20 08:00:00,2018-11-29 17:00:00,,5
404,1.1.1.4.2.8.1.8,Roltrap 1c GV -> niv. -1 (OSR3),9.375,7.5,11.25,2018-11-20 08:00:00,2018-11-29 17:00:00,,5
405,1.1.1.4.2.8.1.9,"Borden roltrappen (1a, 1b en 1c)",13.375,10.7,16.05,2018-11-30 08:00:00,2018-12-13 17:00:00,,0
406,1.1.1.4.2.8.1.10,Pilaren en portieken,38.375,30.7,46.05,2018-11-09 08:00:00,2018-12-17 17:00:00,,0
407,1.1.1.4.2.8.1.11,Polybeton Lichtput -1 -2,4.375,3.5,5.25,2019-01-07 08:00:00,2019-01-11 17:00:00,,9
408,1.1.1.4.2.8.1.12,Plaatsen stalen trappen T1,6.375,5.1,7.65,2018-12-20 08:00:00,2018-12-26 17:00:00,,0
409,1.1.1.4.2.8.1.13,Dakconstructie ringbalk en secundaire constructie,11.375,9.1,13.65,2018-12-10 08:00:00,2018-12-21 17:00:00,,0
410,1.1.1.4.2.8.1.14,Stelling fase 1 (incl. plateau bovenaan maaiveld),19.375,15.5,23.25,2019-01-17 08:00:00,2019-02-05 17:00:00,,0
411,1.1.1.4.2.8.1.15,Dakconstructie houten balken en afdekplaat,13.375,10.7,16.05,2019-02-06 08:00:00,2019-02-19 17:00:00,,0
412,1.1.1.4.2.8.1.16,Spanplafond fase 1 - Plaatsen profielen,13.375,10.7,16.05,2019-02-19 08:00:00,2019-03-04 17:00:00,,0
413,1.1.1.4.2.8.1.17,Rookluiken,6.375,5.1,7.65,2019-02-19 08:00:00,2019-02-25 17:00:00,,0
414,1.1.1.4.2.8.1.18,Lichtstraat,6.375,5.1,7.65,2019-02-19 08:00:00,2019-02-25 17:00:00,,0
415,1.1.1.4.2.8.1.19,Waterdichting / stalen afdekplaat rode hoed,36.375,29.1,43.65,2019-02-14 08:00:00,2019-03-22 17:00:00,,0
416,1.1.1.4.2.8.1.20,Dakconstructie isolatie spanplafond,6.375,5.1,7.65,2019-03-05 08:00:00,2019-03-11 17:00:00,,0
417,1.1.1.4.2.8.1.21,Spanplafond fase 2 - Plaatsen doek,7.375,5.9,8.85,2019-03-12 08:00:00,2019-03-19 17:00:00,,0
418,1.1.1.4.2.8.1.22,Plaatsen ankerbouten RVS gaas,17.375,13.9,20.85,2019-02-26 08:00:00,2019-03-15 17:00:00,,0
419,1.1.1.4.2.8.1.23,isolatie achter RVS gaas,8.375,6.7,10.05,2019-03-12 08:00:00,2019-03-20 17:00:00,,0
420,1.1.1.4.2.8.1.24,schilderen isolatie,8.375,6.7,10.05,2019-03-21 08:00:00,2019-03-29 17:00:00,,0
421,1.1.1.4.2.8.1.25,Polibeton bordessen T2,0.375,0.3,0.45,2019-04-25 08:00:00,2019-04-25 17:00:00,,0
422,1.1.1.4.2.8.1.26,Stelling fase 2 (afbraak plateau bovenaan maaiveld),6.375,5.1,7.65,2019-03-28 08:00:00,2019-04-03 17:00:00,,0
423,1.1.1.4.2.8.1.27,Start opmeting + productie RVS Gaas - metalen spandoek (M-12),0.375,0.3,0.45,2018-07-02 08:00:00,2018-07-02 17:00:00,,0
424,1.1.1.4.2.8.1.28,RVS Gaas - metalen spandoek (M-12),22.375,17.9,26.85,2019-04-23 08:00:00,2019-05-15 17:00:00,,0
425,1.1.1.4.2.8.1.29,Afwerking wand (isolatie - schilderwerk - spandoek) nachtwerk,2.375,1.9,2.85,2019-04-23 08:00:00,2019-04-25 17:00:00,,0
426,1.1.1.4.2.8.1.30,Betonbalk rond lichtput,19.375,15.5,23.25,2019-04-18 08:00:00,2019-05-07 17:00:00,,0
427,1.1.1.4.2.8.1.31,Demontage stelling,8.375,6.7,10.05,2019-05-02 08:00:00,2019-05-10 17:00:00,,0
428,1.1.1.4.2.8.1.32,Afsluitpoort AP1 bovengronds (aan trap T2),2.375,1.9,2.85,2019-06-11 08:00:00,2019-06-13 17:00:00,,0
429,1.1.1.4.2.8.1.33,Afsluitpoort AP2 bovengronds (aan stalen trap T1),2.375,1.9,2.85,2019-06-11 08:00:00,2019-06-13 17:00:00,,0
430,1.1.1.4.2.8.1.34,Start productie Rookluiken,0.0,0.0,0.0,2018-10-15 17:00:00,2018-10-15 17:00:00,,0
431,1.1.1.4.2.8.1.35,Start productie Lichtstraat,0.0,0.0,0.0,2018-10-12 17:00:00,2018-10-12 17:00:00,,0
432,1.1.1.4.2.8.1.36,Schrijnwerk ramen bovengronds,25.375,20.3,30.45,2019-06-14 08:00:00,2019-07-09 17:00:00,,0
433,1.1.1.4.2.8.1.37,Hijs- klim- valsysteem,1.375,1.1,1.65,2019-07-03 08:00:00,2019-07-04 17:00:00,,0
434,1.1.1.4.2.8.1.38,MS Technisch Dossier,10.375,8.3,12.45,2017-11-21 08:00:00,2017-12-01 17:00:00,,0
435,1.1.1.4.2.8.1.39,MS Opmeting,10.375,8.3,12.45,2017-12-19 08:00:00,2017-12-29 17:00:00,,0
436,1.1.1.4.2.8.1.40,Leidngen onder roltrappen niveau -3,8.375,6.7,10.05,2018-06-18 08:00:00,2018-06-26 17:00:00,,0
437,1.1.1.4.2.8.1.41,Opmeting + productie Schrijnwerk deuren,0.375,0.3,0.45,2019-01-21 08:00:00,2019-01-21 17:00:00,,0
438,1.1.1.4.2.8.1.42,Eiken deuren 03.1.34 & 03.2.05 (technieken) (Lichtput),0.375,0.3,0.45,2019-08-19 08:00:00,2019-08-19 17:00:00,,0
439,1.1.1.4.2.8.1.43,Start opmeting + productie Schrijnwerk ramen ondergronds,0.375,0.3,0.45,2019-02-15 08:00:00,2019-02-15 17:00:00,,0
440,1.1.1.4.2.8.1.44,Schrijnwerk ramen ondergronds -1 -2,10.375,8.3,12.45,2019-05-06 08:00:00,2019-05-16 17:00:00,,0
441,1.1.1.4.2.8.1.45,Start opmeting + productie Poorten/afsluitingen,0.375,0.3,0.45,2019-01-21 08:00:00,2019-01-21 17:00:00,,0
442,1.1.1.4.2.8.1.46,Saldo ICT (Lichtput),0.375,0.3,0.45,2019-09-09 08:00:00,2019-09-09 17:00:00,,0
443,1.1.1.4.2.8.1.47,"Eiken sasdeuren PA.1.03.2, PA.2.03.2 & PA.3.03.2 (technieken) (Parking",1.375,1.1,1.65,2019-08-13 08:00:00,2019-08-14 17:00:00,,0
444,1.1.1.4.2.8.1.48,"Eiken sasdeuren PA.1.03.1, PA.2.03.1 & PA.3.03.1",1.375,1.1,1.65,2019-08-15 08:00:00,2019-08-16 17:00:00,,0
445,1.1.1.4.2.8.1.49,Poorten/afsluitingen -1,29.375,23.5,35.25,2019-11-12 08:00:00,2019-12-11 17:00:00,,0
446,1.1.1.4.2.8.1.50,Poorten/afsluitingen -2,8.375,6.7,10.05,2019-11-12 08:00:00,2019-11-20 17:00:00,,0
447,1.1.1.4.2.8.1.51,Poorten/afsluitingen -3,24.375,19.5,29.25,2019-11-12 08:00:00,2019-12-06 17:00:00,,0
448,1.1.1.4.2.8.1.52,Roltrap 2a niv. -1-> niv. -2,12.375,9.9,14.85,2018-05-03 08:00:00,2018-05-15 17:00:00,,5
449,1.1.1.4.2.8.1.53,Roltrap 2b niv. -1 -> niv. -2,12.375,9.9,14.85,2018-05-03 08:00:00,2018-05-15 17:00:00,,5
450,1.1.1.4.2.8.1.54,Roltrap 3a niv.-2 -> niv. -3,12.375,9.9,14.85,2018-05-03 08:00:00,2018-05-15 17:00:00,,5
451,1.1.1.4.2.8.1.55,Roltrap 3b niv.-2 -> niv. -3,12.375,9.9,14.85,2018-05-03 08:00:00,2018-05-15 17:00:00,,5
452,1.1.1.4.2.8.1.56,"Borden roltrappen (roltrap 2a, 2b, 3a en 3b)",18.375,14.7,22.05,2018-10-15 08:00:00,2018-11-02 17:00:00,,0
453,1.1.1.4.2.8.2,technieken lichtput,65.375,64.72,66.03,2019-02-20 08:00:00,2019-04-26 17:00:00,,0
454,1.1.1.4.2.8.2.1,Technieken VDK vóór afwerking plafond Lichtput,9.375,7.5,11.25,2019-02-20 08:00:00,2019-03-01 17:00:00,,0
455,1.1.1.4.2.8.2.2,Installatie technieken ICT (voor spanplafond),12.375,9.9,14.85,2019-02-20 08:00:00,2019-03-04 17:00:00,,0
456,1.1.1.4.2.8.2.3,Technieken VDK in spanplafond,6.375,5.1,7.65,2019-03-20 08:00:00,2019-03-26 17:00:00,,0
457,1.1.1.4.2.8.2.4,Installatie technieken ICT,6.375,5.1,7.65,2019-03-20 08:00:00,2019-03-26 17:00:00,,0
458,1.1.1.4.2.8.2.5,Technieken VDK in lichtput alle niveaus,27.375,21.9,32.85,2019-02-20 08:00:00,2019-03-19 17:00:00,,0
459,1.1.1.4.2.8.2.6,Installatie technieken ICT,11.375,9.1,13.65,2019-04-15 08:00:00,2019-04-26 17:00:00,,0
460,1.1.1.4.3,C) Keyserlei Oost,923.375,914.14,932.61,2017-06-08 08:00:00,2019-12-18 17:00:00,,419
461,1.1.1.4.3.1,niv 0 (C: Keyserlei Oost),666.375,659.71,673.04,2017-06-08 08:00:00,2019-04-05 17:00:00,,220
462,1.1.1.4.3.1.1,"ruwbouw (C: Keyserlei Oost, niv 0)",666.375,659.71,673.04,2017-06-08 08:00:00,2019-04-05 17:00:00,,56
463,1.1.1.4.3.1.1.1,afbraak dakplaat /wanden noord,20.375,16.3,24.45,2017-06-08 08:00:00,2017-06-28 17:00:00,,0
464,1.1.1.4.3.1.1.2,betonneren dakplaat noord,8.375,6.7,10.05,2017-06-29 08:00:00,2017-07-07 17:00:00,,0
465,1.1.1.4.3.1.1.3,ontkisten dakplaat noord,13.375,10.7,16.05,2017-11-03 08:00:00,2017-11-16 17:00:00,,0
466,1.1.1.4.3.1.1.4,ontkisten dakplaat zuid,11.375,9.1,13.65,2017-07-03 08:00:00,2017-07-14 17:00:00,,0
467,1.1.1.4.3.1.1.5,afbraak dakplaat thv lift c,13.375,10.7,16.05,2018-11-22 08:00:00,2018-12-05 17:00:00,,4
468,1.1.1.4.3.1.1.6,Optrekken wand lift C tbv kabelschacht zuid,4.375,3.5,5.25,2018-08-06 08:00:00,2018-08-10 17:00:00,,0
469,1.1.1.4.3.1.1.7,Ruwbouw saldo lift c,13.375,10.7,16.05,2018-12-06 08:00:00,2018-12-19 17:00:00,,40
470,1.1.1.4.3.1.1.8,Opbraak verharding Zone Zuid,11.375,9.1,13.65,2018-09-24 08:00:00,2018-10-05 17:00:00,,0
471,1.1.1.4.3.1.1.9,Nutsleidingen Zone Zuid,39.375,31.5,47.25,2018-10-08 08:00:00,2018-11-16 17:00:00,,0
472,1.1.1.4.3.1.1.10,Waterdichting dakplaat de Keyserlei Zuid (W7),36.375,29.1,43.65,2019-02-28 08:00:00,2019-04-05 17:00:00,,6
473,1.1.1.4.3.1.1.11,"Verplaatsen keten Keyserlei tgv Matexi, incl. vrijgave terrein voor start werken (onder voorbehoud)",15.375,12.3,18.45,2018-07-30 08:00:00,2018-08-14 17:00:00,,0
474,1.1.1.4.3.1.1.12,Afbraak verharding de Keyserlei (noord) ,11.375,9.1,13.65,2018-08-20 08:00:00,2018-08-31 17:00:00,,0
475,1.1.1.4.3.1.1.13,Waterdichting dakplaat de Keyserlei noord (W8+W16),18.375,14.7,22.05,2018-09-03 08:00:00,2018-09-21 17:00:00,,6
476,1.1.1.4.3.1.2,"Ruwbouwwerken trap T6 (C: Keyserlei Oost, niv 0)",453.375,448.84,457.91,2017-12-01 08:00:00,2019-02-27 17:00:00,,164
477,1.1.1.4.3.1.2.1,beschoeide sleuven,62.375,49.9,74.85,2017-12-01 08:00:00,2018-02-01 17:00:00,,0
478,1.1.1.4.3.1.2.2,afbraak,20.375,16.3,24.45,2018-11-22 08:00:00,2018-12-12 17:00:00,,4
479,1.1.1.4.3.1.2.3,nieuwbouw trapslede,27.375,21.9,32.85,2018-12-13 08:00:00,2019-01-09 17:00:00,,80
480,1.1.1.4.3.1.2.4,nieuwbouw opgaande wanden + dak,34.375,27.5,41.25,2019-01-24 08:00:00,2019-02-27 17:00:00,,80
481,1.1.1.4.3.2,niv -1 (C: Keyserlei Oost),778.375,770.59,786.16,2017-10-11 08:00:00,2019-11-28 17:00:00,,17
482,1.1.1.4.3.2.1,"ruwbouw (C: Keyserlei Oost, niv -1)",456.375,451.81,460.94,2017-12-13 08:00:00,2019-03-14 17:00:00,,15
483,1.1.1.4.3.2.1.1,lift c,34.375,27.5,41.25,2018-02-01 08:00:00,2018-03-07 17:00:00,,0
484,1.1.1.4.3.2.1.2,omleggen evacuatie zuid,0.375,0.3,0.45,2018-05-23 08:00:00,2018-05-23 17:00:00,,0
485,1.1.1.4.3.2.1.3,dichten vloeropening zuid,13.375,10.7,16.05,2018-05-24 08:00:00,2018-06-06 17:00:00,,0
486,1.1.1.4.3.2.1.4,ontkisten vloeropeningen,4.375,3.5,5.25,2018-08-06 08:00:00,2018-08-10 17:00:00,,0
487,1.1.1.4.3.2.1.5,metsen lokaal Cofab,29.375,23.5,35.25,2018-06-07 08:00:00,2018-07-06 17:00:00,,0
488,1.1.1.4.3.2.1.6,polybeton lokaal Cofab,14.375,11.5,17.25,2018-07-09 08:00:00,2018-07-23 17:00:00,,6
489,1.1.1.4.3.2.1.7,bordenlokaal Cofab -1/C1 [B2],14.375,11.5,17.25,2018-07-09 08:00:00,2018-07-23 17:00:00,,0
490,1.1.1.4.3.2.1.8,omleggen evacuatie noord,0.375,0.3,0.45,2018-06-06 08:00:00,2018-06-06 17:00:00,,0
491,1.1.1.4.3.2.1.9,dichten vloeropening noord,13.375,10.7,16.05,2018-06-07 08:00:00,2018-06-20 17:00:00,,0
492,1.1.1.4.3.2.1.10,ontkisten vloeropeningen,4.375,3.5,5.25,2018-08-20 08:00:00,2018-08-24 17:00:00,,0
493,1.1.1.4.3.2.1.11,metsen saldo buitenwanden gang,35.375,28.3,42.45,2018-06-21 08:00:00,2018-07-26 17:00:00,,0
494,1.1.1.4.3.2.1.12,polybeton,4.375,3.5,5.25,2018-07-27 08:00:00,2018-07-31 17:00:00,,9
495,1.1.1.4.3.2.1.13,metsen saldo T6,13.375,10.7,16.05,2019-03-01 08:00:00,2019-03-14 17:00:00,,0
496,1.1.1.4.3.2.1.14,kabelschacht Cofab -1/C2 [kabelschacht Zuid],0.375,0.3,0.45,2017-12-13 08:00:00,2017-12-13 17:00:00,,0
497,1.1.1.4.3.2.2,"afwerking (C: Keyserlei Oost, niv -1)",778.375,770.59,786.16,2017-10-11 08:00:00,2019-11-28 17:00:00,,2
498,1.1.1.4.3.2.2.1,Schrijnwerk deuren,41.375,33.1,49.65,2019-04-11 08:00:00,2019-05-22 17:00:00,,0
499,1.1.1.4.3.2.2.2,!! Start opmeting + productie Poorten/afsluitingen,0.375,0.3,0.45,2019-02-01 08:00:00,2019-02-01 17:00:00,,0
500,1.1.1.4.3.2.2.3,!! Start opmeting + productie Vouwdeur (= tourniket Bracon),0.375,0.3,0.45,2019-02-05 08:00:00,2019-02-05 17:00:00,,0
501,1.1.1.4.3.2.2.4,Lift C (incl. bord),30.375,24.3,36.45,2019-01-14 08:00:00,2019-02-13 17:00:00,,0
502,1.1.1.4.3.2.2.5,Saldo polibeton (incl. sokkel vouwdeur),3.375,2.7,4.05,2019-02-25 08:00:00,2019-02-28 17:00:00,,0
503,1.1.1.4.3.2.2.6,Betonherstellingen,53.375,42.7,64.05,2019-02-18 08:00:00,2019-04-12 17:00:00,,0
504,1.1.1.4.3.2.2.7,!!! Vouwdeur (= tourniket Bracon),4.375,3.5,5.25,2019-08-01 08:00:00,2019-08-05 17:00:00,,0
505,1.1.1.4.3.2.2.8,Wandtegels Graniet,15.375,12.3,18.45,2019-04-17 08:00:00,2019-05-02 17:00:00,,0
506,1.1.1.4.3.2.2.9,MS Technisch Dossier,0.0,0.0,0.0,2018-02-16 17:00:00,2018-02-16 17:00:00,,0
507,1.1.1.4.3.2.2.10,MS Opmeting,0.0,0.0,0.0,2018-03-16 17:00:00,2018-03-16 17:00:00,,0
508,1.1.1.4.3.2.2.11,RUWBOUW metsen lokaal cofab niv. -1,0.375,0.3,0.45,2018-07-06 08:00:00,2018-07-06 17:00:00,,0
509,1.1.1.4.3.2.2.12,wandafwerking kabelschacht Cofab 1/C2,0.375,0.3,0.45,2017-10-11 08:00:00,2017-10-11 17:00:00,,0
510,1.1.1.4.3.2.2.13,RUWBOUW metsen saldo ,0.375,0.3,0.45,2018-07-26 08:00:00,2018-07-26 17:00:00,,0
511,1.1.1.4.3.2.2.14,Vloerafwerking polybeton lokalen,4.375,3.5,5.25,2018-07-27 08:00:00,2018-07-31 17:00:00,,0
512,1.1.1.4.3.2.2.15,"Polybeton lokethal (C: Keyserlei Oost, niv -1)",14.375,11.5,17.25,2018-11-16 08:00:00,2018-11-30 17:00:00,,0
513,1.1.1.4.3.2.2.16,Wandafwerking schilderwerken lokalen de lijn,13.375,10.7,16.05,2018-07-13 08:00:00,2018-07-26 17:00:00,,0
514,1.1.1.4.3.2.2.17,Afwerken voorzetschelpen trappenhallen noord en zuid,69.375,55.5,83.25,2018-05-18 08:00:00,2018-07-26 17:00:00,,0
515,1.1.1.4.3.2.2.18,Trapontdooiing (T6),0.375,0.3,0.45,2019-05-08 08:00:00,2019-05-08 17:00:00,,0
516,1.1.1.4.3.2.2.19,Granieten traptreden (T6),18.375,14.7,22.05,2019-05-09 08:00:00,2019-05-27 17:00:00,,0
517,1.1.1.4.3.2.2.20,Saldo Granieten traptreden rest (T6),1.375,1.1,1.65,2019-06-27 08:00:00,2019-06-28 17:00:00,,0
518,1.1.1.4.3.2.2.21,Einde werkzaamheden T6,0.375,0.3,0.45,2019-07-01 08:00:00,2019-07-01 17:00:00,,0
519,1.1.1.4.3.2.2.22,Granieten vloer,3.375,2.7,4.05,2019-07-01 08:00:00,2019-07-04 17:00:00,,0
520,1.1.1.4.3.2.2.23,Anti-graffiti,1.375,1.1,1.65,2019-08-15 08:00:00,2019-08-16 17:00:00,,0
521,1.1.1.4.3.2.2.24,Poorten/afsluitingen,3.375,2.7,4.05,2019-11-25 08:00:00,2019-11-28 17:00:00,,0
522,1.1.1.4.3.2.2.25,Opmetingen Leuningen en handgrepen T6,0.375,0.3,0.45,2019-07-03 08:00:00,2019-07-03 17:00:00,,0
523,1.1.1.4.3.2.2.26,Leuningen en handgrepen,4.375,3.5,5.25,2019-07-08 08:00:00,2019-07-12 17:00:00,,0
524,1.1.1.4.3.2.2.27,Start opmeting + productie Plafondafwerkingen( verlaagde plafonds),0.375,0.3,0.45,2018-10-15 08:00:00,2018-10-15 17:00:00,,0
525,1.1.1.4.3.2.2.28,Plafondafwerkingen( verlaagde plafonds),10.375,8.3,12.45,2019-01-11 08:00:00,2019-01-21 17:00:00,,0
526,1.1.1.4.3.2.2.29,Leidingen onder vloerafwerking,7.375,5.9,8.85,2018-05-10 08:00:00,2018-05-17 17:00:00,,0
527,1.1.1.4.3.2.2.30,Opmeting + productie Schrijnwerk deuren,0.375,0.3,0.45,2018-09-17 08:00:00,2018-09-17 17:00:00,,0
528,1.1.1.4.3.2.2.31,Cementering,6.375,5.1,7.65,2018-07-27 08:00:00,2018-08-02 17:00:00,,0
529,1.1.1.4.3.2.2.32,Wandbetegeling 20*20 (alle niveaus),46.375,37.1,55.65,2018-08-20 08:00:00,2018-10-05 17:00:00,,0
530,1.1.1.4.3.2.2.33,Wandafwerking schilderwerk en tegelwerk sanitair,11.375,9.1,13.65,2018-12-17 08:00:00,2018-12-28 17:00:00,,0
531,1.1.1.4.3.2.2.34,"Schrijnwerk stalen deur (technieken) (1 st.) (Keyserlei Oost, niveau -1)",0.375,0.3,0.45,2019-06-03 08:00:00,2019-06-03 17:00:00,,0
532,1.1.1.4.3.2.2.35,Schrijnwerk stalen deur (2 st.),0.375,0.3,0.45,2019-06-04 08:00:00,2019-06-04 17:00:00,,0
533,1.1.1.4.3.2.2.36,Blowerdoortest niveau -1 C (Keyserlei Oost),0.375,0.3,0.45,2019-08-14 08:00:00,2019-08-14 17:00:00,,2
534,1.1.1.4.3.2.2.37,Gebouwensignalisatie,4.375,3.5,5.25,2019-08-19 08:00:00,2019-08-23 17:00:00,,0
535,1.1.1.4.3.2.2.38,"Sanitaire installatie (afwerking) (Keyserlei Oost, Niv. -1)",28.375,22.7,34.05,2019-06-05 08:00:00,2019-07-03 17:00:00,,0
536,1.1.1.4.3.2.2.39,Binnenmeubilair lokalen De Lijn,6.375,5.1,7.65,2019-07-04 08:00:00,2019-07-10 17:00:00,,0
537,1.1.1.4.3.2.2.40,Leuningen en handgrepen T6,6.375,5.1,7.65,2019-10-01 08:00:00,2019-10-07 17:00:00,,0
538,1.1.1.4.3.2.3,"technieken (C: Keyserlei Oost, niv -1, )",476.375,471.61,481.14,2018-01-29 08:00:00,2019-05-20 17:00:00,,0
539,1.1.1.4.3.2.3.1,Kabelbanen + boringen Oost niv.-1 (lokalen),27.375,21.9,32.85,2018-08-30 08:00:00,2018-09-26 17:00:00,,0
540,1.1.1.4.3.2.3.2,Installatie Borden B2,13.375,10.7,16.05,2018-08-02 08:00:00,2018-08-15 17:00:00,,0
541,1.1.1.4.3.2.3.3,Kabeltrek hoofdvoedingskabels,18.375,14.7,22.05,2018-08-13 08:00:00,2018-08-31 17:00:00,,0
542,1.1.1.4.3.2.3.4,Technieken VDK (Lokalen),34.375,27.5,41.25,2018-08-09 08:00:00,2018-09-12 17:00:00,,0
543,1.1.1.4.3.2.3.5,HVAC,232.375,185.9,278.85,2018-01-29 08:00:00,2018-09-18 17:00:00,,0
544,1.1.1.4.3.2.3.6,BBI (lokalen),41.375,33.1,49.65,2018-10-05 08:00:00,2018-11-15 17:00:00,,0
545,1.1.1.4.3.2.3.7,Secundaire kabelwegen ICT (lokalen),14.375,11.5,17.25,2018-07-30 08:00:00,2018-08-13 17:00:00,,0
546,1.1.1.4.3.2.3.8,Secundaire kabelwerken ICT (lokalen),10.375,8.3,12.45,2018-08-06 08:00:00,2018-08-16 17:00:00,,0
547,1.1.1.4.3.2.3.9,Installatie technieken ICT (lokalen),39.375,31.5,47.25,2018-08-20 08:00:00,2018-09-28 17:00:00,,0
548,1.1.1.4.3.2.3.10,Technieken na vals plafond ,13.375,10.7,16.05,2019-01-22 08:00:00,2019-02-04 17:00:00,,0
549,1.1.1.4.3.2.3.11,Installatie technieken ICT,11.375,9.1,13.65,2019-02-18 08:00:00,2019-03-01 17:00:00,,0
550,1.1.1.4.3.2.3.12,"Installatie technieken ICT (oa n Bracondeur, Keyserlei Oost, niveau -1)a",42.375,33.9,50.85,2019-04-08 08:00:00,2019-05-20 17:00:00,,0
551,1.1.1.4.3.2.3.13,Kabelbanen + boringen Oost niv.-1 (lokethal),11.375,9.1,13.65,2018-10-01 08:00:00,2018-10-12 17:00:00,,0
552,1.1.1.4.3.2.3.14,Technieken VDK (Lokethal),18.375,14.7,22.05,2018-10-15 08:00:00,2018-11-02 17:00:00,,0
553,1.1.1.4.3.2.3.15,BBI (lokethal),18.375,14.7,22.05,2018-12-03 08:00:00,2018-12-21 17:00:00,,0
554,1.1.1.4.3.2.3.16,Secundaire kabelwegen ICT (lokethal),4.375,3.5,5.25,2018-10-15 08:00:00,2018-10-19 17:00:00,,0
555,1.1.1.4.3.2.3.17,Secundaire kabelwerken ICT (lokethal),3.375,2.7,4.05,2018-10-22 08:00:00,2018-10-25 17:00:00,,0
556,1.1.1.4.3.2.3.18,Installatie technieken ICT (lokethal),18.375,14.7,22.05,2018-12-03 08:00:00,2018-12-21 17:00:00,,0
557,1.1.1.4.3.3,niv -2 (C: Keyserlei Oost),835.0,826.65,843.35,2017-09-04 17:00:00,2019-12-18 17:00:00,,92
558,1.1.1.4.3.3.1,ruwbouw,183.375,181.54,185.21,2017-10-09 08:00:00,2018-04-10 17:00:00,,0
559,1.1.1.4.3.3.1.1,nieuwe trap -2 naar -1  zuid,30.375,24.3,36.45,2017-10-09 08:00:00,2017-11-08 17:00:00,,0
560,1.1.1.4.3.3.1.2,ontkisten trappen,4.375,3.5,5.25,2018-01-08 08:00:00,2018-01-12 17:00:00,,0
561,1.1.1.4.3.3.1.3,nieuwe trap -2 naar -1 noord,23.375,18.7,28.05,2018-01-10 08:00:00,2018-02-02 17:00:00,,0
562,1.1.1.4.3.3.1.4,ontkisten trappen,6.375,5.1,7.65,2018-04-04 08:00:00,2018-04-10 17:00:00,,0
563,1.1.1.4.3.3.1.5,lift c,13.375,10.7,16.05,2017-12-27 08:00:00,2018-01-09 17:00:00,,0
564,1.1.1.4.3.3.1.6,kabelschacht Cofab -2/C2 [kabelschacht Zuid],0.375,0.3,0.45,2018-01-08 08:00:00,2018-01-08 17:00:00,,0
565,1.1.1.4.3.3.2,"afwerking (C: Keyserlei Oost, niv -2)",835.0,826.65,843.35,2017-09-04 17:00:00,2019-12-18 17:00:00,,92
566,1.1.1.4.3.3.2.1,MS Technisch Dossier,0.0,0.0,0.0,2017-09-04 17:00:00,2017-09-04 17:00:00,,0
567,1.1.1.4.3.3.2.2,MS Opmeting,0.0,0.0,0.0,2017-10-02 17:00:00,2017-10-02 17:00:00,,0
568,1.1.1.4.3.3.2.3,RUWBOUW ontkisten trappen niv. -2,0.0,0.0,0.0,2018-04-10 17:00:00,2018-04-10 17:00:00,,0
569,1.1.1.4.3.3.2.4,Staalstructuur vaste rookschermen -2,84.375,67.5,101.25,2018-05-09 08:00:00,2018-08-01 17:00:00,,0
570,1.1.1.4.3.3.2.5,Afwerken voorzetschelpen,25.375,20.3,30.45,2018-05-14 08:00:00,2018-06-08 17:00:00,,0
571,1.1.1.4.3.3.2.6,Afwerking trappen dmv prefab traptreden,31.375,25.1,37.65,2018-09-04 08:00:00,2018-10-05 17:00:00,,80
572,1.1.1.4.3.3.2.7,Leidingen onder vloerafwerking,4.375,3.5,5.25,2018-10-08 08:00:00,2018-10-12 17:00:00,,0
573,1.1.1.4.3.3.2.8,"Polybeton Zuid (C: Keyserlei Oost, niv -2)",17.375,13.9,20.85,2019-01-07 08:00:00,2019-01-24 17:00:00,,12
574,1.1.1.4.3.3.2.9,Schrijnwerk stalen deuren (technieken),2.375,1.9,2.85,2019-05-27 08:00:00,2019-05-29 17:00:00,,0
575,1.1.1.4.3.3.2.10,Mobiele rookschermen noord - Bedieningsborden,72.375,57.9,86.85,2019-01-23 08:00:00,2019-04-05 17:00:00,,0
576,1.1.1.4.3.3.2.11,Mobiele rookschermen zuid - Bedieningsborden,74.375,59.5,89.25,2019-01-28 08:00:00,2019-04-12 17:00:00,,0
577,1.1.1.4.3.3.2.12,Mobiele rookschermen - Afwerking,35.375,28.3,42.45,2019-04-15 08:00:00,2019-05-20 17:00:00,,0
578,1.1.1.4.3.3.2.13,"Polybeton Noord (C: Keyserlei Oost, niv -2)",10.375,8.3,12.45,2018-10-15 08:00:00,2018-10-25 17:00:00,,0
579,1.1.1.4.3.3.2.14,Betonherstellingen,53.375,42.7,64.05,2019-02-18 08:00:00,2019-04-12 17:00:00,,0
580,1.1.1.4.3.3.2.15,Opmeten Borstweringen en leuningen,0.375,0.3,0.45,2019-04-17 08:00:00,2019-04-17 17:00:00,,0
581,1.1.1.4.3.3.2.16,Blindegeleidetegels Zuid,5.375,4.3,6.45,2019-05-15 08:00:00,2019-05-20 17:00:00,,0
582,1.1.1.4.3.3.2.17,Blindegeleidetegels Noord,3.375,2.7,4.05,2019-05-21 08:00:00,2019-05-24 17:00:00,,0
583,1.1.1.4.3.3.2.18,Anti-graffiti,4.375,3.5,5.25,2019-08-15 08:00:00,2019-08-19 17:00:00,,0
584,1.1.1.4.3.3.2.19,Opmeting + productie Schrijnwerk deuren,5.375,4.3,6.45,2018-10-26 08:00:00,2018-10-31 17:00:00,,0
585,1.1.1.4.3.3.2.20,Cementering,8.375,6.7,10.05,2018-08-08 08:00:00,2018-08-16 17:00:00,,0
586,1.1.1.4.3.3.2.21,Wandbetegeling 20*20 (alle niveaus),39.375,31.5,47.25,2018-08-20 08:00:00,2018-09-28 17:00:00,,0
587,1.1.1.4.3.3.2.22,Wandafwerking,1.375,1.1,1.65,2018-10-01 08:00:00,2018-10-02 17:00:00,,0
588,1.1.1.4.3.3.2.23,Schrijnwerk stalen deur (1 st.),0.375,0.3,0.45,2019-04-18 08:00:00,2019-04-18 17:00:00,,0
589,1.1.1.4.3.3.2.24,Borstweringen en leuningen,8.375,6.7,10.05,2019-12-10 08:00:00,2019-12-18 17:00:00,,0
590,1.1.1.4.3.3.2.25,Gebouwensignalisatie,1.375,1.1,1.65,2019-08-14 08:00:00,2019-08-15 17:00:00,,0
591,1.1.1.4.3.3.3,"technieken (C: Keyserlei Oost, niv -2)",270.375,267.67,273.08,2018-10-01 08:00:00,2019-06-28 17:00:00,,0
592,1.1.1.4.3.3.3.1,Technieken boven RTR/TR Oost niv.-2 - > niv. -1 (trap T10 en T7),39.375,31.5,47.25,2018-10-01 08:00:00,2018-11-09 17:00:00,,0
593,1.1.1.4.3.3.3.2,Secundaire kabelwegen ICT,15.375,12.3,18.45,2018-10-15 08:00:00,2018-10-30 17:00:00,,0
594,1.1.1.4.3.3.3.3,Secundaire kabelwerken ICT,16.375,13.1,19.65,2018-10-22 08:00:00,2018-11-07 17:00:00,,0
595,1.1.1.4.3.3.3.4,Installatie technieken ICT (voor bespuiting),13.375,10.7,16.05,2018-11-15 08:00:00,2018-11-28 17:00:00,,0
596,1.1.1.4.3.3.3.5,Installatie technieken ICT,11.375,9.1,13.65,2019-04-01 08:00:00,2019-04-12 17:00:00,,0
597,1.1.1.4.3.3.3.6,"Verwijderen oude Feederkabels F019 en F016 zone -2C, -3B, -3C en -3D (aansl VO15 en VO16)",13.375,10.7,16.05,2019-06-14 08:00:00,2019-06-27 17:00:00,,0
598,1.1.1.4.3.3.3.7,Saldo afwerking na verwijderen oude feederkabels,10.375,8.3,12.45,2019-06-18 08:00:00,2019-06-28 17:00:00,,0
599,1.1.1.4.3.4,niv -3 (C: Keyserlei Oost),901.375,892.36,910.39,2017-06-30 08:00:00,2019-12-18 17:00:00,,90
600,1.1.1.4.3.4.1,ruwbouw,315.375,312.22,318.53,2017-06-30 08:00:00,2018-05-11 17:00:00,,0
601,1.1.1.4.3.4.1.1,nieuwe trap -3 naar -2 zuid,18.375,14.7,22.05,2017-08-07 08:00:00,2017-08-25 17:00:00,,0
602,1.1.1.4.3.4.1.2,nieuwe trap -3 naar -2 noord,20.375,16.3,24.45,2017-12-13 08:00:00,2018-01-02 17:00:00,,0
603,1.1.1.4.3.4.1.3,lift c,13.375,10.7,16.05,2017-12-13 08:00:00,2017-12-26 17:00:00,,0
604,1.1.1.4.3.4.1.4,metsen naast de lift C,3.375,2.7,4.05,2018-01-26 08:00:00,2018-01-29 17:00:00,,0
605,1.1.1.4.3.4.1.5,bordenlokaal Cofab -3/C1 [B8],0.375,0.3,0.45,2017-06-30 08:00:00,2017-06-30 17:00:00,,0
606,1.1.1.4.3.4.1.6,kabelschacht Cofab -3/C2 [B9],0.375,0.3,0.45,2018-01-29 08:00:00,2018-01-29 17:00:00,,0
607,1.1.1.4.3.4.1.7,afschieten bulten ,4.375,3.5,5.25,2018-05-07 08:00:00,2018-05-11 17:00:00,,0
608,1.1.1.4.3.4.2,"afwerking (C: Keyserlei Oost, niv -3)",863.0,854.37,871.63,2017-08-07 17:00:00,2019-12-18 17:00:00,,90
609,1.1.1.4.3.4.2.1,MS Technisch Dossier,0.0,0.0,0.0,2017-08-07 17:00:00,2017-08-07 17:00:00,,0
610,1.1.1.4.3.4.2.2,MS Opmeting,0.0,0.0,0.0,2017-09-06 17:00:00,2017-09-06 17:00:00,,0
611,1.1.1.4.3.4.2.3,RUWBOUW metsen naast de lift C niv. -3,0.0,0.0,0.0,2018-01-29 17:00:00,2018-01-29 17:00:00,,0
612,1.1.1.4.3.4.2.4,Staalstructuur vaste rookschermen -3,18.375,14.7,22.05,2018-02-12 08:00:00,2018-03-02 17:00:00,,0
613,1.1.1.4.3.4.2.5,Afwerken voorzetschelpen trappenhallen noord en zuid,31.375,25.1,37.65,2018-05-14 08:00:00,2018-06-14 17:00:00,,0
614,1.1.1.4.3.4.2.6,Afwerking trappen dmv prefab traptreden,18.375,14.7,22.05,2018-08-13 08:00:00,2018-08-31 17:00:00,,80
615,1.1.1.4.3.4.2.7,Opmeting + productie Schrijnwerk deuren,0.375,0.3,0.45,2018-09-17 08:00:00,2018-09-17 17:00:00,,0
616,1.1.1.4.3.4.2.8,Schrijnwerk deuren,8.375,6.7,10.05,2019-04-11 08:00:00,2019-04-19 17:00:00,,0
617,1.1.1.4.3.4.2.9,Cementering,8.375,6.7,10.05,2018-07-30 08:00:00,2018-08-07 17:00:00,,0
618,1.1.1.4.3.4.2.10,Wandbetegeling 20*20 (alle niveaus),50.375,40.3,60.45,2018-08-08 08:00:00,2018-09-27 17:00:00,,0
619,1.1.1.4.3.4.2.11,Mobiele rookschermen - Bedieningsborden,36.375,29.1,43.65,2019-02-21 08:00:00,2019-03-29 17:00:00,,0
620,1.1.1.4.3.4.2.12,Betonherstellingen,53.375,42.7,64.05,2019-02-18 08:00:00,2019-04-12 17:00:00,,0
621,1.1.1.4.3.4.2.13,Mobiele rookschermen - Afwerking,43.375,34.7,52.05,2019-04-01 08:00:00,2019-05-14 17:00:00,,0
622,1.1.1.4.3.4.2.14,Opmeting borstweringen en leuningen,0.375,0.3,0.45,2019-04-17 08:00:00,2019-04-17 17:00:00,,0
623,1.1.1.4.3.4.2.15,Anti-graffiti,2.375,1.9,2.85,2019-08-13 08:00:00,2019-08-15 17:00:00,,0
624,1.1.1.4.3.4.2.16,Borstweringen en leuningen,8.375,6.7,10.05,2019-12-10 08:00:00,2019-12-18 17:00:00,,0
625,1.1.1.4.3.4.2.17,Gebouwensignalisatie,5.375,4.3,6.45,2019-08-14 08:00:00,2019-08-19 17:00:00,,0
626,1.1.1.4.3.4.2.18,Start Opmeting + productie Straatmeubilair perrons,0.375,0.3,0.45,2018-09-03 08:00:00,2018-09-03 17:00:00,,0
627,1.1.1.4.3.4.2.19,Roltrap 11a niv.-2 -> niv. -3,7.375,5.9,8.85,2018-08-27 08:00:00,2018-09-03 17:00:00,,0
628,1.1.1.4.3.4.2.20,Roltrap 6b niv.-2 -> niv. -3,7.375,5.9,8.85,2018-08-27 08:00:00,2018-09-03 17:00:00,,0
629,1.1.1.4.3.4.2.21,Roltrap 6a niv.-2 -> niv. -3 (ODR10),25.375,20.3,30.45,2018-09-03 08:00:00,2018-09-28 17:00:00,,5
630,1.1.1.4.3.4.2.22,Roltrap 11b niv.-2 -> niv. -3 (ODR18),25.375,20.3,30.45,2018-09-03 08:00:00,2018-09-28 17:00:00,,5
631,1.1.1.4.3.4.2.23,"Borden roltrappen (6a, 6b, 11a en 11b)",11.375,9.1,13.65,2018-10-15 08:00:00,2018-10-26 17:00:00,,0
632,1.1.1.4.3.4.3,"technieken (C: Keyserlei Oost, niv -3)",487.375,482.5,492.25,2018-02-26 08:00:00,2019-06-28 17:00:00,,0
633,1.1.1.4.3.4.3.1,Kabeltrek en aansluitwerk in Onderstation,267.0416666667006,213.63,320.45,2018-05-14 08:00:00,2019-02-05 09:00:00,,0
634,1.1.1.4.3.4.3.2,Technieken VDK schacht en techn lokalen oost,48.375,38.7,58.05,2018-05-02 08:00:00,2018-06-19 17:00:00,,0
635,1.1.1.4.3.4.3.3,Pompinstallatie regenwater (aanduiding periode),81.375,65.1,97.65,2018-11-05 08:00:00,2019-01-25 17:00:00,,0
636,1.1.1.4.3.4.3.4,Secundaire kabelwegen ICT,18.375,14.7,22.05,2018-02-26 08:00:00,2018-03-16 17:00:00,,0
637,1.1.1.4.3.4.3.5,Secundaire kabelwerken ICT,18.375,14.7,22.05,2018-03-05 08:00:00,2018-03-23 17:00:00,,0
638,1.1.1.4.3.4.3.6,Installatie technieken ICT,25.375,20.3,30.45,2018-07-30 08:00:00,2018-08-24 17:00:00,,0
639,1.1.1.4.3.4.3.7,Technieken boven RTR/TR Oost niv. -3 -> niv. -2,64.375,51.5,77.25,2018-10-15 08:00:00,2018-12-18 17:00:00,,0
640,1.1.1.4.3.4.3.8,Installatie technieken ICT (na akoestisch en brandwerende bespuiting),28.375,22.7,34.05,2019-03-14 08:00:00,2019-04-11 17:00:00,,0
641,1.1.1.4.3.4.3.9,"Verwijderen oude Feederkabels F019 en F016 zone -2C, -3B, -3C en -3D (aansl VO15 en VO16)",13.375,10.7,16.05,2019-06-14 08:00:00,2019-06-27 17:00:00,,0
642,1.1.1.4.3.4.3.10,Saldo afwerking na verwijderen oude feederkabels,10.375,8.3,12.45,2019-06-18 08:00:00,2019-06-28 17:00:00,,0
643,1.1.1.4.4,D) Frankrijklei Zuid,862.0,853.38,870.62,2017-09-06 17:00:00,2020-01-16 17:00:00,,1146
644,1.1.1.4.4.1,niv 0 (D: Frankrijklei Zuid),715.375,708.22,722.53,2017-09-25 08:00:00,2019-09-10 17:00:00,,0
645,1.1.1.4.4.1.1,afwerking (D: Frankrijklei Zuid),715.375,708.22,722.53,2017-09-25 08:00:00,2019-09-10 17:00:00,,0
646,1.1.1.4.4.1.1.1,afbraak dakplaat ventilatielokaal,11.375,9.1,13.65,2017-09-25 08:00:00,2017-10-06 17:00:00,,0
647,1.1.1.4.4.1.1.2,betonneren dakplaat,18.375,14.7,22.05,2017-10-09 08:00:00,2017-10-27 17:00:00,,0
648,1.1.1.4.4.1.1.3,ontkisten dakplaat,13.375,10.7,16.05,2017-12-27 08:00:00,2018-01-09 17:00:00,,0
649,1.1.1.4.4.1.1.4,Plaatsen vluchthuisjes TCZ,4.375,3.5,5.25,2019-06-24 08:00:00,2019-06-28 17:00:00,,0
650,1.1.1.4.4.1.1.5,"Stalen deuren 03.0.02, 03.0.03 & 03.0.04 (met technieken)",1.375,1.1,1.65,2019-07-04 08:00:00,2019-07-05 17:00:00,,0
651,1.1.1.4.4.1.1.6,Saldo ICT (Frankrijklei Zuid niv 0),1.375,1.1,1.65,2019-09-09 08:00:00,2019-09-10 17:00:00,,0
652,1.1.1.4.4.2,niv -1 (D: Frankrijklei Zuid),848.0,839.52,856.48,2017-09-06 17:00:00,2020-01-02 17:00:00,,1000
653,1.1.1.4.4.2.1,"ruwbouw (D: Frankrijklei Zuid, niv -1)",325.375,322.12,328.63,2017-11-07 08:00:00,2018-09-28 17:00:00,,978
654,1.1.1.4.4.2.1.1,afbraak vloer thv stalen trap,4.375,3.5,5.25,2017-11-27 08:00:00,2017-12-01 17:00:00,,0
655,1.1.1.4.4.2.1.2,aanleveren uitvoeringsplannen,183.375,146.7,220.05,2017-11-07 08:00:00,2018-05-09 17:00:00,,0
656,1.1.1.4.4.2.1.3,afbraak en opbouw thv trappen,240.375,192.3,288.45,2017-12-04 08:00:00,2018-08-01 17:00:00,,978
657,1.1.1.4.4.2.1.4,metsen langs slibwand,18.375,14.7,22.05,2018-09-10 08:00:00,2018-09-28 17:00:00,,0
658,1.1.1.4.4.2.1.5,afbraak en opbouw thv trap T5,32.375,25.9,38.85,2018-06-04 08:00:00,2018-07-06 17:00:00,,0
659,1.1.1.4.4.2.2,"afwerking (D: Frankrijklei Zuid, niv -1)",848.0,839.52,856.48,2017-09-06 17:00:00,2020-01-02 17:00:00,,22
660,1.1.1.4.4.2.2.1,Schrijnwerk deuren,6.375,5.1,7.65,2019-06-26 08:00:00,2019-07-02 17:00:00,,0
661,1.1.1.4.4.2.2.2,Poorten/afsluitingen,4.375,3.5,5.25,2019-01-21 08:00:00,2019-01-25 17:00:00,,0
662,1.1.1.4.4.2.2.3,Verlaagd plafond,13.375,10.7,16.05,2019-01-18 08:00:00,2019-01-31 17:00:00,,0
663,1.1.1.4.4.2.2.4,MS Technisch Dossier,0.0,0.0,0.0,2017-09-06 17:00:00,2017-09-06 17:00:00,,0
664,1.1.1.4.4.2.2.5,MS Opmeting,0.0,0.0,0.0,2017-10-04 17:00:00,2017-10-04 17:00:00,,0
665,1.1.1.4.4.2.2.6,"Ruwbouw metselwerk fase 1, inclusief bordenlokaal -1/D1 [B3]",149.375,119.5,179.25,2017-12-04 08:00:00,2018-05-02 17:00:00,,0
666,1.1.1.4.4.2.2.7,Polybeton fase 1,6.375,5.1,7.65,2018-05-25 08:00:00,2018-05-31 17:00:00,,6
667,1.1.1.4.4.2.2.8,Ruwbouw metselwerk fase 2 = saldo niv. -1,18.375,14.7,22.05,2018-10-01 08:00:00,2018-10-19 17:00:00,,0
668,1.1.1.4.4.2.2.9,Leidingen onder vloerafwerking,9.375,7.5,11.25,2018-11-05 08:00:00,2018-11-14 17:00:00,,0
669,1.1.1.4.4.2.2.10,"polybeton fase 2 saldo (D: Frankrijklei Zuid, niv -1)",13.375,10.7,16.05,2018-11-16 08:00:00,2018-11-29 17:00:00,,6
670,1.1.1.4.4.2.2.11,Wandtegels Graniet (T5),32.375,25.9,38.85,2018-09-10 08:00:00,2018-10-12 17:00:00,,0
671,1.1.1.4.4.2.2.12,Trapontdooiing (T5),10.375,8.3,12.45,2019-01-18 08:00:00,2019-01-28 17:00:00,,0
672,1.1.1.4.4.2.2.13,Granieten traptreden (T5),11.375,9.1,13.65,2019-01-28 08:00:00,2019-02-08 17:00:00,,0
673,1.1.1.4.4.2.2.14,Afwerken wanden ventilatielokaal cofab,0.375,0.3,0.45,2018-06-11 08:00:00,2018-06-11 17:00:00,,0
674,1.1.1.4.4.2.2.15,Afvoergeulen aan  T5,1.375,1.1,1.65,2019-02-11 08:00:00,2019-02-12 17:00:00,,4
675,1.1.1.4.4.2.2.16,Granieten vloer (T5),6.375,5.1,7.65,2019-02-13 08:00:00,2019-02-19 17:00:00,,0
676,1.1.1.4.4.2.2.17,Opmeting leuning/handgreep (trappen),0.375,0.3,0.45,2019-04-15 08:00:00,2019-04-15 17:00:00,,0
677,1.1.1.4.4.2.2.18,Opmeting borstweringen en leuningen Trappencomplex Zuid,0.375,0.3,0.45,2019-04-24 08:00:00,2019-04-24 17:00:00,,0
678,1.1.1.4.4.2.2.19,Betonherstellingen trappencomplex zuid (passiveren),13.375,10.7,16.05,2019-06-26 08:00:00,2019-07-09 17:00:00,,0
679,1.1.1.4.4.2.2.20,Anti-graffiti,2.375,1.9,2.85,2019-07-10 08:00:00,2019-07-12 17:00:00,,0
680,1.1.1.4.4.2.2.21,Opmeting verlaagd plafond,0.375,0.3,0.45,2018-10-22 08:00:00,2018-10-22 17:00:00,,0
681,1.1.1.4.4.2.2.22,Opmeting + productie Schrijnwerk deuren,0.375,0.3,0.45,2018-11-30 08:00:00,2018-11-30 17:00:00,,0
682,1.1.1.4.4.2.2.23,Start opmeting + productie Vouwdeur bracon,0.375,0.3,0.45,2018-09-03 08:00:00,2018-09-03 17:00:00,,0
683,1.1.1.4.4.2.2.24,Vouwdeur bracon (-1 frankrijklei zuid),6.375,5.1,7.65,2018-12-11 08:00:00,2018-12-17 17:00:00,,0
684,1.1.1.4.4.2.2.25,Wandafwerking schilderwerk en tegels sanitaire ruimtes,18.375,14.7,22.05,2018-12-31 08:00:00,2019-01-18 17:00:00,,0
685,1.1.1.4.4.2.2.26,Start opmeting + productie Poorten/afsluitingen,0.375,0.3,0.45,2019-02-20 08:00:00,2019-02-20 17:00:00,,0
686,1.1.1.4.4.2.2.27,Saldo schrijnwerk stalen deuren (2 st.),0.375,0.3,0.45,2019-04-26 08:00:00,2019-04-26 17:00:00,,0
687,1.1.1.4.4.2.2.28,Saldo schrijnwerk stalen deur (technieken) (1 st.),0.375,0.3,0.45,2019-04-30 08:00:00,2019-04-30 17:00:00,,0
688,1.1.1.4.4.2.2.29,Blowerdoortest niveau -1 D (Frankrijklei zuid),0.375,0.3,0.45,2019-08-14 08:00:00,2019-08-14 17:00:00,,2
689,1.1.1.4.4.2.2.30,"Sanitaire installatie (afwerking) (Frankrijklei Zuid, niv -1)",80.375,64.3,96.45,2019-04-05 08:00:00,2019-06-24 17:00:00,,0
690,1.1.1.4.4.2.2.31,Binnenmeubilair lokalen De Lijn,5.375,4.3,6.45,2019-08-09 08:00:00,2019-08-14 17:00:00,,4
691,1.1.1.4.4.2.2.32,leuning/handgreep (trappen),18.375,14.7,22.05,2019-12-06 08:00:00,2019-12-24 17:00:00,,0
692,1.1.1.4.4.2.2.33,Stalen deur  03.1.25 (technieken),0.375,0.3,0.45,2019-07-02 08:00:00,2019-07-02 17:00:00,,0
693,1.1.1.4.4.2.2.34,Saldo ICT (niv -1),0.375,0.3,0.45,2019-07-03 08:00:00,2019-07-03 17:00:00,,0
694,1.1.1.4.4.2.2.35,Aanpassen betonvloer naar parking (helling creëren),30.375,24.3,36.45,2019-06-03 08:00:00,2019-07-03 17:00:00,,0
695,1.1.1.4.4.2.2.36,Stalen deur PA.1.01.2 (met technieken),0.375,0.3,0.45,2019-07-09 08:00:00,2019-07-09 17:00:00,,0
696,1.1.1.4.4.2.2.37,Saldo ICT (niv -1),1.375,1.1,1.65,2019-07-10 08:00:00,2019-07-11 17:00:00,,0
697,1.1.1.4.4.2.2.38,Borstweringen en leuningen Trappencomplex Zuid,16.375,13.1,19.65,2019-12-17 08:00:00,2020-01-02 17:00:00,,0
698,1.1.1.4.4.2.2.39,Gebouwensignalisatie,1.375,1.1,1.65,2019-08-13 08:00:00,2019-08-14 17:00:00,,0
699,1.1.1.4.4.2.3,"technieken (D: Frankrijklei Zuid, niv -1)",365.375,361.72,369.03,2018-07-30 08:00:00,2019-07-30 17:00:00,,0
700,1.1.1.4.4.2.3.1,Kabelbanen + boringen Zuid niv. -1,25.375,20.3,30.45,2018-07-30 08:00:00,2018-08-24 17:00:00,,0
701,1.1.1.4.4.2.3.2,Installatie Borden B3,11.375,9.1,13.65,2018-08-13 08:00:00,2018-08-24 17:00:00,,0
702,1.1.1.4.4.2.3.3,Kabeltrek hoofdvoedingskabels,27.375,21.9,32.85,2018-08-21 08:00:00,2018-09-17 17:00:00,,0
703,1.1.1.4.4.2.3.4,Technieken VDK,32.375,25.9,38.85,2018-10-08 08:00:00,2018-11-09 17:00:00,,0
704,1.1.1.4.4.2.3.5,HVAC,34.375,27.5,41.25,2018-11-30 08:00:00,2019-01-03 17:00:00,,0
705,1.1.1.4.4.2.3.6,Secundaire kabelwegen ICT,11.375,9.1,13.65,2018-09-10 08:00:00,2018-09-21 17:00:00,,0
706,1.1.1.4.4.2.3.7,Secundaire kabelwerken ICT,9.375,7.5,11.25,2018-09-17 08:00:00,2018-09-26 17:00:00,,0
707,1.1.1.4.4.2.3.8,Installatie technieken ICT (voor bespuiting),34.375,27.5,41.25,2018-09-27 08:00:00,2018-10-31 17:00:00,,0
708,1.1.1.4.4.2.3.9,Technieken na vals plafond,13.375,10.7,16.05,2019-02-01 08:00:00,2019-02-14 17:00:00,,0
709,1.1.1.4.4.2.3.10,Installatie technieken ICT,27.375,21.9,32.85,2019-07-03 08:00:00,2019-07-30 17:00:00,,0
710,1.1.1.4.4.2.3.11,Technieken VDK Trappencomplex Zuid,41.375,33.1,49.65,2018-12-14 08:00:00,2019-01-24 17:00:00,,0
711,1.1.1.4.4.2.3.12,Installatie technieken ICT Trappencomplex,34.375,27.5,41.25,2018-12-14 08:00:00,2019-01-17 17:00:00,,0
712,1.1.1.4.4.2.3.13,RWA Trappencomplex Zuid,11.375,9.1,13.65,2019-03-11 08:00:00,2019-03-22 17:00:00,,0
713,1.1.1.4.4.2.3.14,Saldo toeganscontrole ICT,0.375,0.3,0.45,2019-05-02 08:00:00,2019-05-02 17:00:00,,0
714,1.1.1.4.4.3,niv -2 (D: Frankrijklei Zuid),715.375,708.22,722.53,2018-01-08 08:00:00,2019-12-24 17:00:00,,80
715,1.1.1.4.4.3.1,"ruwbouw (D: Frankrijklei Zuid, niv -2)",284.375,281.53,287.22,2018-01-08 08:00:00,2018-10-19 17:00:00,,60
716,1.1.1.4.4.3.1.1,afbraak en opbouw thv trappen,177.375,141.9,212.85,2018-02-19 08:00:00,2018-08-15 17:00:00,,0
717,1.1.1.4.4.3.1.2,metsen naast lift C- lokaal Cofab [B5],13.375,10.7,16.05,2018-03-07 08:00:00,2018-03-20 17:00:00,,0
718,1.1.1.4.4.3.1.3,bordenlokaal Cofab -2/D1 [B5],0.375,0.3,0.45,2018-01-08 08:00:00,2018-01-08 17:00:00,,0
719,1.1.1.4.4.3.1.4,metsen saldo magazijn,11.375,9.1,13.65,2018-10-08 08:00:00,2018-10-19 17:00:00,,60
720,1.1.1.4.4.3.1.5,metsen langs slibwand,20.375,16.3,24.45,2018-08-31 08:00:00,2018-09-20 17:00:00,,0
721,1.1.1.4.4.3.2,"afwerking (D: Frankrijklei Zuid, niv -2)",670.0,663.3,676.7,2018-02-22 17:00:00,2019-12-24 17:00:00,,20
722,1.1.1.4.4.3.2.1,MS Technisch Dossier,0.0,0.0,0.0,2018-02-22 17:00:00,2018-02-22 17:00:00,,0
723,1.1.1.4.4.3.2.2,MS Opmeting,0.0,0.0,0.0,2018-03-22 17:00:00,2018-03-22 17:00:00,,0
724,1.1.1.4.4.3.2.3,START RUWBOUW afbraak en opbouw thv trappencomplex(raming) niv. -2,0.0,0.0,0.0,2018-09-14 17:00:00,2018-09-14 17:00:00,,0
725,1.1.1.4.4.3.2.4,"polybeton bordenlokaal -2/D1 (na RUWBOUW metsen naast lift C-lokaal cofab) (D: Frankrijklei Zuid, niv -2)",10.375,8.3,12.45,2019-01-14 08:00:00,2019-01-24 17:00:00,,0
726,1.1.1.4.4.3.2.5,wandafwerking bordenlokaal -2/D1 [B5],4.375,3.5,5.25,2018-10-29 08:00:00,2018-11-02 17:00:00,,0
727,1.1.1.4.4.3.2.6,Plaatsen septische put,4.375,3.5,5.25,2018-09-17 08:00:00,2018-09-21 17:00:00,,0
728,1.1.1.4.4.3.2.7,Leidingen onder vloerafwerking,11.375,9.1,13.65,2018-10-22 08:00:00,2018-11-02 17:00:00,,0
729,1.1.1.4.4.3.2.8,"Polybeton magazijn (D: Frankrijklei Zuid, niv -2)",10.375,8.3,12.45,2019-01-14 08:00:00,2019-01-24 17:00:00,,6
730,1.1.1.4.4.3.2.9,Opmeting stalen trap,1.375,1.1,1.65,2019-04-25 08:00:00,2019-04-26 17:00:00,,0
731,1.1.1.4.4.3.2.10,Stalen trap,0.375,0.3,0.45,2019-12-19 08:00:00,2019-12-19 17:00:00,,0
732,1.1.1.4.4.3.2.11,Opmeting + productie Schrijnwerk deuren,0.375,0.3,0.45,2019-02-04 08:00:00,2019-02-04 17:00:00,,0
733,1.1.1.4.4.3.2.12,Wandafwerking,4.375,3.5,5.25,2019-02-04 08:00:00,2019-02-08 17:00:00,,0
734,1.1.1.4.4.3.2.13,Betonherstellingen trappencomplex zuid (passiveren),13.375,10.7,16.05,2019-06-26 08:00:00,2019-07-09 17:00:00,,0
735,1.1.1.4.4.3.2.14,Mobiele rookschermen - Bedieningsborden,55.375,44.3,66.45,2019-04-02 08:00:00,2019-05-27 17:00:00,,0
736,1.1.1.4.4.3.2.15,Mobiele rookschermen - Afwerking,38.375,30.7,46.05,2019-05-28 08:00:00,2019-07-05 17:00:00,,0
737,1.1.1.4.4.3.2.16,Opmeting borstweringen en leuningen Trappencomplex Zuid,0.375,0.3,0.45,2019-04-15 08:00:00,2019-04-15 17:00:00,,0
738,1.1.1.4.4.3.2.17,Saldo schrijnwerk stalen deuren (3st.),4.375,3.5,5.25,2019-08-29 08:00:00,2019-09-02 17:00:00,,0
739,1.1.1.4.4.3.2.18,Schrijnwerk stalen deur (technieken) (1 st.),0.375,0.3,0.45,2019-05-06 08:00:00,2019-05-06 17:00:00,,0
740,1.1.1.4.4.3.2.19,Anti-graffiti,2.375,1.9,2.85,2019-09-03 08:00:00,2019-09-05 17:00:00,,0
741,1.1.1.4.4.3.2.20,Binnenmeubilair lokalen De Lijn,6.375,5.1,7.65,2019-09-03 08:00:00,2019-09-09 17:00:00,,4
742,1.1.1.4.4.3.2.21,Borstweringen en leuningen Trappencomplex Zuid,18.375,14.7,22.05,2019-12-06 08:00:00,2019-12-24 17:00:00,,0
743,1.1.1.4.4.3.2.22,Gebouwensignalisatie,1.375,1.1,1.65,2019-08-14 08:00:00,2019-08-15 17:00:00,,0
744,1.1.1.4.4.3.2.23,Wandtegels 20*20 langs roltrappen inclusief cementering,18.375,14.7,22.05,2018-09-17 08:00:00,2018-10-05 17:00:00,,0
745,1.1.1.4.4.3.2.24,Roltrap 9a niv. -1 -> niv. -2 (ODR14),11.375,9.1,13.65,2018-10-08 08:00:00,2018-10-19 17:00:00,,5
746,1.1.1.4.4.3.2.25,Roltrap 9b niv. -1 -> niv. -2 (OSR15),11.375,9.1,13.65,2018-10-08 08:00:00,2018-10-19 17:00:00,,5
747,1.1.1.4.4.3.2.26,Borden roltrappen (9a en 9b),11.375,9.1,13.65,2018-10-22 08:00:00,2018-11-02 17:00:00,,0
748,1.1.1.4.4.3.3,"technieken (D: Frankrijklei Zuid, niv -2)",376.375,372.61,380.14,2018-04-26 08:00:00,2019-05-07 17:00:00,,0
749,1.1.1.4.4.3.3.1,Kabelbanen + boringen Zuid niv. -2,20.375,16.3,24.45,2018-11-07 08:00:00,2018-11-27 17:00:00,,0
750,1.1.1.4.4.3.3.2,Installatie Borden B5,196.375,157.1,235.65,2018-04-26 08:00:00,2018-11-08 17:00:00,,0
751,1.1.1.4.4.3.3.3,Kabeltrek hoofdvoedingskabels,20.375,16.3,24.45,2018-11-29 08:00:00,2018-12-19 17:00:00,,0
752,1.1.1.4.4.3.3.4,Technieken VDK,27.375,21.9,32.85,2018-11-29 08:00:00,2018-12-26 17:00:00,,0
753,1.1.1.4.4.3.3.5,HVAC,34.375,27.5,41.25,2018-12-20 08:00:00,2019-01-23 17:00:00,,0
754,1.1.1.4.4.3.3.6,Pompinstallatie septische put (aanduiding periode),204.375,163.5,245.25,2018-09-17 08:00:00,2019-04-09 17:00:00,,0
755,1.1.1.4.4.3.3.7,Secundaire kabelwegen ICT,20.375,16.3,24.45,2018-11-15 08:00:00,2018-12-05 17:00:00,,0
756,1.1.1.4.4.3.3.8,Secundaire kabelwerken ICT,20.375,16.3,24.45,2018-11-22 08:00:00,2018-12-12 17:00:00,,0
757,1.1.1.4.4.3.3.9,Installatie technieken ICT (voor afwerking),20.375,16.3,24.45,2018-12-13 08:00:00,2019-01-02 17:00:00,,0
758,1.1.1.4.4.3.3.10,Installatie technieken ICT (na afwerking),38.375,30.7,46.05,2019-03-11 08:00:00,2019-04-18 17:00:00,,0
759,1.1.1.4.4.3.3.11,Saldo toegangscontrole ICT,0.375,0.3,0.45,2019-05-07 08:00:00,2019-05-07 17:00:00,,0
760,1.1.1.4.4.4,niv -3 (D: Frankrijklei Zuid INCL techn  perron bouwdeel B),700.375,693.37,707.38,2018-02-15 08:00:00,2020-01-16 17:00:00,,66
761,1.1.1.4.4.4.1,"ruwbouw (D: Frankrijklei Zuid, niv -3)",185.375,183.52,187.23,2018-02-19 08:00:00,2018-08-23 17:00:00,,0
762,1.1.1.4.4.4.1.1,afbraak en opbouw thv trappen,177.375,141.9,212.85,2018-02-19 08:00:00,2018-08-15 17:00:00,,0
763,1.1.1.4.4.4.1.2,metsen langs slibwand,31.375,25.1,37.65,2018-07-23 08:00:00,2018-08-23 17:00:00,,0
764,1.1.1.4.4.4.2,"afwerking (D: Frankrijklei Zuid, niv -3)",700.375,693.37,707.38,2018-02-15 08:00:00,2020-01-16 17:00:00,,66
765,1.1.1.4.4.4.2.1,MS Technisch Dossier,0.0,0.0,0.0,2018-02-22 17:00:00,2018-02-22 17:00:00,,0
766,1.1.1.4.4.4.2.2,MS Opmeting,0.0,0.0,0.0,2018-03-22 17:00:00,2018-03-22 17:00:00,,0
767,1.1.1.4.4.4.2.3,RUWBOUW afbraak en opbouw niv. -3,0.0,0.0,0.0,2018-09-14 17:00:00,2018-09-14 17:00:00,,0
768,1.1.1.4.4.4.2.4,RUWBOUW metsen saldo niv -3,0.0,0.0,0.0,2018-09-28 17:00:00,2018-09-28 17:00:00,,0
769,1.1.1.4.4.4.2.5,Trapafwerking T12 dmv prefab traptreden,22.375,17.9,26.85,2018-12-05 08:00:00,2018-12-27 17:00:00,,40
770,1.1.1.4.4.4.2.6,Plaatsen staalstructuur rookschermen,28.375,22.7,34.05,2018-02-15 08:00:00,2018-03-15 17:00:00,,0
771,1.1.1.4.4.4.2.7,Akoestische en brandwerende bespuiting PERRON Oost (D: Frankrijklei Zuid INCL techn  perron bouwdeel B),30.375,24.3,36.45,2019-02-06 08:00:00,2019-03-08 17:00:00,,0
772,1.1.1.4.4.4.2.8,Start opmeting + productie Ramen,0.375,0.3,0.45,2019-02-27 08:00:00,2019-02-27 17:00:00,,0
773,1.1.1.4.4.4.2.9,Mobiele rookschermen west - Bedieningsborden,46.375,37.1,55.65,2019-02-11 08:00:00,2019-03-29 17:00:00,,0
774,1.1.1.4.4.4.2.10,"Eiken deur 03.3.12.1 (technieken) (Frankrijklei Zuid, niv -3)",0.375,0.3,0.45,2019-08-20 08:00:00,2019-08-20 17:00:00,,0
775,1.1.1.4.4.4.2.11,"Eiken deur 03.3.12.2  (Frankrijklei Zuid, niv -3)",23.375,18.7,28.05,2019-08-21 08:00:00,2019-09-13 17:00:00,,0
776,1.1.1.4.4.4.2.12,Opmeting Borstweringen en leuningen,0.375,0.3,0.45,2019-04-18 08:00:00,2019-04-18 17:00:00,,0
777,1.1.1.4.4.4.2.13,Mobiele rookschermen west - Afwerking,43.375,34.7,52.05,2019-04-01 08:00:00,2019-05-14 17:00:00,,0
778,1.1.1.4.4.4.2.14,Anti-graffiti perron oost,4.375,3.5,5.25,2019-07-12 08:00:00,2019-07-16 17:00:00,,0
779,1.1.1.4.4.4.2.15,Akoestische en brandwerende bespuiting PERRON West (D: Frankrijklei Zuid INCL techn  perron bouwdeel B),11.375,9.1,13.65,2019-04-01 08:00:00,2019-04-12 17:00:00,,0
780,1.1.1.4.4.4.2.16,Afwerking zwarte verf bespuiting SPOOR oost ('s nachts),0.375,0.3,0.45,2019-04-08 08:00:00,2019-04-08 17:00:00,,0
781,1.1.1.4.4.4.2.17,Akoestische en brandwerende bespuiting SPOOR West (D: Frankrijklei Zuid INCL techn perron bouwdeel B),11.375,9.1,13.65,2019-04-01 08:00:00,2019-04-12 17:00:00,,0
782,1.1.1.4.4.4.2.18,Leidingen onder vloerafwerking Oost,4.375,3.5,5.25,2018-10-01 08:00:00,2018-10-05 17:00:00,,0
783,1.1.1.4.4.4.2.19,Leidingen onder vloerafwerking West,18.375,14.7,22.05,2018-10-08 08:00:00,2018-10-26 17:00:00,,0
784,1.1.1.4.4.4.2.20,Polybeton Perron Oost,9.375,7.5,11.25,2018-10-03 08:00:00,2018-10-12 17:00:00,,6
785,1.1.1.4.4.4.2.21,"Polybeton Perron West (D: Frankrijklei Zuid, niv -3)",13.375,10.7,16.05,2018-11-16 08:00:00,2018-11-29 17:00:00,,6
786,1.1.1.4.4.4.2.22,Schrijnwerk stalen deuren (technieken) (2 st.),1.375,1.1,1.65,2019-06-26 08:00:00,2019-06-27 17:00:00,,0
787,1.1.1.4.4.4.2.23,Glazen deuren nissen brandhaspel/stroomonderbreker (technieken) (4 st.),1.375,1.1,1.65,2019-05-13 08:00:00,2019-05-14 17:00:00,,0
788,1.1.1.4.4.4.2.24,Schrijnwerk stalen deuren (2 st.),0.375,0.3,0.45,2019-06-28 08:00:00,2019-06-28 17:00:00,,0
789,1.1.1.4.4.4.2.25,Anti-graffiti perron west,2.375,1.9,2.85,2019-08-14 08:00:00,2019-08-16 17:00:00,,0
790,1.1.1.4.4.4.2.26,Straatmeubilair perrons,2.375,1.9,2.85,2019-06-24 08:00:00,2019-06-26 17:00:00,,4
791,1.1.1.4.4.4.2.27,Blindegeleidetegels Oost,6.375,5.1,7.65,2019-06-27 08:00:00,2019-07-03 17:00:00,,0
792,1.1.1.4.4.4.2.28,Blindegeleidetegels West,6.375,5.1,7.65,2019-07-04 08:00:00,2019-07-10 17:00:00,,0
793,1.1.1.4.4.4.2.29,Opmeting + productie Schrijnwerk deuren,0.375,0.3,0.45,2018-11-30 08:00:00,2018-11-30 17:00:00,,0
794,1.1.1.4.4.4.2.30,Cementering perron oost,13.375,10.7,16.05,2018-08-22 08:00:00,2018-09-04 17:00:00,,0
795,1.1.1.4.4.4.2.31,Wandbetegeling 20*20 perron oost,19.375,15.5,23.25,2018-09-05 08:00:00,2018-09-24 17:00:00,,0
796,1.1.1.4.4.4.2.32,Ramen,28.375,22.7,34.05,2019-12-19 08:00:00,2020-01-16 17:00:00,,0
797,1.1.1.4.4.4.2.33,"Dichtzetten vaste rookschermen west (D: Frankrijklei Zuid, niv -3)",5.375,4.3,6.45,2019-06-21 08:00:00,2019-06-26 17:00:00,,0
798,1.1.1.4.4.4.2.34,"Dichtzetten vaste rookschermen oost (D: Frankrijklei Zuid, niv -3)",6.375,5.1,7.65,2019-06-27 08:00:00,2019-07-03 17:00:00,,0
799,1.1.1.4.4.4.2.35,Borstweringen en leuningen,16.375,13.1,19.65,2019-12-11 08:00:00,2019-12-27 17:00:00,,0
800,1.1.1.4.4.4.2.36,Gebouwensignalisatie,6.375,5.1,7.65,2019-08-09 08:00:00,2019-08-15 17:00:00,,0
801,1.1.1.4.4.4.2.37,Start Opmeting + productie Straatmeubilair perrons,0.375,0.3,0.45,2018-08-31 08:00:00,2018-08-31 17:00:00,,0
802,1.1.1.4.4.4.2.38,Wandtegels 20*20 langs roltrappen inclusief cementering west,18.375,14.7,22.05,2018-09-17 08:00:00,2018-10-05 17:00:00,,0
803,1.1.1.4.4.4.2.39,Roltrap 10a niv.-2 -> niv. -3 (ODR16),11.375,9.1,13.65,2018-10-08 08:00:00,2018-10-19 17:00:00,,5
804,1.1.1.4.4.4.2.40,Roltrap 10b niv.-2 -> niv. -3 (OSR17),11.375,9.1,13.65,2018-10-08 08:00:00,2018-10-19 17:00:00,,5
805,1.1.1.4.4.4.2.41,Borden roltrappen (10a en 10b),11.375,9.1,13.65,2018-10-22 08:00:00,2018-11-02 17:00:00,,0
806,1.1.1.4.4.4.3,"Technieken (D: Frankrijklei Zuid, niv -3)",469.375,464.68,474.07,2018-03-16 08:00:00,2019-06-28 17:00:00,,0
807,1.1.1.4.4.4.3.1,Kabelbanen + boringen Perron Oost,118.375,94.7,142.05,2018-03-16 08:00:00,2018-07-12 17:00:00,,0
808,1.1.1.4.4.4.3.2,Kabeltrek hoofdvoedingskabels Perron Oost (excl roltrappen),108.375,86.7,130.05,2018-03-19 08:00:00,2018-07-05 17:00:00,,0
809,1.1.1.4.4.4.3.3,Kabeltrek hoofdvoedingskabels Perron Oost ( tbv roltrappen),11.375,9.1,13.65,2018-10-22 08:00:00,2018-11-02 17:00:00,,0
810,1.1.1.4.4.4.3.4,Technieken VDK Perron Oost,46.375,37.1,55.65,2018-10-22 08:00:00,2018-12-07 17:00:00,,0
811,1.1.1.4.4.4.3.5,Secundaire kabelwegen ICT perron oost,214.375,171.5,257.25,2018-03-26 08:00:00,2018-10-26 17:00:00,,0
812,1.1.1.4.4.4.3.6,Secundaire kabelwerken ICT perron oost,207.375,165.9,248.85,2018-04-02 08:00:00,2018-10-26 17:00:00,,0
813,1.1.1.4.4.4.3.7,BBI Perron Oost,34.375,27.5,41.25,2018-11-29 08:00:00,2019-01-02 17:00:00,,0
814,1.1.1.4.4.4.3.8,Kabelbanen + boringen Perron West,27.375,21.9,32.85,2018-10-02 08:00:00,2018-10-29 17:00:00,,0
815,1.1.1.4.4.4.3.9,Kabeltrek hoofdvoedingskabels Perron West,20.375,16.3,24.45,2018-10-23 08:00:00,2018-11-12 17:00:00,,0
816,1.1.1.4.4.4.3.10,Technieken VDK Perron West,48.375,38.7,58.05,2018-12-13 08:00:00,2019-01-30 17:00:00,,0
817,1.1.1.4.4.4.3.11,Secundaire kabelwegen ICT perron west,27.375,21.9,32.85,2018-12-14 08:00:00,2019-01-10 17:00:00,,0
818,1.1.1.4.4.4.3.12,Secundaire kabelwerken ICT perron west,27.375,21.9,32.85,2019-01-11 08:00:00,2019-02-07 17:00:00,,0
819,1.1.1.4.4.4.3.13,BBI Perron West,29.375,23.5,35.25,2019-01-31 08:00:00,2019-03-01 17:00:00,,0
820,1.1.1.4.4.4.3.14,Installatie technieken ICT voor wandbetegeling perron west,6.375,5.1,7.65,2018-09-06 08:00:00,2018-09-12 17:00:00,,0
821,1.1.1.4.4.4.3.15,Installatie technieken na wandbetegeling voor bespuiting perron oost,18.375,14.7,22.05,2018-12-03 08:00:00,2018-12-21 17:00:00,,0
822,1.1.1.4.4.4.3.16,Installatie technieken na wandbetegeling voor bespuiting perron west,11.375,9.1,13.65,2018-11-05 08:00:00,2018-11-16 17:00:00,,0
823,1.1.1.4.4.4.3.17,Technieken boven RTR/TR,48.375,38.7,58.05,2019-01-11 08:00:00,2019-02-28 17:00:00,,0
824,1.1.1.4.4.4.3.18,Installatie technieken ICT na bespuiting perron oost,9.375,7.5,11.25,2019-04-08 08:00:00,2019-04-17 17:00:00,,0
825,1.1.1.4.4.4.3.19,Installatie technieken ICT na bespuiting perron west,23.375,18.7,28.05,2019-04-23 08:00:00,2019-05-16 17:00:00,,0
826,1.1.1.4.4.4.3.20,Installatie technieken ICT na glazen deuren nissen,2.375,1.9,2.85,2019-05-29 08:00:00,2019-05-31 17:00:00,,0
827,1.1.1.4.4.4.3.21,"Verwijderen oude Feederkabels F019 en F016 zone -2C, -3B, -3C en -3D (aansl VO15 en VO16)",13.375,10.7,16.05,2019-06-14 08:00:00,2019-06-27 17:00:00,,0
828,1.1.1.4.4.4.3.22,Saldo afwerking na verwijderen oude feederkabels,10.375,8.3,12.45,2019-06-18 08:00:00,2019-06-28 17:00:00,,0
829,1.1.1.4.5,E) centraal deel /Vide,773.375,765.64,781.11,2017-12-04 08:00:00,2020-01-16 17:00:00,,58
830,1.1.1.4.5.1,niv 0,221.375,219.16,223.59,2017-12-11 08:00:00,2018-07-20 17:00:00,,6
831,1.1.1.4.5.1.1,ruwbouw,221.375,219.16,223.59,2017-12-11 08:00:00,2018-07-20 17:00:00,,6
832,1.1.1.4.5.1.1.1,plaatsen laatste 2 velden predallen dakplaat parking,0.375,0.3,0.45,2017-12-11 08:00:00,2017-12-11 17:00:00,,0
833,1.1.1.4.5.1.1.2,afbraak dakplaat,23.375,18.7,28.05,2017-12-13 08:00:00,2018-01-05 17:00:00,,0
834,1.1.1.4.5.1.1.3,kolom onder balk B1,39.375,31.5,47.25,2017-12-18 08:00:00,2018-01-26 17:00:00,,0
835,1.1.1.4.5.1.1.4,betonneren dakplaat prefab,179.375,177.58,181.17,2018-01-22 08:00:00,2018-07-20 17:00:00,,6
836,1.1.1.4.5.1.1.4.1,"storten kolommen, wanden en onderzijde koker",24.375,19.5,29.25,2018-01-22 08:00:00,2018-02-15 17:00:00,,0
837,1.1.1.4.5.1.1.4.2,plaatsen prefabbalken,1.375,1.1,1.65,2018-03-01 08:00:00,2018-03-02 17:00:00,,0
838,1.1.1.4.5.1.1.4.3,aanstorten knopen,4.375,3.5,5.25,2018-03-05 08:00:00,2018-03-09 17:00:00,,0
839,1.1.1.4.5.1.1.4.4,plaatsen RR liggers (68st),1.375,1.1,1.65,2018-03-12 08:00:00,2018-03-13 17:00:00,,0
840,1.1.1.4.5.1.1.4.5,verwijderen tijdelijke steunen,0.375,0.3,0.45,2018-04-10 08:00:00,2018-04-10 17:00:00,,0
841,1.1.1.4.5.1.1.4.6,bekisten ter plaatse te storten dakplaat en randbalken,6.375,5.1,7.65,2018-03-14 08:00:00,2018-03-20 17:00:00,,0
842,1.1.1.4.5.1.1.4.7,wapenen dakplaat,6.375,5.1,7.65,2018-03-21 08:00:00,2018-03-27 17:00:00,,0
843,1.1.1.4.5.1.1.4.8,storten dakplaat,0.375,0.3,0.45,2018-05-09 08:00:00,2018-05-09 17:00:00,,0
844,1.1.1.4.5.1.1.4.9,ontkisten dakplaat,11.375,9.1,13.65,2018-07-09 08:00:00,2018-07-20 17:00:00,,0
845,1.1.1.4.5.1.1.4.10,waterdichting (W4 deel 1),8.375,6.7,10.05,2018-07-09 08:00:00,2018-07-17 17:00:00,,3
846,1.1.1.4.5.1.1.4.11,plaatsen prefabbalk (te koppelen aan blok guido),0.375,0.3,0.45,2018-03-28 08:00:00,2018-03-28 17:00:00,,0
847,1.1.1.4.5.1.1.4.12,aanstorten knopen,0.0,0.0,0.0,2018-03-28 17:00:00,2018-03-28 17:00:00,,0
848,1.1.1.4.5.1.1.4.13,plaatsen RR liggers (68st),0.375,0.3,0.45,2018-03-29 08:00:00,2018-03-29 17:00:00,,0
849,1.1.1.4.5.1.1.4.14,verwijderen tijdelijke steunen,0.0,0.0,0.0,2018-04-26 17:00:00,2018-04-26 17:00:00,,0
850,1.1.1.4.5.1.1.4.15,bekisten ter plaatse te storten dakplaat en randbalken,3.375,2.7,4.05,2018-03-30 08:00:00,2018-04-02 17:00:00,,0
851,1.1.1.4.5.1.1.4.16,wapenen dakplaat,1.375,1.1,1.65,2018-04-04 08:00:00,2018-04-05 17:00:00,,0
852,1.1.1.4.5.1.1.4.17,storten dakplaat,0.375,0.3,0.45,2018-04-06 08:00:00,2018-04-06 17:00:00,,0
853,1.1.1.4.5.1.1.4.18,ontkisten dakplaat,0.375,0.3,0.45,2018-06-06 08:00:00,2018-06-06 17:00:00,,0
854,1.1.1.4.5.1.1.4.19,waterdichting (W4 deel 2),8.375,6.7,10.05,2018-06-06 08:00:00,2018-06-14 17:00:00,,3
855,1.1.1.4.5.2,niv -1  (E: centraal deel / vide),757.375,749.8,764.95,2017-12-04 08:00:00,2019-12-31 17:00:00,,18
856,1.1.1.4.5.2.1,"ruwbouw (E: centraal deel / vide, niv-1)",438.375,433.99,442.76,2017-12-04 08:00:00,2019-02-15 17:00:00,,6
857,1.1.1.4.5.2.1.1,afbraak vloer vide (2/3 deel),13.375,10.7,16.05,2018-05-24 08:00:00,2018-06-06 17:00:00,,6
858,1.1.1.4.5.2.1.2,metsen wanden op stationsplaat,27.375,21.9,32.85,2018-10-09 08:00:00,2018-11-05 17:00:00,,0
859,1.1.1.4.5.2.1.3,metsen wanden lokalen De Lijn,27.375,21.9,32.85,2018-10-09 08:00:00,2018-11-05 17:00:00,,0
860,1.1.1.4.5.2.1.4,metsen wanden kiosk,11.375,9.1,13.65,2019-02-04 08:00:00,2019-02-15 17:00:00,,0
861,1.1.1.4.5.2.1.5,dichtbetonneren + ontkisten openingen thv ATZO,18.375,14.7,22.05,2017-12-04 08:00:00,2017-12-22 17:00:00,,0
862,1.1.1.4.5.2.1.6,opkleven wapening onderzijde vloer -1,117.375,93.9,140.85,2018-01-11 08:00:00,2018-05-08 17:00:00,,0
863,1.1.1.4.5.2.1.7,rest zie deel parking,0.0,0.0,0.0,2018-06-06 17:00:00,2018-06-06 17:00:00,,0
864,1.1.1.4.5.2.2,"afwerking (E: centraal deel / vide, niv-1)",460.0,455.4,464.6,2018-09-27 17:00:00,2019-12-31 17:00:00,,12
865,1.1.1.4.5.2.2.1,Cementeren kiosk,4.375,3.5,5.25,2019-02-18 08:00:00,2019-02-22 17:00:00,,0
866,1.1.1.4.5.2.2.2,Start opmeting + productie Ramen,0.375,0.3,0.45,2019-02-27 08:00:00,2019-02-27 17:00:00,,0
867,1.1.1.4.5.2.2.3,MS Technisch dossier,0.0,0.0,0.0,2018-09-27 17:00:00,2018-09-27 17:00:00,,0
868,1.1.1.4.5.2.2.4,MS Opmeting,0.0,0.0,0.0,2018-10-25 17:00:00,2018-10-25 17:00:00,,0
869,1.1.1.4.5.2.2.5,Mobiele rookschermen - Bedieningsborden,55.375,44.3,66.45,2019-02-13 08:00:00,2019-04-09 17:00:00,,0
870,1.1.1.4.5.2.2.6,Schrijnwerk houten deur (2 st.),0.375,0.3,0.45,2019-03-06 08:00:00,2019-03-06 17:00:00,,0
871,1.1.1.4.5.2.2.7,Mobiele rookschermen - Afwerking,41.375,33.1,49.65,2019-04-10 08:00:00,2019-05-21 17:00:00,,0
872,1.1.1.4.5.2.2.8,Akoestische en brandwerende bespuiting ,29.375,23.5,35.25,2019-03-18 08:00:00,2019-04-16 17:00:00,,0
873,1.1.1.4.5.2.2.9,Start opmeting + productie Staalstructuur verlaagde plafonds,0.375,0.3,0.45,2019-01-07 08:00:00,2019-01-07 17:00:00,,0
874,1.1.1.4.5.2.2.10,Anti-graffiti,1.375,1.1,1.65,2019-08-15 08:00:00,2019-08-16 17:00:00,,0
875,1.1.1.4.5.2.2.11,Staalstructuur verlaagde plafonds,3.375,2.7,4.05,2019-05-06 08:00:00,2019-05-09 17:00:00,,0
876,1.1.1.4.5.2.2.12,Leidingen onder vloerafwerking,27.375,21.9,32.85,2018-10-09 08:00:00,2018-11-05 17:00:00,,0
877,1.1.1.4.5.2.2.13,"Polybeton (E: centraal deel / vide, niv-1)",9.375,7.5,11.25,2018-11-21 08:00:00,2018-11-30 17:00:00,,12
878,1.1.1.4.5.2.2.14,Blindegeleidetegels,46.375,37.1,55.65,2019-04-29 08:00:00,2019-06-14 17:00:00,,0
879,1.1.1.4.5.2.2.15,Opmeting + productie Schrijnwerk deuren,0.375,0.3,0.45,2018-12-03 08:00:00,2018-12-03 17:00:00,,0
880,1.1.1.4.5.2.2.16,Schrijnwerk stalen deuren (technieken) (2 st.),0.375,0.3,0.45,2019-06-27 08:00:00,2019-06-27 17:00:00,,0
881,1.1.1.4.5.2.2.17,Glazen deuren nissen brandhaspel/stroomonderbreker (technieken) (3 st.),1.375,1.1,1.65,2019-05-06 08:00:00,2019-05-07 17:00:00,,0
882,1.1.1.4.5.2.2.18,Schrijnwerk stalen deur (1 st.),0.375,0.3,0.45,2019-04-30 08:00:00,2019-04-30 17:00:00,,0
883,1.1.1.4.5.2.2.19,Glazen deur nis brandhaspel 03.1.51.2 (technieken),0.375,0.3,0.45,2019-06-18 08:00:00,2019-06-18 17:00:00,,0
884,1.1.1.4.5.2.2.20,Saldo ICT (niv -1),1.375,1.1,1.65,2019-06-19 08:00:00,2019-06-20 17:00:00,,0
885,1.1.1.4.5.2.2.21,Leuningen,9.375,7.5,11.25,2019-08-19 08:00:00,2019-08-28 17:00:00,,0
886,1.1.1.4.5.2.2.22,Ramen + Deur kiosk,5.375,4.3,6.45,2019-12-19 08:00:00,2019-12-24 17:00:00,,0
887,1.1.1.4.5.2.2.23,Saldo ICT (niv -1 centraal),6.375,5.1,7.65,2019-12-25 08:00:00,2019-12-31 17:00:00,,0
888,1.1.1.4.5.2.2.24,Gebouwensignalisatie,0.375,0.3,0.45,2019-08-19 08:00:00,2019-08-19 17:00:00,,0
889,1.1.1.4.5.2.3,"technieken (E: centraal deel / vide, niv-1)",226.375,224.11,228.64,2018-10-09 08:00:00,2019-05-23 17:00:00,,0
890,1.1.1.4.5.2.3.1,Kabelbanen + boringen Lokettenhal + West,20.375,16.3,24.45,2018-10-09 08:00:00,2018-10-29 17:00:00,,0
891,1.1.1.4.5.2.3.2,Kabeltrek hoofdvoedingskabels Lokettenhal + West,27.375,21.9,32.85,2018-10-16 08:00:00,2018-11-12 17:00:00,,0
892,1.1.1.4.5.2.3.3,Technieken VDK Lokettenhal + West,39.375,31.5,47.25,2018-12-03 08:00:00,2019-01-11 17:00:00,,0
893,1.1.1.4.5.2.3.4,Saldo technieken VDK (lokalen De Lijn incl. kiosk),11.375,9.1,13.65,2019-02-25 08:00:00,2019-03-08 17:00:00,,0
894,1.1.1.4.5.2.3.5,HVAC Lokettenhal + West,32.375,25.9,38.85,2019-01-21 08:00:00,2019-02-22 17:00:00,,0
895,1.1.1.4.5.2.3.6,Saldo HVAC (lokalen De Lijn incl. kiosk),4.375,3.5,5.25,2019-03-18 08:00:00,2019-03-22 17:00:00,,0
896,1.1.1.4.5.2.3.7,BBI Lokettenhal + West,32.375,25.9,38.85,2019-01-21 08:00:00,2019-02-22 17:00:00,,0
897,1.1.1.4.5.2.3.8,Saldo BBI (lokalen De Lijn incl. kiosk),4.375,3.5,5.25,2019-03-25 08:00:00,2019-03-29 17:00:00,,0
898,1.1.1.4.5.2.3.9,Secundaire kabelwegen ICT (lokettenhal + west),15.375,12.3,18.45,2018-10-29 08:00:00,2018-11-13 17:00:00,,0
899,1.1.1.4.5.2.3.10,Secundaire kabelwerken ICT (lokettenhal + west),16.375,13.1,19.65,2018-12-03 08:00:00,2018-12-19 17:00:00,,0
900,1.1.1.4.5.2.3.11,Installatie technieken ICT (lokettenhal + west),41.375,33.1,49.65,2018-12-20 08:00:00,2019-01-30 17:00:00,,0
901,1.1.1.4.5.2.3.12,Saldo ICT (lokalen De Lijn incl. kiosk),11.375,9.1,13.65,2019-03-04 08:00:00,2019-03-15 17:00:00,,0
902,1.1.1.4.5.2.3.13,Installatie technieken ICT na bespuiting (lokettenhal + west),6.375,5.1,7.65,2019-04-17 08:00:00,2019-04-23 17:00:00,,0
903,1.1.1.4.5.2.3.14,Saldo toegangscontrole ICT,1.375,1.1,1.65,2019-05-08 08:00:00,2019-05-09 17:00:00,,0
904,1.1.1.4.5.2.3.15,Installatie Afwerking na verlaagd plafond,13.375,10.7,16.05,2019-05-10 08:00:00,2019-05-23 17:00:00,,0
905,1.1.1.4.5.3,niv -2  (E: centraal deel / vide),602.375,596.35,608.4,2018-05-24 08:00:00,2020-01-16 17:00:00,,34
906,1.1.1.4.5.3.1,ruwbouw,13.375,13.24,13.51,2018-05-24 08:00:00,2018-06-06 17:00:00,,6
907,1.1.1.4.5.3.1.1,afbraak vloer vide (2/3 deel),13.375,10.7,16.05,2018-05-24 08:00:00,2018-06-06 17:00:00,,6
908,1.1.1.4.5.3.1.2,rest zie deel parking,0.0,0.0,0.0,2018-06-06 17:00:00,2018-06-06 17:00:00,,0
909,1.1.1.4.5.3.2,"afwerking  (E: centraal deel / vide, niv-2)",563.375,557.74,569.01,2018-07-02 08:00:00,2020-01-16 17:00:00,,28
910,1.1.1.4.5.3.2.1,Mobiele rookschermen noord - Bedieningsborden,55.375,44.3,66.45,2019-02-13 08:00:00,2019-04-09 17:00:00,,0
911,1.1.1.4.5.3.2.2,Mobiele rookschermen zuid - Bedieningsborden,92.375,73.9,110.85,2019-01-07 08:00:00,2019-04-09 17:00:00,,0
912,1.1.1.4.5.3.2.3,Start opmeting + productie Ramen,0.375,0.3,0.45,2019-02-27 08:00:00,2019-02-27 17:00:00,,0
913,1.1.1.4.5.3.2.4,Mobiele rookschermen - Afwerking,41.375,33.1,49.65,2019-04-10 08:00:00,2019-05-21 17:00:00,,0
914,1.1.1.4.5.3.2.5,Akoestische en brandwerende bespuiting PERRON Zuid  (E: centraal deel niv-2),9.375,7.5,11.25,2019-03-06 08:00:00,2019-03-15 17:00:00,,0
915,1.1.1.4.5.3.2.6,Akoestische en brandwerende bespuiting PERRON Noord  (E: centraal deel niv-2),25.375,20.3,30.45,2019-03-11 08:00:00,2019-04-05 17:00:00,,0
916,1.1.1.4.5.3.2.7,Akoestische en brandwerende bespuiting SPOOR Zuid  (E: centraal deel niv-2),60.375,48.3,72.45,2019-03-11 08:00:00,2019-05-10 17:00:00,,0
917,1.1.1.4.5.3.2.8,Akoestische en brandwerende bespuiting SPOOR Noord  (E: centraal deel niv-2),40.375,32.3,48.45,2019-05-16 08:00:00,2019-06-25 17:00:00,,0
918,1.1.1.4.5.3.2.9,MS Technisch Dossier,0.0,0.0,0.0,2018-07-04 17:00:00,2018-07-04 17:00:00,,0
919,1.1.1.4.5.3.2.10,MS Opmeting,0.0,0.0,0.0,2018-08-23 17:00:00,2018-08-23 17:00:00,,0
920,1.1.1.4.5.3.2.11,Leidingen onder vloerafwerking Noord+Zuid,14.375,11.5,17.25,2018-09-25 08:00:00,2018-10-09 17:00:00,,0
921,1.1.1.4.5.3.2.12,"Polybeton Noord (E: centraal deel / vide, niv-2)",10.375,8.3,12.45,2018-10-15 08:00:00,2018-10-25 17:00:00,,12
922,1.1.1.4.5.3.2.13,"Polybeton Zuid (E: centraal deel / vide, niv-2)",17.375,13.9,20.85,2019-01-07 08:00:00,2019-01-24 17:00:00,,12
923,1.1.1.4.5.3.2.14,Schrijnwerk stalen deuren (technieken) (1 st.),0.375,0.3,0.45,2019-04-23 08:00:00,2019-04-23 17:00:00,,0
924,1.1.1.4.5.3.2.15,Glazen deuren nissen brandhaspel/stroomonderbreker (technieken) (4 st.),2.375,1.9,2.85,2019-05-13 08:00:00,2019-05-15 17:00:00,,0
925,1.1.1.4.5.3.2.16,Schrijnwerk stalen deuren (6 st.),7.375,5.9,8.85,2019-04-29 08:00:00,2019-05-06 17:00:00,,0
926,1.1.1.4.5.3.2.17,"Dichtzetten vaste rookschermen Zuid  (E: centraal deel / vide, niv-2)",6.375,5.1,7.65,2019-07-04 08:00:00,2019-07-10 17:00:00,,0
927,1.1.1.4.5.3.2.18,"Dichtzetten vaste rookschermen Noord  (E: centraal deel / vide, niv-2)",6.375,5.1,7.65,2019-07-11 08:00:00,2019-07-17 17:00:00,,0
928,1.1.1.4.5.3.2.19,Cementering,4.375,3.5,5.25,2018-09-03 08:00:00,2018-09-07 17:00:00,,0
929,1.1.1.4.5.3.2.20,Wandbetegeling 20*20 Perron Zuid,4.375,3.5,5.25,2018-10-08 08:00:00,2018-10-12 17:00:00,,0
930,1.1.1.4.5.3.2.21,Ramen,28.375,22.7,34.05,2019-12-19 08:00:00,2020-01-16 17:00:00,,0
931,1.1.1.4.5.3.2.22,Wandafwerking,9.375,7.5,11.25,2019-06-04 08:00:00,2019-06-13 17:00:00,,0
932,1.1.1.4.5.3.2.23,Anti-graffiti,1.375,1.1,1.65,2019-08-15 08:00:00,2019-08-16 17:00:00,,0
933,1.1.1.4.5.3.2.24,Perronpoortjes,1.375,1.1,1.65,2019-05-27 08:00:00,2019-05-28 17:00:00,,0
934,1.1.1.4.5.3.2.25,Straatmeubilair perrons,0.375,0.3,0.45,2019-06-03 08:00:00,2019-06-03 17:00:00,,4
935,1.1.1.4.5.3.2.26,Blindegeleidetegels Zuid,3.375,2.7,4.05,2019-05-20 08:00:00,2019-05-23 17:00:00,,0
936,1.1.1.4.5.3.2.27,Blindegeleidetegels Noord,5.375,4.3,6.45,2019-05-24 08:00:00,2019-05-29 17:00:00,,0
937,1.1.1.4.5.3.2.28,Start productie perronpoortjes,0.375,0.3,0.45,2018-10-01 08:00:00,2018-10-01 17:00:00,,0
938,1.1.1.4.5.3.2.29,Gebouwensignalisatie,0.375,0.3,0.45,2019-08-19 08:00:00,2019-08-19 17:00:00,,0
939,1.1.1.4.5.3.2.30,Start Opmeting + productie Straatmeubilair perrons,0.375,0.3,0.45,2018-07-02 08:00:00,2018-07-02 17:00:00,,0
940,1.1.1.4.5.3.3,"technieken   (E: centraal deel / vide, niv-2)",255.375,252.82,257.93,2018-09-03 08:00:00,2019-05-16 17:00:00,,0
941,1.1.1.4.5.3.3.1,Kabelbanen + boringen Perron Zuid,25.375,20.3,30.45,2018-09-03 08:00:00,2018-09-28 17:00:00,,0
942,1.1.1.4.5.3.3.2,Kabeltrek hoofdvoedingskabels Perron Zuid,18.375,14.7,22.05,2018-09-24 08:00:00,2018-10-12 17:00:00,,0
943,1.1.1.4.5.3.3.3,Technieken VDK Perron Zuid,46.375,37.1,55.65,2018-10-01 08:00:00,2018-11-16 17:00:00,,0
944,1.1.1.4.5.3.3.4,Technieken VDK na Polybeton (perron zuid),13.375,10.7,16.05,2019-01-25 08:00:00,2019-02-07 17:00:00,,0
945,1.1.1.4.5.3.3.5,BBI Perron Zuid,34.375,27.5,41.25,2018-11-07 08:00:00,2018-12-11 17:00:00,,0
946,1.1.1.4.5.3.3.6,Secundaire kabelwegen ICT (perron zuid),15.375,12.3,18.45,2018-09-17 08:00:00,2018-10-02 17:00:00,,0
947,1.1.1.4.5.3.3.7,Secundaire kabelwerken ICT (perron zuid),16.375,13.1,19.65,2018-10-03 08:00:00,2018-10-19 17:00:00,,0
948,1.1.1.4.5.3.3.8,Installatie technieken ICT (perron zuid),39.375,31.5,47.25,2018-10-22 08:00:00,2018-11-30 17:00:00,,0
949,1.1.1.4.5.3.3.9,Installatie Technieken ICT na polybeton (perron zuid),13.375,10.7,16.05,2019-01-25 08:00:00,2019-02-07 17:00:00,,0
950,1.1.1.4.5.3.3.10,Installatie technieken ICT na bespuiting (perron zuid),9.375,7.5,11.25,2019-04-10 08:00:00,2019-04-19 17:00:00,,0
951,1.1.1.4.5.3.3.11,Kabelbanen + boringen Perron Noord,27.375,21.9,32.85,2018-10-26 08:00:00,2018-11-22 17:00:00,,0
952,1.1.1.4.5.3.3.12,Kabeltrek hoofdvoedingskabels Perron Noord,20.375,16.3,24.45,2018-11-21 08:00:00,2018-12-11 17:00:00,,0
953,1.1.1.4.5.3.3.13,Technieken VDK Perron Noord,48.375,38.7,58.05,2018-11-28 08:00:00,2019-01-15 17:00:00,,0
954,1.1.1.4.5.3.3.14,BBI Perron Noord,34.375,27.5,41.25,2019-01-16 08:00:00,2019-02-19 17:00:00,,0
955,1.1.1.4.5.3.3.15,Secundaire kabelwegen ICT (perron noord),15.375,12.3,18.45,2018-11-14 08:00:00,2018-11-29 17:00:00,,0
956,1.1.1.4.5.3.3.16,Secundaire kabelwerken ICT (perron noord),18.375,14.7,22.05,2018-11-30 08:00:00,2018-12-18 17:00:00,,0
957,1.1.1.4.5.3.3.17,Installatie technieken ICT (perron noord),41.375,33.1,49.65,2018-12-19 08:00:00,2019-01-29 17:00:00,,0
958,1.1.1.4.5.3.3.18,Installatie technieken ICT na bespuiting (perron noord),9.375,7.5,11.25,2019-04-10 08:00:00,2019-04-19 17:00:00,,0
959,1.1.1.4.5.3.3.19,Saldo toegangscontrole ICT,0.375,0.3,0.45,2019-05-16 08:00:00,2019-05-16 17:00:00,,0
960,1.1.1.4.5.4,niv -3,0.0,0.0,0.0,2018-06-06 17:00:00,2018-06-06 17:00:00,,0
961,1.1.1.4.5.4.1,rest zie deel parking,0.0,0.0,0.0,2018-06-06 17:00:00,2018-06-06 17:00:00,,0
962,1.1.1.4.6,F) Afwerking Technische Uitrusting,59.375,58.78,59.97,2019-05-03 08:00:00,2019-07-01 17:00:00,,0
963,1.1.1.4.6.1,Niveau -1 (verbinden alle lokalen betreffende verdieping; F: Afw. Techn. Uitrusting),27.375,21.9,32.85,2019-05-03 08:00:00,2019-05-30 17:00:00,,0
964,1.1.1.4.6.2,Niveau -2 (verbinden alle lokalen betreffende verdieping; F: Afw. Techn. Uitrusting),27.375,21.9,32.85,2019-05-03 08:00:00,2019-05-30 17:00:00,,0
965,1.1.1.4.6.3,Niveau -3 (verbinden alle lokalen betreffende verdieping; F: Afw. Techn. Uitrusting),25.375,20.3,30.45,2019-05-06 08:00:00,2019-05-31 17:00:00,,0
966,1.1.1.4.6.4,"Niveau -1,-2,-3 (verbinden verdiepingen + onder spanning en druk brengen installatiedelen)",27.375,21.9,32.85,2019-06-04 08:00:00,2019-07-01 17:00:00,,0
967,1.1.1.4.7,G) Testperiode PréMetro,249.0,246.51,251.49,2019-06-21 17:00:00,2020-02-25 17:00:00,,0
968,1.1.1.4.7.1,Einde montageperiode installaties PréMetro (DP3),0.0,0.0,0.0,2019-07-02 17:00:00,2019-07-02 17:00:00,,0
969,1.1.1.4.7.2,Start testperiode PréMetro (DP3),0.0,0.0,0.0,2019-06-21 17:00:00,2019-06-21 17:00:00,,0
970,1.1.1.4.7.3,"Einde alle montagewerkzaamheden, einde testpriode TramContractors",0.0,0.0,0.0,2019-12-18 17:00:00,2019-12-18 17:00:00,,0
971,1.1.1.4.7.4,Testperiode PréMetro TramContractors (DP3),83.375,66.7,100.05,2019-09-26 08:00:00,2019-12-18 17:00:00,,0
972,1.1.1.4.7.5,Testperiode PréMetro Opdrachtgever (DP3),83.375,66.7,100.05,2019-07-24 08:00:00,2019-10-15 17:00:00,,0
973,1.1.1.4.7.6,Opening station PréMetro Publiek (DP3),0.0,0.0,0.0,2019-10-15 17:00:00,2019-10-15 17:00:00,,0
974,1.1.1.4.7.7,"Testperiode ON en OG, Testen afhankelijk van OG",68.375,54.7,82.05,2019-12-19 08:00:00,2020-02-25 17:00:00,,0
975,1.1.1.4.8,H ) MILESTONES TESTEN (techniek klaar voor type 1 test),1247.375,1234.9,1259.85,2016-03-01 08:00:00,2019-07-31 17:00:00,,0
976,1.1.1.4.8.1,NETWERK / FO ( BEKABELING ),98.0,97.02,98.98,2019-03-08 17:00:00,2019-06-14 17:00:00,,0
977,1.1.1.4.8.1.1,BOVENGRONDS : UITRUSTZAAL --> bovengronds (controlecentrum van De Lijn),18.375,18.19,18.56,2019-05-13 08:00:00,2019-05-31 17:00:00,,0
978,1.1.1.4.8.1.1.1,FO (fiber optic) getrokken (BOVENGRONDS : UITRUSTZAAL --> controlecentrum van De Lijn),11.375,9.1,13.65,2019-05-13 08:00:00,2019-05-24 17:00:00,,0
979,1.1.1.4.8.1.1.2,FO (fiber optic) afgelast (BOVENGRONDS : UITRUSTZAAL --> controlecentrum van De Lijn),4.375,3.5,5.25,2019-05-27 08:00:00,2019-05-31 17:00:00,,0
980,1.1.1.4.8.1.2,BOVENGRONDS : OS (OnderStation -3  --> bovengronds),18.375,18.19,18.56,2019-05-27 08:00:00,2019-06-14 17:00:00,,0
981,1.1.1.4.8.1.2.1,FO (fiber optic) getrokken (OnderStation -3  --> bovengronds),11.375,9.1,13.65,2019-05-27 08:00:00,2019-06-07 17:00:00,,0
982,1.1.1.4.8.1.2.2,FO (fiber optic) afgelast (OnderStation -3  --> bovengronds),4.375,3.5,5.25,2019-06-10 08:00:00,2019-06-14 17:00:00,,0
983,1.1.1.4.8.1.3,Hoofdring : UITRUSTZL - OS (OnderStation),10.0,9.9,10.1,2019-03-08 17:00:00,2019-03-18 17:00:00,,0
984,1.1.1.4.8.1.3.1,FO getrokken (Uitrustingszaal - Onderstatrion),0.0,0.0,0.0,2019-03-08 17:00:00,2019-03-08 17:00:00,,0
985,1.1.1.4.8.1.3.2,FO (fiber optic) afgelast  (Uitrustingszaal - Onderstatrion),7.375,5.9,8.85,2019-03-11 08:00:00,2019-03-18 17:00:00,,0
986,1.1.1.4.8.1.4,Subring 1 : UITRUSTZL - PM1.1 - PM1.2 - PM2.2 - OS,25.375,25.12,25.63,2019-03-11 08:00:00,2019-04-05 17:00:00,,0
987,1.1.1.4.8.1.4.1,FO (fiber optic) getrokken (Uitrustingszaal  - PM1.1 - PM1.2 - PM2.2 - OnderStation),18.375,14.7,22.05,2019-03-11 08:00:00,2019-03-29 17:00:00,,0
988,1.1.1.4.8.1.4.2,FO (fiber optic) afgelast (Uitrustingszaal  - PM1.1 - PM1.2 - PM2.2 - OnderStation),4.375,3.5,5.25,2019-04-01 08:00:00,2019-04-05 17:00:00,,0
989,1.1.1.4.8.1.5,Subring 2 : UITRUSTZL - PM2.1 - PM1.3 - PM2.3 - PM3.2 - PM3.1 - OS,25.375,25.12,25.63,2019-03-25 08:00:00,2019-04-19 17:00:00,,0
990,1.1.1.4.8.1.5.1,FO (fiber optic) getrokken (Uitrustingszaal - PM2.1 - PM1.3 - PM2.3 - PM3.2 - PM3.1 - OnderStation),18.375,14.7,22.05,2019-03-25 08:00:00,2019-04-12 17:00:00,,0
991,1.1.1.4.8.1.5.2,FO (fiber optic) afgelast (Uitrustingszaal - PM2.1 - PM1.3 - PM2.3 - PM3.2 - PM3.1 - OnderStation),4.375,3.5,5.25,2019-04-15 08:00:00,2019-04-19 17:00:00,,0
992,1.1.1.4.8.1.6,Netwerk OG : BOZ25 - BOZ30-BOZ31-BOZ28-BOZ25 (Borden De Lijn),25.375,25.12,25.63,2019-03-25 08:00:00,2019-04-19 17:00:00,,0
993,1.1.1.4.8.1.6.1,"FO (fiber optic) getrokken (Borden De Lijn, BOZ25 - BOZ30-BOZ31-BOZ28-BOZ25)",18.375,14.7,22.05,2019-03-25 08:00:00,2019-04-12 17:00:00,,0
994,1.1.1.4.8.1.6.2,"FO (fiber optic) afgelast (Borden De Lijn, BOZ25 - BOZ30-BOZ31-BOZ28-BOZ25)",4.375,3.5,5.25,2019-04-15 08:00:00,2019-04-19 17:00:00,,0
995,1.1.1.4.8.2,BORDEN VVDK,181.0,179.19,182.81,2019-01-31 17:00:00,2019-07-31 17:00:00,,0
996,1.1.1.4.8.2.1,HS Opera (hoofdbord in onderstation),77.0,76.23,77.77,2019-03-14 17:00:00,2019-05-30 17:00:00,,0
997,1.1.1.4.8.2.1.1,bord volledig aangesloten / onder spanning,0.0,0.0,0.0,2019-03-14 17:00:00,2019-03-14 17:00:00,,0
998,1.1.1.4.8.2.1.2,Verbinding tussen Hoogspanningsbord en datarack ICT  gereed (in onderstation -3) ,0.0,0.0,0.0,2019-05-30 17:00:00,2019-05-30 17:00:00,,0
999,1.1.1.4.8.2.2,TRANSFO Opera  (hoofdbord in onderstation -3),77.0,76.23,77.77,2019-03-14 17:00:00,2019-05-30 17:00:00,,0
1000,1.1.1.4.8.2.2.1,bord volledig aangesloten / onder spanning,0.0,0.0,0.0,2019-03-14 17:00:00,2019-03-14 17:00:00,,0
1001,1.1.1.4.8.2.2.2,Verbinding tussen Tansformatorbord en datarack ICT gereed (in onderstation -3) ,0.0,0.0,0.0,2019-05-30 17:00:00,2019-05-30 17:00:00,,0
1002,1.1.1.4.8.2.3,NO BREAK (hoofdbord in onderstation -3),77.0,76.23,77.77,2019-03-14 17:00:00,2019-05-30 17:00:00,,0
1003,1.1.1.4.8.2.3.1,bord volledig aangesloten / onder spanning,0.0,0.0,0.0,2019-03-14 17:00:00,2019-03-14 17:00:00,,0
1004,1.1.1.4.8.2.3.2,Verbinding tussen Hoofdbord No Break en datarack ICT gereed (in onderstation -3) ,0.0,0.0,0.0,2019-05-30 17:00:00,2019-05-30 17:00:00,,0
1005,1.1.1.4.8.2.4,OSB VN / NN (hoofdbord in onderstation -3),29.0,28.71,29.29,2019-03-14 17:00:00,2019-04-12 17:00:00,,0
1006,1.1.1.4.8.2.4.1,bord volledig aangesloten / onder spanning,0.0,0.0,0.0,2019-03-14 17:00:00,2019-03-14 17:00:00,,0
1007,1.1.1.4.8.2.4.2,Verbinding tussen (OSB??) Bord VeiligheidsNet/NoodNet en datarack ICT gereed  (in onderstation -3) ,0.0,0.0,0.0,2019-04-12 17:00:00,2019-04-12 17:00:00,,0
1008,1.1.1.4.8.2.5,ALSB HN/VN/NN (hoofdbord in onderstation -3),29.0,28.71,29.29,2019-03-14 17:00:00,2019-04-12 17:00:00,,0
1009,1.1.1.4.8.2.5.1,bord volledig aangesloten / onder spanning,0.0,0.0,0.0,2019-03-14 17:00:00,2019-03-14 17:00:00,,0
1010,1.1.1.4.8.2.5.2,Verbinding tussen Algemeen Laagspanningsbord HN/VN/NN en datarack ICT gereed   (in onderstation -3)  ,0.0,0.0,0.0,2019-04-12 17:00:00,2019-04-12 17:00:00,,0
1011,1.1.1.4.8.2.6,B1 (secundair bord),75.0,74.25,75.75,2019-03-14 17:00:00,2019-05-28 17:00:00,,0
1012,1.1.1.4.8.2.6.1,Secundair Bord B1 volledig aangesloten / onder spanning,0.0,0.0,0.0,2019-03-14 17:00:00,2019-03-14 17:00:00,,0
1013,1.1.1.4.8.2.6.2,verbinding tussen bord B1 en datarack ICT ,0.0,0.0,0.0,2019-05-28 17:00:00,2019-05-28 17:00:00,,0
1014,1.1.1.4.8.2.7,B2,75.0,74.25,75.75,2019-03-14 17:00:00,2019-05-28 17:00:00,,0
1015,1.1.1.4.8.2.7.1,Secundair Bord B2 volledig aangesloten / onder spanning,0.0,0.0,0.0,2019-03-14 17:00:00,2019-03-14 17:00:00,,0
1016,1.1.1.4.8.2.7.2,verbinding tussen bord B2 en datarack ICT ,0.0,0.0,0.0,2019-05-28 17:00:00,2019-05-28 17:00:00,,0
1017,1.1.1.4.8.2.8,B3,75.0,74.25,75.75,2019-03-14 17:00:00,2019-05-28 17:00:00,,0
1018,1.1.1.4.8.2.8.1,Secundair Bord B3 volledig aangesloten / onder spanning,0.0,0.0,0.0,2019-03-14 17:00:00,2019-03-14 17:00:00,,0
1019,1.1.1.4.8.2.8.2,verbinding tussen bord B3en datarack ICT ,0.0,0.0,0.0,2019-05-28 17:00:00,2019-05-28 17:00:00,,0
1020,1.1.1.4.8.2.9,B4,61.0,60.39,61.61,2019-03-28 17:00:00,2019-05-28 17:00:00,,0
1021,1.1.1.4.8.2.9.1,Secundair Bord B4 volledig aangesloten / onder spanning,0.0,0.0,0.0,2019-03-28 17:00:00,2019-03-28 17:00:00,,0
1022,1.1.1.4.8.2.9.2,verbinding tussen bord B4 en datarack ICT ,0.0,0.0,0.0,2019-05-28 17:00:00,2019-05-28 17:00:00,,0
1023,1.1.1.4.8.2.10,B5,75.0,74.25,75.75,2019-03-14 17:00:00,2019-05-28 17:00:00,,0
1024,1.1.1.4.8.2.10.1,Secundair Bord B5 volledig aangesloten / onder spanning,0.0,0.0,0.0,2019-03-14 17:00:00,2019-03-14 17:00:00,,0
1025,1.1.1.4.8.2.10.2,verbinding tussen bord B5 en datarack ICT ,0.0,0.0,0.0,2019-05-28 17:00:00,2019-05-28 17:00:00,,0
1026,1.1.1.4.8.2.11,B6,75.0,74.25,75.75,2019-03-14 17:00:00,2019-05-28 17:00:00,,0
1027,1.1.1.4.8.2.11.1,Secundair Bord B6 volledig aangesloten / onder spanning,0.0,0.0,0.0,2019-03-14 17:00:00,2019-03-14 17:00:00,,0
1028,1.1.1.4.8.2.11.2,verbinding tussen bord B6 en datarack ICT ,0.0,0.0,0.0,2019-05-28 17:00:00,2019-05-28 17:00:00,,0
1029,1.1.1.4.8.2.12,B7,75.0,74.25,75.75,2019-03-14 17:00:00,2019-05-28 17:00:00,,0
1030,1.1.1.4.8.2.12.1,Secundair Bord B7 volledig aangesloten / onder spanning,0.0,0.0,0.0,2019-03-14 17:00:00,2019-03-14 17:00:00,,0
1031,1.1.1.4.8.2.12.2,verbinding tussen bord B7 en datarack ICT ,0.0,0.0,0.0,2019-05-28 17:00:00,2019-05-28 17:00:00,,0
1032,1.1.1.4.8.2.13,B8,75.0,74.25,75.75,2019-03-14 17:00:00,2019-05-28 17:00:00,,0
1033,1.1.1.4.8.2.13.1,Secundair Bord B8 volledig aangesloten / onder spanning,0.0,0.0,0.0,2019-03-14 17:00:00,2019-03-14 17:00:00,,0
1034,1.1.1.4.8.2.13.2,verbinding tussen bord B8en datarack ICT ,0.0,0.0,0.0,2019-05-28 17:00:00,2019-05-28 17:00:00,,0
1035,1.1.1.4.8.2.14,B9,75.0,74.25,75.75,2019-03-14 17:00:00,2019-05-28 17:00:00,,0
1036,1.1.1.4.8.2.14.1,Secundair Bord B9 volledig aangesloten / onder spanning,0.0,0.0,0.0,2019-03-14 17:00:00,2019-03-14 17:00:00,,0
1037,1.1.1.4.8.2.14.2,verbinding tussen bord B9 en datarack ICT ,0.0,0.0,0.0,2019-05-28 17:00:00,2019-05-28 17:00:00,,0
1038,1.1.1.4.8.2.15,B10,75.0,74.25,75.75,2019-03-14 17:00:00,2019-05-28 17:00:00,,0
1039,1.1.1.4.8.2.15.1,bord volledig aangesloten / onder spanning,0.0,0.0,0.0,2019-03-14 17:00:00,2019-03-14 17:00:00,,0
1040,1.1.1.4.8.2.15.2,verbinding tussen bord B10 en datarack ICT ,0.0,0.0,0.0,2019-05-28 17:00:00,2019-05-28 17:00:00,,0
1041,1.1.1.4.8.2.16,BO5 Tunnelverlichting,134.0,132.66,135.34,2019-01-31 17:00:00,2019-06-14 17:00:00,,0
1042,1.1.1.4.8.2.16.1,bord volledig aangesloten / onder spanning,0.0,0.0,0.0,2019-01-31 17:00:00,2019-01-31 17:00:00,,0
1043,1.1.1.4.8.2.16.2,verbinding tussen bord BO5 en datarack ICT ,0.0,0.0,0.0,2019-06-14 17:00:00,2019-06-14 17:00:00,,0
1044,1.1.1.4.8.2.17,BO6 Tunnelverlichting,134.0,132.66,135.34,2019-01-31 17:00:00,2019-06-14 17:00:00,,0
1045,1.1.1.4.8.2.17.1,bord volledig aangesloten / onder spanning,0.0,0.0,0.0,2019-01-31 17:00:00,2019-01-31 17:00:00,,0
1046,1.1.1.4.8.2.17.2,verbinding tussen bord BO6 en datarack ICT ,0.0,0.0,0.0,2019-06-14 17:00:00,2019-06-14 17:00:00,,0
1047,1.1.1.4.8.2.18,BOK,0.0,0.0,0.0,2019-07-31 17:00:00,2019-07-31 17:00:00,,0
1048,1.1.1.4.8.2.18.1,Secundair bord BOK volledig aangesloten / onder spanning,0.0,0.0,0.0,2019-07-31 17:00:00,2019-07-31 17:00:00,,0
1049,1.1.1.4.8.2.18.2,verbinding tussen bord BOK en datarack ICT ,0.0,0.0,0.0,2019-07-31 17:00:00,2019-07-31 17:00:00,,0
1050,1.1.1.4.8.3,"BORDEN / DATARACKS (secundaire racks, verspreid over de verdiepingen)",62.0,61.38,62.62,2019-04-05 17:00:00,2019-06-06 17:00:00,,0
1051,1.1.1.4.8.3.1,BOZ17 (PM1.1) (op -1),0.0,0.0,0.0,2019-04-05 17:00:00,2019-04-05 17:00:00,,0
1052,1.1.1.4.8.3.1.1,Secundair databord BOZ17 volledig aangesloten,0.0,0.0,0.0,2019-04-05 17:00:00,2019-04-05 17:00:00,,0
1053,1.1.1.4.8.3.1.2,Switch BOZ17 geconfigureerd,0.0,0.0,0.0,2019-04-05 17:00:00,2019-04-05 17:00:00,,0
1054,1.1.1.4.8.3.2,BOZ18 (PM1.2),6.0,5.94,6.06,2019-04-05 17:00:00,2019-04-11 17:00:00,,0
1055,1.1.1.4.8.3.2.1,Secundair databord BOZ18 volledig aangesloten,0.0,0.0,0.0,2019-04-05 17:00:00,2019-04-05 17:00:00,,0
1056,1.1.1.4.8.3.2.2,Switch BOZ18 geconfigureerd,0.0,0.0,0.0,2019-04-11 17:00:00,2019-04-11 17:00:00,,0
1057,1.1.1.4.8.3.3,BOZ19 (PM1.3),38.0,37.62,38.38,2019-04-19 17:00:00,2019-05-27 17:00:00,,0
1058,1.1.1.4.8.3.3.1,Secundair databord BOZ19 volledig aangesloten,0.0,0.0,0.0,2019-05-27 17:00:00,2019-05-27 17:00:00,,0
1059,1.1.1.4.8.3.3.2,Switch BOZ19 geconfigureerd,0.0,0.0,0.0,2019-04-19 17:00:00,2019-04-19 17:00:00,,0
1060,1.1.1.4.8.3.4,BOZ25 (PM1.4),38.0,37.62,38.38,2019-04-19 17:00:00,2019-05-27 17:00:00,,0
1061,1.1.1.4.8.3.4.1,Secundair databord BOZ25 volledig aangesloten,0.0,0.0,0.0,2019-05-27 17:00:00,2019-05-27 17:00:00,,0
1062,1.1.1.4.8.3.4.2,Switch BOZ25 geconfigureerd,0.0,0.0,0.0,2019-04-19 17:00:00,2019-04-19 17:00:00,,0
1063,1.1.1.4.8.3.5,BOZ20 (PM2.1) op -2),6.0,5.94,6.06,2019-04-05 17:00:00,2019-04-11 17:00:00,,0
1064,1.1.1.4.8.3.5.1,Secundair databord BOZ20 volledig aangesloten,0.0,0.0,0.0,2019-04-05 17:00:00,2019-04-05 17:00:00,,0
1065,1.1.1.4.8.3.5.2,Switch BOZ20 geconfigureerd,0.0,0.0,0.0,2019-04-11 17:00:00,2019-04-11 17:00:00,,0
1066,1.1.1.4.8.3.6,BOZ21 (PM2.2),0.0,0.0,0.0,2019-04-19 17:00:00,2019-04-19 17:00:00,,0
1067,1.1.1.4.8.3.6.1,Secundair databord BOZ21 volledig aangesloten,0.0,0.0,0.0,2019-04-19 17:00:00,2019-04-19 17:00:00,,0
1068,1.1.1.4.8.3.6.2,Switch BOZ21 geconfigureerd,0.0,0.0,0.0,2019-04-19 17:00:00,2019-04-19 17:00:00,,0
1069,1.1.1.4.8.3.7,BOZ22 (PM2.3),0.0,0.0,0.0,2019-04-19 17:00:00,2019-04-19 17:00:00,,0
1070,1.1.1.4.8.3.7.1,Secundair databord BOZ22 volledig aangesloten,0.0,0.0,0.0,2019-04-19 17:00:00,2019-04-19 17:00:00,,0
1071,1.1.1.4.8.3.7.2,Switch BOZ22 geconfigureerd,0.0,0.0,0.0,2019-04-19 17:00:00,2019-04-19 17:00:00,,0
1072,1.1.1.4.8.3.8,BOZ23 (PM3.1),0.0,0.0,0.0,2019-04-19 17:00:00,2019-04-19 17:00:00,,0
1073,1.1.1.4.8.3.8.1,Secundair databord BOZ23 volledig aangesloten,0.0,0.0,0.0,2019-04-19 17:00:00,2019-04-19 17:00:00,,0
1074,1.1.1.4.8.3.8.2,Switch BOZ23 geconfigureerd,0.0,0.0,0.0,2019-04-19 17:00:00,2019-04-19 17:00:00,,0
1075,1.1.1.4.8.3.9,BOZ24 (PM3.2),0.0,0.0,0.0,2019-04-19 17:00:00,2019-04-19 17:00:00,,0
1076,1.1.1.4.8.3.9.1,Secundair databord BOZ24 volledig aangesloten,0.0,0.0,0.0,2019-04-19 17:00:00,2019-04-19 17:00:00,,0
1077,1.1.1.4.8.3.9.2,switch geconfigureerd,0.0,0.0,0.0,2019-04-19 17:00:00,2019-04-19 17:00:00,,0
1078,1.1.1.4.8.3.10,BOZ26 (PM3.3),0.0,0.0,0.0,2019-04-19 17:00:00,2019-04-19 17:00:00,,0
1079,1.1.1.4.8.3.10.1,Secundair databord BOZ26 volledig aangesloten,0.0,0.0,0.0,2019-04-19 17:00:00,2019-04-19 17:00:00,,0
1080,1.1.1.4.8.3.10.2,switch geconfigureerd,0.0,0.0,0.0,2019-04-19 17:00:00,2019-04-19 17:00:00,,0
1081,1.1.1.4.8.3.11,BOZ28 (DATARACK OG in OnderStation),0.0,0.0,0.0,2019-04-19 17:00:00,2019-04-19 17:00:00,,0
1082,1.1.1.4.8.3.11.1,Secundair databord BOZ28 volledig aangesloten,0.0,0.0,0.0,2019-04-19 17:00:00,2019-04-19 17:00:00,,0
1083,1.1.1.4.8.3.12,BOZ30 (DATARACK OG aan B2),0.0,0.0,0.0,2019-04-19 17:00:00,2019-04-19 17:00:00,,0
1084,1.1.1.4.8.3.12.1,Secundair databord BOZ30 volledig aangesloten,0.0,0.0,0.0,2019-04-19 17:00:00,2019-04-19 17:00:00,,0
1085,1.1.1.4.8.3.13,BOZ31 (DATARACK OG aan B3),0.0,0.0,0.0,2019-04-19 17:00:00,2019-04-19 17:00:00,,0
1086,1.1.1.4.8.3.13.1,Secundair databord BOZ31 volledig aangesloten,0.0,0.0,0.0,2019-04-19 17:00:00,2019-04-19 17:00:00,,0
1087,1.1.1.4.8.3.14,"BOZ11 - BOZ15 (ATK, Afstands ToezichtsKast met Master PLC, in Onderstation)",25.0,24.75,25.25,2019-04-29 17:00:00,2019-05-24 17:00:00,,0
1088,1.1.1.4.8.3.14.1,Secundair databord BOZ11 - BOZ15 volledig aangesloten,0.0,0.0,0.0,2019-04-29 17:00:00,2019-04-29 17:00:00,,0
1089,1.1.1.4.8.3.14.2,MasterPLC geinstalleerd,0.0,0.0,0.0,2019-05-24 17:00:00,2019-05-24 17:00:00,,0
1090,1.1.1.4.8.3.14.3,MasterPLC geprogrammeerd,0.0,0.0,0.0,2019-05-24 17:00:00,2019-05-24 17:00:00,,0
1091,1.1.1.4.8.3.15,BOZ 16 Stuurbord (in onderstation),0.0,0.0,0.0,2019-05-28 17:00:00,2019-05-28 17:00:00,,0
1092,1.1.1.4.8.3.15.1,Secundair databord BOZ16 volledig aangesloten,0.0,0.0,0.0,2019-05-28 17:00:00,2019-05-28 17:00:00,,0
1093,1.1.1.4.8.3.16,BOZ Portiersbord,0.0,0.0,0.0,2019-06-06 17:00:00,2019-06-06 17:00:00,,0
1094,1.1.1.4.8.3.16.1,BOZ portiersvbord bord volledig aangesloten,0.0,0.0,0.0,2019-06-06 17:00:00,2019-06-06 17:00:00,,0
1095,1.1.1.4.8.4,BRANDDETECTIE (BOZ8 - BOZ13),1171.375,1159.66,1183.09,2016-03-01 08:00:00,2019-05-16 17:00:00,,0
1096,1.1.1.4.8.4.1,toestellen (branddetectoren / handbrandmelders) geplaatst niv -1,0.625,0.5,0.75,2016-03-01 08:00:00,2016-02-29 17:00:00,,0
1097,1.1.1.4.8.4.2,toestellen (branddetectoren / handbrandmelders) geplaatst niv -2,0.625,0.5,0.75,2016-03-01 08:00:00,2016-02-29 17:00:00,,0
1098,1.1.1.4.8.4.3,toestellen (branddetectoren / handbrandmelders) geplaatst niv -3,0.625,0.5,0.75,2016-03-01 08:00:00,2016-02-29 17:00:00,,0
1099,1.1.1.4.8.4.4,BOZ8 Stationbrandcentrale in dienst,0.0,0.0,0.0,2019-05-16 17:00:00,2019-05-16 17:00:00,,0
1100,1.1.1.4.8.4.5,BOZ13 Tunnelbrandcentrale OH in dienst,0.0,0.0,0.0,2018-06-29 17:00:00,2018-06-29 17:00:00,,0
1101,1.1.1.4.8.4.6,Tunnelbrandcentrale bestaand meir,0.0,0.0,0.0,2019-03-22 17:00:00,2019-03-22 17:00:00,,0
1102,1.1.1.4.8.4.7,Tunnelbrandcentrale bestaand diamant,0.0,0.0,0.0,2019-03-22 17:00:00,2019-03-22 17:00:00,,0
1103,1.1.1.4.8.5,OMROEPINSTALLATIE (BOZ27),1096.0,1085.04,1106.96,2016-05-23 17:00:00,2019-05-24 17:00:00,,0
1104,1.1.1.4.8.5.1,Luidsprekers geplaatst niv -1,0.0,0.0,0.0,2019-05-10 17:00:00,2019-05-10 17:00:00,,0
1105,1.1.1.4.8.5.2,Luidsprekers geplaatst niv -2,0.0,0.0,0.0,2019-05-10 17:00:00,2019-05-10 17:00:00,,0
1106,1.1.1.4.8.5.3,Luidsprekers geplaatst niv -3,0.0,0.0,0.0,2019-05-24 17:00:00,2019-05-24 17:00:00,,0
1107,1.1.1.4.8.5.4,BOZ27 centraal rack geplaatst  en aangesloten (in onderstation),0.0,0.0,0.0,2016-05-23 17:00:00,2016-05-23 17:00:00,,0
1108,1.1.1.4.8.6,CCTV-INSTALLATIE (BOZ14),48.0,47.52,48.48,2019-04-23 17:00:00,2019-06-10 17:00:00,,0
1109,1.1.1.4.8.6.1,BOZ14 centraal rack geplaatst en aangesloten (in onderstation),0.0,0.0,0.0,2019-05-24 17:00:00,2019-05-24 17:00:00,,0
1110,1.1.1.4.8.6.2,camera's -1 geinstalleerd,0.0,0.0,0.0,2019-04-30 17:00:00,2019-04-30 17:00:00,,0
1111,1.1.1.4.8.6.3,camera's -2 geinstalleerd,0.0,0.0,0.0,2019-04-23 17:00:00,2019-04-23 17:00:00,,0
1112,1.1.1.4.8.6.4,camera's -3 geinstalleerd,0.0,0.0,0.0,2019-05-24 17:00:00,2019-05-24 17:00:00,,0
1113,1.1.1.4.8.6.5,indienstname van DIVARS (opnameapparatuur),0.0,0.0,0.0,2019-06-07 17:00:00,2019-06-07 17:00:00,,0
1114,1.1.1.4.8.6.6,integratie in BVMS (Beheerssysteem van De Lijn),0.0,0.0,0.0,2019-06-10 17:00:00,2019-06-10 17:00:00,,0
1115,1.1.1.4.8.7,LICHTKRANTEN,0.0,0.0,0.0,2019-06-13 17:00:00,2019-06-13 17:00:00,,0
1116,1.1.1.4.8.7.1,Levering lichtkranten,0.0,0.0,0.0,2019-06-13 17:00:00,2019-06-13 17:00:00,,0
1117,1.1.1.4.8.7.2,LK1 - B1,0.0,0.0,0.0,2019-06-13 17:00:00,2019-06-13 17:00:00,,0
1118,1.1.1.4.8.7.3,LK2 - B1,0.0,0.0,0.0,2019-06-13 17:00:00,2019-06-13 17:00:00,,0
1119,1.1.1.4.8.7.4,LK3 PIM - B6,0.0,0.0,0.0,2019-06-13 17:00:00,2019-06-13 17:00:00,,0
1120,1.1.1.4.8.7.5,LK4 PEM - B6,0.0,0.0,0.0,2019-06-13 17:00:00,2019-06-13 17:00:00,,0
1121,1.1.1.4.8.7.6,LK5 PIM - B7,0.0,0.0,0.0,2019-06-13 17:00:00,2019-06-13 17:00:00,,0
1122,1.1.1.4.8.7.7,LK6 PEM - B7,0.0,0.0,0.0,2019-06-13 17:00:00,2019-06-13 17:00:00,,0
1123,1.1.1.4.8.7.8,LK7 PIM - B8,0.0,0.0,0.0,2019-06-13 17:00:00,2019-06-13 17:00:00,,0
1124,1.1.1.4.8.7.9,LK8 PEM - B8,0.0,0.0,0.0,2019-06-13 17:00:00,2019-06-13 17:00:00,,0
1125,1.1.1.4.8.7.10,LK9 PIM - B9,0.0,0.0,0.0,2019-06-13 17:00:00,2019-06-13 17:00:00,,0
1126,1.1.1.4.8.7.11,LK10 PEM - B9,0.0,0.0,0.0,2019-06-13 17:00:00,2019-06-13 17:00:00,,0
1127,1.1.1.4.8.8,RADIO (BOZ7),28.0,27.72,28.28,2019-02-28 17:00:00,2019-03-28 17:00:00,,0
1128,1.1.1.4.8.8.1,BOZ7 centraal rack geplaatst ,0.0,0.0,0.0,2019-02-28 17:00:00,2019-02-28 17:00:00,,0
1129,1.1.1.4.8.8.2,antennes geplaatst -3 (apparatuur I al in dienst),0.0,0.0,0.0,2019-03-28 17:00:00,2019-03-28 17:00:00,,0
1130,1.1.1.4.8.9,TOEGANGSCONTROLE,0.0,0.0,0.0,2019-05-02 17:00:00,2019-05-02 17:00:00,,0
1131,1.1.1.4.8.9.1,"BOZ32 bekabeling geplaatst, gereed voor aansluiten door De Lijn",0.0,0.0,0.0,2019-05-02 17:00:00,2019-05-02 17:00:00,,0
1132,1.1.1.4.8.9.2,"BOZ33 bekabeling geplaatst, gereed voor aansluiten door De Lijn",0.0,0.0,0.0,2019-05-02 17:00:00,2019-05-02 17:00:00,,0
1133,1.1.1.4.8.9.3,"BOZ34 bekabeling geplaatst, gereed voor aansluiten door De Lijn",0.0,0.0,0.0,2019-05-02 17:00:00,2019-05-02 17:00:00,,0
1134,1.1.1.4.8.9.4,"BOZ35 bekabeling geplaatst, gereed voor aansluiten door De Lijn",0.0,0.0,0.0,2019-05-02 17:00:00,2019-05-02 17:00:00,,0
1135,1.1.1.4.8.9.5,"BOZ36 bekabeling geplaatst, gereed voor aansluiten door De Lijn",0.0,0.0,0.0,2019-05-02 17:00:00,2019-05-02 17:00:00,,0
1136,1.1.1.4.8.9.6,"BOZ37 bekabeling geplaatst, gereed voor aansluiten door De Lijn",0.0,0.0,0.0,2019-05-02 17:00:00,2019-05-02 17:00:00,,0
1137,1.1.1.4.8.9.7,"BOZ38 bekabeling geplaatst, gereed voor aansluiten door De Lijn",0.0,0.0,0.0,2019-05-02 17:00:00,2019-05-02 17:00:00,,0
1138,1.1.1.4.8.9.8,"BOZ39 bekabeling geplaatst, gereed voor aansluiten door De Lijn",0.0,0.0,0.0,2019-05-02 17:00:00,2019-05-02 17:00:00,,0
1139,1.1.1.4.8.10,TELEFONIE,42.0,41.58,42.42,2019-04-12 17:00:00,2019-05-24 17:00:00,,0
1140,1.1.1.4.8.10.1,telefoons niv -1 geplaatst,0.0,0.0,0.0,2019-04-12 17:00:00,2019-04-12 17:00:00,,0
1141,1.1.1.4.8.10.2,telefoons niv -2 geplaatst,0.0,0.0,0.0,2019-04-24 17:00:00,2019-04-24 17:00:00,,0
1142,1.1.1.4.8.10.3,telefoons niv -3 geplaatst,0.0,0.0,0.0,2019-05-24 17:00:00,2019-05-24 17:00:00,,0
1143,1.1.1.4.8.11,ROLTRAPPEN,60.0,59.4,60.6,2019-03-29 17:00:00,2019-05-28 17:00:00,,0
1144,1.1.1.4.8.11.1,Roltrap ODR1,56.0,55.44,56.56,2019-03-29 17:00:00,2019-05-24 17:00:00,,0
1145,1.1.1.4.8.11.1.1,roltrap / roltrapkast geplaatst - onder spanning,0.0,0.0,0.0,2019-05-24 17:00:00,2019-05-24 17:00:00,,0
1146,1.1.1.4.8.11.1.2,roltrapconnectie met netwerk,0.0,0.0,0.0,2019-03-29 17:00:00,2019-03-29 17:00:00,,0
1147,1.1.1.4.8.11.2,Roltrap OSR2,56.0,55.44,56.56,2019-03-29 17:00:00,2019-05-24 17:00:00,,0
1148,1.1.1.4.8.11.2.1,roltrap / roltrapkast geplaatst - onder spanning,0.0,0.0,0.0,2019-05-24 17:00:00,2019-05-24 17:00:00,,0
1149,1.1.1.4.8.11.2.2,roltrapconnectie met netwerk,0.0,0.0,0.0,2019-03-29 17:00:00,2019-03-29 17:00:00,,0
1150,1.1.1.4.8.11.3,Roltrap OSR3,55.0,54.45,55.55,2019-03-29 17:00:00,2019-05-23 17:00:00,,0
1151,1.1.1.4.8.11.3.1,roltrap / roltrapkast geplaatst - onder spanning,0.0,0.0,0.0,2019-05-23 17:00:00,2019-05-23 17:00:00,,0
1152,1.1.1.4.8.11.3.2,roltrapconnectie met netwerk,0.0,0.0,0.0,2019-03-29 17:00:00,2019-03-29 17:00:00,,0
1153,1.1.1.4.8.11.4,Roltrap ODR4,55.0,54.45,55.55,2019-03-29 17:00:00,2019-05-23 17:00:00,,0
1154,1.1.1.4.8.11.4.1,roltrap / roltrapkast geplaatst - onder spanning,0.0,0.0,0.0,2019-05-23 17:00:00,2019-05-23 17:00:00,,0
1155,1.1.1.4.8.11.4.2,roltrapconnectie met netwerk,0.0,0.0,0.0,2019-03-29 17:00:00,2019-03-29 17:00:00,,0
1156,1.1.1.4.8.11.5,Roltrap OSR5,54.0,53.46,54.54,2019-03-29 17:00:00,2019-05-22 17:00:00,,0
1157,1.1.1.4.8.11.5.1,roltrap / roltrapkast geplaatst - onder spanning,0.0,0.0,0.0,2019-05-22 17:00:00,2019-05-22 17:00:00,,0
1158,1.1.1.4.8.11.5.2,roltrapconnectie met netwerk,0.0,0.0,0.0,2019-03-29 17:00:00,2019-03-29 17:00:00,,0
1159,1.1.1.4.8.11.6,Roltrap OSR6,54.0,53.46,54.54,2019-03-29 17:00:00,2019-05-22 17:00:00,,0
1160,1.1.1.4.8.11.6.1,roltrap / roltrapkast geplaatst - onder spanning,0.0,0.0,0.0,2019-05-22 17:00:00,2019-05-22 17:00:00,,0
1161,1.1.1.4.8.11.6.2,roltrapconnectie met netwerk,0.0,0.0,0.0,2019-03-29 17:00:00,2019-03-29 17:00:00,,0
1162,1.1.1.4.8.11.7,Roltrap ODR7,53.0,52.47,53.53,2019-03-29 17:00:00,2019-05-21 17:00:00,,0
1163,1.1.1.4.8.11.7.1,roltrap / roltrapkast geplaatst - onder spanning,0.0,0.0,0.0,2019-05-21 17:00:00,2019-05-21 17:00:00,,0
1164,1.1.1.4.8.11.7.2,roltrapconnectie met netwerk,0.0,0.0,0.0,2019-03-29 17:00:00,2019-03-29 17:00:00,,0
1165,1.1.1.4.8.11.8,Roltrap OSR8,59.0,58.41,59.59,2019-03-29 17:00:00,2019-05-27 17:00:00,,0
1166,1.1.1.4.8.11.8.1,roltrap / roltrapkast geplaatst - onder spanning,0.0,0.0,0.0,2019-05-27 17:00:00,2019-05-27 17:00:00,,0
1167,1.1.1.4.8.11.8.2,roltrapconnectie met netwerk,0.0,0.0,0.0,2019-03-29 17:00:00,2019-03-29 17:00:00,,0
1168,1.1.1.4.8.11.9,Roltrap ODR9,59.0,58.41,59.59,2019-03-29 17:00:00,2019-05-27 17:00:00,,0
1169,1.1.1.4.8.11.9.1,roltrap / roltrapkast geplaatst - onder spanning,0.0,0.0,0.0,2019-05-27 17:00:00,2019-05-27 17:00:00,,0
1170,1.1.1.4.8.11.9.2,roltrapconnectie met netwerk,0.0,0.0,0.0,2019-03-29 17:00:00,2019-03-29 17:00:00,,0
1171,1.1.1.4.8.11.10,Roltrap ODR10,49.0,48.51,49.49,2019-03-29 17:00:00,2019-05-17 17:00:00,,0
1172,1.1.1.4.8.11.10.1,roltrap / roltrapkast geplaatst - onder spanning,0.0,0.0,0.0,2019-05-17 17:00:00,2019-05-17 17:00:00,,0
1173,1.1.1.4.8.11.10.2,roltrapconnectie met netwerk,0.0,0.0,0.0,2019-03-29 17:00:00,2019-03-29 17:00:00,,0
1174,1.1.1.4.8.11.11,Roltrap OSR11,52.0,51.48,52.52,2019-03-29 17:00:00,2019-05-20 17:00:00,,0
1175,1.1.1.4.8.11.11.1,roltrap / roltrapkast geplaatst - onder spanning,0.0,0.0,0.0,2019-05-20 17:00:00,2019-05-20 17:00:00,,0
1176,1.1.1.4.8.11.11.2,roltrapconnectie met netwerk,0.0,0.0,0.0,2019-03-29 17:00:00,2019-03-29 17:00:00,,0
1177,1.1.1.4.8.11.12,Roltrap OSR12,60.0,59.4,60.6,2019-03-29 17:00:00,2019-05-28 17:00:00,,0
1178,1.1.1.4.8.11.12.1,roltrap / roltrapkast geplaatst - onder spanning,0.0,0.0,0.0,2019-05-28 17:00:00,2019-05-28 17:00:00,,0
1179,1.1.1.4.8.11.12.2,roltrapconnectie met netwerk,0.0,0.0,0.0,2019-03-29 17:00:00,2019-03-29 17:00:00,,0
1180,1.1.1.4.8.11.13,Roltrap OSR13,46.0,45.54,46.46,2019-04-12 17:00:00,2019-05-28 17:00:00,,0
1181,1.1.1.4.8.11.13.1,roltrap / roltrapkast geplaatst - onder spanning,0.0,0.0,0.0,2019-05-28 17:00:00,2019-05-28 17:00:00,,0
1182,1.1.1.4.8.11.13.2,roltrapconnectie met netwerk,0.0,0.0,0.0,2019-04-12 17:00:00,2019-04-12 17:00:00,,0
1183,1.1.1.4.8.11.14,Roltrap ODR14,32.0,31.68,32.32,2019-04-12 17:00:00,2019-05-14 17:00:00,,0
1184,1.1.1.4.8.11.14.1,roltrap / roltrapkast geplaatst - onder spanning,0.0,0.0,0.0,2019-05-14 17:00:00,2019-05-14 17:00:00,,0
1185,1.1.1.4.8.11.14.2,roltrapconnectie met netwerk,0.0,0.0,0.0,2019-04-12 17:00:00,2019-04-12 17:00:00,,0
1186,1.1.1.4.8.11.15,Roltrap OSR15,19.0,18.81,19.19,2019-04-12 17:00:00,2019-05-01 17:00:00,,0
1187,1.1.1.4.8.11.15.1,roltrap / roltrapkast geplaatst - onder spanning,0.0,0.0,0.0,2019-05-01 17:00:00,2019-05-01 17:00:00,,0
1188,1.1.1.4.8.11.15.2,roltrapconnectie met netwerk,0.0,0.0,0.0,2019-04-12 17:00:00,2019-04-12 17:00:00,,0
1189,1.1.1.4.8.11.16,Roltrap ODR16,19.0,18.81,19.19,2019-04-12 17:00:00,2019-05-01 17:00:00,,0
1190,1.1.1.4.8.11.16.1,roltrap / roltrapkast geplaatst - onder spanning,0.0,0.0,0.0,2019-05-01 17:00:00,2019-05-01 17:00:00,,0
1191,1.1.1.4.8.11.16.2,roltrapconnectie met netwerk,0.0,0.0,0.0,2019-04-12 17:00:00,2019-04-12 17:00:00,,0
1192,1.1.1.4.8.11.17,Roltrap OSR17,19.0,18.81,19.19,2019-04-12 17:00:00,2019-05-01 17:00:00,,0
1193,1.1.1.4.8.11.17.1,roltrap / roltrapkast geplaatst - onder spanning,0.0,0.0,0.0,2019-05-01 17:00:00,2019-05-01 17:00:00,,0
1194,1.1.1.4.8.11.17.2,roltrapconnectie met netwerk,0.0,0.0,0.0,2019-04-12 17:00:00,2019-04-12 17:00:00,,0
1195,1.1.1.4.8.11.18,Roltrap ODR18,33.0,32.67,33.33,2019-04-12 17:00:00,2019-05-15 17:00:00,,0
1196,1.1.1.4.8.11.18.1,roltrap / roltrapkast geplaatst - onder spanning,0.0,0.0,0.0,2019-05-15 17:00:00,2019-05-15 17:00:00,,0
1197,1.1.1.4.8.11.18.2,roltrapconnectie met netwerk,0.0,0.0,0.0,2019-04-12 17:00:00,2019-04-12 17:00:00,,0
1198,1.1.1.4.8.11.19,Roltrap OSR19,34.0,33.66,34.34,2019-04-12 17:00:00,2019-05-16 17:00:00,,0
1199,1.1.1.4.8.11.19.1,roltrap / roltrapkast geplaatst - onder spanning,0.0,0.0,0.0,2019-05-16 17:00:00,2019-05-16 17:00:00,,0
1200,1.1.1.4.8.11.19.2,roltrapconnectie met netwerk,0.0,0.0,0.0,2019-04-12 17:00:00,2019-04-12 17:00:00,,0
1201,1.1.1.4.8.12,LIFTEN,0.0,0.0,0.0,2019-06-20 17:00:00,2019-06-20 17:00:00,,0
1202,1.1.1.4.8.12.1,LIFT1,0.0,0.0,0.0,2019-06-20 17:00:00,2019-06-20 17:00:00,,0
1203,1.1.1.4.8.12.1.1,lift / stuurkast geplaatst - onder spanning,0.0,0.0,0.0,2019-06-20 17:00:00,2019-06-20 17:00:00,,0
1204,1.1.1.4.8.12.1.2,connectie met netwerk,0.0,0.0,0.0,2019-06-20 17:00:00,2019-06-20 17:00:00,,0
1205,1.1.1.4.8.12.2,LIFT2,0.0,0.0,0.0,2019-06-20 17:00:00,2019-06-20 17:00:00,,0
1206,1.1.1.4.8.12.2.1,lift / stuurkast geplaatst - onder spanning,0.0,0.0,0.0,2019-06-20 17:00:00,2019-06-20 17:00:00,,0
1207,1.1.1.4.8.12.2.2,connectie met netwerk,0.0,0.0,0.0,2019-06-20 17:00:00,2019-06-20 17:00:00,,0
1208,1.1.1.4.8.12.3,LIFT3,0.0,0.0,0.0,2019-06-20 17:00:00,2019-06-20 17:00:00,,0
1209,1.1.1.4.8.12.3.1,lift / stuurkast geplaatst - onder spanning,0.0,0.0,0.0,2019-06-20 17:00:00,2019-06-20 17:00:00,,0
1210,1.1.1.4.8.12.3.2,connectie met netwerk,0.0,0.0,0.0,2019-06-20 17:00:00,2019-06-20 17:00:00,,0
1211,1.1.1.4.8.13,TRAPONTDOOIING,63.0,62.37,63.63,2019-03-15 17:00:00,2019-05-17 17:00:00,,0
1212,1.1.1.4.8.13.1,Ontdooiing T3,0.0,0.0,0.0,2019-05-17 17:00:00,2019-05-17 17:00:00,,0
1213,1.1.1.4.8.13.2,Ontdooiing T4,0.0,0.0,0.0,2019-05-17 17:00:00,2019-05-17 17:00:00,,0
1214,1.1.1.4.8.13.3,Ontdooiing T5,0.0,0.0,0.0,2019-05-17 17:00:00,2019-05-17 17:00:00,,0
1215,1.1.1.4.8.13.4,Ontdooiing T6,0.0,0.0,0.0,2019-05-17 17:00:00,2019-05-17 17:00:00,,0
1216,1.1.1.4.8.13.5,Ontdooiing T0,0.0,0.0,0.0,2019-03-15 17:00:00,2019-03-15 17:00:00,,0
1217,1.1.1.4.8.13.6,connectie met netwerk,0.0,0.0,0.0,2019-05-17 17:00:00,2019-05-17 17:00:00,,0
1218,1.1.1.4.8.14,GASBLUSSING,0.0,0.0,0.0,2019-05-14 17:00:00,2019-05-14 17:00:00,,0
1219,1.1.1.4.8.14.1,connectie tussen brandcentrales,0.0,0.0,0.0,2019-05-14 17:00:00,2019-05-14 17:00:00,,0
1220,1.1.1.4.8.15,ROOKSCHERMEN,7.0,6.93,7.07,2019-05-10 17:00:00,2019-05-17 17:00:00,,0
1221,1.1.1.4.8.15.1,ROOKSCHERMEN niv -1,0.0,0.0,0.0,2019-05-17 17:00:00,2019-05-17 17:00:00,,0
1222,1.1.1.4.8.15.2,ROOKSCHERMEN niv -2,0.0,0.0,0.0,2019-05-17 17:00:00,2019-05-17 17:00:00,,0
1223,1.1.1.4.8.15.3,ROOKSCHERMEN niv -3,0.0,0.0,0.0,2019-05-10 17:00:00,2019-05-10 17:00:00,,0
1224,1.1.1.4.8.15.4,connectie met netwerk / PLC / datarack,0.0,0.0,0.0,2019-05-17 17:00:00,2019-05-17 17:00:00,,0
1225,1.1.1.4.8.16,ROOKLUIK LICHTPUT,0.0,0.0,0.0,2019-05-06 17:00:00,2019-05-06 17:00:00,,0
1226,1.1.1.4.8.17,POORTEN,56.0,55.44,56.56,2019-03-28 17:00:00,2019-05-23 17:00:00,,0
1227,1.1.1.4.8.17.1,"Vouwdeur Teniers noord, montage gereed",0.0,0.0,0.0,2019-03-28 17:00:00,2019-03-28 17:00:00,,0
1228,1.1.1.4.8.17.2,"Vouwdeur Teniers zuid, montage gereed",0.0,0.0,0.0,2019-03-28 17:00:00,2019-03-28 17:00:00,,0
1229,1.1.1.4.8.17.3,"Vouwdeur Frankrijklei, montage gereed",0.0,0.0,0.0,2019-03-28 17:00:00,2019-03-28 17:00:00,,0
1230,1.1.1.4.8.17.4,"Vouwdeur Keyserlei, montage gereed",0.0,0.0,0.0,2019-03-28 17:00:00,2019-03-28 17:00:00,,0
1231,1.1.1.4.8.17.5,"POORTEN niv -1 (hekken), Montage gereed",0.0,0.0,0.0,2019-05-09 17:00:00,2019-05-09 17:00:00,,0
1232,1.1.1.4.8.17.6,"POORTEN niv -2, montage gereed",0.0,0.0,0.0,2019-05-23 17:00:00,2019-05-23 17:00:00,,0
1233,1.1.1.4.8.17.7,"POORTEN niv -3, montage gereed",0.0,0.0,0.0,2019-05-23 17:00:00,2019-05-23 17:00:00,,0
1234,1.1.1.4.8.17.8,"connectie met netwerk / PLC / datarack, montage gereed",0.0,0.0,0.0,2019-05-17 17:00:00,2019-05-17 17:00:00,,0
1235,1.1.1.4.8.18,HVAC,13.0,12.87,13.13,2019-05-17 17:00:00,2019-05-30 17:00:00,,0
1236,1.1.1.4.8.18.1,HVAC1 - luchtgroep 2 BOCV2,0.0,0.0,0.0,2019-05-30 17:00:00,2019-05-30 17:00:00,,0
1237,1.1.1.4.8.18.2,HVAC2 - luchtgroep 4 / extractie 5.1 - BOCV4/BOCV5,0.0,0.0,0.0,2019-05-30 17:00:00,2019-05-30 17:00:00,,0
1238,1.1.1.4.8.18.3,HVAC3 - luchtgroep 1 / extractie 5.2 BOCV1-BOCV6,0.0,0.0,0.0,2019-05-30 17:00:00,2019-05-30 17:00:00,,0
1239,1.1.1.4.8.18.4,HVAC5 - luchtgroep 3 / extractie 3.2-3.2-3.3 BOCV3,0.0,0.0,0.0,2019-05-30 17:00:00,2019-05-30 17:00:00,,0
1240,1.1.1.4.8.18.5,connectie met netwerk / PLC / datarack,0.0,0.0,0.0,2019-05-17 17:00:00,2019-05-17 17:00:00,,0
1241,1.1.1.4.8.19,RWA,0.0,0.0,0.0,2019-04-04 17:00:00,2019-04-04 17:00:00,,0
1242,1.1.1.4.8.19.1,Extractieventilator Open Helling,0.0,0.0,0.0,2019-04-04 17:00:00,2019-04-04 17:00:00,,0
1243,1.1.1.4.8.19.2,Extractieventilator vluchtweg 6,0.0,0.0,0.0,2019-04-04 17:00:00,2019-04-04 17:00:00,,0
1244,1.1.1.4.8.19.3,Extractieventilator vluchtweg 7,0.0,0.0,0.0,2019-04-04 17:00:00,2019-04-04 17:00:00,,0
1245,1.1.1.4.8.20,BBI,0.0,0.0,0.0,2019-04-04 17:00:00,2019-04-04 17:00:00,,0
1246,1.1.1.4.8.20.1,drukverhogingspomp P6,0.0,0.0,0.0,2019-04-04 17:00:00,2019-04-04 17:00:00,,0
1247,1.1.1.4.8.21,POMPEN,0.0,0.0,0.0,2019-05-30 17:00:00,2019-05-30 17:00:00,,0
1248,1.1.1.4.8.21.1,Regenwaterpomp PS Oost P2,0.0,0.0,0.0,2019-05-30 17:00:00,2019-05-30 17:00:00,,0
1249,1.1.1.4.8.21.2,Regenwaterpomp PS West P3,0.0,0.0,0.0,2019-05-30 17:00:00,2019-05-30 17:00:00,,0
1250,1.1.1.4.8.21.3,Droogweer afvoer PS niv-2 P4 (fecaal- en afvalwater),0.0,0.0,0.0,2019-05-30 17:00:00,2019-05-30 17:00:00,,0
1251,1.1.1.4.8.21.4,Droogweer afvoer PS niv-3 P4  (fecaal- en afvalwater),0.0,0.0,0.0,2019-05-30 17:00:00,2019-05-30 17:00:00,,0
1252,1.1.1.4.9,I) TESTEN ON,235.375,233.02,237.73,2019-03-18 08:00:00,2019-11-08 17:00:00,,0
1253,1.1.1.4.9.1,TESTEN TYPE 1 (technische testen per techniek),175.375,173.62,177.13,2019-03-18 08:00:00,2019-09-09 17:00:00,,0
1254,1.1.1.4.9.1.1,Testen Type 1,175.375,173.62,177.13,2019-03-18 08:00:00,2019-09-09 17:00:00,,0
1255,1.1.1.4.9.1.1.1,  ,4.375,3.5,5.25,2019-05-27 08:00:00,2019-05-31 17:00:00,,0
1256,1.1.1.4.9.1.1.2,NETWERK TESTEN (3st),63.375,62.74,64.01,2019-04-29 08:00:00,2019-07-01 17:00:00,,0
1257,1.1.1.4.9.1.1.2.1,testen,63.375,62.74,64.01,2019-04-29 08:00:00,2019-07-01 17:00:00,,0
1258,1.1.1.4.9.1.1.2.1.1,Uitvoeren type 1 testen Netwerk bovengronds,0.375,0.3,0.45,2019-07-01 08:00:00,2019-07-01 17:00:00,,0
1259,1.1.1.4.9.1.1.2.1.2,Uitvoeren type 1 testen Netwerktesten hoofdring,0.375,0.3,0.45,2019-05-28 08:00:00,2019-05-28 17:00:00,,0
1260,1.1.1.4.9.1.1.2.1.3,Uitvoeren type 1 testen Netwerktesten subring 1,0.375,0.3,0.45,2019-04-29 08:00:00,2019-04-29 17:00:00,,0
1261,1.1.1.4.9.1.1.2.1.4,Uitvoeren type 1 testen Netwerktesten subring 2,0.375,0.3,0.45,2019-04-29 08:00:00,2019-04-29 17:00:00,,0
1262,1.1.1.4.9.1.1.2.1.5,Alle netwerkverbindingen gereed en getest,0.0,0.0,0.0,2019-05-28 17:00:00,2019-05-28 17:00:00,,0
1263,1.1.1.4.9.1.1.3,BORDEN VVDK (19st),64.375,63.73,65.02,2019-05-07 08:00:00,2019-07-10 17:00:00,,0
1264,1.1.1.4.9.1.1.3.1,Start type 1 testen primaire borden VVDK Installatie,0.0,0.0,0.0,2019-06-12 17:00:00,2019-06-12 17:00:00,,0
1265,1.1.1.4.9.1.1.3.2,Uitvoeren type 1 testen HS Opera (HoogspanningsBord),0.375,0.3,0.45,2019-06-13 08:00:00,2019-06-13 17:00:00,,0
1266,1.1.1.4.9.1.1.3.3,Uitvoeren type 1 testen TRANSFO Opera (TransformatorBord),0.375,0.3,0.45,2019-06-13 08:00:00,2019-06-13 17:00:00,,0
1267,1.1.1.4.9.1.1.3.4,Uitvoeren type 1 testen NO BREAK (Bord No-Break),0.375,0.3,0.45,2019-06-13 08:00:00,2019-06-13 17:00:00,,0
1268,1.1.1.4.9.1.1.3.5,Uitvoeren type 1 testen omschakeling van hoofdnet naar VeligheidsNet (OnderStation),2.375,1.9,2.85,2019-07-08 08:00:00,2019-07-10 17:00:00,,0
1269,1.1.1.4.9.1.1.3.6,Uitvoeren type 1 testen Einde primaire borden VVDK Installatie,0.0,0.0,0.0,2019-06-13 17:00:00,2019-06-13 17:00:00,,0
1270,1.1.1.4.9.1.1.3.7,"Uitvoeren type 1 testen ALSB HN/VN/NN (Algemeen LaagspanningsBord HoofdNet, VeiligheidsNet, NoodNet)",0.375,0.3,0.45,2019-06-28 08:00:00,2019-06-28 17:00:00,,0
1271,1.1.1.4.9.1.1.3.8,Uitvoeren type 1 testen Bord VVDK B1 (Secundair E-Bord B1),0.16666666670062114,0.13,0.2,2019-05-07 08:00:00,2019-05-07 12:00:00,,0
1272,1.1.1.4.9.1.1.3.9,Uitvoeren type 1 testen Bord VVDK B2 (Secundair E-Bord B2),0.16666666659875773,0.13,0.2,2019-05-07 13:00:00,2019-05-07 17:00:00,,0
1273,1.1.1.4.9.1.1.3.10,Uitvoeren type 1 testen Bord VVDK B3 (Secundair E-Bord B3),0.16666666670062114,0.13,0.2,2019-05-08 08:00:00,2019-05-08 12:00:00,,0
1274,1.1.1.4.9.1.1.3.11,Uitvoeren type 1 testen Bord VVDK B4 (Secundair E-Bord B4),0.16666666659875773,0.13,0.2,2019-05-08 13:00:00,2019-05-08 17:00:00,,0
1275,1.1.1.4.9.1.1.3.12,Uitvoeren type 1 testen Bord VVDK B5 (Secundair E-Bord B5),0.16666666670062114,0.13,0.2,2019-05-09 08:00:00,2019-05-09 12:00:00,,0
1276,1.1.1.4.9.1.1.3.13,Uitvoeren type 1 testen Bord VVDK B6 (Secundair E-Bord B6),0.16666666659875773,0.13,0.2,2019-05-09 13:00:00,2019-05-09 17:00:00,,0
1277,1.1.1.4.9.1.1.3.14,Uitvoeren type 1 testen Bord VVDK B7 (Secundair E-Bord B7),0.16666666670062114,0.13,0.2,2019-05-10 08:00:00,2019-05-10 12:00:00,,0
1278,1.1.1.4.9.1.1.3.15,Uitvoeren type 1 testen Bord VVDK B8 (Secundair E-Bord B8),0.16666666659875773,0.13,0.2,2019-05-10 13:00:00,2019-05-10 17:00:00,,0
1279,1.1.1.4.9.1.1.3.16,Uitvoeren type 1 testen Bord VVDK B9 (Secundair E-Bord B9),0.16666666670062114,0.13,0.2,2019-05-13 08:00:00,2019-05-13 12:00:00,,0
1280,1.1.1.4.9.1.1.3.17,Uitvoeren type 1 testen Bord VVDK B10 (Secundair E-Bord B10),0.16666666659875773,0.13,0.2,2019-05-13 13:00:00,2019-05-13 17:00:00,,0
1281,1.1.1.4.9.1.1.3.18,Type 1 testen secundaire borden B1 t/m B10 gereed,0.0,0.0,0.0,2019-05-13 17:00:00,2019-05-13 17:00:00,,0
1282,1.1.1.4.9.1.1.3.19,Uitvoeren type 1 testen Bord VVDK BO5 Tunnelverlichting  (Secundair E-Bord BO5),0.375,0.3,0.45,2019-06-13 08:00:00,2019-06-13 17:00:00,,0
1283,1.1.1.4.9.1.1.3.20,Uitvoeren type 1 testen Bord VVDK BO6 Tunnelverlichting  (Secundair E-Bord BO6),0.375,0.3,0.45,2019-06-14 08:00:00,2019-06-14 17:00:00,,0
1284,1.1.1.4.9.1.1.4,DATARACKS (incl testen afgaande datakabels/hardware I/O's) (16st),86.375,85.51,87.24,2019-05-27 08:00:00,2019-08-21 17:00:00,,0
1285,1.1.1.4.9.1.1.4.1,Uitvoeren type 1 testen BOZ15 (ATK) (DataRack AfstandsToezichtsKast (=kast met PLC die communiceert met stuurbord)),1.375,1.1,1.65,2019-07-15 08:00:00,2019-07-16 17:00:00,,0
1286,1.1.1.4.9.1.1.4.2,Uitvoeren type 1 testen BOZ16 (SB) (type 1 test StuurBord),5.375,4.3,6.45,2019-07-04 08:00:00,2019-07-09 17:00:00,,0
1287,1.1.1.4.9.1.1.4.3,Uitvoeren type 1 testen BOZ17 (PM1.1) (DataRack),0.375,0.3,0.45,2019-05-29 08:00:00,2019-05-29 17:00:00,,0
1288,1.1.1.4.9.1.1.4.4,Uitvoeren type 1 testen BOZ18 (PM1.2) (DataRack),0.375,0.3,0.45,2019-05-29 08:00:00,2019-05-29 17:00:00,,0
1289,1.1.1.4.9.1.1.4.5,Uitvoeren type 1 testen BOZ19 (PM1.3) (DataRack),0.375,0.3,0.45,2019-05-29 08:00:00,2019-05-29 17:00:00,,0
1290,1.1.1.4.9.1.1.4.6,Uitvoeren type 1 testen BOZ20 (PM2.1) (DataRack),0.375,0.3,0.45,2019-05-29 08:00:00,2019-05-29 17:00:00,,0
1291,1.1.1.4.9.1.1.4.7,Uitvoeren type 1 testen BOZ21 (PM2.2) (DataRack),0.375,0.3,0.45,2019-05-29 08:00:00,2019-05-29 17:00:00,,0
1292,1.1.1.4.9.1.1.4.8,Uitvoeren type 1 testen BOZ22 (PM2.3) (DataRack),0.375,0.3,0.45,2019-05-29 08:00:00,2019-05-29 17:00:00,,0
1293,1.1.1.4.9.1.1.4.9,Uitvoeren type 1 testen BOZ23 (PM3.1) (DataRack),0.375,0.3,0.45,2019-05-29 08:00:00,2019-05-29 17:00:00,,0
1294,1.1.1.4.9.1.1.4.10,Uitvoeren type 1 testen BOZ24 (PM3.2) (DataRack),0.375,0.3,0.45,2019-05-29 08:00:00,2019-05-29 17:00:00,,0
1295,1.1.1.4.9.1.1.4.11,Uitvoeren type 1 testen BOZ25 (PM1.4) (DataRack),0.375,0.3,0.45,2019-08-21 08:00:00,2019-08-21 17:00:00,,0
1296,1.1.1.4.9.1.1.4.12,Uitvoeren type 1 testen BOZ26 (PM3.3) (DataRack),0.375,0.3,0.45,2019-05-29 08:00:00,2019-05-29 17:00:00,,0
1297,1.1.1.4.9.1.1.4.13,Uitvoeren type 1 testen BOZ28 (DATARACK OG in OnderStation),0.375,0.3,0.45,2019-06-07 08:00:00,2019-06-07 17:00:00,,0
1298,1.1.1.4.9.1.1.4.14,Uitvoeren type 1 testen BOZ29 (TERUGMELDING BVL-SCHAKELAARS SVH),0.375,0.3,0.45,2019-05-27 08:00:00,2019-05-27 17:00:00,,0
1299,1.1.1.4.9.1.1.4.15,Uitvoeren type 1 testen BOZ30 (DATARACK OG aan B2),0.375,0.3,0.45,2019-06-07 08:00:00,2019-06-07 17:00:00,,0
1300,1.1.1.4.9.1.1.4.16,Uitvoeren type 1 testen BOZ31 (DATARACK OG aan B3),0.375,0.3,0.45,2019-06-07 08:00:00,2019-06-07 17:00:00,,0
1301,1.1.1.4.9.1.1.4.17,Alle type 1 testen Data borden succesvol uitgevoerd,0.0,0.0,0.0,2019-08-21 17:00:00,2019-08-21 17:00:00,,0
1302,1.1.1.4.9.1.1.5,Centrale kasten enkelvoudige deelsystemen (15st),130.375,129.07,131.68,2019-05-02 08:00:00,2019-09-09 17:00:00,,0
1303,1.1.1.4.9.1.1.5.1,BO1 (STUURKAST SIGNALERING DIAMANT) (1st) (testen aansluitingen op een bestaande kast),0.375,0.3,0.45,2019-09-09 08:00:00,2019-09-09 17:00:00,,0
1304,1.1.1.4.9.1.1.5.2,BO2 (STUURKAST SIGNALERING MEIR - OPERA) (1st) (testen aansluitingen op een bestaande kast),0.375,0.3,0.45,2019-09-09 08:00:00,2019-09-09 17:00:00,,0
1305,1.1.1.4.9.1.1.5.3,BO3 (STUURKAST SIGNALERING ASTRID - OPERA) (1st) (testen aansluitingen op een bestaande kast),0.375,0.3,0.45,2019-09-09 08:00:00,2019-09-09 17:00:00,,0
1306,1.1.1.4.9.1.1.5.4,BO4 (STUURKAST SIGNALERING OH - OPERA) (1st) (testen aansluitingen op een bestaande kast),0.375,0.3,0.45,2019-08-19 08:00:00,2019-08-19 17:00:00,,0
1307,1.1.1.4.9.1.1.5.5,BOZ5 (1st) (??),0.375,0.3,0.45,2019-05-02 08:00:00,2019-05-02 17:00:00,,0
1308,1.1.1.4.9.1.1.5.6,BOZ6 (Centrale Kast WISSELVERWARMING BOVENGRONDS) (1st),0.375,0.3,0.45,2019-07-16 08:00:00,2019-07-16 17:00:00,,0
1309,1.1.1.4.9.1.1.5.7,Uitvoeren type 1 testen BOZ7 (Centrale Kast RADIO) (1st),0.375,0.3,0.45,2019-08-22 08:00:00,2019-08-22 17:00:00,,0
1310,1.1.1.4.9.1.1.5.8,Uitvoeren type 1 testen BOZ8 (Centrale Kast BRAND TUNNEL) (1st),1.375,1.1,1.65,2019-07-08 08:00:00,2019-07-09 17:00:00,,0
1311,1.1.1.4.9.1.1.5.9,BOZ9 (Centrale Kast ONTRUIMINGSSIGNAAL) (1st),0.375,0.3,0.45,2019-05-27 08:00:00,2019-05-27 17:00:00,,0
1312,1.1.1.4.9.1.1.5.10,BOZ11 (Centrale Kast ATK - AfstandsToezichtsKast(=kast met PLC die communiceert met stuurbord)) (1st),0.375,0.3,0.45,2019-07-30 08:00:00,2019-07-30 17:00:00,,0
1313,1.1.1.4.9.1.1.5.11,BOZ12 (Centrale Kast LOKALE BEDIENINGSKAST) (1st),0.375,0.3,0.45,2019-05-27 08:00:00,2019-05-27 17:00:00,,0
1314,1.1.1.4.9.1.1.5.12,Uitvoeren type 1 testen BOZ13 (Centrale Kast BRAND STATION) (1st),3.375,2.7,4.05,2019-07-12 08:00:00,2019-07-15 17:00:00,,0
1315,1.1.1.4.9.1.1.5.13,Uitvoeren type 1 testen BOZ14 (Centrale Kast CCTV) (1st),1.375,1.1,1.65,2019-07-15 08:00:00,2019-07-16 17:00:00,,0
1316,1.1.1.4.9.1.1.5.14,Uitvoeren type 1 testen BOZ27 (Centrale Kast OMROEP) (1st),0.375,0.3,0.45,2019-06-12 08:00:00,2019-06-12 17:00:00,,0
1317,1.1.1.4.9.1.1.6,LICHTKRANTEN (10st),55.0,54.45,55.55,2019-07-16 17:00:00,2019-09-09 17:00:00,,0
1318,1.1.1.4.9.1.1.6.1,Start testen type 1 Lichtkranten,0.0,0.0,0.0,2019-07-16 17:00:00,2019-07-16 17:00:00,,0
1319,1.1.1.4.9.1.1.6.2,Uitvoeren type 1 testen Lichtkrant verdieping -1,0.375,0.3,0.45,2019-07-17 08:00:00,2019-07-17 17:00:00,,0
1320,1.1.1.4.9.1.1.6.3,Uitvoeren type 1 testen Lichtkrant verdieping -2,4.375,3.5,5.25,2019-08-12 08:00:00,2019-08-16 17:00:00,,0
1321,1.1.1.4.9.1.1.6.4,Uitvoeren type 1 testen Lichtkrant verdieping -3,28.375,22.7,34.05,2019-08-12 08:00:00,2019-09-09 17:00:00,,0
1322,1.1.1.4.9.1.1.6.5,Uitvoeren type 1 testen Lichtkrant LK1 - Bord 1,0.375,0.3,0.45,2019-07-17 08:00:00,2019-07-17 17:00:00,,0
1323,1.1.1.4.9.1.1.6.6,Uitvoeren type 1 testen Lichtkrant LK2 - B1,0.375,0.3,0.45,2019-07-17 08:00:00,2019-07-17 17:00:00,,0
1324,1.1.1.4.9.1.1.6.7,Uitvoeren type 1 testen Lichtkrant LK3,0.375,0.3,0.45,2019-07-17 08:00:00,2019-07-17 17:00:00,,0
1325,1.1.1.4.9.1.1.6.8,Uitvoeren type 1 testen Lichtkrant LK4 PEM (PréMetro Extramuros)- B6,0.375,0.3,0.45,2019-07-17 08:00:00,2019-07-17 17:00:00,,0
1326,1.1.1.4.9.1.1.6.9,Uitvoeren type 1 testen Lichtkrant LK5 PIM - B7,0.375,0.3,0.45,2019-07-17 08:00:00,2019-07-17 17:00:00,,0
1327,1.1.1.4.9.1.1.6.10,Uitvoeren type 1 testen Lichtkrant LK6 PEM - B7,0.375,0.3,0.45,2019-07-17 08:00:00,2019-07-17 17:00:00,,0
1328,1.1.1.4.9.1.1.6.11,Uitvoeren type 1 testen Lichtkrant LK7 PIM - B8,0.375,0.3,0.45,2019-07-17 08:00:00,2019-07-17 17:00:00,,0
1329,1.1.1.4.9.1.1.6.12,Uitvoeren type 1 testen Lichtkrant LK8 PEM - B8,0.375,0.3,0.45,2019-07-17 08:00:00,2019-07-17 17:00:00,,0
1330,1.1.1.4.9.1.1.6.13,Uitvoeren type 1 testen Lichtkrant LK9 PIM - B9,0.375,0.3,0.45,2019-07-17 08:00:00,2019-07-17 17:00:00,,0
1331,1.1.1.4.9.1.1.6.14,Uitvoeren type 1 testen Lichtkrant LK10 PEM - B9,0.375,0.3,0.45,2019-07-17 08:00:00,2019-07-17 17:00:00,,0
1332,1.1.1.4.9.1.1.6.15,Uitvoeren type 1 testen Einde testen type 1 Lichtkranten,0.0,0.0,0.0,2019-09-09 17:00:00,2019-09-09 17:00:00,,0
1333,1.1.1.4.9.1.1.7,TRAPONTDOOIING (5st),126.375,125.11,127.64,2019-03-18 08:00:00,2019-07-22 17:00:00,,0
1334,1.1.1.4.9.1.1.7.1,Uitvoeren type 1 testen Ontdooiing T0,0.16666666670062114,0.13,0.2,2019-03-18 08:00:00,2019-03-18 12:00:00,,0
1335,1.1.1.4.9.1.1.7.2,Uitvoeren type 1 testen TrapOntdooiing T3,0.16666666670062114,0.13,0.2,2019-06-06 08:00:00,2019-06-06 12:00:00,,0
1336,1.1.1.4.9.1.1.7.3,Uitvoeren type 1 testen TrapOntdooiing T4,0.16666666659875773,0.13,0.2,2019-06-06 13:00:00,2019-06-06 17:00:00,,0
1337,1.1.1.4.9.1.1.7.4,Uitvoeren type 1 testen TrapOntdooiing T5,0.375,0.3,0.45,2019-06-07 08:00:00,2019-06-07 17:00:00,,0
1338,1.1.1.4.9.1.1.7.5,Uitvoeren type 1 testen TrapOntdooiing T6,21.375,17.1,25.65,2019-07-01 08:00:00,2019-07-22 17:00:00,,0
1339,1.1.1.4.9.1.1.8,ROLTRAPPEN (18st),12.375,12.25,12.5,2019-06-13 08:00:00,2019-06-25 17:00:00,,0
1340,1.1.1.4.9.1.1.8.1,SAT Roltrap (type 1 test) ODR1-lichtput,0.375,0.3,0.45,2019-06-25 08:00:00,2019-06-25 17:00:00,,0
1341,1.1.1.4.9.1.1.8.2,SAT Roltrap (type 1 test)  OSR2 - lichtput,0.375,0.3,0.45,2019-06-25 08:00:00,2019-06-25 17:00:00,,0
1342,1.1.1.4.9.1.1.8.3,SAT Roltrap (type 1 test)  OSR3 - lichtput,0.375,0.3,0.45,2019-06-25 08:00:00,2019-06-25 17:00:00,,0
1343,1.1.1.4.9.1.1.8.4,SAT Roltrap (type 1 test)  ODR4 - lichtput,0.375,0.3,0.45,2019-06-25 08:00:00,2019-06-25 17:00:00,,0
1344,1.1.1.4.9.1.1.8.5,SAT Roltrap (type 1 test)  OSR5 - lichtput,0.375,0.3,0.45,2019-06-25 08:00:00,2019-06-25 17:00:00,,0
1345,1.1.1.4.9.1.1.8.6,SAT Roltrap (type 1 test)  OSR6 - station,0.375,0.3,0.45,2019-06-25 08:00:00,2019-06-25 17:00:00,,0
1346,1.1.1.4.9.1.1.8.7,SAT Roltrap (type 1 test)  ODR7 - station,0.375,0.3,0.45,2019-06-25 08:00:00,2019-06-25 17:00:00,,0
1347,1.1.1.4.9.1.1.8.8,SAT Roltrap (type 1 test)  OSR8 - station,0.375,0.3,0.45,2019-06-25 08:00:00,2019-06-25 17:00:00,,0
1348,1.1.1.4.9.1.1.8.9,SAT Roltrap (type 1 test)  OSR9 - station,0.375,0.3,0.45,2019-06-25 08:00:00,2019-06-25 17:00:00,,0
1349,1.1.1.4.9.1.1.8.10,SAT Roltrap (type 1 test)  ODR10 - station,0.375,0.3,0.45,2019-06-25 08:00:00,2019-06-25 17:00:00,,0
1350,1.1.1.4.9.1.1.8.11,SAT Roltrap (type 1 test)  OSR11 - station,0.375,0.3,0.45,2019-06-25 08:00:00,2019-06-25 17:00:00,,0
1351,1.1.1.4.9.1.1.8.12,SAT Roltrap (type 1 test)  OSR12 - station,0.375,0.3,0.45,2019-06-25 08:00:00,2019-06-25 17:00:00,,0
1352,1.1.1.4.9.1.1.8.13,SAT Roltrap (type 1 test)  OSR13 - station,0.375,0.3,0.45,2019-06-25 08:00:00,2019-06-25 17:00:00,,0
1353,1.1.1.4.9.1.1.8.14,SAT Roltrap (type 1 test)  ODR14 - station,12.375,9.9,14.85,2019-06-13 08:00:00,2019-06-25 17:00:00,,0
1354,1.1.1.4.9.1.1.8.15,SAT Roltrap (type 1 test)  OSR15 - station,12.375,9.9,14.85,2019-06-13 08:00:00,2019-06-25 17:00:00,,0
1355,1.1.1.4.9.1.1.8.16,SAT Roltrap (type 1 test)  ODR16 - station,12.375,9.9,14.85,2019-06-13 08:00:00,2019-06-25 17:00:00,,0
1356,1.1.1.4.9.1.1.8.17,SAT Roltrap (type 1 test)  OSR17 - station,12.375,9.9,14.85,2019-06-13 08:00:00,2019-06-25 17:00:00,,0
1357,1.1.1.4.9.1.1.8.18,SAT Roltrap (type 1 test)  ODR18 - station,0.375,0.3,0.45,2019-06-25 08:00:00,2019-06-25 17:00:00,,0
1358,1.1.1.4.9.1.1.8.19,SAT Roltrap (type 1 test)  OSR19 - station,0.375,0.3,0.45,2019-06-25 08:00:00,2019-06-25 17:00:00,,0
1359,1.1.1.4.9.1.1.8.20,RoltrapEiland (type 1 test) ODR1-lichtput,0.375,0.3,0.45,2019-06-25 08:00:00,2019-06-25 17:00:00,,0
1360,1.1.1.4.9.1.1.8.21,RoltrapEiland (type 1 test)  OSR2 - lichtput,0.375,0.3,0.45,2019-06-25 08:00:00,2019-06-25 17:00:00,,0
1361,1.1.1.4.9.1.1.8.22,RoltrapEiland (type 1 test)  OSR3 - lichtput,0.375,0.3,0.45,2019-06-25 08:00:00,2019-06-25 17:00:00,,0
1362,1.1.1.4.9.1.1.8.23,RoltrapEiland (type 1 test)  ODR4 - lichtput,0.375,0.3,0.45,2019-06-25 08:00:00,2019-06-25 17:00:00,,0
1363,1.1.1.4.9.1.1.8.24,RoltrapEiland (type 1 test)  OSR5 - lichtput,0.375,0.3,0.45,2019-06-25 08:00:00,2019-06-25 17:00:00,,0
1364,1.1.1.4.9.1.1.8.25,RoltrapEiland (type 1 test)  OSR6 - station,0.375,0.3,0.45,2019-06-25 08:00:00,2019-06-25 17:00:00,,0
1365,1.1.1.4.9.1.1.8.26,RoltrapEiland (type 1 test)  ODR7 - station,0.375,0.3,0.45,2019-06-25 08:00:00,2019-06-25 17:00:00,,0
1366,1.1.1.4.9.1.1.8.27,RoltrapEiland (type 1 test)  OSR8 - station,0.375,0.3,0.45,2019-06-25 08:00:00,2019-06-25 17:00:00,,0
1367,1.1.1.4.9.1.1.8.28,RoltrapEiland (type 1 test)  OSR9 - station,0.375,0.3,0.45,2019-06-25 08:00:00,2019-06-25 17:00:00,,0
1368,1.1.1.4.9.1.1.8.29,RoltrapEiland (type 1 test)  ODR10 - station,0.375,0.3,0.45,2019-06-25 08:00:00,2019-06-25 17:00:00,,0
1369,1.1.1.4.9.1.1.8.30,RoltrapEiland (type 1 test)  OSR11 - station,0.375,0.3,0.45,2019-06-25 08:00:00,2019-06-25 17:00:00,,0
1370,1.1.1.4.9.1.1.8.31,RoltrapEiland (type 1 test)  OSR12 - station,0.375,0.3,0.45,2019-06-25 08:00:00,2019-06-25 17:00:00,,0
1371,1.1.1.4.9.1.1.8.32,RoltrapEiland (type 1 test)  OSR13 - station,0.375,0.3,0.45,2019-06-25 08:00:00,2019-06-25 17:00:00,,0
1372,1.1.1.4.9.1.1.8.33,RoltrapEiland (type 1 test)  ODR14 - station,0.375,0.3,0.45,2019-06-25 08:00:00,2019-06-25 17:00:00,,0
1373,1.1.1.4.9.1.1.8.34,RoltrapEiland (type 1 test)  OSR15 - station,0.375,0.3,0.45,2019-06-25 08:00:00,2019-06-25 17:00:00,,0
1374,1.1.1.4.9.1.1.8.35,RoltrapEiland (type 1 test)  ODR16 - station,0.375,0.3,0.45,2019-06-25 08:00:00,2019-06-25 17:00:00,,0
1375,1.1.1.4.9.1.1.8.36,RoltrapEiland (type 1 test)  OSR17 - station,0.375,0.3,0.45,2019-06-25 08:00:00,2019-06-25 17:00:00,,0
1376,1.1.1.4.9.1.1.8.37,RoltrapEiland (type 1 test)  ODR18 - station,0.375,0.3,0.45,2019-06-25 08:00:00,2019-06-25 17:00:00,,0
1377,1.1.1.4.9.1.1.8.38,RoltrapEiland (type 1 test)  OSR19 - station,0.375,0.3,0.45,2019-06-25 08:00:00,2019-06-25 17:00:00,,0
1378,1.1.1.4.9.1.1.8.39,Alle type 1 testen roltrappen gereed,0.0,0.0,0.0,2019-06-25 17:00:00,2019-06-25 17:00:00,,0
1379,1.1.1.4.9.1.1.9,LIFTEN (3st),22.375,22.15,22.6,2019-07-01 08:00:00,2019-07-23 17:00:00,,0
1380,1.1.1.4.9.1.1.9.1,Uitvoeren type 1 test LIFT1,6.375,5.1,7.65,2019-07-17 08:00:00,2019-07-23 17:00:00,,0
1381,1.1.1.4.9.1.1.9.2,Uitvoeren type 1 test lifteiland LIFT1 en 2,0.375,0.3,0.45,2019-07-17 08:00:00,2019-07-17 17:00:00,,0
1382,1.1.1.4.9.1.1.9.3,Uitvoeren type 1 test LIFT 2,9.375,7.5,11.25,2019-07-01 08:00:00,2019-07-10 17:00:00,,0
1383,1.1.1.4.9.1.1.9.4,Uitvoeren type 1 test LIFT 3,9.375,7.5,11.25,2019-07-01 08:00:00,2019-07-10 17:00:00,,0
1384,1.1.1.4.9.1.1.9.5,Uitvoeren type 1 test lifteiland  LIFT 3,0.375,0.3,0.45,2019-07-01 08:00:00,2019-07-01 17:00:00,,0
1385,1.1.1.4.9.1.1.10,GASBLUSSING (1st),0.375,0.37,0.38,2019-07-16 08:00:00,2019-07-16 17:00:00,,0
1386,1.1.1.4.9.1.1.10.1,Uitvoeren type 1 test Gasblussing Uitrustingszaal,0.375,0.3,0.45,2019-07-16 08:00:00,2019-07-16 17:00:00,,0
1387,1.1.1.4.9.1.1.11,ROOKSCHERMEN (45st),14.0,13.86,14.14,2019-05-10 17:00:00,2019-05-24 17:00:00,,0
1388,1.1.1.4.9.1.1.11.1,Mijlp: Start testen rookgordijnen Deel 2,0.0,0.0,0.0,2019-05-17 17:00:00,2019-05-17 17:00:00,,0
1389,1.1.1.4.9.1.1.11.2,SAT (type 1 test)  - rookgordijn 03++1ST+RS1 – station,0.16666666670062114,0.13,0.2,2019-05-20 08:00:00,2019-05-20 12:00:00,,0
1390,1.1.1.4.9.1.1.11.3,SAT (type 1 test)  - rookgordijn 03++1ST+RS2 – station,0.16666666670062114,0.13,0.2,2019-05-20 08:00:00,2019-05-20 12:00:00,,0
1391,1.1.1.4.9.1.1.11.4,SAT (type 1 test)  - rookgordijn 03++1ST+RS3 – station,0.16666666670062114,0.13,0.2,2019-05-20 08:00:00,2019-05-20 12:00:00,,0
1392,1.1.1.4.9.1.1.11.5,SAT (type 1 test)  - rookgordijn 03++1ST+RS4 – station,0.16666666670062114,0.13,0.2,2019-05-20 08:00:00,2019-05-20 12:00:00,,0
1393,1.1.1.4.9.1.1.11.6,"Mijlpaal SAT rookgordijnen 1ST RS1, RS2, RS3 en RS4 afgerond",0.0,0.0,0.0,2019-05-20 12:00:00,2019-05-20 12:00:00,,0
1394,1.1.1.4.9.1.1.11.7,SAT (type 1 test)  - rookgordijn 03++2PN+RS1 – station,0.16666666670062114,0.13,0.2,2019-05-20 08:00:00,2019-05-20 12:00:00,,0
1395,1.1.1.4.9.1.1.11.8,SAT (type 1 test)  - rookgordijn 03++2PN+RS2 – station,0.16666666670062114,0.13,0.2,2019-05-20 08:00:00,2019-05-20 12:00:00,,0
1396,1.1.1.4.9.1.1.11.9,SAT (type 1 test)  - rookgordijn 03++2PN+RS3 – station,0.16666666670062114,0.13,0.2,2019-05-20 08:00:00,2019-05-20 12:00:00,,0
1397,1.1.1.4.9.1.1.11.10,SAT (type 1 test)  - rookgordijn 03++2PN+RS4 – station,0.16666666670062114,0.13,0.2,2019-05-20 08:00:00,2019-05-20 12:00:00,,0
1398,1.1.1.4.9.1.1.11.11,SAT (type 1 test)  - rookgordijn 03++2PN+RS5 – station,0.16666666670062114,0.13,0.2,2019-05-20 08:00:00,2019-05-20 12:00:00,,0
1399,1.1.1.4.9.1.1.11.12,SAT (type 1 test)  - rookgordijn 03++2PN+RS6 – station,0.16666666670062114,0.13,0.2,2019-05-20 08:00:00,2019-05-20 12:00:00,,0
1400,1.1.1.4.9.1.1.11.13,SAT (type 1 test)  - rookgordijn 03++2PN+RS7 – station,0.16666666670062114,0.13,0.2,2019-05-20 08:00:00,2019-05-20 12:00:00,,0
1401,1.1.1.4.9.1.1.11.14,SAT (type 1 test)  - rookgordijn 03++2PN+RS8 – station,0.16666666670062114,0.13,0.2,2019-05-20 08:00:00,2019-05-20 12:00:00,,0
1402,1.1.1.4.9.1.1.11.15,SAT (type 1 test)  - rookgordijn 03++2PN+RS9 – station,0.16666666670062114,0.13,0.2,2019-05-20 08:00:00,2019-05-20 12:00:00,,0
1403,1.1.1.4.9.1.1.11.16,SAT (type 1 test)  - rookgordijn 03++2PN+RS17 – station,0.16666666670062114,0.13,0.2,2019-05-20 08:00:00,2019-05-20 12:00:00,,0
1404,1.1.1.4.9.1.1.11.17,SAT (type 1 test)  - rookgordijn 03++2PN+RS18 – station,0.16666666670062114,0.13,0.2,2019-05-20 08:00:00,2019-05-20 12:00:00,,0
1405,1.1.1.4.9.1.1.11.18,"Mijlpaal SAT rookgordijnen 2PN: RS1, 2, 3, 4, 5, 6, 7, 8, 9, 17, 18, en 21 afgerond",0.0,0.0,0.0,2019-05-20 12:00:00,2019-05-20 12:00:00,,0
1406,1.1.1.4.9.1.1.11.19,SAT (type 1 test)  - rookgordijn 03++2PZ+RS10 – station,0.16666666670062114,0.13,0.2,2019-05-20 08:00:00,2019-05-20 12:00:00,,0
1407,1.1.1.4.9.1.1.11.20,SAT (type 1 test)  - rookgordijn 03++2PZ+RS11 – station,0.16666666670062114,0.13,0.2,2019-05-20 08:00:00,2019-05-20 12:00:00,,0
1408,1.1.1.4.9.1.1.11.21,SAT (type 1 test)  - rookgordijn 03++2PZ+RS12 – station,0.16666666670062114,0.13,0.2,2019-05-20 08:00:00,2019-05-20 12:00:00,,0
1409,1.1.1.4.9.1.1.11.22,SAT (type 1 test)  - rookgordijn 03++2PZ+RS13 – station,0.16666666670062114,0.13,0.2,2019-05-20 08:00:00,2019-05-20 12:00:00,,0
1410,1.1.1.4.9.1.1.11.23,SAT (type 1 test)  - rookgordijn 03++2PZ+RS14 – station,0.16666666670062114,0.13,0.2,2019-05-20 08:00:00,2019-05-20 12:00:00,,0
1411,1.1.1.4.9.1.1.11.24,SAT (type 1 test)  - rookgordijn 03++2PZ+RS15 – station,0.16666666670062114,0.13,0.2,2019-05-20 08:00:00,2019-05-20 12:00:00,,0
1412,1.1.1.4.9.1.1.11.25,SAT (type 1 test)  - rookgordijn 03++2PZ+RS16 – station,0.16666666670062114,0.13,0.2,2019-05-20 08:00:00,2019-05-20 12:00:00,,0
1413,1.1.1.4.9.1.1.11.26,SAT (type 1 test)  - rookgordijn 03++2PZ+RS19 – station,0.16666666670062114,0.13,0.2,2019-05-20 08:00:00,2019-05-20 12:00:00,,0
1414,1.1.1.4.9.1.1.11.27,SAT (type 1 test)  - rookgordijn 03++2PZ+RS20 – station,0.16666666670062114,0.13,0.2,2019-05-20 08:00:00,2019-05-20 12:00:00,,0
1415,1.1.1.4.9.1.1.11.28,"Mijlp SAT rookgord 2PZ RS10, 11, 12, 13, 14, 16, 16, 19 20 en PA RS22 en 23 afgerond",0.0,0.0,0.0,2019-05-20 12:00:00,2019-05-20 12:00:00,,0
1416,1.1.1.4.9.1.1.11.29,Mijlp: Start testen rookgordijnen Deel 1,0.0,0.0,0.0,2019-05-10 17:00:00,2019-05-10 17:00:00,,0
1417,1.1.1.4.9.1.1.11.30,SAT (type 1 test)  - rookgordijn 03++3PO+RS1 – station,0.16666666670062114,0.13,0.2,2019-05-13 08:00:00,2019-05-13 12:00:00,,0
1418,1.1.1.4.9.1.1.11.31,SAT (type 1 test)  - rookgordijn 03++3PW+RS3 – station,0.16666666670062114,0.13,0.2,2019-05-13 08:00:00,2019-05-13 12:00:00,,0
1419,1.1.1.4.9.1.1.11.32,SAT (type 1 test)  - rookgordijn 03++3PW+RS4 – station,0.16666666670062114,0.13,0.2,2019-05-13 08:00:00,2019-05-13 12:00:00,,0
1420,1.1.1.4.9.1.1.11.33,SAT (type 1 test)  - rookgordijn 03++3PW+RS5 – station,0.16666666670062114,0.13,0.2,2019-05-13 08:00:00,2019-05-13 12:00:00,,0
1421,1.1.1.4.9.1.1.11.34,SAT (type 1 test)  - rookgordijn 03++3PO+RS6 – station,0.16666666670062114,0.13,0.2,2019-05-13 08:00:00,2019-05-13 12:00:00,,0
1422,1.1.1.4.9.1.1.11.35,SAT (type 1 test)  - rookgordijn 03++3PO+RS7 – station,0.16666666670062114,0.13,0.2,2019-05-13 08:00:00,2019-05-13 12:00:00,,0
1423,1.1.1.4.9.1.1.11.36,SAT (type 1 test)  - rookgordijn 03++3PO+RS8 – station,0.16666666670062114,0.13,0.2,2019-05-13 08:00:00,2019-05-13 12:00:00,,0
1424,1.1.1.4.9.1.1.11.37,SAT (type 1 test)  - rookgordijn 03++3PO+RS9 – station,0.16666666670062114,0.13,0.2,2019-05-13 08:00:00,2019-05-13 12:00:00,,0
1425,1.1.1.4.9.1.1.11.38,SAT (type 1 test)  - rookgordijn 03++3PO+RS10 – station,0.16666666670062114,0.13,0.2,2019-05-13 08:00:00,2019-05-13 12:00:00,,0
1426,1.1.1.4.9.1.1.11.39,SAT (type 1 test)  - rookgordijn 03++3PO+RS11 – station,0.16666666670062114,0.13,0.2,2019-05-13 08:00:00,2019-05-13 12:00:00,,0
1427,1.1.1.4.9.1.1.11.40,SAT (type 1 test)  - rookgordijn 03++3PO+RS12 – station,0.16666666670062114,0.13,0.2,2019-05-13 08:00:00,2019-05-13 12:00:00,,0
1428,1.1.1.4.9.1.1.11.41,SAT (type 1 test)  - rookgordijn 03++3PO+RS13 – station,0.16666666670062114,0.13,0.2,2019-05-13 08:00:00,2019-05-13 12:00:00,,0
1429,1.1.1.4.9.1.1.11.42,SAT (type 1 test)  - rookgordijn 03++3PO+RS14 – station,0.16666666670062114,0.13,0.2,2019-05-13 08:00:00,2019-05-13 12:00:00,,0
1430,1.1.1.4.9.1.1.11.43,SAT (type 1 test)  - rookgordijn 03++3PW+RS15 – station,0.16666666670062114,0.13,0.2,2019-05-13 08:00:00,2019-05-13 12:00:00,,0
1431,1.1.1.4.9.1.1.11.44,SAT (type 1 test)  - rookgordijn 03++3PW+RS16 – station,0.16666666670062114,0.13,0.2,2019-05-13 08:00:00,2019-05-13 12:00:00,,0
1432,1.1.1.4.9.1.1.11.45,SAT (type 1 test)  - rookgordijn 03++3PW+RS17 – station,0.16666666670062114,0.13,0.2,2019-05-13 08:00:00,2019-05-13 12:00:00,,0
1433,1.1.1.4.9.1.1.11.46,SAT (type 1 test)  - rookgordijn 03++3PW+RS18 – station,0.16666666670062114,0.13,0.2,2019-05-13 08:00:00,2019-05-13 12:00:00,,0
1434,1.1.1.4.9.1.1.11.47,SAT (type 1 test)  - rookgordijn 03++3PW+RS19 – station,0.16666666670062114,0.13,0.2,2019-05-13 08:00:00,2019-05-13 12:00:00,,0
1435,1.1.1.4.9.1.1.11.48,mijlp: alle rookgordijnen gereed voor type 2 testen,0.0,0.0,0.0,2019-05-24 17:00:00,2019-05-24 17:00:00,,0
1436,1.1.1.4.9.1.1.12,Uitvoeren type 1 test ROOKLUIK LICHTPUT (1st),38.375,30.7,46.05,2019-05-14 08:00:00,2019-06-21 17:00:00,,0
1437,1.1.1.4.9.1.1.13,Uitvoeren type 1 test PIJL KRUIS BORDEN (8st),12.375,9.9,14.85,2019-08-14 08:00:00,2019-08-26 17:00:00,,0
1438,1.1.1.4.9.1.1.14,POORTEN (22st),114.375,113.23,115.52,2019-03-19 08:00:00,2019-07-11 17:00:00,,0
1439,1.1.1.4.9.1.1.14.1,SAT (type 1 test) - vouwdeur Teniers noord,0.375,0.3,0.45,2019-03-29 08:00:00,2019-03-29 17:00:00,,0
1440,1.1.1.4.9.1.1.14.2,SAT (type 1 test) - vouwdeur Teniers zuid,0.375,0.3,0.45,2019-03-29 08:00:00,2019-03-29 17:00:00,,0
1441,1.1.1.4.9.1.1.14.3,SAT (type 1 test) - vouwdeur Frankrijklei,0.375,0.3,0.45,2019-03-29 08:00:00,2019-03-29 17:00:00,,0
1442,1.1.1.4.9.1.1.14.4,SAT (type 1 test) - vouwdeur Keyserlei,0.375,0.3,0.45,2019-03-29 08:00:00,2019-03-29 17:00:00,,0
1443,1.1.1.4.9.1.1.14.5,Type 1 test afsluitpoort 03++0.01+AP1 - lichtput,0.375,0.3,0.45,2019-07-11 08:00:00,2019-07-11 17:00:00,,0
1444,1.1.1.4.9.1.1.14.6,Type 1 test afsluitpoort 03++0.01+AP2 - lichtput,0.375,0.3,0.45,2019-07-11 08:00:00,2019-07-11 17:00:00,,0
1445,1.1.1.4.9.1.1.14.7,Type 1 test afsluitpoort 03++1.46+AP6 - station,0.375,0.3,0.45,2019-03-19 08:00:00,2019-03-19 17:00:00,,0
1446,1.1.1.4.9.1.1.14.8,Type 1 test afsluitpoort 03++1.47+AP7 - fietsenstalling,0.375,0.3,0.45,2019-03-19 08:00:00,2019-03-19 17:00:00,,0
1447,1.1.1.4.9.1.1.14.9,Type 1 test afsluitpoort 03++1.46+AP8 - station,0.375,0.3,0.45,2019-03-19 08:00:00,2019-03-19 17:00:00,,0
1448,1.1.1.4.9.1.1.14.10,Type 1 test afsluitpoort 03++1.46+AP9 - fietsenstalling,0.375,0.3,0.45,2019-03-19 08:00:00,2019-03-19 17:00:00,,0
1449,1.1.1.4.9.1.1.14.11,Type 1 test afsluitpoort 03++1.46+AP10 - station,0.375,0.3,0.45,2019-07-03 08:00:00,2019-07-03 17:00:00,,0
1450,1.1.1.4.9.1.1.14.12,Type 1 test afsluitpoort 03++1.51+AP4 - station,0.375,0.3,0.45,2019-06-17 08:00:00,2019-06-17 17:00:00,,0
1451,1.1.1.4.9.1.1.14.13,Type 1 test afsluitpoort 03++1.51+AP5 - station,0.375,0.3,0.45,2019-07-03 08:00:00,2019-07-03 17:00:00,,0
1452,1.1.1.4.9.1.1.14.14,Type 1 test afsluitpoort 03++1.52+AP1 - lichtput,0.375,0.3,0.45,2019-06-17 08:00:00,2019-06-17 17:00:00,,0
1453,1.1.1.4.9.1.1.14.15,Type 1 test afsluitpoort 03++1.52+AP2 - lichtput,0.375,0.3,0.45,2019-07-11 08:00:00,2019-07-11 17:00:00,,0
1454,1.1.1.4.9.1.1.14.16,Type 1 test afsluitpoort 03++1.52+AP3 - lichtput,0.375,0.3,0.45,2019-07-03 08:00:00,2019-07-03 17:00:00,,0
1455,1.1.1.4.9.1.1.14.17,Type 1 test afsluitpoort 03++2.33+AP1 - lichtput,0.375,0.3,0.45,2019-06-17 08:00:00,2019-06-17 17:00:00,,0
1456,1.1.1.4.9.1.1.14.18,Type 1 test afsluitpoort 03++2.33+AP2 - lichtput,0.375,0.3,0.45,2019-06-17 08:00:00,2019-06-17 17:00:00,,0
1457,1.1.1.4.9.1.1.14.19,Type 1 test afsluitpoort 03++2.33+AP3 - lichtput,0.375,0.3,0.45,2019-06-17 08:00:00,2019-06-17 17:00:00,,0
1458,1.1.1.4.9.1.1.14.20,Type 1 test afsluitpoort 03++2.33+AP4 - lichtput,0.375,0.3,0.45,2019-06-17 08:00:00,2019-06-17 17:00:00,,0
1459,1.1.1.4.9.1.1.14.21,Type 1 test afsluitpoort 03++3.21+AP1 - lichtput,0.375,0.3,0.45,2019-07-11 08:00:00,2019-07-11 17:00:00,,0
1460,1.1.1.4.9.1.1.14.22,Type 1 test afsluitpoort 03++3.21+AP2 - lichtput,0.375,0.3,0.45,2019-07-11 08:00:00,2019-07-11 17:00:00,,0
1461,1.1.1.4.9.1.1.14.23,Einde type 1 testen afsluitpoorten,0.0,0.0,0.0,2019-07-11 17:00:00,2019-07-11 17:00:00,,0
1462,1.1.1.4.9.1.1.15,HVAC (4st),10.0,9.9,10.1,2019-06-17 17:00:00,2019-06-27 17:00:00,,0
1463,1.1.1.4.9.1.1.15.1,Start type 1 testen alle HVAC,0.0,0.0,0.0,2019-06-17 17:00:00,2019-06-17 17:00:00,,0
1464,1.1.1.4.9.1.1.15.2,Uitvoeren type 1 test HVAC1 - luchtgroep 2 - BOCV2,0.375,0.3,0.45,2019-06-27 08:00:00,2019-06-27 17:00:00,,0
1465,1.1.1.4.9.1.1.15.3,Uitvoeren type 1 test HVAC2 - luchtgroep 4 / extractie 5.1 - BOCV4-CV5,0.375,0.3,0.45,2019-06-27 08:00:00,2019-06-27 17:00:00,,0
1466,1.1.1.4.9.1.1.15.4,Uitvoeren type 1 test HVAC3 - luchtgroep 1 / extractie 5.2 BOCV1-BOCV6,0.375,0.3,0.45,2019-06-27 08:00:00,2019-06-27 17:00:00,,0
1467,1.1.1.4.9.1.1.15.5,Uitvoeren type 1 test HVAC5 - luchtgroep 3 / extractie 3.2-3.2-3.3 BOCV3,0.375,0.3,0.45,2019-06-27 08:00:00,2019-06-27 17:00:00,,0
1468,1.1.1.4.9.1.1.15.6,Uitvoeren type 1 test Alle HVAC type 1 getest,0.0,0.0,0.0,2019-06-27 17:00:00,2019-06-27 17:00:00,,0
1469,1.1.1.4.9.1.1.16,RWA (3st),45.375,44.92,45.83,2019-04-12 08:00:00,2019-05-27 17:00:00,,0
1470,1.1.1.4.9.1.1.16.1,Uitvoeren type 1 test Extractieventilator RWA Open Helling,3.375,2.7,4.05,2019-04-12 08:00:00,2019-04-15 17:00:00,,0
1471,1.1.1.4.9.1.1.16.2,Uitvoeren type 1 test Extractieventilator RWA vluchtweg 6,0.375,0.3,0.45,2019-05-27 08:00:00,2019-05-27 17:00:00,,0
1472,1.1.1.4.9.1.1.16.3,Uitvoeren type 1 test Extractieventilator RWA vluchtweg 7,0.375,0.3,0.45,2019-05-27 08:00:00,2019-05-27 17:00:00,,0
1473,1.1.1.4.9.1.1.17,BoNu borden (Bord Nooduit bord),1.375,1.36,1.39,2019-07-04 08:00:00,2019-07-05 17:00:00,,0
1474,1.1.1.4.9.1.1.17.1,"Uitvoeren type 1 test BoNu borden (Bord Nooduit bord) (wordt meegetest met stuurbord, dus geen aparte documenten)",1.375,1.1,1.65,2019-07-04 08:00:00,2019-07-05 17:00:00,,0
1475,1.1.1.4.9.1.1.18,BBI (1st),0.375,0.37,0.38,2019-07-01 08:00:00,2019-07-01 17:00:00,,0
1476,1.1.1.4.9.1.1.18.1,Uitvoeren type 1 test drukverhogingspomp P6 (BrandBlusInstallatie),0.375,0.3,0.45,2019-07-01 08:00:00,2019-07-01 17:00:00,,0
1477,1.1.1.4.9.1.1.19,POMPEN (10st),84.0,83.16,84.84,2019-05-30 17:00:00,2019-08-22 17:00:00,,0
1478,1.1.1.4.9.1.1.19.1,Start type 1 testen pompen,0.0,0.0,0.0,2019-05-30 17:00:00,2019-05-30 17:00:00,,0
1479,1.1.1.4.9.1.1.19.2,Uitvoeren type 1 test Regenwaterpomp PS Oost P2,0.375,0.3,0.45,2019-07-08 08:00:00,2019-07-08 17:00:00,,0
1480,1.1.1.4.9.1.1.19.3,Uitvoeren type 1 test Regenwaterpomp PS West P3,0.375,0.3,0.45,2019-07-08 08:00:00,2019-07-08 17:00:00,,0
1481,1.1.1.4.9.1.1.19.4,Uitvoeren type 1 test Droogweer afvoer PS niv-2 P4  (fecaal- en afvalwater),3.375,2.7,4.05,2019-06-28 08:00:00,2019-07-01 17:00:00,,0
1482,1.1.1.4.9.1.1.19.5,Uitvoeren type 1 test Droogweer afvoer PS niv-3 P5  (fecaal- en afvalwater),3.375,2.7,4.05,2019-06-28 08:00:00,2019-07-01 17:00:00,,0
1483,1.1.1.4.9.1.1.19.6,SAT (type 1 test)  - opvoerpomp kl. debiet -2 teniers noord - station,0.375,0.3,0.45,2019-07-02 08:00:00,2019-07-02 17:00:00,,0
1484,1.1.1.4.9.1.1.19.7,SAT (type 1 test)  - opvoerpomp kl. debiet -2 teniers zuid - station,0.375,0.3,0.45,2019-07-02 08:00:00,2019-07-02 17:00:00,,0
1485,1.1.1.4.9.1.1.19.8,SAT (type 1 test)  - opvoerpomp kl. debiet -3 premetro noord - station,0.375,0.3,0.45,2019-07-10 08:00:00,2019-07-10 17:00:00,,0
1486,1.1.1.4.9.1.1.19.9,SAT (type 1 test)  - opvoerpomp kl. debiet -3 premetro oost - station,0.375,0.3,0.45,2019-07-10 08:00:00,2019-07-10 17:00:00,,0
1487,1.1.1.4.9.1.1.19.10,Uitvoeren type 1 test Telefonie-Installatie,0.375,0.3,0.45,2019-08-22 08:00:00,2019-08-22 17:00:00,,0
1488,1.1.1.4.9.2,TESTEN TYPE 2 (interface testen tussen technieken),129.375,128.08,130.67,2019-07-02 08:00:00,2019-11-08 17:00:00,,0
1489,1.1.1.4.9.2.1,Testen type 2 (interface testen tussen technieken),129.375,128.08,130.67,2019-07-02 08:00:00,2019-11-08 17:00:00,,0
1490,1.1.1.4.9.2.1.1,Start type 2 testen secundaire borden,0.0,0.0,0.0,2019-07-09 17:00:00,2019-07-09 17:00:00,,0
1491,1.1.1.4.9.2.1.2,Uitvoeren type 2 testen B1 (Secundair E-Bord) - STUURBORD - MASTER-PLC,0.375,0.3,0.45,2019-07-10 08:00:00,2019-07-10 17:00:00,,0
1492,1.1.1.4.9.2.1.3,Uitvoeren type 2 testen B2  (Secundair E-Bord) - STUURBORD - MASTER-PLC,0.0,0.0,0.0,2019-07-09 17:00:00,2019-07-09 17:00:00,,0
1493,1.1.1.4.9.2.1.4,Uitvoeren type 2 testen B3  (Secundair E-Bord) - STUURBORD - MASTER-PLC,0.375,0.3,0.45,2019-07-10 08:00:00,2019-07-10 17:00:00,,0
1494,1.1.1.4.9.2.1.5,Uitvoeren type 2 testen B4  (Secundair E-Bord) - STUURBORD - MASTER-PLC,0.375,0.3,0.45,2019-07-10 08:00:00,2019-07-10 17:00:00,,0
1495,1.1.1.4.9.2.1.6,Uitvoeren type 2 testen B5  (Secundair E-Bord) - STUURBORD - MASTER-PLC,0.375,0.3,0.45,2019-07-10 08:00:00,2019-07-10 17:00:00,,0
1496,1.1.1.4.9.2.1.7,Uitvoeren type 2 testen B6  (Secundair E-Bord) - STUURBORD - MASTER-PLC,0.375,0.3,0.45,2019-07-15 08:00:00,2019-07-15 17:00:00,,0
1497,1.1.1.4.9.2.1.8,Uitvoeren type 2 testen B7  (Secundair E-Bord) - STUURBORD - MASTER-PLC,0.375,0.3,0.45,2019-07-10 08:00:00,2019-07-10 17:00:00,,0
1498,1.1.1.4.9.2.1.9,Uitvoeren type 2 testen B8  (Secundair E-Bord) - STUURBORD - MASTER-PLC,0.375,0.3,0.45,2019-07-10 08:00:00,2019-07-10 17:00:00,,0
1499,1.1.1.4.9.2.1.10,Uitvoeren type 2 testen B9  (Secundair E-Bord) - STUURBORD - MASTER-PLC,0.375,0.3,0.45,2019-07-10 08:00:00,2019-07-10 17:00:00,,0
1500,1.1.1.4.9.2.1.11,Uitvoeren type 2 testen Alle type 2 testen secundaire borden succesvol uitgevoerd,0.0,0.0,0.0,2019-07-15 17:00:00,2019-07-15 17:00:00,,0
1501,1.1.1.4.9.2.1.12,Uitvoeren type 2 testen STUURBORD - Stationsbrandcentrale (Branddetectie),0.375,0.3,0.45,2019-08-13 08:00:00,2019-08-13 17:00:00,,0
1502,1.1.1.4.9.2.1.13,Uitvoeren type 2 test STUURBORD  - Tunnelbrandcentrale OH (Open Helling),0.375,0.3,0.45,2019-08-14 08:00:00,2019-08-14 17:00:00,,0
1503,1.1.1.4.9.2.1.14,Uitvoeren type 2 test STUURBORD  - Tunnelbrandcentrale bestaand - Meir,0.16666666670062114,0.13,0.2,2019-09-12 08:00:00,2019-09-12 12:00:00,,0
1504,1.1.1.4.9.2.1.15,Uitvoeren type 2 test STUURBORD  - Tunnelbrandcentrale bestaand - Diamant,0.16666666659875773,0.13,0.2,2019-09-12 13:00:00,2019-09-12 17:00:00,,0
1505,1.1.1.4.9.2.1.16,Uitvoeren type 2 test STUURBORD  - Gasblussing uitrustingszaal,0.375,0.3,0.45,2019-08-20 08:00:00,2019-08-20 17:00:00,,0
1506,1.1.1.4.9.2.1.17,Uitvoeren type 2 test STUURBORD  - MASTER-PLC,1.375,1.1,1.65,2019-07-16 08:00:00,2019-07-17 17:00:00,,0
1507,1.1.1.4.9.2.1.18,Einde type 2 testen Data netwerk,0.0,0.0,0.0,2019-09-12 17:00:00,2019-09-12 17:00:00,,0
1508,1.1.1.4.9.2.1.19,Uitvoeren type 2 test STUURBORD  - RWA - MASTER-PLC,1.375,1.1,1.65,2019-07-31 08:00:00,2019-08-01 17:00:00,,0
1509,1.1.1.4.9.2.1.20,Uitvoeren type 2 test STUURBORD  - HVAC - MASTER-PLC,1.375,1.1,1.65,2019-07-02 08:00:00,2019-07-03 17:00:00,,0
1510,1.1.1.4.9.2.1.21,Uitvoeren type 2 test STUURBORD  - BBI - MASTER-PLC,4.375,3.5,5.25,2019-07-18 08:00:00,2019-07-22 17:00:00,,0
1511,1.1.1.4.9.2.1.22,Uitvoeren type 2 test STUURBORD  - POMPEN - MASTER-PLC,4.375,3.5,5.25,2019-08-23 08:00:00,2019-08-27 17:00:00,,0
1512,1.1.1.4.9.2.1.23,Uitvoeren type 2 test STUURBORD  - Poorten - MASTER-PLC (afsluithekken én vouwdeuren),6.375,5.1,7.65,2019-07-12 08:00:00,2019-07-18 17:00:00,,0
1513,1.1.1.4.9.2.1.24,STUURBORD - Rookluik - MASTER-PLC,1.375,1.1,1.65,2019-07-10 08:00:00,2019-07-11 17:00:00,,0
1514,1.1.1.4.9.2.1.25,Uitvoeren type 2 test STUURBORD  - Lichtkranten ,0.375,0.3,0.45,2019-09-10 08:00:00,2019-09-10 17:00:00,,0
1515,1.1.1.4.9.2.1.26,Uitvoeren type 2 test STUURBORD  - Rookschermen,23.375,18.7,28.05,2019-08-12 08:00:00,2019-09-04 17:00:00,,0
1516,1.1.1.4.9.2.1.27,Uitvoeren type 2 test STUURBORD  - Trapontdooiing,0.375,0.3,0.45,2019-07-23 08:00:00,2019-07-23 17:00:00,,0
1517,1.1.1.4.9.2.1.28,Uitvoeren type 2 test STUURBORD  - ONTRUIMING,0.375,0.3,0.45,2019-08-20 08:00:00,2019-08-20 17:00:00,,0
1518,1.1.1.4.9.2.1.29,Uitvoeren type 2 testen MASTER-PLC - HS (HoogSpanning) / NO BREAK / TRANSFO,1.375,1.1,1.65,2019-07-03 08:00:00,2019-07-04 17:00:00,,0
1519,1.1.1.4.9.2.1.30,Uitvoeren type 2 testen MASTER-PLC - Datarack omroep,0.375,0.3,0.45,2019-07-31 08:00:00,2019-07-31 17:00:00,,0
1520,1.1.1.4.9.2.1.31,Uitvoeren type 2 testen MASTER-PLC - Datarack Radiocom,0.375,0.3,0.45,2019-08-22 08:00:00,2019-08-22 17:00:00,,0
1521,1.1.1.4.9.2.1.32,Uitvoeren type 2 testen MASTER-PLC - Datarack CCTV,0.375,0.3,0.45,2019-11-08 08:00:00,2019-11-08 17:00:00,,0
1522,1.1.1.4.9.2.1.33,Uitvoeren type 2 testen MASTER-PLC - Supervisie De Lijn,0.375,0.3,0.45,2019-08-29 08:00:00,2019-08-29 17:00:00,,0
1523,1.1.1.4.9.2.1.34,Uitvoeren type 2 testen IJL KRUIS BORDEN-STUURBORD,0.375,0.3,0.45,2019-08-27 08:00:00,2019-08-27 17:00:00,,0
1524,1.1.1.4.9.2.1.35,Einde  type 2 testen deelinstallaties excl Data en VVDK,0.0,0.0,0.0,2019-11-08 17:00:00,2019-11-08 17:00:00,,0
1525,1.1.1.4.9.2.1.36,Alle type 2 testen uitgevoerd,0.0,0.0,0.0,2019-11-08 17:00:00,2019-11-08 17:00:00,,0
1526,1.1.1.4.9.2.1.37,ROLTRAPPEN,0.375,0.37,0.38,2019-07-31 08:00:00,2019-07-31 17:00:00,,0
1527,1.1.1.4.9.2.1.37.1,STUURBORD - Roltrappen - MASTER-PLC,0.375,0.3,0.45,2019-07-31 08:00:00,2019-07-31 17:00:00,,0
1528,1.1.1.4.9.2.1.37.2,ALLE Roltrappen - MASTER-PLC - LOKALE I/O,0.375,0.3,0.45,2019-07-31 08:00:00,2019-07-31 17:00:00,,0
1529,1.1.1.4.9.2.1.38,LIFTEN,5.375,5.32,5.43,2019-07-31 08:00:00,2019-08-05 17:00:00,,0
1530,1.1.1.4.9.2.1.38.1,STUURBORD - Liften - MASTER-PLC,0.375,0.3,0.45,2019-07-31 08:00:00,2019-07-31 17:00:00,,0
1531,1.1.1.4.9.2.1.38.2,LIFT1 - MASTER-PLC - LOKALE I/O,0.375,0.3,0.45,2019-08-01 08:00:00,2019-08-01 17:00:00,,0
1532,1.1.1.4.9.2.1.38.3,LIFT2 - MASTER-PLC - LOKALE I/O,0.375,0.3,0.45,2019-08-02 08:00:00,2019-08-02 17:00:00,,0
1533,1.1.1.4.9.2.1.38.4,LIFT3 - MASTER-PLC - LOKALE I/O,0.375,0.3,0.45,2019-08-05 08:00:00,2019-08-05 17:00:00,,0
1534,1.1.1.4.9.3,TESTEN TYPE 3 (supervisie testen),120.0,118.8,121.2,2019-07-11 17:00:00,2019-11-08 17:00:00,,0
1535,1.1.1.4.9.3.1,Testen type 3 testen,120.0,118.8,121.2,2019-07-11 17:00:00,2019-11-08 17:00:00,,0
1536,1.1.1.4.9.3.1.1,Start type 3 testen,0.0,0.0,0.0,2019-07-11 17:00:00,2019-07-11 17:00:00,,0
1537,1.1.1.4.9.3.1.2,Uitvoeren type 3 testen ATK (AfstandsToezichtsKast)- Supervisie De Lijn,1.375,1.1,1.65,2019-08-29 08:00:00,2019-08-30 17:00:00,,0
1538,1.1.1.4.9.3.1.3,Uitvoeren type 3 testen ATK (AfstandsToezichtsKast)- Supervisie MTC,2.375,1.9,2.85,2019-08-12 08:00:00,2019-08-14 17:00:00,,0
1539,1.1.1.4.9.3.1.4,Einde type 3 testen,0.0,0.0,0.0,2019-11-08 17:00:00,2019-11-08 17:00:00,,0
1540,1.1.1.4.9.4,TESTEN TYPE 4 (scenario testen),121.375,120.16,122.59,2019-06-03 08:00:00,2019-10-02 17:00:00,,0
1541,1.1.1.4.9.4.1,Documenten type 4 testen,121.375,120.16,122.59,2019-06-03 08:00:00,2019-10-02 17:00:00,,0
1542,1.1.1.4.9.4.1.1,Testprotocol type 4 testen (1st+ 7st),121.375,120.16,122.59,2019-06-03 08:00:00,2019-10-02 17:00:00,,0
1543,1.1.1.4.9.4.1.1.1,Keuringsplan ter en testplannen type 4 testen ter informatie bij OG,17.375,13.9,20.85,2019-06-03 08:00:00,2019-06-20 17:00:00,,0
1544,1.1.1.4.9.4.1.1.2,Verwerken opmerkingen OG  en Q-dienst op testprotocol en testplannen type 4 testen,2.375,1.9,2.85,2019-08-19 08:00:00,2019-08-21 17:00:00,,0
1545,1.1.1.4.9.4.1.1.3,keuringsplan en testplannen  type 4 testen ter acceptatie  bij OG,0.0,0.0,0.0,2019-08-21 17:00:00,2019-08-21 17:00:00,,0
1546,1.1.1.4.9.4.1.1.4,Acceptatietermijn keuringsplan en testplannen type 4 testen,41.375,33.1,49.65,2019-08-22 08:00:00,2019-10-02 17:00:00,,0
1547,1.1.1.4.9.4.1.1.5,keuringsplan en testplannen type 4 testen geaccepteerd door OG,0.0,0.0,0.0,2019-10-02 17:00:00,2019-10-02 17:00:00,,0
1548,1.1.1.4.9.4.1.2,Testrapporten type 4 testen (7st),1.375,1.36,1.39,2019-09-19 08:00:00,2019-09-20 17:00:00,,0
1549,1.1.1.4.9.4.1.2.1,"Testrapporten type 4 testen opgemaakt en geaccepteerd door testmanager TramContractors, MTC  én OG",0.375,0.3,0.45,2019-09-19 08:00:00,2019-09-19 17:00:00,,0
1550,1.1.1.4.9.4.1.2.2,Verwerken Testrapporten type 4 testen in kwaliteitssysteem (waarmee de eisen gevalideerd zijn),0.375,0.3,0.45,2019-09-20 08:00:00,2019-09-20 17:00:00,,0
1551,1.1.1.4.9.4.2,Testen type 4 testen,52.375,51.85,52.9,2019-08-06 08:00:00,2019-09-27 17:00:00,,0
1552,1.1.1.4.9.4.2.1,SIL-validatie,28.0,27.72,28.28,2019-08-30 17:00:00,2019-09-27 17:00:00,,0
1553,1.1.1.4.9.4.2.1.1,Start controle SIL  niveau door ProSafe,0.0,0.0,0.0,2019-08-30 17:00:00,2019-08-30 17:00:00,,0
1554,1.1.1.4.9.4.2.1.2,Uitvoeren SIL validatie RWA Open Helling,10.375,8.3,12.45,2019-09-02 08:00:00,2019-09-12 17:00:00,,0
1555,1.1.1.4.9.4.2.1.3,Uitvoeren SIL validatie Poort Open Helling,10.375,8.3,12.45,2019-09-02 08:00:00,2019-09-12 17:00:00,,0
1556,1.1.1.4.9.4.2.1.4,Uitvoeren SIL validatie Automatische poorten,10.375,8.3,12.45,2019-09-02 08:00:00,2019-09-12 17:00:00,,0
1557,1.1.1.4.9.4.2.1.5,Uitvoeren SIL validatie Vouwdeuren,10.375,8.3,12.45,2019-09-02 08:00:00,2019-09-12 17:00:00,,0
1558,1.1.1.4.9.4.2.1.6,Uitvoeren SIL validatie Manuele poorten,10.375,8.3,12.45,2019-09-02 08:00:00,2019-09-12 17:00:00,,0
1559,1.1.1.4.9.4.2.1.7,Uitvoeren SIL validatie Liften,10.375,8.3,12.45,2019-09-02 08:00:00,2019-09-12 17:00:00,,0
1560,1.1.1.4.9.4.2.1.8,Uitvoeren SIL validatie Vluchtwegverlichting Station,10.375,8.3,12.45,2019-09-02 08:00:00,2019-09-12 17:00:00,,0
1561,1.1.1.4.9.4.2.1.9,Uitvoeren SIL validatie Vluchtwegverlichting Tunnel,10.375,8.3,12.45,2019-09-02 08:00:00,2019-09-12 17:00:00,,0
1562,1.1.1.4.9.4.2.1.10,Uitvoeren SIL validatie Bebakeningsverlichting tunnel,10.375,8.3,12.45,2019-09-02 08:00:00,2019-09-12 17:00:00,,0
1563,1.1.1.4.9.4.2.1.11,Uitvoeren SIL validatie Omroepinstallatie,10.375,8.3,12.45,2019-09-02 08:00:00,2019-09-12 17:00:00,,0
1564,1.1.1.4.9.4.2.1.12,Uitvoeren SIL validatie Lichtkranten LUTO,10.375,8.3,12.45,2019-09-02 08:00:00,2019-09-12 17:00:00,,0
1565,1.1.1.4.9.4.2.1.13,SIL validatie gereed,7.375,5.9,8.85,2019-09-13 08:00:00,2019-09-20 17:00:00,,0
1566,1.1.1.4.9.4.2.1.14,Opmaken SIL certificaat door ProSafe en overmaken aan OG,4.375,3.5,5.25,2019-09-23 08:00:00,2019-09-27 17:00:00,,0
1567,1.1.1.4.9.4.2.2,Rondgang brandweer,0.375,0.37,0.38,2019-09-23 08:00:00,2019-09-23 17:00:00,,0
1568,1.1.1.4.9.4.2.2.1,Rondgang met brandweer uit hoofde van eis 07828 (verantwoording OG),0.375,0.3,0.45,2019-09-23 08:00:00,2019-09-23 17:00:00,,0
1569,1.1.1.4.9.4.2.3,"Brandscenario prétesten (alleen ON, OG wordt uitgenodigd aanwezig te zijn)",20.0,19.8,20.2,2019-08-16 17:00:00,2019-09-05 17:00:00,,0
1570,1.1.1.4.9.4.2.3.1,Start uitvoeren type 4 testen,0.0,0.0,0.0,2019-08-16 17:00:00,2019-08-16 17:00:00,,0
1571,1.1.1.4.9.4.2.3.2,Uitvoeren type 4 testen Scenario 1 (brand niv -1)(incl aanpassingen nav tijdens testen geconstateerde gebreken),16.375,13.1,19.65,2019-08-19 08:00:00,2019-09-04 17:00:00,,0
1572,1.1.1.4.9.4.2.3.3,Uitvoeren type 4 testen Scenario 2 (brand niv -2)(incl aanpassingen nav tijdens testen geconstateerde gebreken),16.375,13.1,19.65,2019-08-19 08:00:00,2019-09-04 17:00:00,,0
1573,1.1.1.4.9.4.2.3.4,Uitvoeren type 4 testen Scenario 3 (brand niv-3)(incl aanpassingen nav tijdens testen geconstateerde gebreken),16.375,13.1,19.65,2019-08-19 08:00:00,2019-09-04 17:00:00,,0
1574,1.1.1.4.9.4.2.3.5,Uitvoeren type 4 testen Scenario 4 (brand tunnels opera - meir niv-2)(incl aanpassingen nav tijdens testen geconstateerde gebreken),2.375,1.9,2.85,2019-09-02 08:00:00,2019-09-04 17:00:00,,0
1575,1.1.1.4.9.4.2.3.6,Uitvoeren type 4 testen Scenario 5 (brand tunnel opera - diamant niv-2)(incl aanpassingen nav tijdens testen geconstateerde gebreken),2.375,1.9,2.85,2019-09-02 08:00:00,2019-09-04 17:00:00,,0
1576,1.1.1.4.9.4.2.3.7,Uitvoeren type 4 testen Scenario 6 (brand tunnel open helling niv-3)(incl aanpassingen nav tijdens testen geconstateerde gebreken),17.375,13.9,20.85,2019-08-19 08:00:00,2019-09-05 17:00:00,,0
1577,1.1.1.4.9.4.2.3.8,"Uitvoeren type 4 testen Scenario 7, Evacuatie Station (met geselecteerd publiek)",17.375,13.9,20.85,2019-08-19 08:00:00,2019-09-05 17:00:00,,0
1578,1.1.1.4.9.4.2.3.9,Einde testen ON,0.0,0.0,0.0,2019-09-04 17:00:00,2019-09-04 17:00:00,,0
1579,1.1.1.4.9.4.2.4,Functionaliteitstesten,45.375,44.92,45.83,2019-08-06 08:00:00,2019-09-20 17:00:00,,0
1580,1.1.1.4.9.4.2.4.1,Uitvoeren functionaliteitstesten met klant,45.375,36.3,54.45,2019-08-06 08:00:00,2019-09-20 17:00:00,,0
1581,1.1.1.4.10,J) TESTEN OG,4.375,4.33,4.42,2019-09-16 08:00:00,2019-09-20 17:00:00,,0
1582,1.1.1.4.10.1,Brandscenario testen door OG,4.375,4.33,4.42,2019-09-16 08:00:00,2019-09-20 17:00:00,,0
1583,1.1.1.4.10.1.1,Scenario 1 (brand niv -1),4.375,3.5,5.25,2019-09-16 08:00:00,2019-09-20 17:00:00,,0
1584,1.1.1.4.10.1.2,Scenario 2 (brand niv -2),4.375,3.5,5.25,2019-09-16 08:00:00,2019-09-20 17:00:00,,0
1585,1.1.1.4.10.1.3,Scenario 3 (brand niv-3),4.375,3.5,5.25,2019-09-16 08:00:00,2019-09-20 17:00:00,,0
1586,1.1.1.4.10.1.4,Scenario 4 (brand tunnels opera - meir niv-2),4.375,3.5,5.25,2019-09-16 08:00:00,2019-09-20 17:00:00,,0
1587,1.1.1.4.10.1.5,Scenario 5 (brand tunnel opera - diamant niv-2),4.375,3.5,5.25,2019-09-16 08:00:00,2019-09-20 17:00:00,,0
1588,1.1.1.4.10.1.6,Scenario 6 (brand tunnel open helling niv-3),4.375,3.5,5.25,2019-09-16 08:00:00,2019-09-20 17:00:00,,0
1589,1.1.1.4.10.1.7,Scenario 7 Evacuatie Station (met geselecteerd publiek),0.375,0.3,0.45,2019-09-18 08:00:00,2019-09-18 17:00:00,,0
1590,1.1.1.4.11,K) OPLEIDING,50.375,49.87,50.88,2019-07-29 08:00:00,2019-09-17 17:00:00,,0
1591,1.1.1.4.11.1,Opleiding on site volgens Detailplanning Opleiding PreMetro Ondergronds,50.375,40.3,60.45,2019-07-29 08:00:00,2019-09-17 17:00:00,,0
1592,1.1.1.4.12,L) Opmaken CE en Arei-dossiers,83.375,82.54,84.21,2019-04-10 08:00:00,2019-07-02 17:00:00,,0
1593,1.1.1.4.12.1,Samenstellen CE-dossier,83.375,66.7,100.05,2019-04-10 08:00:00,2019-07-02 17:00:00,,0
1594,1.1.1.4.12.2,Samenstellen Arei-dossier (info bij FGI),83.375,66.7,100.05,2019-04-10 08:00:00,2019-07-02 17:00:00,,0
