node_id,wbs,task_name,duration,optimistic_time,pessimistic_time,baseline_start,baseline_end,resource_demand,total_cost
0,1,Project,1306.0,1306.0,1306.0,2016-03-01 08:00:00,2021-03-02 17:00:00,,6567
1,1.1,DP3-2 Parking Tunnels en Kipdorpsite,1306.0,1306.0,1306.0,2016-03-01 08:00:00,2021-03-02 17:00:00,,6567
2,1.1.1,"DP3 OPON (OPERAPLEIN ONDERGROND - Parking, Autotunnels en Kipdorpsite)",1306.0,1306.0,1306.0,2016-03-01 08:00:00,2021-03-02 17:00:00,,6567
3,1.1.1.1,START OPON,0.0,0.0,0.0,2016-03-01 08:00:00,2016-02-29 17:00:00,,0
4,1.1.1.2,FINISH OPON,0.0,0.0,0.0,2019-07-09 17:00:00,2019-07-09 17:00:00,,0
5,1.1.1.3,Extere relaties,537.0,537.0,537.0,2018-06-29 17:00:00,2020-07-21 17:00:00,,0
6,1.1.1.3.1,Inkomende relaties naar DP3,0.0,0.0,0.0,2019-03-01 17:00:00,2019-03-01 17:00:00,,0
7,1.1.1.3.1.1,RV016-2 uit DP2 naar DP3: Einde aanleg voetgangers en fietserscorridor - Start staal Kipdorpbrug,0.0,0.0,0.0,2019-03-01 17:00:00,2019-03-01 17:00:00,,0
8,1.1.1.3.2,Uitgaande relaties vanuit DP3-2,537.0,537.0,537.0,2018-06-29 17:00:00,2020-07-21 17:00:00,,0
9,1.1.1.3.2.1,RV016-1 uit DP3 naar DP2: Installatie bemaling verwijderd tbv bestrating,0.0,0.0,0.0,2019-02-15 17:00:00,2019-02-15 17:00:00,,0
10,1.1.1.3.2.2,"RV 6 naar DP2, Zone W9 en Lichtput gereed voor start bestrating ",0.0,0.0,0.0,2018-06-29 17:00:00,2018-06-29 17:00:00,,0
11,1.1.1.3.2.3,"RV 10 naar DP2, Zone W8 Keyserlei centraal gereed voor start bestrating",0.0,0.0,0.0,2018-09-21 17:00:00,2018-09-21 17:00:00,,0
12,1.1.1.3.2.4,"RV 11 naar DP2, Zone W5 Teniers zuid, gereed voor start bestrating",0.0,0.0,0.0,2018-10-05 17:00:00,2018-10-05 17:00:00,,0
13,1.1.1.3.2.5,"Contractmijlpaal uit DP3-2 naar BCT5, Tram Operaplen-Leien Noord Zuid",0.0,0.0,0.0,2019-07-18 17:00:00,2019-07-18 17:00:00,,0
14,1.1.1.3.2.6,"ContractMijlpaal uit DP3 naar VO-09b, Archeologische tuin Kipdorpbrug",0.0,0.0,0.0,2019-10-17 17:00:00,2019-10-17 17:00:00,,0
15,1.1.1.3.2.7,"ContracMijlpaal uit DP3 naar VO-11 light, Autotunnels (beperkte functionaliteit)",0.0,0.0,0.0,2019-09-04 17:00:00,2019-09-04 17:00:00,,0
16,1.1.1.3.2.8,"ContractMijlpaal uit DP3 naar VO-11 vol, Operaplein ondergrond tunnel",0.0,0.0,0.0,2020-01-14 10:00:00,2020-01-14 10:00:00,,0
17,1.1.1.3.2.9,ContractMijlpaal uit DP3-2 naar VO-13 Operaplein ondergrond Parking VÓÓR testen,0.0,0.0,0.0,2019-11-21 17:00:00,2019-11-21 17:00:00,,0
18,1.1.1.3.2.10,ContractMijlpaal uit DP3-2 naar VO-13 Operaplein ondergrond Parking NA testen,0.0,0.0,0.0,2020-03-26 17:00:00,2020-03-26 17:00:00,,0
19,1.1.1.3.2.11,"RV012 uit DP3-2 naar DP2, Logistieke opening gedicht (kraan- en strossgat)",0.0,0.0,0.0,2019-03-11 17:00:00,2019-03-11 17:00:00,,0
20,1.1.1.3.2.12,RV027 uit DP3 naar DP2: Einde Hijsactie 700T kraan Kipdorpbrug - Start Dwarskabels tbv Rd01 en Rd02,0.0,0.0,0.0,2019-03-28 17:00:00,2019-03-28 17:00:00,,0
21,1.1.1.3.2.13,"RV013 uit DP2 én DP3 naar DP1: DP1, DP2 én DP3 gereed voor afrol bovenleiding Rd-09 en Rd-10 (Kipdorpvest - Kipdorpbrug - tot nèt vóór Tunnelplaats)",0.0,0.0,0.0,2019-05-08 17:00:00,2019-05-08 17:00:00,,0
22,1.1.1.3.2.14,"RV014 uit DP3 naar DP2, Middenspanningscabine zuidhoek Kipdorpvest en Operaplein verwijderd",0.0,0.0,0.0,2019-06-28 17:00:00,2019-06-28 17:00:00,,0
23,1.1.1.3.2.15,"RV022, MP uit DP3-2 naar DP2: Staalwerk trambrug gereed - start Gemeentestraat fase J Kipdorpbrug-Operaplein en plaatsen sporen op trambrug",0.0,0.0,0.0,2019-05-06 17:00:00,2019-05-06 17:00:00,,0
24,1.1.1.3.2.16,"RV034, uit DP3-2 naar DP2: T28 Trappencomplex gereed- Start aanleg Perron Roosevelt",0.0,0.0,0.0,2020-07-21 17:00:00,2020-07-21 17:00:00,,0
25,1.1.1.3.2.17,RV029 uit DP3-2 naar DP2: Einde metselwerken archeologische brug - start ventweg werfdeel IV,0.0,0.0,0.0,2019-08-13 17:00:00,2019-08-13 17:00:00,,0
26,1.1.1.3.2.18,Inkomende relaties naar DP3-2,1.0,1.0,1.0,2019-09-03 08:00:00,2019-09-03 17:00:00,,0
27,1.1.1.3.2.18.1,RV013 uit DP3-1 naar DP3-2: Leuningen Lichtput af,1.0,0.8,1.2,2019-09-03 08:00:00,2019-09-03 17:00:00,,0
28,1.1.1.3.2.19,"RV023, MP uit DP3-2 naar DP2: Einde Betonstructuren ventweg west - start Ventweg Kipdorpbrug zuidwest",0.0,0.0,0.0,2019-02-01 17:00:00,2019-02-01 17:00:00,,0
29,1.1.1.3.2.20,"RV028, MP uit DP3-2 naar DP2: Einde keerconstructie trambaan O&W - Start fundering trambaan noord van Kipdorpbrug",0.0,0.0,0.0,2019-04-05 17:00:00,2019-04-05 17:00:00,,0
30,1.1.1.4,30 BOUWPLAATS,103.0,103.0,103.0,2019-02-06 08:00:00,2019-06-28 17:00:00,,0
31,1.1.1.4.1,Verwijderen middenspanningscabine Domino's Pizza (hoek Kipdorpvest - Operaplein) na gereed grootste deel werf (datum opgave KME 19.11.18),0.0,0.0,0.0,2019-06-28 17:00:00,2019-06-28 17:00:00,,0
32,1.1.1.4.2,Stapsgewijs afschakelen bemaling bouwput,6.0,4.8,7.2,2019-02-06 08:00:00,2019-02-13 17:00:00,,0
33,1.1.1.4.3,Verwijderen bemaling Domino's Pizza (Hoek Operaplein - Kipdorpvest),2.0,1.6,2.4,2019-02-14 08:00:00,2019-02-15 17:00:00,,0
34,1.1.1.5,32 PARKING & TUNNELS,1281.0,1281.0,1281.0,2016-04-05 08:00:00,2021-03-02 17:00:00,,6567
35,1.1.1.5.1,A) Parking,857.0,857.0,857.0,2017-08-28 08:00:00,2020-12-08 17:00:00,,4842
36,1.1.1.5.1.1,niv 0,503.0,503.0,503.0,2017-08-28 08:00:00,2019-07-31 17:00:00,,60
37,1.1.1.5.1.1.1,ruwbouw,503.0,503.0,503.0,2017-08-28 08:00:00,2019-07-31 17:00:00,,60
38,1.1.1.5.1.1.1.1,plaatsen balken 1e fase B89 tem B39(tem zone 10),17.0,13.6,20.4,2017-08-28 08:00:00,2017-09-19 17:00:00,,0
39,1.1.1.5.1.1.1.2,plaatsen oplegtoestellen,2.0,1.6,2.4,2017-11-30 08:00:00,2017-12-01 17:00:00,,0
40,1.1.1.5.1.1.1.3,plaatsen balken 2e fase B38 tem B13(tem zone 15),9.0,7.2,10.8,2017-10-23 08:00:00,2017-11-02 17:00:00,,0
41,1.1.1.5.1.1.1.4,plaatsen balken 3e fase B12 tem B1 (nacht),5.0,4.0,6.0,2017-12-04 08:00:00,2017-12-08 17:00:00,,0
42,1.1.1.5.1.1.1.5,eindbalken en dakplaat,98.0,98.0,98.0,2017-09-06 08:00:00,2018-01-19 17:00:00,,0
43,1.1.1.5.1.1.1.5.1,zone 1,8.0,6.4,9.6,2017-09-06 08:00:00,2017-09-15 17:00:00,,0
44,1.1.1.5.1.1.1.5.2,zone 2,5.0,4.0,6.0,2017-09-18 08:00:00,2017-09-22 17:00:00,,0
45,1.1.1.5.1.1.1.5.3,zone 3,5.0,4.0,6.0,2017-09-25 08:00:00,2017-09-29 17:00:00,,0
46,1.1.1.5.1.1.1.5.4,zone 4,5.0,4.0,6.0,2017-10-02 08:00:00,2017-10-06 17:00:00,,0
47,1.1.1.5.1.1.1.5.5,zone 5,5.0,4.0,6.0,2017-10-09 08:00:00,2017-10-13 17:00:00,,0
48,1.1.1.5.1.1.1.5.6,zone 6,5.0,4.0,6.0,2017-10-16 08:00:00,2017-10-20 17:00:00,,0
49,1.1.1.5.1.1.1.5.7,zone 7,5.0,4.0,6.0,2017-10-23 08:00:00,2017-10-27 17:00:00,,0
50,1.1.1.5.1.1.1.5.8,zone 8,5.0,4.0,6.0,2017-10-30 08:00:00,2017-11-03 17:00:00,,0
51,1.1.1.5.1.1.1.5.9,zone 9,5.0,4.0,6.0,2017-11-06 08:00:00,2017-11-10 17:00:00,,0
52,1.1.1.5.1.1.1.5.10,zone 10,5.0,4.0,6.0,2017-11-13 08:00:00,2017-11-17 17:00:00,,0
53,1.1.1.5.1.1.1.5.11,zone 11,5.0,4.0,6.0,2017-11-20 08:00:00,2017-11-24 17:00:00,,0
54,1.1.1.5.1.1.1.5.12,zone 12,5.0,4.0,6.0,2017-11-27 08:00:00,2017-12-01 17:00:00,,0
55,1.1.1.5.1.1.1.5.13,zone 13,5.0,4.0,6.0,2017-12-04 08:00:00,2017-12-08 17:00:00,,0
56,1.1.1.5.1.1.1.5.14,zone 14 (B20 tem B24),5.0,4.0,6.0,2017-12-11 08:00:00,2017-12-15 17:00:00,,0
57,1.1.1.5.1.1.1.5.15,zone 15,5.0,4.0,6.0,2017-12-18 08:00:00,2017-12-22 17:00:00,,0
58,1.1.1.5.1.1.1.5.16,zone 16 : ok,5.0,4.0,6.0,2017-12-25 08:00:00,2017-12-29 17:00:00,,0
59,1.1.1.5.1.1.1.5.17,zone 17,4.0,3.2,4.8,2018-01-12 08:00:00,2018-01-17 17:00:00,,0
60,1.1.1.5.1.1.1.5.18,zone 18 (B2 tem B4),2.0,1.6,2.4,2018-01-18 08:00:00,2018-01-19 17:00:00,,0
61,1.1.1.5.1.1.1.6,naspannen balken,113.0,113.0,113.0,2017-10-27 08:00:00,2018-04-03 17:00:00,,0
62,1.1.1.5.1.1.1.6.1,injecteren,20.0,16.0,24.0,2017-10-27 08:00:00,2017-11-23 17:00:00,,0
63,1.1.1.5.1.1.1.6.2,zone 1 en 2 (B89 tem B79) : OK,5.0,4.0,6.0,2018-01-30 08:00:00,2018-02-05 17:00:00,,0
64,1.1.1.5.1.1.1.6.3,zone 3 en 4 (B78 tem B68) : OK,5.0,4.0,6.0,2018-02-06 08:00:00,2018-02-12 17:00:00,,0
65,1.1.1.5.1.1.1.6.4,zone 5 en 6 (B67 tem B61) : OK,5.0,4.0,6.0,2018-02-13 08:00:00,2018-02-19 17:00:00,,0
66,1.1.1.5.1.1.1.6.5,zone 7 en 8 (B60 tem B50) : OK,5.0,4.0,6.0,2017-12-19 08:00:00,2017-12-25 17:00:00,,0
67,1.1.1.5.1.1.1.6.6,zone 9 en 10 (B49 tem B39) : OK,5.0,4.0,6.0,2017-12-26 08:00:00,2018-01-01 17:00:00,,0
68,1.1.1.5.1.1.1.6.7,zone 11 en 12 (B38 tem B28),5.0,4.0,6.0,2018-01-02 08:00:00,2018-01-08 17:00:00,,0
69,1.1.1.5.1.1.1.6.8,zone 13 (B27 tem B25),16.0,12.8,19.2,2018-01-09 08:00:00,2018-01-30 17:00:00,,0
70,1.1.1.5.1.1.1.6.9,zone 14 tem 18 (B24 tem B2),10.0,8.0,12.0,2018-03-21 08:00:00,2018-04-03 17:00:00,,0
71,1.1.1.5.1.1.1.7,afwerken scheenmuur,183.0,183.0,183.0,2017-12-26 08:00:00,2018-09-06 17:00:00,,0
72,1.1.1.5.1.1.1.7.1,zone 1 en 2 (B89 tem B79) : OK,5.0,4.0,6.0,2018-02-06 08:00:00,2018-02-12 17:00:00,,0
73,1.1.1.5.1.1.1.7.2,zone 3 en 4 (B78 tem B68) : OK,5.0,4.0,6.0,2018-02-13 08:00:00,2018-02-19 17:00:00,,0
74,1.1.1.5.1.1.1.7.3,zone 5 en 6 (B67 tem B61) (predecessors : 21468),5.0,4.0,6.0,2018-01-15 08:00:00,2018-01-19 17:00:00,,0
75,1.1.1.5.1.1.1.7.4,zone 7 en 8 (B60 tem B50),5.0,4.0,6.0,2017-12-26 08:00:00,2018-01-01 17:00:00,,0
76,1.1.1.5.1.1.1.7.5,zone 9 en 10 (B49 tem B39),5.0,4.0,6.0,2018-01-02 08:00:00,2018-01-08 17:00:00,,0
77,1.1.1.5.1.1.1.7.6,zone 11 en 12 (B38 tem B28),5.0,4.0,6.0,2018-01-09 08:00:00,2018-01-15 17:00:00,,0
78,1.1.1.5.1.1.1.7.7,zone 13 (B27 tem B25),3.0,2.4,3.6,2018-01-16 08:00:00,2018-01-18 17:00:00,,0
79,1.1.1.5.1.1.1.7.8,zone 14 tem 18 (B24 tem B2),112.0,89.6,134.4,2018-04-04 08:00:00,2018-09-06 17:00:00,,0
80,1.1.1.5.1.1.1.8,aanbrengen waterdichting,396.0,396.0,396.0,2018-01-02 08:00:00,2019-07-09 17:00:00,,60
81,1.1.1.5.1.1.1.8.1,zone 1 en 2 (B89 tem B79),5.0,4.0,6.0,2018-02-13 08:00:00,2018-02-19 17:00:00,,0
82,1.1.1.5.1.1.1.8.2,kogelstralen dek,8.0,6.4,9.6,2018-02-20 08:00:00,2018-03-01 17:00:00,,0
83,1.1.1.5.1.1.1.8.3,zone 3 en 4 (B78 tem B68),5.0,4.0,6.0,2018-02-20 08:00:00,2018-02-26 17:00:00,,0
84,1.1.1.5.1.1.1.8.4,zone 5 en 6 (B67 tem B61),5.0,4.0,6.0,2018-01-22 08:00:00,2018-01-26 17:00:00,,0
85,1.1.1.5.1.1.1.8.5,zone 7 en 8 (B60 tem B50),5.0,4.0,6.0,2018-01-02 08:00:00,2018-01-08 17:00:00,,0
86,1.1.1.5.1.1.1.8.6,zone 9 en 10 (B49 tem B39),5.0,4.0,6.0,2018-01-09 08:00:00,2018-01-15 17:00:00,,0
87,1.1.1.5.1.1.1.8.7,zone 11 en 12 (B38 tem B28),87.0,69.6,104.4,2018-01-16 08:00:00,2018-05-16 17:00:00,,0
88,1.1.1.5.1.1.1.8.8,zone 13 (B27 tem B25),5.0,4.0,6.0,2018-05-14 08:00:00,2018-05-18 17:00:00,,0
89,1.1.1.5.1.1.1.8.9,zone 14 tem 18 (B24 tem B1),118.0,94.4,141.6,2018-09-07 08:00:00,2019-02-20 15:00:00,,0
90,1.1.1.5.1.1.1.8.10,dakplaat Rui zone  7 tem 10,15.0,12.0,18.0,2018-08-06 08:00:00,2018-08-24 17:00:00,,0
91,1.1.1.5.1.1.1.8.11,dakplaat Rui zone  11 tem 18,20.0,16.0,24.0,2018-12-07 08:00:00,2019-01-03 17:00:00,,0
92,1.1.1.5.1.1.1.8.12,Rui afwerken voeg zone 1 tem 10,19.0,15.2,22.8,2018-08-08 08:00:00,2018-09-03 17:00:00,,0
93,1.1.1.5.1.1.1.8.13,Rui afwerken voeg zone 11 tem 18,15.0,12.0,18.0,2018-04-03 08:00:00,2018-04-23 17:00:00,,0
94,1.1.1.5.1.1.1.8.14,RWA voeg zone  1 tem 2 (tem B79),12.0,9.6,14.4,2018-04-04 08:00:00,2018-04-19 17:00:00,,0
95,1.1.1.5.1.1.1.8.15,RWA voeg zone  3 tem 6 (tem B60),1.0,0.8,1.2,2018-03-15 08:00:00,2018-03-15 17:00:00,,0
96,1.1.1.5.1.1.1.8.16,RWA afwerken voeg zone  7 tem 10,8.0,6.4,9.6,2018-08-08 08:00:00,2018-08-17 17:00:00,,0
97,1.1.1.5.1.1.1.8.17,RWA afwerken voeg zone  B24 tem B1,10.0,8.0,12.0,2018-06-18 08:00:00,2018-06-29 17:00:00,,0
98,1.1.1.5.1.1.1.8.18,dakplaat RWA zone 1 tem 4 (Keerlus Rooseveld),10.0,8.0,12.0,2019-06-26 08:00:00,2019-07-09 17:00:00,,0
99,1.1.1.5.1.1.1.8.19,dakplaat RWA  zone 5 tem 6,5.0,4.0,6.0,2018-05-14 08:00:00,2018-05-18 17:00:00,,0
100,1.1.1.5.1.1.1.8.20,dakplaat RWA zone 7 tem 13,15.0,12.0,18.0,2018-05-14 08:00:00,2018-06-01 17:00:00,,60
101,1.1.1.5.1.1.1.9,Vrijgaves Wegenis,383.0,383.0,383.0,2018-02-12 08:00:00,2019-07-31 17:00:00,,0
102,1.1.1.5.1.1.1.9.1,Vrijgave Wegenis W1 OOST (B89 tem B80),0.0,0.0,0.0,2019-07-31 17:00:00,2019-07-31 17:00:00,,0
103,1.1.1.5.1.1.1.9.2,Vrijgave Wegenis W1 BIS OOST (B79 tem B66),0.0,0.0,0.0,2018-02-28 17:00:00,2018-02-28 17:00:00,,0
104,1.1.1.5.1.1.1.9.3,Vrijgave Wegenis W1 WEST (B89 tem B66),0.0,0.0,0.0,2018-09-03 17:00:00,2018-09-03 17:00:00,,0
105,1.1.1.5.1.1.1.9.4,Vrijgave Wegenis W2 OOST (B65 tem B25),0.0,0.0,0.0,2018-05-04 17:00:00,2018-05-04 17:00:00,,0
106,1.1.1.5.1.1.1.9.5,Vrijgave Wegenis W2 WEST (B65 tem B25) 27/2,0.0,0.0,0.0,2018-04-02 17:00:00,2018-04-02 17:00:00,,0
107,1.1.1.5.1.1.1.9.6,Vrijgave Wegenis W3 OOST (B24 tem B1),0.0,0.0,0.0,2018-03-16 17:00:00,2018-03-16 17:00:00,,0
108,1.1.1.5.1.1.1.9.7,Vrijgave Wegenis W3 WEST (B24 tem B1),0.0,0.0,0.0,2019-02-20 15:00:00,2019-02-20 15:00:00,,0
109,1.1.1.5.1.1.1.9.8,Vrijgave Wegenis W4 (centrale afgebroken dakplaat station) : deel 1,0.0,0.0,0.0,2018-05-14 17:00:00,2018-05-14 17:00:00,,0
110,1.1.1.5.1.1.1.9.9,Vrijgave Wegenis W4 (centrale afgebroken dakplaat station) : deel 2,0.0,0.0,0.0,2018-05-14 17:00:00,2018-05-14 17:00:00,,0
111,1.1.1.5.1.1.1.9.10,"Vrijgave Wegenis W5 (Teniers Zuid, trap T0 en T4)",0.0,0.0,0.0,2018-10-05 17:00:00,2018-10-05 17:00:00,,0
112,1.1.1.5.1.1.1.9.11,Vrijgave Wegenis W8 (Zone C Keyserlei Centraal),0.0,0.0,0.0,2018-09-21 17:00:00,2018-09-21 17:00:00,,0
113,1.1.1.5.1.1.1.9.12,Vrijgave Wegenis W9 dakplaat Lichtput ,0.0,0.0,0.0,2018-06-29 17:00:00,2018-06-29 17:00:00,,0
114,1.1.1.5.1.1.1.9.13,Vrijgave Wegenis dakplaat W10,0.0,0.0,0.0,2018-04-13 17:00:00,2018-04-13 17:00:00,,0
115,1.1.1.5.1.1.1.9.14,Vrijgave Wegenis W12 (centrale dakplaat station Oost),0.0,0.0,0.0,2018-05-25 17:00:00,2018-05-25 17:00:00,,0
116,1.1.1.5.1.1.1.9.15,Vrijgave Wegenis W13 : ATZO (moot 6 tem moot 10) (INTERFACE NOG NIET BEKEND),60.0,48.0,72.0,2018-02-12 08:00:00,2018-05-04 17:00:00,,0
117,1.1.1.5.1.1.1.10,plaatsen definitieven vijzels,179.0,179.0,179.0,2018-01-15 08:00:00,2018-09-20 17:00:00,,0
118,1.1.1.5.1.1.1.10.1,zone 1 tem 2 + saldo beton,10.0,8.0,12.0,2018-01-22 08:00:00,2018-02-02 17:00:00,,0
119,1.1.1.5.1.1.1.10.2,zone 3 tem 6 + saldo beton,10.0,8.0,12.0,2018-01-15 08:00:00,2018-01-26 17:00:00,,0
120,1.1.1.5.1.1.1.10.3,zone 7 tem 10 + saldo beton,88.0,70.4,105.6,2018-02-07 08:00:00,2018-06-08 17:00:00,,0
121,1.1.1.5.1.1.1.10.4,zone 11 tem 18 (B2 tem B24)+ saldo beton,20.0,16.0,24.0,2018-08-24 08:00:00,2018-09-20 17:00:00,,0
122,1.1.1.5.1.2,Rui,445.0,445.0,445.0,2017-10-23 08:00:00,2019-07-05 17:00:00,,412
123,1.1.1.5.1.2.1,ruwbouw,445.0,445.0,445.0,2017-10-23 08:00:00,2019-07-05 17:00:00,,412
124,1.1.1.5.1.2.1.1,zone B39-60 (zone 7 tem 10),348.0,348.0,348.0,2017-10-23 08:00:00,2019-02-20 17:00:00,,0
125,1.1.1.5.1.2.1.1.1,kopbalken klaar ,0.0,0.0,0.0,2017-10-26 17:00:00,2017-10-26 17:00:00,,0
126,1.1.1.5.1.2.1.1.2,extra beschoeide sleuf,5.0,4.0,6.0,2017-10-23 08:00:00,2017-10-27 17:00:00,,0
127,1.1.1.5.1.2.1.1.3,afbraak rui ;grondwerk en tijdelijke stempels plaatsen,83.0,66.4,99.6,2018-01-15 08:00:00,2018-05-09 17:00:00,,0
128,1.1.1.5.1.2.1.1.4,vloerplaat,24.0,19.2,28.8,2019-01-18 08:00:00,2019-02-20 17:00:00,,0
129,1.1.1.5.1.2.1.1.5,dakplaat,15.0,12.0,18.0,2018-05-17 08:00:00,2018-06-06 17:00:00,,0
130,1.1.1.5.1.2.1.2,zone B1-38 (zone 11 tem 18),385.0,385.0,385.0,2018-01-15 08:00:00,2019-07-05 17:00:00,,412
131,1.1.1.5.1.2.1.2.1,afbraak rui ;grondwerk en tijdelijke stempels plaatsen,99.0,79.2,118.8,2018-01-15 08:00:00,2018-05-31 17:00:00,,0
132,1.1.1.5.1.2.1.2.2,Uitbraak in de rui,72.0,57.6,86.4,2018-10-10 08:00:00,2019-01-17 17:00:00,,80
133,1.1.1.5.1.2.1.2.3,dakplaat,93.0,74.4,111.6,2018-06-01 08:00:00,2018-10-09 17:00:00,,332
134,1.1.1.5.1.2.1.2.4,Dakplaat rui - deel 1 (opening laten om nog in de rui te kunnen),15.0,12.0,18.0,2019-01-18 08:00:00,2019-02-07 17:00:00,,0
135,1.1.1.5.1.2.1.2.5,T22 - muur boven rui,10.0,8.0,12.0,2019-02-08 08:00:00,2019-02-21 17:00:00,,0
136,1.1.1.5.1.2.1.2.6,Vloerplaat rui,5.0,4.0,6.0,2019-02-22 08:00:00,2019-02-28 17:00:00,,0
137,1.1.1.5.1.2.1.2.7,Uitbreken van grout in rui onder T22,28.0,22.4,33.6,2019-03-01 08:00:00,2019-04-09 17:00:00,,0
138,1.1.1.5.1.2.1.2.8,Aanpassen van riolering,23.0,18.4,27.6,2019-05-06 08:00:00,2019-06-05 17:00:00,,0
139,1.1.1.5.1.2.1.2.9,Afwerken betonwerken trappen + dakplaat rui (RV025),15.0,12.0,18.0,2019-06-11 08:00:00,2019-07-01 17:00:00,,0
140,1.1.1.5.1.2.1.2.10,Plaatsen van prefabtreden,4.0,3.2,4.8,2019-07-02 08:00:00,2019-07-05 17:00:00,,0
141,1.1.1.5.1.3,RWA,498.0,498.0,498.0,2017-09-01 17:00:00,2019-07-31 17:00:00,,0
142,1.1.1.5.1.3.1,ruwbouw,498.0,498.0,498.0,2017-09-01 17:00:00,2019-07-31 17:00:00,,0
143,1.1.1.5.1.3.1.1,zone B25-60 (zone 7 tem 13),128.0,128.0,128.0,2017-09-01 17:00:00,2018-02-28 17:00:00,,0
144,1.1.1.5.1.3.1.1.1,beschoeide 100 tem 111 sleuven klaar ,0.0,0.0,0.0,2017-09-01 17:00:00,2017-09-01 17:00:00,,0
145,1.1.1.5.1.3.1.1.2,afbraak rui ;grondwerk en tijdelijke stempels plaatsen,0.0,0.0,0.0,2017-09-01 17:00:00,2017-09-01 17:00:00,,0
146,1.1.1.5.1.3.1.1.3,vloerplaat,0.0,0.0,0.0,2017-09-01 17:00:00,2017-09-01 17:00:00,,0
147,1.1.1.5.1.3.1.1.4,Scheenmuur,10.0,8.0,12.0,2017-09-04 08:00:00,2017-09-15 17:00:00,,0
148,1.1.1.5.1.3.1.1.5,Vijzels dakplaat,5.0,4.0,6.0,2017-09-18 08:00:00,2017-09-22 17:00:00,,0
149,1.1.1.5.1.3.1.1.6,Sluiten dakplaat tussen balken,5.0,4.0,6.0,2017-09-25 08:00:00,2017-09-29 17:00:00,,0
150,1.1.1.5.1.3.1.1.7,dakplaat deel 1 (zijde Opera),15.0,12.0,18.0,2018-01-15 08:00:00,2018-02-02 17:00:00,,0
151,1.1.1.5.1.3.1.1.8,dakplaat deel 2 (zijde parking),6.0,4.8,7.2,2018-02-05 08:00:00,2018-02-12 17:00:00,,0
152,1.1.1.5.1.3.1.1.9,Uitharden dakplaat,6.0,4.8,7.2,2018-02-13 08:00:00,2018-02-20 17:00:00,,0
153,1.1.1.5.1.3.1.1.10,Waterdichting W2 OOST,6.0,4.8,7.2,2018-02-21 08:00:00,2018-02-28 17:00:00,,0
154,1.1.1.5.1.3.1.2,zone B60-66 (zone 5 tem 6),89.0,89.0,89.0,2017-10-26 17:00:00,2018-02-28 17:00:00,,0
155,1.1.1.5.1.3.1.2.1,beschoeide sleuven klaar ,0.0,0.0,0.0,2017-10-26 17:00:00,2017-10-26 17:00:00,,0
156,1.1.1.5.1.3.1.2.2,grondwerk en tijdelijke stempels plaatsen,15.0,12.0,18.0,2017-11-10 08:00:00,2017-11-30 17:00:00,,0
157,1.1.1.5.1.3.1.2.3,vloerplaat,10.0,8.0,12.0,2017-12-01 08:00:00,2017-12-14 17:00:00,,0
158,1.1.1.5.1.3.1.2.4,Scheenmuur,10.0,8.0,12.0,2017-12-15 08:00:00,2017-12-28 17:00:00,,0
159,1.1.1.5.1.3.1.2.5,Vijzels dakplaat,5.0,4.0,6.0,2018-01-11 08:00:00,2018-01-17 17:00:00,,0
160,1.1.1.5.1.3.1.2.6,Sluiten dakplaat tussen balken,5.0,4.0,6.0,2018-01-18 08:00:00,2018-01-24 17:00:00,,0
161,1.1.1.5.1.3.1.2.7,dakplaat deel 1 (zijde Opera),15.0,12.0,18.0,2018-01-15 08:00:00,2018-02-02 17:00:00,,0
162,1.1.1.5.1.3.1.2.8,dakplaat deel 2 (zijde parking),6.0,4.8,7.2,2018-02-05 08:00:00,2018-02-12 17:00:00,,0
163,1.1.1.5.1.3.1.2.9,Uitharden dakplaat,6.0,4.8,7.2,2018-02-13 08:00:00,2018-02-20 17:00:00,,0
164,1.1.1.5.1.3.1.2.10,Waterdichting W2 OOST,6.0,4.8,7.2,2018-02-21 08:00:00,2018-02-28 17:00:00,,0
165,1.1.1.5.1.3.1.3,zone B66-89 (zone 1 tem 4) Keerlus Roosevelt,472.0,472.0,472.0,2017-10-09 17:00:00,2019-07-31 17:00:00,,0
166,1.1.1.5.1.3.1.3.1,beschoeide sleuven klaar ,0.0,0.0,0.0,2017-10-09 17:00:00,2017-10-09 17:00:00,,0
167,1.1.1.5.1.3.1.3.2,grondwerk ontlasten sleuven,5.0,4.0,6.0,2017-10-11 08:00:00,2017-10-17 17:00:00,,0
168,1.1.1.5.1.3.1.3.3,aanleveren uitvoeringsplannen,0.0,0.0,0.0,2017-10-20 17:00:00,2017-10-20 17:00:00,,0
169,1.1.1.5.1.3.1.3.4,vloerplaat +3.99,15.0,12.0,18.0,2019-03-21 08:00:00,2019-04-10 17:00:00,,0
170,1.1.1.5.1.3.1.3.5,verplaatsen nutleidingen,141.0,112.8,169.2,2018-07-02 08:00:00,2019-01-14 17:00:00,,0
171,1.1.1.5.1.3.1.3.6,grondwerk +saldo kopbalk,15.0,12.0,18.0,2019-02-28 08:00:00,2019-03-20 17:00:00,,0
172,1.1.1.5.1.3.1.3.7,saldo scheenmuur,0.0,0.0,0.0,2018-02-19 17:00:00,2018-02-19 17:00:00,,0
173,1.1.1.5.1.3.1.3.8,dakplaat opstelling noordelijke plaat,20.0,16.0,24.0,2019-04-01 08:00:00,2019-04-26 17:00:00,,0
174,1.1.1.5.1.3.1.3.9,montage in te storten stukken Eandis BS 92,7.0,5.6,8.4,2019-06-26 08:00:00,2019-07-04 17:00:00,,0
175,1.1.1.5.1.3.1.3.10,"betonnage dakplaat + 8,32m TAW",3.0,2.4,3.6,2019-07-05 08:00:00,2019-07-09 17:00:00,,0
176,1.1.1.5.1.3.1.3.11,"Installatie van verloren vijzels, opgieten",5.0,4.0,6.0,2019-07-10 08:00:00,2019-07-16 17:00:00,,0
177,1.1.1.5.1.3.1.3.12,Sluiten dakplaat tussen balken,5.0,4.0,6.0,2019-07-17 08:00:00,2019-07-23 17:00:00,,0
178,1.1.1.5.1.3.1.3.13,Waterdichting dakplaat W1 OOST,6.0,4.8,7.2,2019-07-24 08:00:00,2019-07-31 17:00:00,,0
179,1.1.1.5.1.3.1.3.14,dakplaat op stelling zuidelijke plaat (aanpassing),8.0,6.4,9.6,2018-01-15 08:00:00,2018-01-24 17:00:00,,0
180,1.1.1.5.1.3.1.3.15,"Installatie van verloren vijzels, opgieten",5.0,4.0,6.0,2018-01-25 08:00:00,2018-01-31 17:00:00,,0
181,1.1.1.5.1.3.1.3.16,Sluiten dakplaat tussen balken,5.0,4.0,6.0,2018-02-01 08:00:00,2018-02-07 17:00:00,,0
182,1.1.1.5.1.3.1.3.17,Uitharden dakplaat,5.0,4.0,6.0,2018-02-08 08:00:00,2018-02-14 17:00:00,,0
183,1.1.1.5.1.3.1.3.18,Waterdichting dakplaat W1 OOST BIS,10.0,8.0,12.0,2018-02-15 08:00:00,2018-02-28 17:00:00,,0
184,1.1.1.5.1.3.1.3.19,ontkisten dakplaat,2.0,1.6,2.4,2018-01-25 08:00:00,2018-01-26 17:00:00,,0
185,1.1.1.5.1.3.1.3.20,vijzels dakplaat,5.0,4.0,6.0,2018-01-29 08:00:00,2018-02-02 17:00:00,,0
186,1.1.1.5.1.3.1.3.21,dakplaat dichtbetonneren (tem B60),10.0,8.0,12.0,2018-02-05 08:00:00,2018-02-16 17:00:00,,0
187,1.1.1.5.1.4,niv -1,782.0,782.0,782.0,2017-12-11 08:00:00,2020-12-08 17:00:00,,1155
188,1.1.1.5.1.4.1,ruwbouw -1,495.0,495.0,495.0,2017-12-11 08:00:00,2019-11-01 17:00:00,,879
189,1.1.1.5.1.4.1.1,zwevende plaat -1,287.0,287.0,287.0,2018-05-15 08:00:00,2019-06-19 17:00:00,,602
190,1.1.1.5.1.4.1.1.1,zone PL1,139.0,139.0,139.0,2018-12-07 08:00:00,2019-06-19 17:00:00,,86
191,1.1.1.5.1.4.1.1.1.1,stelling en bekisten(P3),5.0,4.0,6.0,2018-12-07 08:00:00,2018-12-13 17:00:00,,2
192,1.1.1.5.1.4.1.1.1.2,wapenen,5.0,4.0,6.0,2018-12-14 08:00:00,2018-12-20 17:00:00,,15
193,1.1.1.5.1.4.1.1.1.3,betonneren,1.0,0.8,1.2,2018-12-21 08:00:00,2018-12-21 17:00:00,,6
194,1.1.1.5.1.4.1.1.1.4,dragende muren + new jerseys + muur kant keerlus,83.0,66.4,99.6,2018-12-24 08:00:00,2019-04-17 17:00:00,,60
195,1.1.1.5.1.4.1.1.1.5,ontkisten,3.0,2.4,3.6,2019-06-17 08:00:00,2019-06-19 17:00:00,,3
196,1.1.1.5.1.4.1.1.2,zone PL2,120.0,120.0,120.0,2018-06-12 08:00:00,2018-11-26 17:00:00,,86
197,1.1.1.5.1.4.1.1.2.1,stelling en bekisten(P2),14.0,11.2,16.8,2018-06-12 08:00:00,2018-06-29 17:00:00,,2
198,1.1.1.5.1.4.1.1.2.2,wapenen,3.0,2.4,3.6,2018-07-02 08:00:00,2018-07-04 17:00:00,,15
199,1.1.1.5.1.4.1.1.2.3,betonneren,1.0,0.8,1.2,2018-07-05 08:00:00,2018-07-05 17:00:00,,6
200,1.1.1.5.1.4.1.1.2.4,dragende muren + new jerseys,15.0,12.0,18.0,2018-09-04 08:00:00,2018-09-24 17:00:00,,60
201,1.1.1.5.1.4.1.1.2.5,ontkisten,3.0,2.4,3.6,2018-11-22 08:00:00,2018-11-26 17:00:00,,3
202,1.1.1.5.1.4.1.1.3,zone PL3,148.0,148.0,148.0,2018-05-15 08:00:00,2018-12-06 17:00:00,,86
203,1.1.1.5.1.4.1.1.3.1,stelling en bekisten(P1),4.0,3.2,4.8,2018-05-15 08:00:00,2018-05-18 17:00:00,,2
204,1.1.1.5.1.4.1.1.3.2,wapenen,18.0,14.4,21.6,2018-05-22 08:00:00,2018-06-14 17:00:00,,15
205,1.1.1.5.1.4.1.1.3.3,betonneren,1.0,0.8,1.2,2018-06-15 08:00:00,2018-06-15 17:00:00,,6
206,1.1.1.5.1.4.1.1.3.4,dragende muren + new jerseys (zone PL3),38.0,30.4,45.6,2018-08-14 08:00:00,2018-10-04 17:00:00,,60
207,1.1.1.5.1.4.1.1.3.5,ontkisten (zone PL3),3.0,2.4,3.6,2018-12-04 08:00:00,2018-12-06 17:00:00,,3
208,1.1.1.5.1.4.1.1.4,zone PL4,95.0,95.0,95.0,2018-08-20 08:00:00,2018-12-28 17:00:00,,86
209,1.1.1.5.1.4.1.1.4.1,stelling en bekisten(P1),7.0,5.6,8.4,2018-08-20 08:00:00,2018-08-28 17:00:00,,2
210,1.1.1.5.1.4.1.1.4.2,wapenen,5.0,4.0,6.0,2018-09-03 08:00:00,2018-09-07 17:00:00,,15
211,1.1.1.5.1.4.1.1.4.3,betonneren,1.0,0.8,1.2,2018-09-10 08:00:00,2018-09-10 17:00:00,,6
212,1.1.1.5.1.4.1.1.4.4,dragende muren + new jerseys,15.0,12.0,18.0,2018-10-08 08:00:00,2018-10-26 17:00:00,,60
213,1.1.1.5.1.4.1.1.4.5,ontkisten,3.0,2.4,3.6,2018-12-26 08:00:00,2018-12-28 17:00:00,,3
214,1.1.1.5.1.4.1.1.5,zone PL5,90.0,90.0,90.0,2018-11-16 08:00:00,2019-03-21 17:00:00,,86
215,1.1.1.5.1.4.1.1.5.1,stelling en bekisten(P2),7.0,5.6,8.4,2018-11-16 08:00:00,2018-11-26 17:00:00,,2
216,1.1.1.5.1.4.1.1.5.2,wapenen,5.0,4.0,6.0,2018-11-27 08:00:00,2018-12-03 17:00:00,,15
217,1.1.1.5.1.4.1.1.5.3,betonneren,1.0,0.8,1.2,2018-12-04 08:00:00,2018-12-04 17:00:00,,6
218,1.1.1.5.1.4.1.1.5.4,dragende muren + new jerseys,32.0,25.6,38.4,2018-12-05 08:00:00,2019-01-17 17:00:00,,60
219,1.1.1.5.1.4.1.1.5.5,ontkisten,3.0,2.4,3.6,2019-03-19 08:00:00,2019-03-21 17:00:00,,3
220,1.1.1.5.1.4.1.1.6,zone PL6,132.0,132.0,132.0,2018-10-10 08:00:00,2019-04-11 17:00:00,,86
221,1.1.1.5.1.4.1.1.6.1,stelling en bekisten(P3),14.0,11.2,16.8,2018-10-10 08:00:00,2018-10-29 17:00:00,,2
222,1.1.1.5.1.4.1.1.6.2,wapenen,5.0,4.0,6.0,2018-10-30 08:00:00,2018-11-05 17:00:00,,15
223,1.1.1.5.1.4.1.1.6.3,betonneren,1.0,0.8,1.2,2018-12-10 08:00:00,2018-12-10 17:00:00,,6
224,1.1.1.5.1.4.1.1.6.4,dragende muren + new jerseys (PL6),15.0,12.0,18.0,2019-01-18 08:00:00,2019-02-07 17:00:00,,60
225,1.1.1.5.1.4.1.1.6.5,ontkisten,3.0,2.4,3.6,2019-04-09 08:00:00,2019-04-11 17:00:00,,3
226,1.1.1.5.1.4.1.1.7,zone PL7/8,114.0,114.0,114.0,2018-12-05 08:00:00,2019-05-13 17:00:00,,86
227,1.1.1.5.1.4.1.1.7.1,stelling en bekisten(P1),5.0,4.0,6.0,2018-12-05 08:00:00,2018-12-11 17:00:00,,2
228,1.1.1.5.1.4.1.1.7.2,wapenen,6.0,4.8,7.2,2018-12-12 08:00:00,2018-12-19 17:00:00,,15
229,1.1.1.5.1.4.1.1.7.3,betonneren,1.0,0.8,1.2,2018-12-20 08:00:00,2018-12-20 17:00:00,,6
230,1.1.1.5.1.4.1.1.7.4,dragende muren + new jerseys + wand kant balkon (PL7),22.0,17.6,26.4,2019-02-08 08:00:00,2019-03-11 17:00:00,,60
231,1.1.1.5.1.4.1.1.7.5,ontkisten (PL7/8),3.0,2.4,3.6,2019-05-09 08:00:00,2019-05-13 17:00:00,,3
232,1.1.1.5.1.4.1.2,"plaat parking -1(""balkon"")",372.0,372.0,372.0,2017-12-11 08:00:00,2019-05-14 17:00:00,,277
233,1.1.1.5.1.4.1.2.1,zone BK4,105.0,105.0,105.0,2018-11-27 08:00:00,2019-04-22 17:00:00,,91
234,1.1.1.5.1.4.1.2.1.1,gekromde wand,21.0,16.8,25.2,2018-11-27 08:00:00,2018-12-25 17:00:00,,40
235,1.1.1.5.1.4.1.2.1.2,rechte wand,4.0,3.2,4.8,2018-12-26 08:00:00,2018-12-31 17:00:00,,0
236,1.1.1.5.1.4.1.2.1.3,"Helling nr. 3, deel 1",15.0,12.0,18.0,2019-01-01 08:00:00,2019-01-21 17:00:00,,0
237,1.1.1.5.1.4.1.2.1.4,bekisten(S3),15.0,12.0,18.0,2018-12-26 08:00:00,2019-01-15 17:00:00,,20
238,1.1.1.5.1.4.1.2.1.5,wapenen,15.0,12.0,18.0,2019-01-22 08:00:00,2019-02-11 17:00:00,,20
239,1.1.1.5.1.4.1.2.1.6,"betonneren (BK4, Parking -1)",1.0,0.8,1.2,2019-02-12 08:00:00,2019-02-12 17:00:00,,3
240,1.1.1.5.1.4.1.2.1.7,"Helling nr 3, deel 2",20.0,16.0,24.0,2019-02-20 08:00:00,2019-03-19 17:00:00,,0
241,1.1.1.5.1.4.1.2.1.8,ontkisten (BK4),7.0,5.6,8.4,2019-04-12 08:00:00,2019-04-22 17:00:00,,8
242,1.1.1.5.1.4.1.2.2,zone BK5,67.0,67.0,67.0,2018-12-31 08:00:00,2019-04-02 17:00:00,,31
243,1.1.1.5.1.4.1.2.2.1,bekisten(S2),14.0,11.2,16.8,2018-12-31 08:00:00,2019-01-17 17:00:00,,10
244,1.1.1.5.1.4.1.2.2.2,wapenen,3.0,2.4,3.6,2019-01-18 08:00:00,2019-01-22 17:00:00,,10
245,1.1.1.5.1.4.1.2.2.3,"betonneren (BK5, Parking -1)",1.0,0.8,1.2,2019-01-23 08:00:00,2019-01-23 17:00:00,,3
246,1.1.1.5.1.4.1.2.2.4,ontkisten (BK5),7.0,5.6,8.4,2019-03-25 08:00:00,2019-04-02 17:00:00,,8
247,1.1.1.5.1.4.1.2.3,zone BK6,72.0,72.0,72.0,2019-01-18 08:00:00,2019-04-29 17:00:00,,31
248,1.1.1.5.1.4.1.2.3.1,bekisten(S3),15.0,12.0,18.0,2019-01-18 08:00:00,2019-02-07 17:00:00,,10
249,1.1.1.5.1.4.1.2.3.2,wapenen,7.0,5.6,8.4,2019-02-08 08:00:00,2019-02-18 17:00:00,,10
250,1.1.1.5.1.4.1.2.3.3,"betonneren (BK6, Parking -1)",1.0,0.8,1.2,2019-02-19 08:00:00,2019-02-19 17:00:00,,3
251,1.1.1.5.1.4.1.2.3.4,ontkisten (BK6),7.0,5.6,8.4,2019-04-19 08:00:00,2019-04-29 17:00:00,,8
252,1.1.1.5.1.4.1.2.4,zone BK7,123.0,123.0,123.0,2018-11-23 08:00:00,2019-05-14 17:00:00,,31
253,1.1.1.5.1.4.1.2.4.1,Wand tegen diepwand,22.0,17.6,26.4,2018-11-23 08:00:00,2018-12-24 17:00:00,,0
254,1.1.1.5.1.4.1.2.4.2,bekisten(S1),23.0,18.4,27.6,2019-01-21 08:00:00,2019-02-20 17:00:00,,10
255,1.1.1.5.1.4.1.2.4.3,wapenen,9.0,7.2,10.8,2019-02-21 08:00:00,2019-03-05 17:00:00,,10
256,1.1.1.5.1.4.1.2.4.4,"betonneren (BK7, Parking -1)",1.0,0.8,1.2,2019-03-06 08:00:00,2019-03-06 17:00:00,,3
257,1.1.1.5.1.4.1.2.4.5,Voorzetwand tussen niv -1 en niv 0 (metselwerk),15.0,12.0,18.0,2019-03-11 08:00:00,2019-03-29 17:00:00,,0
258,1.1.1.5.1.4.1.2.4.6,"ontkisten (BK7, Parking -1)",7.0,5.6,8.4,2019-05-06 08:00:00,2019-05-14 17:00:00,,8
259,1.1.1.5.1.4.1.2.5,zone BK8,128.0,128.0,128.0,2018-10-10 08:00:00,2019-04-05 17:00:00,,31
260,1.1.1.5.1.4.1.2.5.1,Wand tegen diepwand,32.0,25.6,38.4,2018-10-10 08:00:00,2018-11-22 17:00:00,,0
261,1.1.1.5.1.4.1.2.5.2,"bekisten(S3, BK8)",18.0,14.4,21.6,2018-12-21 08:00:00,2019-01-15 17:00:00,,10
262,1.1.1.5.1.4.1.2.5.3,wapenen,5.0,4.0,6.0,2019-01-21 08:00:00,2019-01-25 17:00:00,,10
263,1.1.1.5.1.4.1.2.5.4,"betonneren (BK8, Parking -1)",1.0,0.8,1.2,2019-01-28 08:00:00,2019-01-28 17:00:00,,3
264,1.1.1.5.1.4.1.2.5.5,"ontkisten (BK8, Parking -1)",7.0,5.6,8.4,2019-03-28 08:00:00,2019-04-05 17:00:00,,8
265,1.1.1.5.1.4.1.2.6,zone BK9,334.0,334.0,334.0,2017-12-11 08:00:00,2019-03-21 17:00:00,,62
266,1.1.1.5.1.4.1.2.6.1,stelling en bekisten(P3),17.0,13.6,20.4,2018-12-14 08:00:00,2019-01-07 17:00:00,,20
267,1.1.1.5.1.4.1.2.6.2,wapenen,3.0,2.4,3.6,2019-01-08 08:00:00,2019-01-10 17:00:00,,20
268,1.1.1.5.1.4.1.2.6.3,"betonneren (BK9, Parking -1)",1.0,0.8,1.2,2019-01-11 08:00:00,2019-01-11 17:00:00,,6
269,1.1.1.5.1.4.1.2.6.4,wanden (BK9),31.0,24.8,37.2,2019-01-14 08:00:00,2019-02-25 17:00:00,,0
270,1.1.1.5.1.4.1.2.6.5,"ontkisten (zwevende plaat, plaat parking -1, zone BK9)",7.0,5.6,8.4,2019-03-13 08:00:00,2019-03-21 17:00:00,,16
271,1.1.1.5.1.4.1.2.6.6,definitieve steunen balk B1,15.0,12.0,18.0,2017-12-11 08:00:00,2017-12-29 17:00:00,,0
272,1.1.1.5.1.4.1.3,Plaat tussen zwevende plaat en BS kant rui,72.0,72.0,72.0,2019-07-25 08:00:00,2019-11-01 17:00:00,,0
273,1.1.1.5.1.4.1.3.1,Noord,53.0,53.0,53.0,2019-07-25 08:00:00,2019-10-07 17:00:00,,0
274,1.1.1.5.1.4.1.3.1.1,bekisten,4.0,3.2,4.8,2019-07-25 08:00:00,2019-07-30 17:00:00,,0
275,1.1.1.5.1.4.1.3.1.2,wapenen,3.0,2.4,3.6,2019-07-31 08:00:00,2019-08-02 17:00:00,,0
276,1.1.1.5.1.4.1.3.1.3,betonneren,1.0,0.8,1.2,2019-08-05 08:00:00,2019-08-05 17:00:00,,0
277,1.1.1.5.1.4.1.3.1.4,ontkisten,3.0,2.4,3.6,2019-10-03 08:00:00,2019-10-07 17:00:00,,0
278,1.1.1.5.1.4.1.3.2,Zuid,50.0,50.0,50.0,2019-08-26 08:00:00,2019-11-01 17:00:00,,0
279,1.1.1.5.1.4.1.3.2.1,bekisten,4.0,3.2,4.8,2019-08-26 08:00:00,2019-08-29 17:00:00,,0
280,1.1.1.5.1.4.1.3.2.2,wapenen,1.0,0.8,1.2,2019-08-30 08:00:00,2019-08-30 17:00:00,,0
281,1.1.1.5.1.4.1.3.2.3,betonneren,0.0,0.0,0.0,2019-08-30 17:00:00,2019-08-30 17:00:00,,0
282,1.1.1.5.1.4.1.3.2.4,ontkisten,3.0,2.4,3.6,2019-10-30 08:00:00,2019-11-01 17:00:00,,0
283,1.1.1.5.1.4.2,afwerking niv -1,572.0,572.0,572.0,2018-10-01 08:00:00,2020-12-08 17:00:00,,130
284,1.1.1.5.1.4.2.1,MS Technisch Dossier,84.0,67.2,100.8,2018-10-01 08:00:00,2019-01-24 17:00:00,,0
285,1.1.1.5.1.4.2.2,MS Opmeting,0.0,0.0,0.0,2019-05-22 17:00:00,2019-05-22 17:00:00,,0
286,1.1.1.5.1.4.2.3,RUWBOUW nieuwe structuren -1 gereed,0.0,0.0,0.0,2020-01-13 17:00:00,2020-01-13 17:00:00,,0
287,1.1.1.5.1.4.2.4,Waterstralen niveau -1,50.0,40.0,60.0,2020-01-14 08:00:00,2020-03-23 17:00:00,,0
288,1.1.1.5.1.4.2.5,Akoestische plafondbeplating - zone 1,17.0,13.6,20.4,2020-01-14 08:00:00,2020-02-05 17:00:00,,0
289,1.1.1.5.1.4.2.6,Akoestische plafondbeplating - zone 2,8.0,6.4,9.6,2020-03-19 08:00:00,2020-03-30 17:00:00,,0
290,1.1.1.5.1.4.2.7,Akoestische plafondbeplating - zone 3,6.0,4.8,7.2,2020-03-31 08:00:00,2020-04-07 17:00:00,,0
291,1.1.1.5.1.4.2.8,Akoestische plafondbeplating - zone 4,7.0,5.6,8.4,2020-04-08 08:00:00,2020-04-16 17:00:00,,0
292,1.1.1.5.1.4.2.9,Start opmeten + productie stalen deuren ,1.0,0.8,1.2,2020-01-14 08:00:00,2020-01-14 17:00:00,,0
293,1.1.1.5.1.4.2.10,Stalen deuren,10.0,8.0,12.0,2020-11-04 08:00:00,2020-11-17 17:00:00,,0
294,1.1.1.5.1.4.2.11,Vloerafwerking: belijning,15.0,12.0,18.0,2020-04-23 08:00:00,2020-05-13 17:00:00,,0
295,1.1.1.5.1.4.2.12,Anti-graffiti,7.0,5.6,8.4,2020-04-06 08:00:00,2020-04-14 17:00:00,,0
296,1.1.1.5.1.4.2.13,Start opmeting + productie borstweringen balkon,1.0,0.8,1.2,2020-01-14 08:00:00,2020-01-14 17:00:00,,0
297,1.1.1.5.1.4.2.14,Geprefabriceerde  betonnen borstweringen balkon,19.0,15.2,22.8,2020-01-14 08:00:00,2020-02-07 17:00:00,,40
298,1.1.1.5.1.4.2.15,Betonnen prefab vloerelementen,33.0,26.4,39.6,2020-02-10 08:00:00,2020-03-25 17:00:00,,90
299,1.1.1.5.1.4.2.16,Opmeting + productie gaas,1.0,0.8,1.2,2020-02-10 08:00:00,2020-02-10 17:00:00,,0
300,1.1.1.5.1.4.2.17,Plaatsing gaas,9.0,7.2,10.8,2020-03-24 08:00:00,2020-04-03 17:00:00,,0
301,1.1.1.5.1.4.2.18,Opmeting + productie metalen roosters,1.0,0.8,1.2,2020-01-14 08:00:00,2020-01-14 17:00:00,,0
302,1.1.1.5.1.4.2.19,Plaatsing metalen roosters,5.0,4.0,6.0,2020-04-01 08:00:00,2020-04-07 17:00:00,,0
303,1.1.1.5.1.4.2.20,Start opmeting rookscherm thv ATN,1.0,0.8,1.2,2019-04-23 08:00:00,2019-04-23 17:00:00,,0
304,1.1.1.5.1.4.2.21,Plaatsing rookscherm thv ATN,5.0,4.0,6.0,2020-12-02 08:00:00,2020-12-08 17:00:00,,0
305,1.1.1.5.1.4.2.22,Start opmeting rookscherm thv ATZ,1.0,0.8,1.2,2019-03-11 08:00:00,2019-03-11 17:00:00,,0
306,1.1.1.5.1.4.2.23,Plaatsing rookscherm thv ATZ,5.0,4.0,6.0,2020-08-21 08:00:00,2020-08-27 17:00:00,,0
307,1.1.1.5.1.4.2.24,Start opmeting poort helling nr. 3,1.0,0.8,1.2,2019-06-17 08:00:00,2019-06-17 17:00:00,,0
308,1.1.1.5.1.4.2.25,Poort helling nr. 3,5.0,4.0,6.0,2019-11-18 08:00:00,2019-11-22 17:00:00,,0
309,1.1.1.5.1.4.2.26,Start opmeting borstwering helling nr. 5,1.0,0.8,1.2,2019-09-09 08:00:00,2019-09-09 17:00:00,,0
310,1.1.1.5.1.4.2.27,Borstwering op helling nr. 5,5.0,4.0,6.0,2019-11-06 08:00:00,2019-11-12 17:00:00,,0
311,1.1.1.5.1.4.2.28,Start opmeting borstwering BK4,1.0,0.8,1.2,2019-04-23 08:00:00,2019-04-23 17:00:00,,0
312,1.1.1.5.1.4.2.29,Borstwering op helling BK4,5.0,4.0,6.0,2019-11-14 08:00:00,2019-11-20 17:00:00,,0
313,1.1.1.5.1.4.2.30,Beslissing OG ivm borstwering op NJ langsheen zwevende tunnel,1.0,0.8,1.2,2019-10-14 08:00:00,2019-10-14 17:00:00,,0
314,1.1.1.5.1.4.2.31,Start opmeting van borstwering op NJ langsheen zwevende tunnel,1.0,0.8,1.2,2019-10-29 08:00:00,2019-10-29 17:00:00,,0
315,1.1.1.5.1.4.2.32,Borstwering op NJ langsheen zwevende tunnel,5.0,4.0,6.0,2020-01-10 08:00:00,2020-01-16 17:00:00,,0
316,1.1.1.5.1.4.3,afwerking keerlus,604.0,604.0,604.0,2018-07-30 17:00:00,2020-11-20 17:00:00,,45
317,1.1.1.5.1.4.3.1,MS Technisch Dossier,0.0,0.0,0.0,2018-07-30 17:00:00,2018-07-30 17:00:00,,0
318,1.1.1.5.1.4.3.2,MS Opmeting,0.0,0.0,0.0,2018-11-23 17:00:00,2018-11-23 17:00:00,,0
319,1.1.1.5.1.4.3.3,Trappencomplex Franklin Roosevelt,396.0,396.0,396.0,2019-05-17 08:00:00,2020-11-20 17:00:00,,0
320,1.1.1.5.1.4.3.3.1,Zone uitgang naar Rooseveltplaats,395.0,395.0,395.0,2019-05-20 08:00:00,2020-11-20 17:00:00,,0
321,1.1.1.5.1.4.3.3.1.1,"Bouwkundig, Zone uitgang naar Rooseveltplaats (T28)",264.0,264.0,264.0,2019-07-17 17:00:00,2020-07-21 17:00:00,,0
322,1.1.1.5.1.4.3.3.1.1.1,Plaatsing prefabtrappen T28 (na RUWBOUW nieuwe structuren niv -1),0.0,0.0,0.0,2019-07-17 17:00:00,2019-07-17 17:00:00,,0
323,1.1.1.5.1.4.3.3.1.1.2,Polieren vloer thv keerlus/parking,5.0,4.0,6.0,2019-07-18 08:00:00,2019-07-24 17:00:00,,0
324,1.1.1.5.1.4.3.3.1.1.3,Opmeten tbv staalstructuur,1.0,0.8,1.2,2019-07-18 08:00:00,2019-07-18 17:00:00,,0
325,1.1.1.5.1.4.3.3.1.1.4,Staalstructuur + dakstructuur,5.0,4.0,6.0,2020-05-08 08:00:00,2020-05-14 17:00:00,,0
326,1.1.1.5.1.4.3.3.1.1.5,Technieken,15.0,12.0,18.0,2020-05-15 08:00:00,2020-06-04 17:00:00,,0
327,1.1.1.5.1.4.3.3.1.1.6,Plaatsing van glas,10.0,8.0,12.0,2020-06-05 08:00:00,2020-06-18 17:00:00,,0
328,1.1.1.5.1.4.3.3.1.1.7,Plaatsing van houten deuren op niveau 0,3.0,2.4,3.6,2020-07-10 08:00:00,2020-07-14 17:00:00,,0
329,1.1.1.5.1.4.3.3.1.1.8,Afwerking gevelbekleding,5.0,4.0,6.0,2020-07-15 08:00:00,2020-07-21 17:00:00,,0
330,1.1.1.5.1.4.3.3.1.1.9,Metselwerk,5.0,4.0,6.0,2020-05-15 08:00:00,2020-05-21 17:00:00,,0
331,1.1.1.5.1.4.3.3.1.1.10,Opmeten van stalen deur,1.0,0.8,1.2,2020-05-22 08:00:00,2020-05-22 17:00:00,,0
332,1.1.1.5.1.4.3.3.1.1.11,Plaaten van stalen deur,2.0,1.6,2.4,2020-07-20 08:00:00,2020-07-21 17:00:00,,0
333,1.1.1.5.1.4.3.3.1.1.12,Lift D en E,40.0,32.0,48.0,2019-07-18 08:00:00,2019-09-11 17:00:00,,0
334,1.1.1.5.1.4.3.3.1.1.13,Opmeting leuningen T28,1.0,0.8,1.2,2019-10-14 08:00:00,2019-10-14 17:00:00,,0
335,1.1.1.5.1.4.3.3.1.1.14,Plaatsen leuning T28,5.0,4.0,6.0,2019-12-12 08:00:00,2019-12-18 17:00:00,,0
336,1.1.1.5.1.4.3.3.1.2,Niveau -1,328.0,328.0,328.0,2019-07-25 08:00:00,2020-10-26 17:00:00,,0
337,1.1.1.5.1.4.3.3.1.2.1,Start opmeting + start productie stalen deuren,1.0,0.8,1.2,2019-08-01 08:00:00,2019-08-01 17:00:00,,0
338,1.1.1.5.1.4.3.3.1.2.2,Stalen deuren,10.0,8.0,12.0,2020-07-22 08:00:00,2020-08-04 17:00:00,,0
339,1.1.1.5.1.4.3.3.1.2.3,Metsen muren sanitair,5.0,4.0,6.0,2019-07-25 08:00:00,2019-07-31 17:00:00,,0
340,1.1.1.5.1.4.3.3.1.2.4,Inbouwtoilet ,10.0,8.0,12.0,2020-01-14 08:00:00,2020-01-27 17:00:00,,0
341,1.1.1.5.1.4.3.3.1.2.5,Start opmeting houten deuren,1.0,0.8,1.2,2019-08-01 08:00:00,2019-08-01 17:00:00,,0
342,1.1.1.5.1.4.3.3.1.2.6,Condensatiemaatregelen,7.0,5.6,8.4,2020-03-25 08:00:00,2020-04-02 17:00:00,,0
343,1.1.1.5.1.4.3.3.1.2.7,Houten deuren met glas,5.0,4.0,6.0,2020-03-25 08:00:00,2020-03-31 17:00:00,,0
344,1.1.1.5.1.4.3.3.1.2.8,Houten deuren,5.0,4.0,6.0,2020-03-25 08:00:00,2020-03-31 17:00:00,,0
345,1.1.1.5.1.4.3.3.1.2.9,Schilderwerk - PA 2.13 (technisch lokaal),3.0,2.4,3.6,2020-01-03 08:00:00,2020-01-07 17:00:00,,0
346,1.1.1.5.1.4.3.3.1.2.10,"Tegelwerk - PA 1.41, PA 1.06, PA 1.05, PA 1.07",13.0,10.4,15.6,2020-01-28 08:00:00,2020-02-13 17:00:00,,0
347,1.1.1.5.1.4.3.3.1.2.11,Cementering - PA 1.40,2.0,1.6,2.4,2019-08-01 08:00:00,2019-08-02 17:00:00,,0
348,1.1.1.5.1.4.3.3.1.2.12,"Schilderwerk - PA 1.14, PA 1.11",2.0,1.6,2.4,2019-11-28 08:00:00,2019-11-29 17:00:00,,0
349,1.1.1.5.1.4.3.3.1.2.13,Opmeten sanitaire scheidingswanden,1.0,0.8,1.2,2020-02-14 08:00:00,2020-02-14 17:00:00,,0
350,1.1.1.5.1.4.3.3.1.2.14,Sanitaire scheidingswanden,2.0,1.6,2.4,2020-10-08 08:00:00,2020-10-09 17:00:00,,0
351,1.1.1.5.1.4.3.3.1.2.15,Afwerken sanitair -1,10.0,8.0,12.0,2020-10-12 08:00:00,2020-10-23 17:00:00,,0
352,1.1.1.5.1.4.3.3.1.2.16,Anti-graffiti,1.0,0.8,1.2,2020-10-26 08:00:00,2020-10-26 17:00:00,,0
353,1.1.1.5.1.4.3.3.1.3,Niveau -2,338.0,338.0,338.0,2019-07-25 08:00:00,2020-11-09 17:00:00,,0
354,1.1.1.5.1.4.3.3.1.3.1,Start opmeting + start productie stalen deuren,1.0,0.8,1.2,2019-08-01 08:00:00,2019-08-01 17:00:00,,0
355,1.1.1.5.1.4.3.3.1.3.2,Stalen deuren,10.0,8.0,12.0,2020-07-22 08:00:00,2020-08-04 17:00:00,,0
356,1.1.1.5.1.4.3.3.1.3.3,Metsen muren sanitair,5.0,4.0,6.0,2019-07-25 08:00:00,2019-07-31 17:00:00,,0
357,1.1.1.5.1.4.3.3.1.3.4,Inbouwtoilet ,10.0,8.0,12.0,2020-01-14 08:00:00,2020-01-27 17:00:00,,0
358,1.1.1.5.1.4.3.3.1.3.5,Start opmeting houten deuren,1.0,0.8,1.2,2019-08-01 08:00:00,2019-08-01 17:00:00,,0
359,1.1.1.5.1.4.3.3.1.3.6,Houten deuren met glas,5.0,4.0,6.0,2020-04-03 08:00:00,2020-04-09 17:00:00,,0
360,1.1.1.5.1.4.3.3.1.3.7,Houten deuren,5.0,4.0,6.0,2020-03-25 08:00:00,2020-03-31 17:00:00,,0
361,1.1.1.5.1.4.3.3.1.3.8,Schilderwerk - PA 2.13 (technisch lokaal),3.0,2.4,3.6,2020-01-08 08:00:00,2020-01-10 17:00:00,,0
362,1.1.1.5.1.4.3.3.1.3.9,"Tegelwerk - PA 2.15, PA 2.10, PA 2.09 en PA 2.08",5.0,4.0,6.0,2020-02-14 08:00:00,2020-02-20 17:00:00,,0
363,1.1.1.5.1.4.3.3.1.3.10,Cementering - PA 2.06,2.0,1.6,2.4,2019-08-01 08:00:00,2019-08-02 17:00:00,,0
364,1.1.1.5.1.4.3.3.1.3.11,Opmeten sanitaire scheidingswanden,1.0,0.8,1.2,2020-02-21 08:00:00,2020-02-21 17:00:00,,0
365,1.1.1.5.1.4.3.3.1.3.12,Sanitaire scheidingswanden,2.0,1.6,2.4,2020-10-15 08:00:00,2020-10-16 17:00:00,,0
366,1.1.1.5.1.4.3.3.1.3.13,Afwerken sanitair,10.0,8.0,12.0,2020-10-19 08:00:00,2020-10-30 17:00:00,,0
367,1.1.1.5.1.4.3.3.1.3.14,Verlaagd plafond,5.0,4.0,6.0,2020-11-02 08:00:00,2020-11-06 17:00:00,,0
368,1.1.1.5.1.4.3.3.1.3.15,Anti-graffiti,1.0,0.8,1.2,2020-11-09 08:00:00,2020-11-09 17:00:00,,0
369,1.1.1.5.1.4.3.3.1.4,"Technieken Zone uitgang naar Rooseveltplaats, Technieken",395.0,395.0,395.0,2019-05-20 08:00:00,2020-11-20 17:00:00,,0
370,1.1.1.5.1.4.3.3.1.4.1,Installatie technieken VDK (voor tegelen/cementeren),15.0,12.0,18.0,2019-08-01 08:00:00,2019-08-21 17:00:00,,0
371,1.1.1.5.1.4.3.3.1.4.2,Installatie taken ICT (voor tegelen/cementeren),15.0,12.0,18.0,2019-06-05 08:00:00,2019-06-25 17:00:00,,0
372,1.1.1.5.1.4.3.3.1.4.3,installatie HVAC,32.0,25.6,38.4,2019-08-01 08:00:00,2019-09-13 17:00:00,,0
373,1.1.1.5.1.4.3.3.1.4.4,Plaatsen RWA 1 + kleppenregisters,38.0,30.4,45.6,2019-08-01 08:00:00,2019-09-23 17:00:00,,0
374,1.1.1.5.1.4.3.3.1.4.5,Plaatsen overdruk trap T28,10.0,8.0,12.0,2020-07-22 08:00:00,2020-08-04 17:00:00,,0
375,1.1.1.5.1.4.3.3.1.4.6,Technieken VVDK na verlaagd plafond/Cementering/betegeling,10.0,8.0,12.0,2020-11-09 08:00:00,2020-11-20 17:00:00,,0
376,1.1.1.5.1.4.3.3.1.4.7,Technieken ICT na verlaagd plafond/Cementering/betegeling,10.0,8.0,12.0,2020-01-23 08:00:00,2020-02-05 17:00:00,,0
377,1.1.1.5.1.4.3.3.1.4.8,Aansluiten ICT,5.0,4.0,6.0,2020-08-05 08:00:00,2020-08-11 17:00:00,,0
378,1.1.1.5.1.4.3.3.1.4.9,Trekken hoofdvoedingskabels,25.0,20.0,30.0,2019-05-20 08:00:00,2019-06-21 17:00:00,,0
379,1.1.1.5.1.4.3.3.2,Zone hoogspanning en pomplokaal,337.0,337.0,337.0,2019-05-17 08:00:00,2020-08-31 17:00:00,,0
380,1.1.1.5.1.4.3.3.2.1,"Bouwkundig, Zone hoogspanning",337.0,337.0,337.0,2019-05-17 08:00:00,2020-08-31 17:00:00,,0
381,1.1.1.5.1.4.3.3.2.1.1,Metselwerk,4.0,3.2,4.8,2019-07-18 08:00:00,2019-07-23 17:00:00,,0
382,1.1.1.5.1.4.3.3.2.1.2,Beslissing OG ivm IMEA,1.0,0.8,1.2,2019-05-17 08:00:00,2019-05-17 17:00:00,,0
383,1.1.1.5.1.4.3.3.2.1.3,Cementering,1.0,0.8,1.2,2019-09-09 08:00:00,2019-09-09 17:00:00,,0
384,1.1.1.5.1.4.3.3.2.1.4,Start opmeting + productie stalen deuren,1.0,0.8,1.2,2019-09-09 08:00:00,2019-09-09 17:00:00,,0
385,1.1.1.5.1.4.3.3.2.1.5,Stalen deuren,3.0,2.4,3.6,2020-08-27 08:00:00,2020-08-31 17:00:00,,0
386,1.1.1.5.1.4.3.3.2.2,Bouwkundig zone pomplokaal,260.0,260.0,260.0,2019-07-18 08:00:00,2020-07-15 17:00:00,,0
387,1.1.1.5.1.4.3.3.2.2.1,Metselwerk,4.0,3.2,4.8,2019-07-18 08:00:00,2019-07-23 17:00:00,,0
388,1.1.1.5.1.4.3.3.2.2.2,Cementering,1.0,0.8,1.2,2019-09-09 08:00:00,2019-09-09 17:00:00,,0
389,1.1.1.5.1.4.3.3.2.2.3,Schilderwerk,1.0,0.8,1.2,2019-12-16 08:00:00,2019-12-16 17:00:00,,0
390,1.1.1.5.1.4.3.3.2.2.4,Start opmeting + productie stalen deuren,1.0,0.8,1.2,2019-07-24 08:00:00,2019-07-24 17:00:00,,0
391,1.1.1.5.1.4.3.3.2.2.5,Stalen deuren,3.0,2.4,3.6,2020-07-13 08:00:00,2020-07-15 17:00:00,,0
392,1.1.1.5.1.4.3.3.2.3,"Technieken, Zone hoogspanning en pomplokaal",148.0,148.0,148.0,2019-05-20 08:00:00,2019-12-11 17:00:00,,0
393,1.1.1.5.1.4.3.3.2.3.1,Installatie technieken VDK,15.0,12.0,18.0,2019-07-24 08:00:00,2019-08-13 17:00:00,,0
394,1.1.1.5.1.4.3.3.2.3.2,Installatie technieken ICT,33.0,26.4,39.6,2019-06-18 08:00:00,2019-08-01 17:00:00,,0
395,1.1.1.5.1.4.3.3.2.3.3,Uitrusting Sprinklerpomplokaal,72.0,57.6,86.4,2019-06-03 08:00:00,2019-09-10 17:00:00,,0
396,1.1.1.5.1.4.3.3.2.3.4,Installatie DWA (DroogWeerAfvoer) en RWA (RegenWaterAfvoer) pompen,45.0,36.0,54.0,2019-10-01 08:00:00,2019-12-02 17:00:00,,0
397,1.1.1.5.1.4.3.3.2.3.5,Trekken hoofdvoedingskabels,25.0,20.0,30.0,2019-05-20 08:00:00,2019-06-21 17:00:00,,0
398,1.1.1.5.1.4.3.3.2.3.6,Aansluitingen ICT,5.0,4.0,6.0,2019-12-05 08:00:00,2019-12-11 17:00:00,,0
399,1.1.1.5.1.4.3.4,Wachterslokaal,288.0,288.0,288.0,2019-02-26 08:00:00,2020-04-02 17:00:00,,45
400,1.1.1.5.1.4.3.4.1,Wachterslokaal bouwkundig,288.0,288.0,288.0,2019-02-26 08:00:00,2020-04-02 17:00:00,,45
401,1.1.1.5.1.4.3.4.1.1,Betonwerken,22.0,17.6,26.4,2019-02-26 08:00:00,2019-03-27 17:00:00,,45
402,1.1.1.5.1.4.3.4.1.2,Metselwerk,5.0,4.0,6.0,2019-03-28 08:00:00,2019-04-03 17:00:00,,0
403,1.1.1.5.1.4.3.4.1.3,Isolatie,5.0,4.0,6.0,2019-04-04 08:00:00,2019-04-10 17:00:00,,0
404,1.1.1.5.1.4.3.4.1.4,Dakstructuur,9.0,7.2,10.8,2019-04-11 08:00:00,2019-04-23 17:00:00,,0
405,1.1.1.5.1.4.3.4.1.5,Polybeton,3.0,2.4,3.6,2019-04-24 08:00:00,2019-04-26 17:00:00,,0
406,1.1.1.5.1.4.3.4.1.6,Start opmeting + productie Ramen,1.0,0.8,1.2,2019-04-29 08:00:00,2019-04-29 17:00:00,,0
407,1.1.1.5.1.4.3.4.1.7,Plaatsing Schrijnwerk ramen,5.0,4.0,6.0,2020-02-18 08:00:00,2020-02-24 17:00:00,,0
408,1.1.1.5.1.4.3.4.1.8,Start opmeting + productie stalen deuren,1.0,0.8,1.2,2019-04-29 08:00:00,2019-04-29 17:00:00,,0
409,1.1.1.5.1.4.3.4.1.9,Plaatsing Stalen deuren,2.0,1.6,2.4,2020-02-25 08:00:00,2020-02-26 17:00:00,,0
410,1.1.1.5.1.4.3.4.1.10,Sanitair - inbouwtoilet,3.0,2.4,3.6,2019-04-04 08:00:00,2019-04-08 17:00:00,,0
411,1.1.1.5.1.4.3.4.1.11,Plaatsing houten deur,2.0,1.6,2.4,2019-11-12 08:00:00,2019-11-13 17:00:00,,0
412,1.1.1.5.1.4.3.4.1.12,Tegelwerk,3.0,2.4,3.6,2019-10-14 08:00:00,2019-10-16 17:00:00,,0
413,1.1.1.5.1.4.3.4.1.13,Plaatsing tablet,5.0,4.0,6.0,2020-03-24 08:00:00,2020-03-30 17:00:00,,0
414,1.1.1.5.1.4.3.4.1.14,Sanitair - afwerking,3.0,2.4,3.6,2020-03-31 08:00:00,2020-04-02 17:00:00,,0
415,1.1.1.5.1.4.3.4.1.15,Schilderwerk,5.0,4.0,6.0,2019-06-11 08:00:00,2019-06-17 17:00:00,,0
416,1.1.1.5.1.4.3.4.1.16,Opmeting + productie Keuken,1.0,0.8,1.2,2019-04-29 08:00:00,2019-04-29 17:00:00,,0
417,1.1.1.5.1.4.3.4.1.17,Keuken,3.0,2.4,3.6,2020-02-18 08:00:00,2020-02-20 17:00:00,,0
418,1.1.1.5.1.4.3.4.2,Wachterslokaal technieken,144.0,144.0,144.0,2019-05-06 08:00:00,2019-11-21 17:00:00,,0
419,1.1.1.5.1.4.3.4.2.1,Technieken vóór tegelwerk (VDK en ICT),5.0,4.0,6.0,2019-05-13 08:00:00,2019-05-17 17:00:00,,0
420,1.1.1.5.1.4.3.4.2.2,Plaatsen hoofdvoedingsborden wachterslokaal,10.0,8.0,12.0,2019-05-06 08:00:00,2019-05-17 17:00:00,,0
421,1.1.1.5.1.4.3.4.2.3,Plaatsen secundaire borden wachterslokaal,5.0,4.0,6.0,2019-07-29 08:00:00,2019-08-02 17:00:00,,0
422,1.1.1.5.1.4.3.4.2.4,Uitrusting wachterslokaal VDK,10.0,8.0,12.0,2019-09-02 08:00:00,2019-09-13 17:00:00,,0
423,1.1.1.5.1.4.3.4.2.5,Uitrusting wachterslokaal ICT (technieken ICT + datakasten),15.0,12.0,18.0,2019-09-16 08:00:00,2019-10-04 17:00:00,,0
424,1.1.1.5.1.4.3.4.2.6,Installatie HVAC,40.0,32.0,48.0,2019-09-16 08:00:00,2019-11-08 17:00:00,,0
425,1.1.1.5.1.4.3.4.2.7,Aansluiten HVAC datatechnisch,9.0,7.2,10.8,2019-11-11 08:00:00,2019-11-21 17:00:00,,0
426,1.1.1.5.1.4.4,afwerking tunnel gedeelte in parking (vluchthuisjes staan onder ruwbouw betreffende trappen),266.0,266.0,266.0,2018-09-27 17:00:00,2019-10-04 17:00:00,,101
427,1.1.1.5.1.4.4.1,MS Technisch Dossier,0.0,0.0,0.0,2018-09-27 17:00:00,2018-09-27 17:00:00,,0
428,1.1.1.5.1.4.4.2,MS Opmeting,0.0,0.0,0.0,2018-09-27 17:00:00,2018-09-27 17:00:00,,0
429,1.1.1.5.1.4.4.3,RUWBOUW autotunnel in parking (na ontkisten PL8),1.0,0.8,1.2,2019-05-13 08:00:00,2019-05-13 17:00:00,,0
430,1.1.1.5.1.4.4.4,Wand tussen trapsledes (T26),4.0,3.2,4.8,2019-02-25 08:00:00,2019-02-28 17:00:00,,32
431,1.1.1.5.1.4.4.5,Vluchttrap Franklin Rooseveltplaats   (T26),2.0,1.6,2.4,2019-03-01 08:00:00,2019-03-04 17:00:00,,8
432,1.1.1.5.1.4.4.6,Dakplaat,5.0,4.0,6.0,2019-03-05 08:00:00,2019-03-11 17:00:00,,20
433,1.1.1.5.1.4.4.7,Vluchttrap tunnel TPG (T25),5.0,4.0,6.0,2019-05-14 08:00:00,2019-05-20 17:00:00,,15
434,1.1.1.5.1.4.4.8,Vluchttrap tunnel prefab (T25),2.0,1.6,2.4,2019-05-21 08:00:00,2019-05-22 17:00:00,,6
435,1.1.1.5.1.4.4.9,Hydraulisch klapluik (T24),5.0,4.0,6.0,2019-09-23 08:00:00,2019-09-27 17:00:00,,8
436,1.1.1.5.1.4.4.10,Vluchttrap Frankrijklei Tunnel prefab (T24),4.0,3.2,4.8,2019-01-21 08:00:00,2019-01-24 17:00:00,,12
437,1.1.1.5.1.4.4.11,Koppeling ICT,5.0,4.0,6.0,2019-09-30 08:00:00,2019-10-04 17:00:00,,0
438,1.1.1.5.1.4.5,technieken Parking -1 (ingevoegd 22.03.19),313.0,313.0,313.0,2019-03-12 08:00:00,2020-05-21 17:00:00,,0
439,1.1.1.5.1.4.5.1,Plaatsen trekbuisen tegen plafond kant RWA koker,11.0,8.8,13.2,2019-03-12 08:00:00,2019-03-26 17:00:00,,0
440,1.1.1.5.1.4.5.2,Plaatsen kabelbanen,33.0,26.4,39.6,2019-03-25 08:00:00,2019-05-08 17:00:00,,0
441,1.1.1.5.1.4.5.3,Trekken hoofdvoedingskabels,25.0,20.0,30.0,2019-05-20 08:00:00,2019-06-21 17:00:00,,0
442,1.1.1.5.1.4.5.4,Uitvoeren saldo trekken hoofdvoedingskabels + aansluiten in wachterslokaal,20.0,16.0,24.0,2019-07-31 08:00:00,2019-08-27 17:00:00,,0
443,1.1.1.5.1.4.5.5,Plaatsen technieken tegen plafond zone 1,16.0,12.8,19.2,2020-02-06 08:00:00,2020-02-27 17:00:00,,0
444,1.1.1.5.1.4.5.6,Plaatsen technieken tegen plafond zone 2,14.0,11.2,16.8,2020-02-28 08:00:00,2020-03-18 17:00:00,,0
445,1.1.1.5.1.4.5.7,Plaatsen technieken tegen plafond zone 3,10.0,8.0,12.0,2019-04-23 08:00:00,2019-05-06 17:00:00,,0
446,1.1.1.5.1.4.5.8,Plaatsen technieken tegen plafond zone 4,11.0,8.8,13.2,2019-05-10 08:00:00,2019-05-24 17:00:00,,0
447,1.1.1.5.1.4.5.9,Plaatsen lichtlijnen zone 1 + uitrusting VVDK ,25.0,20.0,30.0,2020-04-08 08:00:00,2020-05-12 17:00:00,,0
448,1.1.1.5.1.4.5.10,Plaatsen lichtlijnen zone 2 + uitrusting VVDK ,31.0,24.8,37.2,2019-08-21 08:00:00,2019-10-02 17:00:00,,0
449,1.1.1.5.1.4.5.11,Plaatsen lichtlijnen zone 3 + uitrusting VVDK ,25.0,20.0,30.0,2019-10-03 08:00:00,2019-11-06 17:00:00,,0
450,1.1.1.5.1.4.5.12,Plaatsen lichtlijnen zone 4 + uitrusting VVDK ,25.0,20.0,30.0,2020-04-17 08:00:00,2020-05-21 17:00:00,,0
451,1.1.1.5.1.4.5.13,Plaatsen sprinklers en haspels,58.0,46.4,69.6,2019-06-03 08:00:00,2019-08-21 17:00:00,,0
452,1.1.1.5.1.4.5.14,Plaatsen technieken RWA (Ventilatie),20.0,16.0,24.0,2019-07-29 08:00:00,2019-08-23 17:00:00,,0
453,1.1.1.5.1.4.5.15,Plaatsen RWA-set 2,30.0,24.0,36.0,2019-06-03 08:00:00,2019-07-12 17:00:00,,0
454,1.1.1.5.1.4.5.16,Aansluiting technieken ICT,15.0,12.0,18.0,2019-12-02 08:00:00,2019-12-20 17:00:00,,0
455,1.1.1.5.1.5,niv -2,677.0,677.0,677.0,2017-10-23 08:00:00,2020-05-26 17:00:00,,1233
456,1.1.1.5.1.5.1,ruwbouw -2,355.0,355.0,355.0,2017-10-23 08:00:00,2019-03-01 17:00:00,,357
457,1.1.1.5.1.5.1.1,stross,68.0,68.0,68.0,2017-10-23 08:00:00,2018-01-24 17:00:00,,0
458,1.1.1.5.1.5.1.1.1,zone A => 13.860m³,20.0,16.0,24.0,2017-10-23 08:00:00,2017-11-17 17:00:00,,0
459,1.1.1.5.1.5.1.1.2,zone B => 6.753m³,10.0,8.0,12.0,2017-11-20 08:00:00,2017-12-01 17:00:00,,0
460,1.1.1.5.1.5.1.1.3,zone C => 7.434m³,10.0,8.0,12.0,2017-12-04 08:00:00,2017-12-15 17:00:00,,0
461,1.1.1.5.1.5.1.1.4,zone D => 9.450m³,14.0,11.2,16.8,2017-12-18 08:00:00,2018-01-04 17:00:00,,0
462,1.1.1.5.1.5.1.1.5,zone E => 533m³,3.0,2.4,3.6,2018-01-22 08:00:00,2018-01-24 17:00:00,,0
463,1.1.1.5.1.5.1.2,grondankers en beschoeide sleuven,88.0,88.0,88.0,2017-11-10 08:00:00,2018-03-13 17:00:00,,0
464,1.1.1.5.1.5.1.2.1,opmaak RN en technische fiche,5.0,4.0,6.0,2017-11-10 08:00:00,2017-11-16 17:00:00,,0
465,1.1.1.5.1.5.1.2.2,nazicht en intern goedkeuren,20.0,16.0,24.0,2017-11-17 08:00:00,2017-12-14 17:00:00,,0
466,1.1.1.5.1.5.1.2.3,bestellen materialen,17.0,13.6,20.4,2017-12-15 08:00:00,2018-01-08 17:00:00,,0
467,1.1.1.5.1.5.1.2.4,proefboring,1.0,0.8,1.2,2018-01-22 08:00:00,2018-01-22 17:00:00,,0
468,1.1.1.5.1.5.1.2.5,boren grondankers 1e rij B1-B12 (14st?),4.0,3.2,4.8,2018-01-23 08:00:00,2018-01-26 17:00:00,,0
469,1.1.1.5.1.5.1.2.6,boren grondankers 1e rij B12-B34 (14st?),4.0,3.2,4.8,2018-01-29 08:00:00,2018-02-01 17:00:00,,0
470,1.1.1.5.1.5.1.2.7,boren grondankers 2e rij B1-B12 (14st?),4.0,3.2,4.8,2018-02-19 08:00:00,2018-02-22 17:00:00,,0
471,1.1.1.5.1.5.1.2.8,uitharden proefboring,20.0,16.0,24.0,2018-01-23 08:00:00,2018-02-19 17:00:00,,0
472,1.1.1.5.1.5.1.2.9,uitharden grondankers 1e rij B1-B12,10.0,8.0,12.0,2018-01-29 08:00:00,2018-02-09 17:00:00,,0
473,1.1.1.5.1.5.1.2.10,uitharden grondankers 1e rij B12-B34,10.0,8.0,12.0,2018-02-02 08:00:00,2018-02-15 17:00:00,,0
474,1.1.1.5.1.5.1.2.11,uitharden grondankers 2e rij B1-B12,10.0,8.0,12.0,2018-02-23 08:00:00,2018-03-08 17:00:00,,0
475,1.1.1.5.1.5.1.2.12,testen proefboring,1.0,0.8,1.2,2018-02-20 08:00:00,2018-02-20 17:00:00,,0
476,1.1.1.5.1.5.1.2.13,aanspannen en afwerken grondankers 1e rij B1-B12,3.0,2.4,3.6,2018-02-12 08:00:00,2018-02-14 17:00:00,,0
477,1.1.1.5.1.5.1.2.14,aanspannen en afwerken grondankers 1e rij B12-B34,3.0,2.4,3.6,2018-02-16 08:00:00,2018-02-20 17:00:00,,0
478,1.1.1.5.1.5.1.2.15,aanspannen en afwerken grondankers 2e rij B1-B12,3.0,2.4,3.6,2018-03-09 08:00:00,2018-03-13 17:00:00,,0
479,1.1.1.5.1.5.1.2.16,grondwerk van 1e rij naar 2e rij,2.0,1.6,2.4,2018-02-15 08:00:00,2018-02-16 17:00:00,,0
480,1.1.1.5.1.5.1.3,Spaanse wal en beschoeide sleuven,41.0,41.0,41.0,2017-12-18 08:00:00,2018-02-12 17:00:00,,0
481,1.1.1.5.1.5.1.3.1,vernageling Spaanse wal 3x18st/rij,15.0,12.0,18.0,2018-01-23 08:00:00,2018-02-12 17:00:00,,0
482,1.1.1.5.1.5.1.3.2,tijdelijke grondankers kopwand ATN,5.0,4.0,6.0,2018-02-06 08:00:00,2018-02-12 17:00:00,,0
483,1.1.1.5.1.5.1.3.3,beschoeide sleuven,15.0,12.0,18.0,2017-12-18 08:00:00,2018-01-05 17:00:00,,0
484,1.1.1.5.1.5.1.4,definitieve trekkankers 390 st [280st ??],115.0,115.0,115.0,2018-02-06 08:00:00,2018-07-16 17:00:00,,0
485,1.1.1.5.1.5.1.4.1,zone S1,15.0,12.0,18.0,2018-02-13 08:00:00,2018-03-05 17:00:00,,0
486,1.1.1.5.1.5.1.4.2,zone S2,8.0,6.4,9.6,2018-03-06 08:00:00,2018-03-15 17:00:00,,0
487,1.1.1.5.1.5.1.4.3,zone S3,3.0,2.4,3.6,2018-03-16 08:00:00,2018-03-20 17:00:00,,0
488,1.1.1.5.1.5.1.4.4,zone S4,12.0,9.6,14.4,2018-06-08 08:00:00,2018-06-25 17:00:00,,0
489,1.1.1.5.1.5.1.4.5,Trekankers VL1/2,5.0,4.0,6.0,2018-02-13 08:00:00,2018-02-19 17:00:00,,0
490,1.1.1.5.1.5.1.4.6,Trekankers VL3,5.0,4.0,6.0,2018-02-06 08:00:00,2018-02-12 17:00:00,,0
491,1.1.1.5.1.5.1.4.7,Grondwerk naar trekankers VL4,2.0,1.6,2.4,2018-06-07 08:00:00,2018-06-08 17:00:00,,0
492,1.1.1.5.1.5.1.4.8,Trekankers VL4 - 40 stuks,5.0,4.0,6.0,2018-06-11 08:00:00,2018-06-15 17:00:00,,0
493,1.1.1.5.1.5.1.4.9,Grondwerk naar trekankers VL5,2.0,1.6,2.4,2018-06-11 08:00:00,2018-06-12 17:00:00,,0
494,1.1.1.5.1.5.1.4.10,Trekankers VL5 - 40 stuks,5.0,4.0,6.0,2018-06-18 08:00:00,2018-06-22 17:00:00,,0
495,1.1.1.5.1.5.1.4.11,Grondwerk naar trekankers VL6,2.0,1.6,2.4,2018-06-13 08:00:00,2018-06-14 17:00:00,,0
496,1.1.1.5.1.5.1.4.12,Trekankers VL6 - 40 stuks,5.0,4.0,6.0,2018-06-25 08:00:00,2018-06-29 17:00:00,,0
497,1.1.1.5.1.5.1.4.13,Grondwerk naar trekankers VL7,2.0,1.6,2.4,2018-06-15 08:00:00,2018-06-18 17:00:00,,0
498,1.1.1.5.1.5.1.4.14,Trekankers VL7 - 31 stuks,5.0,4.0,6.0,2018-07-03 08:00:00,2018-07-09 17:00:00,,0
499,1.1.1.5.1.5.1.4.15,Grondwerk naar trekankers VL8,2.0,1.6,2.4,2018-06-19 08:00:00,2018-06-20 17:00:00,,0
500,1.1.1.5.1.5.1.4.16,Trekankers VL8 - 31 stuks,5.0,4.0,6.0,2018-07-10 08:00:00,2018-07-16 17:00:00,,0
501,1.1.1.5.1.5.1.5,vloerplaat op volle grond,253.0,253.0,253.0,2018-03-14 08:00:00,2019-03-01 17:00:00,,201
502,1.1.1.5.1.5.1.5.1,zone VL 1,9.0,9.0,9.0,2018-04-06 08:00:00,2018-04-18 17:00:00,,0
503,1.1.1.5.1.5.1.5.1.1,afwatering,2.0,1.6,2.4,2018-04-06 08:00:00,2018-04-09 17:00:00,,0
504,1.1.1.5.1.5.1.5.1.2,werkvloer,3.0,2.4,3.6,2018-04-10 08:00:00,2018-04-12 17:00:00,,0
505,1.1.1.5.1.5.1.5.1.3,bekisten stortnaden,4.0,3.2,4.8,2018-04-13 08:00:00,2018-04-18 17:00:00,,0
506,1.1.1.5.1.5.1.5.1.4,wapenen,3.0,2.4,3.6,2018-04-13 08:00:00,2018-04-17 17:00:00,,0
507,1.1.1.5.1.5.1.5.1.5,betonneren,1.0,0.8,1.2,2018-04-18 08:00:00,2018-04-18 17:00:00,,0
508,1.1.1.5.1.5.1.5.2,zone VL 2,9.0,9.0,9.0,2018-03-30 08:00:00,2018-04-11 17:00:00,,0
509,1.1.1.5.1.5.1.5.2.1,werkvloer,2.0,1.6,2.4,2018-03-30 08:00:00,2018-04-02 17:00:00,,0
510,1.1.1.5.1.5.1.5.2.2,bekisten stortnaden,3.0,2.4,3.6,2018-04-04 08:00:00,2018-04-06 17:00:00,,0
511,1.1.1.5.1.5.1.5.2.3,wapenen,4.0,3.2,4.8,2018-04-04 08:00:00,2018-04-09 17:00:00,,0
512,1.1.1.5.1.5.1.5.2.4,betonneren,2.0,1.6,2.4,2018-04-10 08:00:00,2018-04-11 17:00:00,,0
513,1.1.1.5.1.5.1.5.3,zone VL 3,8.0,8.0,8.0,2018-03-14 08:00:00,2018-03-23 17:00:00,,0
514,1.1.1.5.1.5.1.5.3.1,werkvloer,1.0,0.8,1.2,2018-03-14 08:00:00,2018-03-14 17:00:00,,0
515,1.1.1.5.1.5.1.5.3.2,bekisten stortnaden,3.0,2.4,3.6,2018-03-15 08:00:00,2018-03-19 17:00:00,,0
516,1.1.1.5.1.5.1.5.3.3,wapenen,6.0,4.8,7.2,2018-03-15 08:00:00,2018-03-22 17:00:00,,0
517,1.1.1.5.1.5.1.5.3.4,betonneren,1.0,0.8,1.2,2018-03-23 08:00:00,2018-03-23 17:00:00,,0
518,1.1.1.5.1.5.1.5.4,zone VL 4,185.0,185.0,185.0,2018-06-18 08:00:00,2019-03-01 17:00:00,,29
519,1.1.1.5.1.5.1.5.4.1,afwatering,2.0,1.6,2.4,2018-06-18 08:00:00,2018-06-19 17:00:00,,8
520,1.1.1.5.1.5.1.5.4.2,werkvloer,1.0,0.8,1.2,2018-06-20 08:00:00,2018-06-20 17:00:00,,6
521,1.1.1.5.1.5.1.5.4.3,bekisten stortnaden,4.0,3.2,4.8,2019-02-26 08:00:00,2019-03-01 17:00:00,,9
522,1.1.1.5.1.5.1.5.4.4,wapenen,4.0,3.2,4.8,2018-06-25 08:00:00,2018-06-28 17:00:00,,0
523,1.1.1.5.1.5.1.5.4.5,betonneren,1.0,0.8,1.2,2018-06-29 08:00:00,2018-06-29 17:00:00,,6
524,1.1.1.5.1.5.1.5.5,zone VL 5,16.0,16.0,16.0,2018-06-25 08:00:00,2018-07-16 17:00:00,,37
525,1.1.1.5.1.5.1.5.5.1,afwatering,4.0,3.2,4.8,2018-06-25 08:00:00,2018-06-28 17:00:00,,16
526,1.1.1.5.1.5.1.5.5.2,werkvloer,4.0,3.2,4.8,2018-06-29 08:00:00,2018-07-04 17:00:00,,6
527,1.1.1.5.1.5.1.5.5.3,bekisten stortnaden,3.0,2.4,3.6,2018-07-05 08:00:00,2018-07-09 17:00:00,,9
528,1.1.1.5.1.5.1.5.5.4,wapenen,6.0,4.8,7.2,2018-07-05 08:00:00,2018-07-12 17:00:00,,0
529,1.1.1.5.1.5.1.5.5.5,betonneren,2.0,1.6,2.4,2018-07-13 08:00:00,2018-07-16 17:00:00,,6
530,1.1.1.5.1.5.1.5.6,zone VL 6,17.0,17.0,17.0,2018-07-02 08:00:00,2018-07-24 17:00:00,,33
531,1.1.1.5.1.5.1.5.6.1,afwatering,1.0,0.8,1.2,2018-07-02 08:00:00,2018-07-02 17:00:00,,12
532,1.1.1.5.1.5.1.5.6.2,werkvloer,1.0,0.8,1.2,2018-07-03 08:00:00,2018-07-03 17:00:00,,6
533,1.1.1.5.1.5.1.5.6.3,bekisten stortnaden,3.0,2.4,3.6,2018-07-04 08:00:00,2018-07-06 17:00:00,,9
534,1.1.1.5.1.5.1.5.6.4,wapenen,6.0,4.8,7.2,2018-07-13 08:00:00,2018-07-20 17:00:00,,0
535,1.1.1.5.1.5.1.5.6.5,betonneren,2.0,1.6,2.4,2018-07-23 08:00:00,2018-07-24 17:00:00,,6
536,1.1.1.5.1.5.1.5.7,zone VL 7,38.0,38.0,38.0,2018-06-19 08:00:00,2018-08-09 17:00:00,,61
537,1.1.1.5.1.5.1.5.7.1,septische putten,10.0,8.0,12.0,2018-06-19 08:00:00,2018-07-02 17:00:00,,20
538,1.1.1.5.1.5.1.5.7.2,afwatering,5.0,4.0,6.0,2018-07-10 08:00:00,2018-07-16 17:00:00,,20
539,1.1.1.5.1.5.1.5.7.3,werkvloer,1.0,0.8,1.2,2018-07-31 08:00:00,2018-07-31 17:00:00,,6
540,1.1.1.5.1.5.1.5.7.4,bekisten stortnaden,3.0,2.4,3.6,2018-08-01 08:00:00,2018-08-03 17:00:00,,9
541,1.1.1.5.1.5.1.5.7.5,wapenen,5.0,4.0,6.0,2018-08-01 08:00:00,2018-08-07 17:00:00,,0
542,1.1.1.5.1.5.1.5.7.6,betonneren,2.0,1.6,2.4,2018-08-08 08:00:00,2018-08-09 17:00:00,,6
543,1.1.1.5.1.5.1.5.8,zone VL 8,21.0,21.0,21.0,2018-07-17 08:00:00,2018-08-14 17:00:00,,41
544,1.1.1.5.1.5.1.5.8.1,afwatering,5.0,4.0,6.0,2018-07-17 08:00:00,2018-07-23 17:00:00,,20
545,1.1.1.5.1.5.1.5.8.2,werkvloer,1.0,0.8,1.2,2018-07-24 08:00:00,2018-07-24 17:00:00,,6
546,1.1.1.5.1.5.1.5.8.3,bekisten stortnaden,3.0,2.4,3.6,2018-07-25 08:00:00,2018-07-27 17:00:00,,9
547,1.1.1.5.1.5.1.5.8.4,wapenen,4.0,3.2,4.8,2018-08-08 08:00:00,2018-08-13 17:00:00,,0
548,1.1.1.5.1.5.1.5.8.5,betonneren,1.0,0.8,1.2,2018-08-14 08:00:00,2018-08-14 17:00:00,,6
549,1.1.1.5.1.5.1.6,vloerplaat bekist -2,185.0,185.0,185.0,2018-06-18 08:00:00,2019-03-01 17:00:00,,156
550,1.1.1.5.1.5.1.6.1,zone BK1,109.0,109.0,109.0,2018-06-18 08:00:00,2018-11-15 17:00:00,,31
551,1.1.1.5.1.5.1.6.1.1,bekisten(S1),15.0,12.0,18.0,2018-06-18 08:00:00,2018-07-06 17:00:00,,10
552,1.1.1.5.1.5.1.6.1.2,wapenen,8.0,6.4,9.6,2018-08-28 08:00:00,2018-09-06 17:00:00,,10
553,1.1.1.5.1.5.1.6.1.3,betonneren,1.0,0.8,1.2,2018-09-07 08:00:00,2018-09-07 17:00:00,,3
554,1.1.1.5.1.5.1.6.1.4,ontkisten,7.0,5.6,8.4,2018-11-07 08:00:00,2018-11-15 17:00:00,,8
555,1.1.1.5.1.5.1.6.2,zone BK2,107.0,107.0,107.0,2018-07-09 08:00:00,2018-12-04 17:00:00,,31
556,1.1.1.5.1.5.1.6.2.1,bekisten(S2),44.0,35.2,52.8,2018-07-09 08:00:00,2018-09-06 17:00:00,,10
557,1.1.1.5.1.5.1.6.2.2,wapenen,5.0,4.0,6.0,2018-09-19 08:00:00,2018-09-25 17:00:00,,10
558,1.1.1.5.1.5.1.6.2.3,betonneren,1.0,0.8,1.2,2018-09-26 08:00:00,2018-09-26 17:00:00,,3
559,1.1.1.5.1.5.1.6.2.4,ontkisten,7.0,5.6,8.4,2018-11-26 08:00:00,2018-12-04 17:00:00,,8
560,1.1.1.5.1.5.1.6.3,zone BK3,76.0,76.0,76.0,2018-11-16 08:00:00,2019-03-01 17:00:00,,31
561,1.1.1.5.1.5.1.6.3.1,bekisten(S1),7.0,5.6,8.4,2018-11-16 08:00:00,2018-11-26 17:00:00,,10
562,1.1.1.5.1.5.1.6.3.2,wapenen,5.0,4.0,6.0,2018-11-27 08:00:00,2018-12-03 17:00:00,,10
563,1.1.1.5.1.5.1.6.3.3,betonneren,1.0,0.8,1.2,2018-12-04 08:00:00,2018-12-04 17:00:00,,3
564,1.1.1.5.1.5.1.6.3.4,ontkisten (BK3 -2),5.0,4.0,6.0,2019-02-25 08:00:00,2019-03-01 17:00:00,,8
565,1.1.1.5.1.5.1.6.4,zone perron -2,74.0,74.0,74.0,2018-09-03 08:00:00,2018-12-13 17:00:00,,63
566,1.1.1.5.1.5.1.6.4.1,bekisten,12.0,9.6,14.4,2018-09-03 08:00:00,2018-09-18 17:00:00,,36
567,1.1.1.5.1.5.1.6.4.2,wapenen,3.0,2.4,3.6,2018-09-19 08:00:00,2018-09-21 17:00:00,,0
568,1.1.1.5.1.5.1.6.4.3,betonneren,1.0,0.8,1.2,2018-10-05 08:00:00,2018-10-05 17:00:00,,6
569,1.1.1.5.1.5.1.6.4.4,"ontkisten (niv-2, vloerplaat bekist, zone perron -2)",7.0,5.6,8.4,2018-12-05 08:00:00,2018-12-13 17:00:00,,21
570,1.1.1.5.1.5.2,afwerking (niv -2),468.0,468.0,468.0,2018-08-09 17:00:00,2020-05-26 17:00:00,,876
571,1.1.1.5.1.5.2.1,MS Technisch Dossier,0.0,0.0,0.0,2018-08-09 17:00:00,2018-08-09 17:00:00,,0
572,1.1.1.5.1.5.2.2,MS Opmeting,0.0,0.0,0.0,2018-12-05 17:00:00,2018-12-05 17:00:00,,0
573,1.1.1.5.1.5.2.3,Nieuwe structuren -2,0.0,0.0,0.0,2019-07-29 17:00:00,2019-07-29 17:00:00,,0
574,1.1.1.5.1.5.2.4,Zandstralen niveau -2 (Proper maken wanden),20.0,16.0,24.0,2019-07-30 08:00:00,2019-08-26 17:00:00,,0
575,1.1.1.5.1.5.2.5,Plafondafwerking,10.0,8.0,12.0,2019-08-27 08:00:00,2019-09-09 17:00:00,,0
576,1.1.1.5.1.5.2.6,Start opmeting + productie stalen deuren,1.0,0.8,1.2,2019-07-30 08:00:00,2019-07-30 17:00:00,,0
577,1.1.1.5.1.5.2.7,Plaatsing Schrijnwerk deuren,5.0,4.0,6.0,2020-05-20 08:00:00,2020-05-26 17:00:00,,0
578,1.1.1.5.1.5.2.8,Vloerafwerking: transparante epoxy --> gepolierd - zone zuidoost,10.0,8.0,12.0,2019-07-18 08:00:00,2019-07-31 17:00:00,,48
579,1.1.1.5.1.5.2.9,Vloerafwerking: transparante epoxy --> gepolierd - zone noordoost,4.0,3.2,4.8,2019-08-01 08:00:00,2019-08-06 17:00:00,,48
580,1.1.1.5.1.5.2.10,Vloerafwerking: gepolierd - zone zuidwest,10.0,8.0,12.0,2019-08-07 08:00:00,2019-08-20 17:00:00,,48
581,1.1.1.5.1.5.2.11,Vloerafwerking: gepolierd - zone noordwest,10.0,8.0,12.0,2019-08-21 08:00:00,2019-09-03 17:00:00,,48
582,1.1.1.5.1.5.2.12,Betonnen prefab vloerelementen: kant oost,10.0,8.0,12.0,2019-09-04 08:00:00,2019-09-17 17:00:00,,48
583,1.1.1.5.1.5.2.13,Betonnen prefab vloerelementen: centraal,10.0,8.0,12.0,2019-09-18 08:00:00,2019-10-01 17:00:00,,48
584,1.1.1.5.1.5.2.14,Betonnen prefab vloerelementen: kant west,10.0,8.0,12.0,2019-10-02 08:00:00,2019-10-15 17:00:00,,48
585,1.1.1.5.1.5.2.15,Vloerafwerking: belijning,15.0,12.0,18.0,2019-12-02 08:00:00,2019-12-20 17:00:00,,0
586,1.1.1.5.1.5.2.16,Anti-graffiti,7.0,5.6,8.4,2020-01-06 08:00:00,2020-01-14 17:00:00,,0
587,1.1.1.5.1.5.2.17,Start opmeting rookscherm thv BK3,1.0,0.8,1.2,2019-05-14 08:00:00,2019-05-14 17:00:00,,90
588,1.1.1.5.1.5.2.18,Plaatsing rookscherm thv BK3,10.0,8.0,12.0,2019-11-07 08:00:00,2019-11-20 17:00:00,,90
589,1.1.1.5.1.5.2.19,Start opmeting rookscherm thv helling nr. 4,1.0,0.8,1.2,2019-10-08 08:00:00,2019-10-08 17:00:00,,90
590,1.1.1.5.1.5.2.20,Plaatsing rookscherm thv helling nr. 4,10.0,8.0,12.0,2020-04-02 08:00:00,2020-04-15 17:00:00,,90
591,1.1.1.5.1.5.2.21,Start opmeting rookscherm thv helling nr. 6,1.0,0.8,1.2,2019-10-08 08:00:00,2019-10-08 17:00:00,,90
592,1.1.1.5.1.5.2.22,Plaatsing rookscherm thv helling nr. 6,10.0,8.0,12.0,2020-04-02 08:00:00,2020-04-15 17:00:00,,90
593,1.1.1.5.1.5.2.23,Start opmeting poort helling nr. 8,1.0,0.8,1.2,2019-07-09 08:00:00,2019-07-09 17:00:00,,0
594,1.1.1.5.1.5.2.24,Plaatsing Poort helling nr. 8,5.0,4.0,6.0,2019-11-20 08:00:00,2019-11-26 17:00:00,,0
595,1.1.1.5.1.5.2.25,Start opmeting leuning balk B28 (gekromde balk),1.0,0.8,1.2,2019-04-08 08:00:00,2019-04-08 17:00:00,,0
596,1.1.1.5.1.5.2.26,Plaatsing Leuning balk B28 (gekromde balk),5.0,4.0,6.0,2019-11-18 08:00:00,2019-11-22 17:00:00,,0
597,1.1.1.5.1.5.2.27,Mobiele paaltjes,5.0,4.0,6.0,2019-11-12 08:00:00,2019-11-18 17:00:00,,0
598,1.1.1.5.1.5.3,technieken Parking -2 ingevoegd 22.03.19,182.0,182.0,182.0,2019-04-05 08:00:00,2019-12-16 17:00:00,,0
599,1.1.1.5.1.5.3.1,Installatie kabelbanen,30.0,24.0,36.0,2019-04-05 08:00:00,2019-05-16 17:00:00,,0
600,1.1.1.5.1.5.3.2,Installatie borden,5.0,4.0,6.0,2019-10-07 08:00:00,2019-10-11 17:00:00,,0
601,1.1.1.5.1.5.3.3,Kabeltrek hoofdvoedingskabels,25.0,20.0,30.0,2019-05-20 08:00:00,2019-06-21 17:00:00,,0
602,1.1.1.5.1.5.3.4,Installatie technieken VDK,75.0,60.0,90.0,2019-06-07 08:00:00,2019-09-19 17:00:00,,0
603,1.1.1.5.1.5.3.5,Installatie sec. kabelwegen ICT,43.0,34.4,51.6,2019-04-05 08:00:00,2019-06-04 17:00:00,,0
604,1.1.1.5.1.5.3.6,Kabeltrek ICT,30.0,24.0,36.0,2019-05-27 08:00:00,2019-07-05 17:00:00,,0
605,1.1.1.5.1.5.3.7,Installatie technieken ICT,79.0,63.2,94.8,2019-06-27 08:00:00,2019-10-15 17:00:00,,0
606,1.1.1.5.1.5.3.8,Afwerking technieken ICT,10.0,8.0,12.0,2019-12-03 08:00:00,2019-12-16 17:00:00,,0
607,1.1.1.5.1.5.3.9,Installatie BBI,40.0,32.0,48.0,2019-08-19 08:00:00,2019-10-11 17:00:00,,0
608,1.1.1.5.1.5.3.10,Installatie RWA,30.0,24.0,36.0,2019-10-15 08:00:00,2019-11-25 17:00:00,,0
609,1.1.1.5.1.5.3.11,Installatie RWA pompinstallatie,43.0,34.4,51.6,2019-10-01 08:00:00,2019-11-28 17:00:00,,0
610,1.1.1.5.1.6,niv -3,668.0,668.0,668.0,2018-02-08 08:00:00,2020-08-31 17:00:00,,646
611,1.1.1.5.1.6.1,ruwbouw -3,324.0,324.0,324.0,2018-02-08 08:00:00,2019-05-07 17:00:00,,556
612,1.1.1.5.1.6.1.1,afwerken zone ATZ tot vide,80.0,64.0,96.0,2018-02-08 08:00:00,2018-05-30 17:00:00,,0
613,1.1.1.5.1.6.1.2,afbraak ribbenkast en parking (in 2e shift ?),50.0,40.0,60.0,2018-03-14 08:00:00,2018-05-22 17:00:00,,0
614,1.1.1.5.1.6.1.3,Vertraging afbraak ribbenkast tgv olievat/vervuilde grond,5.0,4.0,6.0,2018-05-31 08:00:00,2018-06-06 17:00:00,,0
615,1.1.1.5.1.6.1.4,funderingssokkels en kolommen (zone nieuw),56.0,44.8,67.2,2018-06-07 08:00:00,2018-08-23 17:00:00,,60
616,1.1.1.5.1.6.1.5,Balken tegen plafond (zone bestaand),166.0,132.8,199.2,2018-05-02 08:00:00,2018-12-19 17:00:00,,320
617,1.1.1.5.1.6.1.6,Afdek pompput (zone bestaand),15.0,12.0,18.0,2019-02-04 08:00:00,2019-02-22 17:00:00,,40
618,1.1.1.5.1.6.1.7,wand tegen bestaande diepwand (zone nieuw) - metselwerk,22.0,17.6,26.4,2019-04-08 08:00:00,2019-05-07 17:00:00,,40
619,1.1.1.5.1.6.1.8,wand boven kopbalk 3.15 tem 3.22 (zone bestaand) - metselwerk,32.0,25.6,38.4,2019-03-18 08:00:00,2019-04-30 17:00:00,,0
620,1.1.1.5.1.6.1.9,saldo massabeton (zone bestaand),32.0,25.6,38.4,2019-02-25 08:00:00,2019-04-09 17:00:00,,96
621,1.1.1.5.1.6.2,afwerking (niv-3),467.0,467.0,467.0,2018-11-15 17:00:00,2020-08-31 17:00:00,,90
622,1.1.1.5.1.6.2.1,MS Technisch Dossier,0.0,0.0,0.0,2018-11-15 17:00:00,2018-11-15 17:00:00,,0
623,1.1.1.5.1.6.2.2,MS Opmeting,0.0,0.0,0.0,2019-03-13 17:00:00,2019-03-13 17:00:00,,0
624,1.1.1.5.1.6.2.3,Nieuwe structuren -3,0.0,0.0,0.0,2019-11-04 17:00:00,2019-11-04 17:00:00,,0
625,1.1.1.5.1.6.2.4,Waterstralen niveau -3,14.0,11.2,16.8,2019-04-10 08:00:00,2019-04-29 17:00:00,,0
626,1.1.1.5.1.6.2.5,Start opmeting + productie stalen deuren,1.0,0.8,1.2,2019-11-05 08:00:00,2019-11-05 17:00:00,,0
627,1.1.1.5.1.6.2.6,Schrijnwerk deuren,4.0,3.2,4.8,2020-08-26 08:00:00,2020-08-31 17:00:00,,0
628,1.1.1.5.1.6.2.7,Vloerafwerking: gepolierd - noord,10.0,8.0,12.0,2019-07-09 08:00:00,2019-07-22 17:00:00,,0
629,1.1.1.5.1.6.2.8,Vloerafwerking: gepolierd - centraal,10.0,8.0,12.0,2019-04-24 08:00:00,2019-05-07 17:00:00,,0
630,1.1.1.5.1.6.2.9,Vloerafwerking: gepolierd - zuid,10.0,8.0,12.0,2019-04-10 08:00:00,2019-04-23 17:00:00,,0
631,1.1.1.5.1.6.2.10,Vloerafwerking: belijning,5.0,4.0,6.0,2019-12-09 08:00:00,2019-12-13 17:00:00,,0
632,1.1.1.5.1.6.2.11,Betonnen prefab vloerelementen - noord,3.0,2.4,3.6,2019-08-20 08:00:00,2019-08-22 17:00:00,,30
633,1.1.1.5.1.6.2.12,Betonnen prefab vloerelementen - centraal,10.0,8.0,12.0,2019-08-06 08:00:00,2019-08-19 17:00:00,,30
634,1.1.1.5.1.6.2.13,Betonnen prefab vloerelementen - zuid,10.0,8.0,12.0,2019-07-23 08:00:00,2019-08-05 17:00:00,,30
635,1.1.1.5.1.6.2.14,Anti-graffiti,5.0,4.0,6.0,2020-01-06 08:00:00,2020-01-10 17:00:00,,0
636,1.1.1.5.1.6.2.15,Start Opmeting Rookschermen (thv helling nr. 8),1.0,0.8,1.2,2019-07-09 08:00:00,2019-07-09 17:00:00,,0
637,1.1.1.5.1.6.2.16,Plaatsing rookscherm (thv helling nr. 8),10.0,8.0,12.0,2020-01-02 08:00:00,2020-01-15 17:00:00,,0
638,1.1.1.5.1.6.2.17,Start Opmeting + productie Borstweringen op hellingen,1.0,0.8,1.2,2019-09-16 08:00:00,2019-09-16 17:00:00,,0
639,1.1.1.5.1.6.2.18,"Borstweringen op hellingen nr. 6, 8 en 9",20.0,16.0,24.0,2019-11-14 08:00:00,2019-12-11 17:00:00,,0
640,1.1.1.5.1.6.2.19,Mobiele paaltjes,7.0,5.6,8.4,2019-12-12 08:00:00,2019-12-20 17:00:00,,0
641,1.1.1.5.1.6.3,technieken Parking -3 ingevoegd 22.03.19,184.0,184.0,184.0,2019-04-03 08:00:00,2019-12-16 17:00:00,,0
642,1.1.1.5.1.6.3.1,Installatie kabelbanen,31.0,24.8,37.2,2019-04-03 08:00:00,2019-05-15 17:00:00,,0
643,1.1.1.5.1.6.3.2,Installatie borden,15.0,12.0,18.0,2019-10-07 08:00:00,2019-10-25 17:00:00,,0
644,1.1.1.5.1.6.3.3,Kabeltrek hoofdvoedingskabels,22.0,17.6,26.4,2019-05-21 08:00:00,2019-06-19 17:00:00,,0
645,1.1.1.5.1.6.3.4,Installatie technieken VDK,75.0,60.0,90.0,2019-06-06 08:00:00,2019-09-18 17:00:00,,0
646,1.1.1.5.1.6.3.5,Installatie sec. kabelwegen ICT,32.0,25.6,38.4,2019-04-25 08:00:00,2019-06-07 17:00:00,,0
647,1.1.1.5.1.6.3.6,Kabeltrek ICT,25.0,20.0,30.0,2019-05-07 08:00:00,2019-06-10 17:00:00,,0
648,1.1.1.5.1.6.3.7,Installatie technieken ICT,83.0,66.4,99.6,2019-06-14 08:00:00,2019-10-08 17:00:00,,0
649,1.1.1.5.1.6.3.8,Afwerking technieken ICT,10.0,8.0,12.0,2019-12-03 08:00:00,2019-12-16 17:00:00,,0
650,1.1.1.5.1.6.3.9,Installatie BBI,51.0,40.8,61.2,2019-08-29 08:00:00,2019-11-07 17:00:00,,0
651,1.1.1.5.1.6.3.10,Installatie RWA (Rook en Warmte Afvoer) ,30.0,24.0,36.0,2019-10-15 08:00:00,2019-11-25 17:00:00,,0
652,1.1.1.5.1.6.3.11,Installatie RWA (Rook en Warmte Afvoer) set 3,30.0,24.0,36.0,2019-10-15 08:00:00,2019-11-25 17:00:00,,0
653,1.1.1.5.1.6.3.12,Installatie RWA (RegenWater Afvoer) pompinstallatie,43.0,34.4,51.6,2019-10-01 08:00:00,2019-11-28 17:00:00,,0
654,1.1.1.5.1.7,Hellingen,353.0,353.0,353.0,2018-04-18 08:00:00,2019-08-23 17:00:00,,644
655,1.1.1.5.1.7.1,ruwbouw,353.0,353.0,353.0,2018-04-18 08:00:00,2019-08-23 17:00:00,,644
656,1.1.1.5.1.7.1.1,Niveau -1 en -2,353.0,353.0,353.0,2018-04-18 08:00:00,2019-08-23 17:00:00,,424
657,1.1.1.5.1.7.1.1.1,"Inrit zuid ""3""",22.0,17.6,26.4,2019-05-13 08:00:00,2019-06-11 17:00:00,,60
658,1.1.1.5.1.7.1.1.2,Inrit noord - helling nr. 4,210.0,210.0,210.0,2018-04-18 08:00:00,2019-02-05 17:00:00,,84
659,1.1.1.5.1.7.1.1.2.1,Wand kant zwevende tunnel,22.0,17.6,26.4,2018-04-18 08:00:00,2018-05-17 17:00:00,,20
660,1.1.1.5.1.7.1.1.2.2,Wand kant Spaanse omwalling tot onderkant helling,8.0,6.4,9.6,2018-05-18 08:00:00,2018-05-29 17:00:00,,16
661,1.1.1.5.1.7.1.1.2.3,Plaatsen ondersteuning helling,4.0,3.2,4.8,2018-05-30 08:00:00,2018-06-04 17:00:00,,2
662,1.1.1.5.1.7.1.1.2.4,Wapenen helling,4.0,3.2,4.8,2018-06-05 08:00:00,2018-06-08 17:00:00,,0
663,1.1.1.5.1.7.1.1.2.5,Betonneren helling,1.0,0.8,1.2,2018-06-11 08:00:00,2018-06-11 17:00:00,,6
664,1.1.1.5.1.7.1.1.2.6,Wand kant Spaanse omwalling met beschoeiingsplaatjes,13.0,10.4,15.6,2019-01-18 08:00:00,2019-02-05 17:00:00,,40
665,1.1.1.5.1.7.1.1.3,Voorzetwand onder zwevende plaat nr. 1,6.0,4.8,7.2,2019-06-12 08:00:00,2019-06-19 17:00:00,,0
666,1.1.1.5.1.7.1.1.4,Uitrit zuid - helling nr. 6,253.0,253.0,253.0,2018-09-05 08:00:00,2019-08-23 17:00:00,,160
667,1.1.1.5.1.7.1.1.4.1,Uitvoeren van wand op helling van -3 naar -2 om BK2 uit te voeren (deel 2),10.0,8.0,12.0,2018-09-05 08:00:00,2018-09-18 17:00:00,,40
668,1.1.1.5.1.7.1.1.4.2,Uitvoeren van wand op helling van -3 naar -2 tot onderkant helling van -2 naar -1 (deel 1),10.0,8.0,12.0,2019-06-11 08:00:00,2019-06-24 17:00:00,,0
669,1.1.1.5.1.7.1.1.4.3,Uitvoeren van wand op helling van -3 naar -2 tot onderkant helling van -2 naar -1 (deel 2),10.0,8.0,12.0,2019-07-09 08:00:00,2019-07-22 17:00:00,,0
670,1.1.1.5.1.7.1.1.4.4,Helling van -2 naar -1,14.0,11.2,16.8,2019-07-23 08:00:00,2019-08-09 17:00:00,,60
671,1.1.1.5.1.7.1.1.4.5,Wand op helling nr. 6 (deel 1),10.0,8.0,12.0,2019-08-12 08:00:00,2019-08-23 17:00:00,,0
672,1.1.1.5.1.7.1.1.4.6,Wand op helling nr. 6 (deel 2),10.0,8.0,12.0,2019-08-12 08:00:00,2019-08-23 17:00:00,,60
673,1.1.1.5.1.7.1.1.5,Uitrit nood - helling nr. 5,62.0,62.0,62.0,2019-04-23 08:00:00,2019-07-17 17:00:00,,120
674,1.1.1.5.1.7.1.1.5.1,"Uitrit noord ""5""",15.0,12.0,18.0,2019-04-23 08:00:00,2019-05-13 17:00:00,,60
675,1.1.1.5.1.7.1.1.5.2,Ontkisten helling nr. 5,5.0,4.0,6.0,2019-07-11 08:00:00,2019-07-17 17:00:00,,60
676,1.1.1.5.1.7.1.2,Niveau -2 en -3,283.0,283.0,283.0,2018-06-07 08:00:00,2019-07-08 17:00:00,,220
677,1.1.1.5.1.7.1.2.1,Inrit - helling nr. 8,40.0,40.0,40.0,2019-05-14 08:00:00,2019-07-08 17:00:00,,80
678,1.1.1.5.1.7.1.2.1.1,Aanstorten dakplaat BK1 + voorzetwand B12bis,10.0,8.0,12.0,2019-05-14 08:00:00,2019-05-27 17:00:00,,0
679,1.1.1.5.1.7.1.2.1.2,Wand tussen niveau -3 en -2,10.0,8.0,12.0,2019-05-28 08:00:00,2019-06-10 17:00:00,,40
680,1.1.1.5.1.7.1.2.1.3,Helling van -2 naar -3,10.0,8.0,12.0,2019-06-25 08:00:00,2019-07-08 17:00:00,,40
681,1.1.1.5.1.7.1.2.2,Uitrit - helling nr. 9,64.0,64.0,64.0,2018-06-07 08:00:00,2018-09-04 17:00:00,,140
682,1.1.1.5.1.7.1.2.2.1,Opstorten van diepwand,27.0,21.6,32.4,2018-06-07 08:00:00,2018-07-13 17:00:00,,60
683,1.1.1.5.1.7.1.2.2.2,Helling van -3 naar -2 (deel 1),6.0,4.8,7.2,2018-08-27 08:00:00,2018-09-03 17:00:00,,40
684,1.1.1.5.1.7.1.2.2.3,Helling van -3 naar -2 (deel 2),6.0,4.8,7.2,2018-08-28 08:00:00,2018-09-04 17:00:00,,40
685,1.1.1.5.1.8,Trappencomplexen,455.0,455.0,455.0,2018-04-09 08:00:00,2020-01-03 17:00:00,,692
686,1.1.1.5.1.8.1,ruwbouw,455.0,455.0,455.0,2018-04-09 08:00:00,2020-01-03 17:00:00,,692
687,1.1.1.5.1.8.1.1,T22,321.0,321.0,321.0,2018-09-17 08:00:00,2019-12-09 17:00:00,,110
688,1.1.1.5.1.8.1.1.1,"Vloerplaat op -7,46mTAW (T22)",5.0,4.0,6.0,2018-09-17 08:00:00,2018-09-21 17:00:00,,10
689,1.1.1.5.1.8.1.1.2,Wand beschoeide sleuf en slibwand storten (T22),11.0,8.8,13.2,2019-05-14 08:00:00,2019-05-28 17:00:00,,0
690,1.1.1.5.1.8.1.1.3,Wand tot onderkant vloerplaat niveau -2,5.0,4.0,6.0,2019-05-29 08:00:00,2019-06-04 17:00:00,,14
691,1.1.1.5.1.8.1.1.4,"Plaaten T1, T2, T3 en bordessen",5.0,4.0,6.0,2019-06-05 08:00:00,2019-06-11 17:00:00,,14
692,1.1.1.5.1.8.1.1.5,Wand tot onderkant vloerplaat niveau -1,5.0,4.0,6.0,2019-06-12 08:00:00,2019-06-18 17:00:00,,16
693,1.1.1.5.1.8.1.1.6,Plaaten van T4 en T5,5.0,4.0,6.0,2019-06-19 08:00:00,2019-06-25 17:00:00,,10
694,1.1.1.5.1.8.1.1.7,"Wand tot 4,75mTAW + tot onderkant dakplaat (T22)",8.0,6.4,9.6,2019-06-26 08:00:00,2019-07-05 17:00:00,,16
695,1.1.1.5.1.8.1.1.8,"Dakplaat tot 5,00mTAW (T22)",15.0,12.0,18.0,2019-07-08 08:00:00,2019-07-26 17:00:00,,30
696,1.1.1.5.1.8.1.1.9,Opmeting leuning (T22),1.0,0.8,1.2,2019-09-16 08:00:00,2019-09-16 17:00:00,,0
697,1.1.1.5.1.8.1.1.10,Leuning trappen (T22),8.0,6.4,9.6,2019-11-28 08:00:00,2019-12-09 17:00:00,,0
698,1.1.1.5.1.8.1.1.11,Vluchthuisje type 1 (T22),5.0,4.0,6.0,2019-06-03 08:00:00,2019-06-07 17:00:00,,0
699,1.1.1.5.1.8.1.1.12,"Technieken, montage VDK trap T22",10.0,8.0,12.0,2019-06-11 08:00:00,2019-06-24 17:00:00,,0
700,1.1.1.5.1.8.1.1.13,"Technieken, montage RWA (Rook- en Warmte Afvoer) trap T22",10.0,8.0,12.0,2019-06-25 08:00:00,2019-07-08 17:00:00,,0
701,1.1.1.5.1.8.1.1.14,"Technieken, montage ICT trap T22",10.0,8.0,12.0,2019-07-30 08:00:00,2019-08-12 17:00:00,,0
702,1.1.1.5.1.8.1.2,T23 - parking,281.0,281.0,281.0,2018-12-07 08:00:00,2020-01-03 17:00:00,,60
703,1.1.1.5.1.8.1.2.1,Ruwbouwwerken T23,70.0,56.0,84.0,2018-12-07 08:00:00,2019-03-14 17:00:00,,60
704,1.1.1.5.1.8.1.2.2,Prefabtreden T23,12.0,9.6,14.4,2019-04-04 08:00:00,2019-04-19 17:00:00,,0
705,1.1.1.5.1.8.1.2.3,Opmeting leuning,1.0,0.8,1.2,2019-09-16 08:00:00,2019-09-16 17:00:00,,0
706,1.1.1.5.1.8.1.2.4,Leuning trappen,5.0,4.0,6.0,2019-11-28 08:00:00,2019-12-04 17:00:00,,0
707,1.1.1.5.1.8.1.2.5,Plaatsing stalen deur,3.0,2.4,3.6,2019-12-16 08:00:00,2019-12-18 17:00:00,,0
708,1.1.1.5.1.8.1.2.6,Vluchthuisje type 1 (T23),15.0,12.0,18.0,2019-09-30 08:00:00,2019-10-18 17:00:00,,0
709,1.1.1.5.1.8.1.2.7,"Technieken, montage VDK trap T23",35.0,28.0,42.0,2019-10-21 08:00:00,2019-12-06 17:00:00,,0
710,1.1.1.5.1.8.1.2.8,"Technieken, montage RWA (Rook- en Warmte Afvoer) trap T23",10.0,8.0,12.0,2019-12-09 08:00:00,2019-12-20 17:00:00,,0
711,1.1.1.5.1.8.1.2.9,"Technieken, montage ICT trap T23",10.0,8.0,12.0,2019-12-23 08:00:00,2020-01-03 17:00:00,,0
712,1.1.1.5.1.8.1.3,T28 - trappencomplex Roosevelt,328.0,328.0,328.0,2018-04-09 08:00:00,2019-07-10 17:00:00,,348
713,1.1.1.5.1.8.1.3.1,Vloerplaat liftput en pompput,5.0,4.0,6.0,2018-04-09 08:00:00,2018-04-13 17:00:00,,0
714,1.1.1.5.1.8.1.3.2,Wanden liftput en pompput,11.0,8.8,13.2,2018-04-16 08:00:00,2018-04-30 17:00:00,,33
715,1.1.1.5.1.8.1.3.3,Plaatsen van leidingennetwerk onder vloerplaat,16.0,12.8,19.2,2018-05-03 08:00:00,2018-05-24 17:00:00,,48
716,1.1.1.5.1.8.1.3.4,"Vloerplaat op niveau -1.73 en -1,65mTAW",8.0,6.4,9.6,2018-05-30 08:00:00,2018-06-08 17:00:00,,24
717,1.1.1.5.1.8.1.3.5,"Wand tegen bestaande beschoeide sleuven tot onderkant plaat 1,92mTAW + wanden kant waterreservoir tot onderkant plaat 1,05mTAW",44.0,35.2,52.8,2018-06-25 08:00:00,2018-08-23 17:00:00,,30
718,1.1.1.5.1.8.1.3.6,"Wanden liftkoker tot onderkant plaat 1,92mTAW",11.0,8.8,13.2,2018-09-17 08:00:00,2018-10-01 17:00:00,,30
719,1.1.1.5.1.8.1.3.7,"Gekromde wand tot onderkant plaat 1,92mTAW",10.0,8.0,12.0,2018-10-02 08:00:00,2018-10-15 17:00:00,,30
720,1.1.1.5.1.8.1.3.8,Plaat op niveau 1.05mTAW en 0.75mTAW + prefabtrap T1 en T2,8.0,6.4,9.6,2018-10-16 08:00:00,2018-10-25 17:00:00,,24
721,1.1.1.5.1.8.1.3.9,"Plaat op niveau 1,92mTAW",13.0,10.4,15.6,2018-10-26 08:00:00,2018-11-13 17:00:00,,24
722,1.1.1.5.1.8.1.3.10,"Wand tegen bestaande beschoeide sleuven tot onderkant plaat 4,71mTAW, 3,59mTAW en 2,97mTAW",42.0,33.6,50.4,2018-11-22 08:00:00,2019-01-18 17:00:00,,30
723,1.1.1.5.1.8.1.3.11,"Plaat op 3,37mTAW, 3,99mTAW en 4,91mTAW",15.0,12.0,18.0,2019-02-04 08:00:00,2019-02-22 17:00:00,,30
724,1.1.1.5.1.8.1.3.12,Afwerken van de liftkoker,36.0,28.8,43.2,2019-02-25 08:00:00,2019-04-15 17:00:00,,30
725,1.1.1.5.1.8.1.3.13,"Prefabtrappen T3, T4 en T5 (inkl verwijderen torenkraan strossgat)(T28 - trappencomplex Roosevelt)",5.0,4.0,6.0,2019-04-16 08:00:00,2019-04-22 17:00:00,,15
726,1.1.1.5.1.8.1.3.14,"Plaat op niveau 2,00mTAW (kant Waterreservoir)",8.0,6.4,9.6,2018-10-26 08:00:00,2018-11-06 17:00:00,,0
727,1.1.1.5.1.8.1.3.15,"Wanden tot 7,02mTAW (kant Waterreservoir)",40.0,32.0,48.0,2018-11-19 08:00:00,2019-01-11 17:00:00,,0
728,1.1.1.5.1.8.1.3.16,Afwerken rondom opening,15.0,12.0,18.0,2019-05-10 08:00:00,2019-05-30 17:00:00,,0
729,1.1.1.5.1.8.1.3.17,Sokkels staalstructuur,5.0,4.0,6.0,2019-06-27 08:00:00,2019-07-03 17:00:00,,0
730,1.1.1.5.1.8.1.3.18,Afwerken waterdichting,5.0,4.0,6.0,2019-07-04 08:00:00,2019-07-10 17:00:00,,0
731,1.1.1.5.1.8.1.4,VL7/T30 en pompput,415.0,415.0,415.0,2018-04-26 08:00:00,2019-11-27 17:00:00,,174
732,1.1.1.5.1.8.1.4.1,L-vormige balk,8.0,6.4,9.6,2018-04-26 08:00:00,2018-05-07 17:00:00,,6
733,1.1.1.5.1.8.1.4.2,Uitgraven van pompput,5.0,4.0,6.0,2018-05-17 08:00:00,2018-05-23 17:00:00,,0
734,1.1.1.5.1.8.1.4.3,Vloerplaat,23.0,18.4,27.6,2018-06-06 08:00:00,2018-07-06 17:00:00,,12
735,1.1.1.5.1.8.1.4.4,Wanden,6.0,4.8,7.2,2018-08-15 08:00:00,2018-08-22 17:00:00,,18
736,1.1.1.5.1.8.1.4.5,Dakplaat,15.0,12.0,18.0,2018-08-23 08:00:00,2018-09-12 17:00:00,,18
737,1.1.1.5.1.8.1.4.6,Wand tussen vloerplaat en balkon,19.0,15.2,22.8,2018-11-05 08:00:00,2018-11-29 17:00:00,,40
738,1.1.1.5.1.8.1.4.7,Wand op balkon (niveau -1),16.0,12.8,19.2,2019-04-30 08:00:00,2019-05-21 17:00:00,,40
739,1.1.1.5.1.8.1.4.8,Dakplaat tussen beschoeide sleuf en wand op balkon,10.0,8.0,12.0,2019-05-22 08:00:00,2019-06-04 17:00:00,,40
740,1.1.1.5.1.8.1.4.9,Opmeting leuning,1.0,0.8,1.2,2019-09-09 08:00:00,2019-09-09 17:00:00,,0
741,1.1.1.5.1.8.1.4.10,Leuning trappen,5.0,4.0,6.0,2019-11-21 08:00:00,2019-11-27 17:00:00,,0
742,1.1.1.5.1.9,afwerking lichtput,14.0,14.0,14.0,2019-11-04 08:00:00,2019-11-21 17:00:00,,0
743,1.1.1.5.1.9.1,Wand voor lift boucharderen -1 (var. metalen platen),1.0,0.8,1.2,2019-11-04 08:00:00,2019-11-04 17:00:00,,0
744,1.1.1.5.1.9.2,Wand voor lift boucharderen -2 (var. metalen platen),1.0,0.8,1.2,2019-11-04 08:00:00,2019-11-04 17:00:00,,0
745,1.1.1.5.1.9.3,Wand voor lift boucharderen -3 (var. metalen platen),1.0,0.8,1.2,2019-11-04 08:00:00,2019-11-04 17:00:00,,0
746,1.1.1.5.1.9.4,Leuning/borstweringen,14.0,11.2,16.8,2019-11-04 08:00:00,2019-11-21 17:00:00,,0
747,1.1.1.5.2,B) Kipdorpsite,637.0,637.0,637.0,2017-06-01 08:00:00,2019-11-08 17:00:00,,61
748,1.1.1.5.2.1,Einde restwerken ,0.0,0.0,0.0,2019-11-08 17:00:00,2019-11-08 17:00:00,,0
749,1.1.1.5.2.2,Restwerken VO-9b,25.0,20.0,30.0,2019-10-07 08:00:00,2019-11-08 17:00:00,,0
750,1.1.1.5.2.3,Reinigings- en voegwerkzaamheden (Restwerken),47.0,37.6,56.4,2019-08-12 08:00:00,2019-10-15 17:00:00,,0
751,1.1.1.5.2.4,Opkuis site VO9b (Restwerken),1.0,0.8,1.2,2019-10-16 08:00:00,2019-10-16 17:00:00,,0
752,1.1.1.5.2.5,VOORBEREIDENDE WERKEN,15.0,15.0,15.0,2017-06-01 08:00:00,2017-06-21 17:00:00,,0
753,1.1.1.5.2.5.1,nutsleidingen,15.0,15.0,15.0,2017-06-01 08:00:00,2017-06-21 17:00:00,,0
754,1.1.1.5.2.5.1.1,Signalisatie + lokale opbraak,15.0,12.0,18.0,2017-06-01 08:00:00,2017-06-21 17:00:00,,0
755,1.1.1.5.2.5.1.2,Verleggen nutsleidingen,7.0,5.6,8.4,2017-06-06 08:00:00,2017-06-14 17:00:00,,0
756,1.1.1.5.2.5.2,Bronbemaling,6.0,6.0,6.0,2017-06-06 08:00:00,2017-06-13 17:00:00,,0
757,1.1.1.5.2.5.2.1,Peilbuizen plaatsen,6.0,4.8,7.2,2017-06-06 08:00:00,2017-06-13 17:00:00,,0
758,1.1.1.5.2.6,Spaanse omwalling,80.0,80.0,80.0,2019-03-18 08:00:00,2019-07-05 17:00:00,,0
759,1.1.1.5.2.6.1,Spaanse wal thv parking/ tunnel,35.0,28.0,42.0,2019-03-18 08:00:00,2019-05-03 17:00:00,,0
760,1.1.1.5.2.6.2,Spaanse wal 'open site' NOORD en ZUID,35.0,28.0,42.0,2019-05-06 08:00:00,2019-06-21 17:00:00,,0
761,1.1.1.5.2.6.3,Spaanse wal 'open site' SCHIETGATEN [planning voor uitvoering conform referentieontwerp],9.0,7.2,10.8,2019-06-25 08:00:00,2019-07-05 17:00:00,,0
762,1.1.1.5.2.6.4,Spaanse wal 'open site' MUURKAPPEN,5.0,4.0,6.0,2019-07-01 08:00:00,2019-07-05 17:00:00,,0
763,1.1.1.5.2.7,Archeologische site West,596.0,596.0,596.0,2017-06-15 08:00:00,2019-09-26 17:00:00,,42
764,1.1.1.5.2.7.1,Fundering BVL + verlichting,5.0,4.0,6.0,2019-03-11 08:00:00,2019-03-15 17:00:00,,0
765,1.1.1.5.2.7.2,Grondwerk,3.0,2.4,3.6,2018-10-29 08:00:00,2018-10-31 17:00:00,,0
766,1.1.1.5.2.7.3,"Bekisten, wapenen en betonneren tussenvloer",8.0,6.4,9.6,2018-11-05 08:00:00,2018-11-14 17:00:00,,0
767,1.1.1.5.2.7.4,"Bekisten, wapenen en betonneren westelijke wand",9.0,7.2,10.8,2018-11-16 08:00:00,2018-11-28 17:00:00,,0
768,1.1.1.5.2.7.5,Betonstructuren ventweg west,37.0,29.6,44.4,2018-11-29 08:00:00,2019-01-18 17:00:00,,0
769,1.1.1.5.2.7.6,Mijlpaal naar start westelijke ventweg DP2,0.0,0.0,0.0,2019-02-01 17:00:00,2019-02-01 17:00:00,,0
770,1.1.1.5.2.7.7,"Betonstructuren trambaan west (Kipdorp, Ruwbouw, Betonstructuren archeologische brug West)",13.0,10.4,15.6,2019-03-20 08:00:00,2019-04-05 17:00:00,,0
771,1.1.1.5.2.7.8,Voertuigkering ventweg west - Stepbarrier,9.0,7.2,10.8,2019-05-13 08:00:00,2019-05-23 17:00:00,,0
772,1.1.1.5.2.7.9,Fundering leuningen/ opsluiting verharding zuid,5.0,4.0,6.0,2019-06-17 08:00:00,2019-06-21 17:00:00,,0
773,1.1.1.5.2.7.10,Fundering metselwerken tuin west,5.0,4.0,6.0,2019-06-24 08:00:00,2019-06-28 17:00:00,,0
774,1.1.1.5.2.7.11,Fundering leuningen/ opsluiting verharding noord,5.0,4.0,6.0,2019-06-24 08:00:00,2019-06-28 17:00:00,,0
775,1.1.1.5.2.7.12,Reconstructie poterne - opgaande muren en muurkappen A&E,15.0,12.0,18.0,2019-07-01 08:00:00,2019-07-19 17:00:00,,0
776,1.1.1.5.2.7.13,Reconstructie poterne - vloer in kleiklinkers,4.0,3.2,4.8,2019-09-23 08:00:00,2019-09-26 17:00:00,,0
777,1.1.1.5.2.7.14,RUWBOUW,496.0,496.0,496.0,2017-06-15 08:00:00,2019-05-09 17:00:00,,42
778,1.1.1.5.2.7.14.1,Beschoeide sleuf Oost (BS 120 - 125 - 128 - 129 - 131b - 132),64.0,51.2,76.8,2017-06-15 08:00:00,2017-09-12 17:00:00,,0
779,1.1.1.5.2.7.14.2,Beschoeide sleuf West (BS 126 - 127),25.0,20.0,30.0,2017-09-01 08:00:00,2017-10-05 17:00:00,,0
780,1.1.1.5.2.7.14.3,VHP-Boring stadsmuur (incl. opmeting in planzicht),10.0,8.0,12.0,2017-06-15 08:00:00,2017-06-28 17:00:00,,0
781,1.1.1.5.2.7.14.4,"VHP-Boring (Bastionmuur, Pijler P2, Bastionoreille)",10.0,8.0,12.0,2017-06-29 08:00:00,2017-07-12 17:00:00,,0
782,1.1.1.5.2.7.14.5,Registratie stadsmuur tot -3.5m Fase 1,7.0,7.0,7.0,2017-06-29 08:00:00,2017-07-07 17:00:00,,0
783,1.1.1.5.2.7.14.5.1,Archeologisch onderzoek tot -1.5m ,3.0,2.4,3.6,2017-06-29 08:00:00,2017-07-03 17:00:00,,0
784,1.1.1.5.2.7.14.5.2,Archeologisch onderzoek tot -3.5m,4.0,3.2,4.8,2017-07-04 08:00:00,2017-07-07 17:00:00,,0
785,1.1.1.5.2.7.14.6,Demontage parament + afbraak stadsmuur dakplaat fase 1,9.0,7.2,10.8,2017-08-04 08:00:00,2017-08-16 17:00:00,,0
786,1.1.1.5.2.7.14.7,"bekisten, wapenen en storten dakplaat fase 1",10.0,8.0,12.0,2017-08-21 08:00:00,2017-09-01 17:00:00,,0
787,1.1.1.5.2.7.14.8,Nutsdoorsteek ter hoogte van Kipdorpvest Noord ,13.0,10.4,15.6,2017-08-28 08:00:00,2017-09-13 17:00:00,,0
788,1.1.1.5.2.7.14.9,Roofing + waterdichting dakplaat Kipdorp fase 1,5.0,4.0,6.0,2017-09-04 08:00:00,2017-09-08 17:00:00,,0
789,1.1.1.5.2.7.14.10,Tramsporen lijn 10 & 11 omleggen,30.0,24.0,36.0,2017-09-11 08:00:00,2017-10-20 17:00:00,,0
790,1.1.1.5.2.7.14.11,Aanpassingswerken aan bovenleidingen,15.0,12.0,18.0,2017-10-02 08:00:00,2017-10-20 17:00:00,,0
791,1.1.1.5.2.7.14.12,verplaatsen voetgangers en fietsers + aanpassen signalisatie ,5.0,4.0,6.0,2017-10-09 08:00:00,2017-10-13 17:00:00,,0
792,1.1.1.5.2.7.14.13,Tramsporen lijn 10 & 11: tijdelijke sporen in dienst,0.0,0.0,0.0,2017-10-24 17:00:00,2017-10-24 17:00:00,,0
793,1.1.1.5.2.7.14.14,Opbreken resterende verhardingen + sporen,15.0,12.0,18.0,2017-10-25 08:00:00,2017-11-14 17:00:00,,0
794,1.1.1.5.2.7.14.15,Beschoeide sleuf 130 + 131a,20.0,16.0,24.0,2017-12-07 08:00:00,2018-01-03 17:00:00,,0
795,1.1.1.5.2.7.14.16,Beschoeide sleuf 133,20.0,16.0,24.0,2018-06-04 08:00:00,2018-06-29 17:00:00,,0
796,1.1.1.5.2.7.14.17,Beschoeide sleuf Oost (BS 123 - 124),54.0,43.2,64.8,2017-10-25 08:00:00,2018-01-08 17:00:00,,0
797,1.1.1.5.2.7.14.18,Beschoeide sleuf Oost BS 122,15.0,12.0,18.0,2018-01-22 08:00:00,2018-02-09 17:00:00,,0
798,1.1.1.5.2.7.14.19,Beschoeide sleuf BS 121 PROXIMUS,25.0,20.0,30.0,2018-02-12 08:00:00,2018-03-16 17:00:00,,0
799,1.1.1.5.2.7.14.20,VHP-Boring stadsmuur + tijdelijke palen (incl. opmeting in planzicht),32.0,25.6,38.4,2017-11-15 08:00:00,2017-12-28 17:00:00,,0
800,1.1.1.5.2.7.14.21,Registratie stadsmuur tot -3.5m Fase 2,9.0,9.0,9.0,2018-01-22 08:00:00,2018-02-01 17:00:00,,0
801,1.1.1.5.2.7.14.21.1,Archeologisch onderzoek tot -1.5m ,4.0,3.2,4.8,2018-01-22 08:00:00,2018-01-25 17:00:00,,0
802,1.1.1.5.2.7.14.21.2,Archeologisch onderzoek tot -3.5m,5.0,4.0,6.0,2018-01-26 08:00:00,2018-02-01 17:00:00,,0
803,1.1.1.5.2.7.14.22,Demontage parament + afbraak stadsmuur dakplaat fase 2,5.0,4.0,6.0,2018-02-02 08:00:00,2018-02-08 17:00:00,,0
804,1.1.1.5.2.7.14.23,"Bekisten, wapenen en storten vloerplaat kokers nutsleidingen, vluchtweg",15.0,12.0,18.0,2018-02-09 08:00:00,2018-03-01 17:00:00,,0
805,1.1.1.5.2.7.14.24,"Bekisten, wapenen en storten wanden kokers nutsleidingen, vluchtweg",10.0,8.0,12.0,2018-03-02 08:00:00,2018-03-15 17:00:00,,0
806,1.1.1.5.2.7.14.25,"Bekisten, wapenen en storten dakplaat fase 2 (incl. nutsleidingen,…)",15.0,12.0,18.0,2018-03-16 08:00:00,2018-04-05 17:00:00,,0
807,1.1.1.5.2.7.14.26,Roofing + waterdichting (W10),5.0,4.0,6.0,2018-04-09 08:00:00,2018-04-13 17:00:00,,0
808,1.1.1.5.2.7.14.27,Start spoor/wegenis-werken,0.0,0.0,0.0,2018-04-13 17:00:00,2018-04-13 17:00:00,,0
809,1.1.1.5.2.7.14.28,Uitgraving in STROSS ATN (gelinkt aan zwevende VL1),10.0,8.0,12.0,2018-04-09 08:00:00,2018-04-20 17:00:00,,0
810,1.1.1.5.2.7.14.29,Registratie voet stadsmuur (in combinatie met rioleringvloerplaat Kipdorp zuid),5.0,4.0,6.0,2018-04-23 08:00:00,2018-04-27 17:00:00,,0
811,1.1.1.5.2.7.14.30,"Bekisten, wapenen en betonneren vloerplaat Kipdorp zuid (incl. riolering volledige plaat)",35.0,28.0,42.0,2018-04-23 08:00:00,2018-06-08 17:00:00,,0
812,1.1.1.5.2.7.14.31,"Bekisten, wapenen en betonneren vloerplaat Kipdorp noord ",11.0,8.8,13.2,2018-06-18 08:00:00,2018-07-02 17:00:00,,0
813,1.1.1.5.2.7.14.32,ruwbouw,76.0,76.0,76.0,2018-07-20 08:00:00,2018-11-02 17:00:00,,42
814,1.1.1.5.2.7.14.32.1,"Bekisten, wapenen en betonneren wanden Kipdorp",55.0,44.0,66.0,2018-07-20 08:00:00,2018-10-04 17:00:00,,0
815,1.1.1.5.2.7.14.32.2,Plaatsen trap T25 (plaat),5.0,4.0,6.0,2018-10-22 08:00:00,2018-10-26 17:00:00,,0
816,1.1.1.5.2.7.14.32.3,Afbraak tijdelijke Groutpalen,7.0,5.6,8.4,2018-10-08 08:00:00,2018-10-16 17:00:00,,14
817,1.1.1.5.2.7.14.32.4,Afbraak beschoeide sleuf tunnels-parking,5.0,4.0,6.0,2018-10-17 08:00:00,2018-10-23 17:00:00,,8
818,1.1.1.5.2.7.14.32.5,Beton aanvulling plaat ter hoogte van groutpalen,5.0,4.0,6.0,2018-10-29 08:00:00,2018-11-02 17:00:00,,20
819,1.1.1.5.2.7.14.33,Archeologisch onderzoek 'put' Kipdorpsite LAAG 1+2,12.0,12.0,12.0,2017-10-06 08:00:00,2017-10-23 17:00:00,,0
820,1.1.1.5.2.7.14.33.1,Graafwerken eerste aanzet,2.0,1.6,2.4,2017-10-06 08:00:00,2017-10-09 17:00:00,,0
821,1.1.1.5.2.7.14.33.2,Archeologisch onderzoek 'PUT'( tot 7.00mTAW),5.0,4.0,6.0,2017-10-10 08:00:00,2017-10-16 17:00:00,,0
822,1.1.1.5.2.7.14.33.3,Archeologisch onderzoek 'PUT'( tot 5.00mTAW),5.0,4.0,6.0,2017-10-17 08:00:00,2017-10-23 17:00:00,,0
823,1.1.1.5.2.7.14.34,DENYS Fase 3-4-5 (Horizontale boringen - injecties - bescherming brugdek - verticale grouting),55.0,44.0,66.0,2017-10-04 08:00:00,2017-12-19 17:00:00,,0
824,1.1.1.5.2.7.14.35,Archeologisch onderzoek 'put' Kipdorpsite LAAG 3+4,25.0,20.0,30.0,2018-01-08 08:00:00,2018-02-09 17:00:00,,0
825,1.1.1.5.2.7.14.36,DENYS Fase 7-8 (Demontage pijlers - verwijderen grout - verbindingsijzers aanbrengen),40.0,32.0,48.0,2018-02-12 08:00:00,2018-04-06 17:00:00,,0
826,1.1.1.5.2.7.14.37,Afbraak Bastionmuur (incl. recuperatie parament),15.0,12.0,18.0,2018-02-12 08:00:00,2018-03-02 17:00:00,,0
827,1.1.1.5.2.7.14.38,Spoornokken dakplaat Kipdorp noord,5.0,4.0,6.0,2019-04-19 08:00:00,2019-04-25 17:00:00,,0
828,1.1.1.5.2.7.14.39,Waterdichting dakplaat Kipdorp noord,10.0,8.0,12.0,2019-04-26 08:00:00,2019-05-09 17:00:00,,0
829,1.1.1.5.2.7.14.40,Studieplanning archeologische site,31.0,31.0,31.0,2019-02-07 17:00:00,2019-03-22 17:00:00,,0
830,1.1.1.5.2.7.14.40.1,Keerconstructie ventweg Oost [Uitgewerkte plannen],0.0,0.0,0.0,2019-03-08 17:00:00,2019-03-08 17:00:00,,0
831,1.1.1.5.2.7.14.40.2,Haakse keermuur ATN-O M6 [Uitvoeringsschetsen incl. verantwoording],0.0,0.0,0.0,2019-02-07 17:00:00,2019-02-07 17:00:00,,0
832,1.1.1.5.2.7.14.40.3,Haakse keermuur ATN-O M6 [Uitgewerkte rekennota],0.0,0.0,0.0,2019-02-15 17:00:00,2019-02-15 17:00:00,,0
833,1.1.1.5.2.7.14.40.4,Keerconstructie trambaan Oost en West [Uitvoeringsschetsen incl. verantwoording],0.0,0.0,0.0,2019-02-11 17:00:00,2019-02-11 17:00:00,,0
834,1.1.1.5.2.7.14.40.5,Keerconstructie trambaan Oost en West [Uitgewerkte rekennota],0.0,0.0,0.0,2019-02-15 17:00:00,2019-02-15 17:00:00,,0
835,1.1.1.5.2.7.14.40.6,Finaal tekenwerk arch. Site afgewerkt,0.0,0.0,0.0,2019-03-08 17:00:00,2019-03-08 17:00:00,,0
836,1.1.1.5.2.7.14.40.7,Ontwerp goten/ jersey aan Spaanse omwalling,0.0,0.0,0.0,2019-03-22 17:00:00,2019-03-22 17:00:00,,0
837,1.1.1.5.2.8,Archeologische site Oost,222.0,222.0,222.0,2018-11-08 08:00:00,2019-09-13 17:00:00,,15
838,1.1.1.5.2.8.1,Plaatsen prefab keerelementen oost,16.0,12.8,19.2,2018-11-08 08:00:00,2018-11-29 17:00:00,,15
839,1.1.1.5.2.8.2,"Bekisten, wapenen en betonneren vloerplaat",16.0,12.8,19.2,2018-12-05 08:00:00,2018-12-26 17:00:00,,0
840,1.1.1.5.2.8.3,"Bekisten, wapenen en betonneren wanden",32.0,25.6,38.4,2019-01-10 08:00:00,2019-02-22 17:00:00,,0
841,1.1.1.5.2.8.4,Haakse keermuur ATN-O M6,25.0,20.0,30.0,2019-03-11 08:00:00,2019-04-12 17:00:00,,0
842,1.1.1.5.2.8.5,Betonstructuren ventweg oost,22.0,17.6,26.4,2019-04-08 08:00:00,2019-05-07 17:00:00,,0
843,1.1.1.5.2.8.6,Start oostelijke ventweg DP2 (Kurt) ,0.0,0.0,0.0,2019-05-10 17:00:00,2019-05-10 17:00:00,,0
844,1.1.1.5.2.8.7,"Betonstructuren trambaan oost (Kipdorp, Ruwbouw, Betonstructuren archeologische brug Oost)",13.0,10.4,15.6,2019-03-20 08:00:00,2019-04-05 17:00:00,,0
845,1.1.1.5.2.8.8,Voertuigkering ventweg oost - Stepbarrier,11.0,8.8,13.2,2019-05-24 08:00:00,2019-06-07 17:00:00,,0
846,1.1.1.5.2.8.9,Fundering leuningen/ opsluiting verharding zuid,5.0,4.0,6.0,2019-06-24 08:00:00,2019-06-28 17:00:00,,0
847,1.1.1.5.2.8.10,Fundering metselwerken tuin oost,5.0,4.0,6.0,2019-07-01 08:00:00,2019-07-05 17:00:00,,0
848,1.1.1.5.2.8.11,Fundering leuningen/ opsluiting verharding noord,5.0,4.0,6.0,2019-07-01 08:00:00,2019-07-05 17:00:00,,0
849,1.1.1.5.2.8.12,Reconstructie Kazemat - opgaande muren en muurkappen A&E,20.0,16.0,24.0,2019-07-22 08:00:00,2019-08-16 17:00:00,,0
850,1.1.1.5.2.8.13,Reconstructie Kazemat - vloer in kleiklinkers,10.0,8.0,12.0,2019-09-02 08:00:00,2019-09-13 17:00:00,,0
851,1.1.1.5.2.9,Archeologische Kipdorpbrug,104.0,104.0,104.0,2019-05-13 08:00:00,2019-10-03 17:00:00,,0
852,1.1.1.5.2.9.1,"Bekisten, wapenen en betonneren nieuw gewelf oost",23.0,18.4,27.6,2019-05-13 08:00:00,2019-06-12 17:00:00,,0
853,1.1.1.5.2.9.2,"Bekisten, wapenen en betonneren aansluiting pijler trambrug oost",5.0,4.0,6.0,2019-08-26 08:00:00,2019-08-30 17:00:00,,0
854,1.1.1.5.2.9.3,"Bekisten, wapenen en betonneren inspectiekamer pijler trambrug west",5.0,4.0,6.0,2019-08-26 08:00:00,2019-08-30 17:00:00,,0
855,1.1.1.5.2.9.4,Metselwerken archeologische brug - PARAMENT NATUURSTEEN,76.0,60.8,91.2,2019-06-17 08:00:00,2019-09-30 17:00:00,,0
856,1.1.1.5.2.9.5,Metselwerken archeologische brug - WATERPUT,10.0,8.0,12.0,2019-06-17 08:00:00,2019-06-28 17:00:00,,0
857,1.1.1.5.2.9.6,Montage blauwe hardsteen nieuw gewelf oost (2x),7.0,5.6,8.4,2019-06-20 08:00:00,2019-06-28 17:00:00,,0
858,1.1.1.5.2.9.7,Montage blauwe hardsteen grote gewelven (3x),65.0,52.0,78.0,2019-07-01 08:00:00,2019-09-27 17:00:00,,0
859,1.1.1.5.2.9.8,Montage blauwe hardsteen dekstenen,14.0,11.2,16.8,2019-09-12 08:00:00,2019-10-01 17:00:00,,0
860,1.1.1.5.2.9.9,Aanmaken toezichtsput archeologische brug,75.0,60.0,90.0,2019-05-20 08:00:00,2019-08-30 17:00:00,,0
861,1.1.1.5.2.9.10,Levering baksteen (klampformaat Kipdorpbrug),0.0,0.0,0.0,2019-09-13 17:00:00,2019-09-13 17:00:00,,0
862,1.1.1.5.2.9.11,Metselwerken archeologische brug - PARAMENT BAKSTEEN,11.0,8.8,13.2,2019-09-16 08:00:00,2019-09-30 17:00:00,,0
863,1.1.1.5.2.9.12,Plaatsing ankers aan Kipdorpbrug (Restwerken),3.0,2.4,3.6,2019-10-01 08:00:00,2019-10-03 17:00:00,,0
864,1.1.1.5.2.9.13,Voorzieningen waterafvoer Kipdoprbrug (Restwerken),3.0,2.4,3.6,2019-09-26 08:00:00,2019-09-30 17:00:00,,0
865,1.1.1.5.2.9.14,Grondwerk kasseidek Kipdorpbrug (Restwerken),1.0,0.8,1.2,2019-09-30 08:00:00,2019-09-30 17:00:00,,0
866,1.1.1.5.2.9.15,Bestrating in kasseien incl. rand verharding en opvullen onder trambrug (Restwerken),2.0,1.6,2.4,2019-10-02 08:00:00,2019-10-03 17:00:00,,0
867,1.1.1.5.2.10,Archeologische put,382.0,382.0,382.0,2018-04-23 08:00:00,2019-10-08 17:00:00,,4
868,1.1.1.5.2.10.1,"Bekisten, wapenen en betonneren zool wand west M8",11.0,8.8,13.2,2018-04-23 08:00:00,2018-05-07 17:00:00,,0
869,1.1.1.5.2.10.2,"Bekisten, wapenen en betonneren zool wand oost M8",5.0,4.0,6.0,2018-05-18 08:00:00,2018-05-24 17:00:00,,0
870,1.1.1.5.2.10.3,"Bekisten, wapenen en betonneren wand west M8",15.0,12.0,18.0,2018-05-14 08:00:00,2018-06-01 17:00:00,,0
871,1.1.1.5.2.10.4,"Bekisten, wapenen en betonneren wand oost M8",20.0,16.0,24.0,2018-06-05 08:00:00,2018-07-02 17:00:00,,0
872,1.1.1.5.2.10.5,Balk Trambrug Zuid (stelling),20.0,16.0,24.0,2019-02-15 08:00:00,2019-03-14 17:00:00,,0
873,1.1.1.5.2.10.6,Dakplaat Archeologische put (stelling),9.0,7.2,10.8,2018-07-03 08:00:00,2018-07-13 17:00:00,,0
874,1.1.1.5.2.10.7,Boringen + opening toezichtsput Kipdorpbrug tbv portiek trambrug,5.0,4.0,6.0,2019-02-19 08:00:00,2019-02-25 17:00:00,,0
875,1.1.1.5.2.10.8,Balk Trambrug Noord,24.0,19.2,28.8,2019-01-14 08:00:00,2019-02-14 17:00:00,,0
876,1.1.1.5.2.10.9,DENYS opvangen archeologische brug op dakplaat,10.0,8.0,12.0,2018-07-30 08:00:00,2018-08-10 17:00:00,,0
877,1.1.1.5.2.10.10,BVL masten rond Kipdorpbrug,70.0,70.0,70.0,2019-01-31 08:00:00,2019-05-08 17:00:00,,0
878,1.1.1.5.2.10.10.1,"Proefputten BVL-masten rond Kipdorpbrug 0303, 0306, 0314, 0315, 0320 en 0321 (0320 uitgevoerd)",22.0,17.6,26.4,2019-01-31 08:00:00,2019-03-01 17:00:00,,0
879,1.1.1.5.2.10.10.2,https://secure.livechatinc.com/licence/5117481/v2/open_chat.cgi?groups=12&embedded=1&newWebserv=undefined&__lc_vv=2&session_id=S1552642793.e2695a50e9&server=secure.livechatinc.com#,22.0,17.6,26.4,2019-03-04 08:00:00,2019-04-02 17:00:00,,0
880,1.1.1.5.2.10.10.3,"Plaatsen BVL-masten rond Kipdorpbrug 0303, 0306, 0314, 0315, 0320 en 0321",2.0,1.6,2.4,2019-05-07 08:00:00,2019-05-08 17:00:00,,0
881,1.1.1.5.2.10.11,Trekpalen archeologische put Kipdorp,10.0,8.0,12.0,2018-08-13 08:00:00,2018-08-24 17:00:00,,0
882,1.1.1.5.2.10.12,Vloerplaat tunnel west,15.0,12.0,18.0,2018-08-28 08:00:00,2018-09-17 17:00:00,,0
883,1.1.1.5.2.10.13,Vloerplaat tunnel oost (incl. riolering),25.0,20.0,30.0,2018-09-27 08:00:00,2018-10-31 17:00:00,,4
884,1.1.1.5.2.10.14,Vloerplaat archeologische put (incl. riolering),5.0,4.0,6.0,2018-09-14 08:00:00,2018-09-20 17:00:00,,0
885,1.1.1.5.2.10.15,Goten/ Jersey aan Spaanse omwalling oost en west,86.0,68.8,103.2,2019-04-26 08:00:00,2019-08-23 17:00:00,,0
886,1.1.1.5.2.10.16,Aanpassingen inplanting new jersey op aangeven OG,21.0,16.8,25.2,2019-08-26 08:00:00,2019-09-23 17:00:00,,0
887,1.1.1.5.2.10.17,Spuitbeton,10.0,10.0,10.0,2019-08-19 08:00:00,2019-08-30 17:00:00,,0
888,1.1.1.5.2.10.17.1,Spuitbeton site west - zuidelijke BS,2.0,1.6,2.4,2019-08-19 08:00:00,2019-08-20 17:00:00,,0
889,1.1.1.5.2.10.17.2,Spuitbeton site west - noordelijke BS,3.0,2.4,3.6,2019-08-21 08:00:00,2019-08-23 17:00:00,,0
890,1.1.1.5.2.10.17.3,Spuitbeton site Oost - tunnel,5.0,4.0,6.0,2019-08-26 08:00:00,2019-08-30 17:00:00,,0
891,1.1.1.5.2.10.18,Aanvulling archeologische put met grind/ gravel (Restwerken),1.0,0.8,1.2,2019-10-08 08:00:00,2019-10-08 17:00:00,,0
892,1.1.1.5.2.11,Kipdorp TRAMBRUG,234.0,234.0,234.0,2018-08-27 08:00:00,2019-07-18 17:00:00,,0
893,1.1.1.5.2.11.1,"vertraging (OG) wegens ontwerpaanpassingen trambrug (Start volgens planning jan 2018: 27.08.18, veronderstellig staalbestelling mogelijk op 27/04/2018)",97.0,77.6,116.4,2018-08-27 08:00:00,2019-01-08 17:00:00,,0
894,1.1.1.5.2.11.2,"Plaatsen trambrug, voorbereiding",7.0,5.6,8.4,2019-03-15 08:00:00,2019-03-25 17:00:00,,0
895,1.1.1.5.2.11.3,"plaatsen trambrug, Hijsactie (700 tons kraan)",3.0,2.4,3.6,2019-03-26 08:00:00,2019-03-28 17:00:00,,0
896,1.1.1.5.2.11.4,"Plaatsen trambrug, laswerkzaamheden (70 tons kraan)",15.0,12.0,18.0,2019-03-29 08:00:00,2019-04-18 17:00:00,,0
897,1.1.1.5.2.11.5,"plaatsen trambrug, afwerking (staalwerk trambrug) met metalen roosters (roosters is object 27) (70 tons kraan)",12.0,9.6,14.4,2019-04-19 08:00:00,2019-05-06 17:00:00,,0
898,1.1.1.5.2.11.6,Technieken: montage kabelgoten,17.0,13.6,20.4,2019-04-19 08:00:00,2019-05-13 17:00:00,,0
899,1.1.1.5.2.11.7,"Track: plaatsen en afstellen sporen, voor voortgang zie DP2",21.0,16.8,25.2,2019-04-26 08:00:00,2019-05-24 17:00:00,,0
900,1.1.1.5.2.11.8,Technieken: uitvoeren kabelwerken in spoorgoten,10.0,8.0,12.0,2019-05-27 08:00:00,2019-06-07 17:00:00,,0
901,1.1.1.5.2.11.9,"Track: Opgieten spoorgoten Edilon, voor voortgang zie DP2",4.0,3.2,4.8,2019-07-15 08:00:00,2019-07-18 17:00:00,,0
902,1.1.1.5.2.11.10,"Inrichten en afwerken trambrug (Structuren Archeologische put, Kipdorp DP3-2)",15.0,12.0,18.0,2019-06-21 08:00:00,2019-07-11 17:00:00,,0
903,1.1.1.5.2.11.11,ARCHEOLOGISCHE RECONSTRUCTIE,176.0,176.0,176.0,2018-09-04 17:00:00,2019-05-08 17:00:00,,0
904,1.1.1.5.2.11.11.1,WOG Archeologische site Kipdorpbrug (inzake alle staalstructuren+ aansluitende structuren muv stalen trambrug),176.0,176.0,176.0,2018-09-04 17:00:00,2019-05-08 17:00:00,,0
905,1.1.1.5.2.11.11.1.1,Indienen raming (in tijd en geld),0.0,0.0,0.0,2018-09-04 17:00:00,2018-09-04 17:00:00,,0
906,1.1.1.5.2.11.11.1.2,Opdracht OG,0.0,0.0,0.0,2018-11-07 17:00:00,2018-11-07 17:00:00,,0
907,1.1.1.5.2.11.11.1.3,Ontwerp staalwerken,27.0,21.6,32.4,2018-11-08 08:00:00,2018-12-14 17:00:00,,0
908,1.1.1.5.2.11.11.1.4,Toetsing OG 1e ronde ontwerp staalwerken,23.0,18.4,27.6,2018-12-18 08:00:00,2019-01-17 17:00:00,,0
909,1.1.1.5.2.11.11.1.5,Verwerken opmerkingen OG,10.0,8.0,12.0,2019-02-01 08:00:00,2019-02-14 17:00:00,,0
910,1.1.1.5.2.11.11.1.6,Toetsing OG 2e en 3e ronde ontwerp staalwerken,31.0,24.8,37.2,2019-02-15 08:00:00,2019-03-29 17:00:00,,0
911,1.1.1.5.2.11.11.1.7,Voorbereiding uitvoering,28.0,22.4,33.6,2019-04-01 08:00:00,2019-05-08 17:00:00,,0
912,1.1.1.5.2.12,Staalstructuren,65.0,65.0,65.0,2019-07-01 08:00:00,2019-09-27 17:00:00,,0
913,1.1.1.5.2.12.1,F1: Staalstructuren - evacuatiepaden,10.0,8.0,12.0,2019-07-01 08:00:00,2019-07-12 17:00:00,,0
914,1.1.1.5.2.12.2,F2: Staalstructuren - passerelle incl. leuningen,15.0,12.0,18.0,2019-08-19 08:00:00,2019-09-06 17:00:00,,0
915,1.1.1.5.2.12.3,F3: Staalstructuren - trap incl. leuningen,10.0,8.0,12.0,2019-09-16 08:00:00,2019-09-27 17:00:00,,0
916,1.1.1.5.2.12.4,F4: Leuningen rondom site,10.0,8.0,12.0,2019-09-02 08:00:00,2019-09-13 17:00:00,,0
917,1.1.1.5.2.13,Technieken,6.0,6.0,6.0,2019-09-30 08:00:00,2019-10-07 17:00:00,,0
918,1.1.1.5.2.13.1,Installatie camerabewaking archeologische put,5.0,4.0,6.0,2019-09-30 08:00:00,2019-10-04 17:00:00,,0
919,1.1.1.5.2.13.2,Installatie verlichtings armaturen archeologische put,5.0,4.0,6.0,2019-09-30 08:00:00,2019-10-04 17:00:00,,0
920,1.1.1.5.2.13.3,Aansluiten en testen armaturen,1.0,0.8,1.2,2019-10-07 08:00:00,2019-10-07 17:00:00,,0
921,1.1.1.5.3,C) AUTOTUNNELS,948.0,948.0,948.0,2016-04-05 08:00:00,2019-11-21 17:00:00,,1468
922,1.1.1.5.3.1,ruwbouw,794.0,794.0,794.0,2016-04-05 08:00:00,2019-04-19 17:00:00,,75
923,1.1.1.5.3.1.1,Voorbereidende werken Zuid Oost,16.0,16.0,16.0,2016-04-05 08:00:00,2016-04-26 17:00:00,,0
924,1.1.1.5.3.1.1.1,Berlinerwand,6.0,4.8,7.2,2016-04-05 08:00:00,2016-04-12 17:00:00,,0
925,1.1.1.5.3.1.1.2,Grondwerken,5.0,4.0,6.0,2016-04-20 08:00:00,2016-04-26 17:00:00,,0
926,1.1.1.5.3.1.2,Logistieke opening,93.0,93.0,93.0,2016-06-20 08:00:00,2016-10-26 17:00:00,,0
927,1.1.1.5.3.1.2.1,Nieuwe structuren,93.0,93.0,93.0,2016-06-20 08:00:00,2016-10-26 17:00:00,,0
928,1.1.1.5.3.1.2.1.1,"stempelbalken niv +5,54 en ringbalk",46.0,36.8,55.2,2016-06-20 08:00:00,2016-08-22 17:00:00,,0
929,1.1.1.5.3.1.2.1.2,uitgraving,5.0,4.0,6.0,2016-10-20 08:00:00,2016-10-26 17:00:00,,0
930,1.1.1.5.3.1.2.1.3,"stempelbalken niv -3,63",46.0,36.8,55.2,2016-07-04 08:00:00,2016-09-05 17:00:00,,0
931,1.1.1.5.3.1.3,311321 Tunnel ZUID-OOST (ruwbouw),144.0,144.0,144.0,2017-01-09 08:00:00,2017-07-27 17:00:00,,0
932,1.1.1.5.3.1.3.1,Grondwerk zone buiten slibwand vloerplaat moot 1 tot 4,15.0,12.0,18.0,2017-01-09 08:00:00,2017-01-27 17:00:00,,0
933,1.1.1.5.3.1.3.2,Grondwerk + Aanleg riolering + wederaanvulling moot 1 tot 4,5.0,4.0,6.0,2017-01-30 08:00:00,2017-02-03 17:00:00,,0
934,1.1.1.5.3.1.3.3,Aanleg werkvloer moot 1 tot 4,2.0,1.6,2.4,2017-02-06 08:00:00,2017-02-07 17:00:00,,0
935,1.1.1.5.3.1.3.4,Vloerplaat moot 1 tot 7,80.0,80.0,80.0,2017-02-08 08:00:00,2017-05-30 17:00:00,,0
936,1.1.1.5.3.1.3.4.1,"Bekisting, wapening en beton vloerplaat 1",6.0,4.8,7.2,2017-02-08 08:00:00,2017-02-15 17:00:00,,0
937,1.1.1.5.3.1.3.4.2,"Bekisting, wapening en beton vloerplaat 2",6.0,4.8,7.2,2017-02-16 08:00:00,2017-02-23 17:00:00,,0
938,1.1.1.5.3.1.3.4.3,"Bekisting, wapening en beton vloerplaat 3",6.0,4.8,7.2,2017-02-24 08:00:00,2017-03-03 17:00:00,,0
939,1.1.1.5.3.1.3.4.4,"Bekisting, wapening en beton vloerplaat 4",6.0,4.8,7.2,2017-03-06 08:00:00,2017-03-13 17:00:00,,0
940,1.1.1.5.3.1.3.4.5,"Grondwerk, bekisting, wapening en beton vloerplaat 5",10.0,8.0,12.0,2017-04-18 08:00:00,2017-05-01 17:00:00,,0
941,1.1.1.5.3.1.3.4.6,"Grondwerk, bekisting, wapening en beton vloerplaat 6",10.0,8.0,12.0,2017-05-03 08:00:00,2017-05-16 17:00:00,,0
942,1.1.1.5.3.1.3.4.7,"Grondwerk, bekisting, wapening en beton vloerplaat 7",10.0,8.0,12.0,2017-05-17 08:00:00,2017-05-30 17:00:00,,0
943,1.1.1.5.3.1.3.5,Keerwanden moot 1 tot 7,110.0,110.0,110.0,2017-02-16 08:00:00,2017-07-19 17:00:00,,0
944,1.1.1.5.3.1.3.5.1,"Bekisting, wapening en beton keerwanden 1",10.0,8.0,12.0,2017-02-16 08:00:00,2017-03-01 17:00:00,,0
945,1.1.1.5.3.1.3.5.2,"Bekisting, wapening en beton keerwanden 2",10.0,8.0,12.0,2017-03-02 08:00:00,2017-03-15 17:00:00,,0
946,1.1.1.5.3.1.3.5.3,"Bekisting, wapening en beton keerwanden 3",9.0,7.2,10.8,2017-03-28 08:00:00,2017-04-07 17:00:00,,0
947,1.1.1.5.3.1.3.5.4,"Bekisting, wapening en beton keerwanden 4",10.0,8.0,12.0,2017-04-10 08:00:00,2017-04-21 17:00:00,,0
948,1.1.1.5.3.1.3.5.5,"Bekisting, wapening en beton keerwanden 5",10.0,8.0,12.0,2017-05-03 08:00:00,2017-05-16 17:00:00,,0
949,1.1.1.5.3.1.3.5.6,"Bekisting, wapening en beton keerwanden 6",12.0,9.6,14.4,2017-05-23 08:00:00,2017-06-07 17:00:00,,0
950,1.1.1.5.3.1.3.5.7,"Bekisting, wapening en beton keerwanden 7",12.0,9.6,14.4,2017-06-13 08:00:00,2017-06-28 17:00:00,,0
951,1.1.1.5.3.1.3.5.8,Dakplaat moot 7,10.0,8.0,12.0,2017-06-19 08:00:00,2017-06-30 17:00:00,,0
952,1.1.1.5.3.1.3.5.9,Aanvullingen naast keerwand,58.0,46.4,69.6,2017-05-01 08:00:00,2017-07-19 17:00:00,,0
953,1.1.1.5.3.1.3.6,Grondwerk zone binnen de slibwand,10.0,8.0,12.0,2017-02-06 08:00:00,2017-02-17 17:00:00,,0
954,1.1.1.5.3.1.3.7,Opbouw stelling in logistieke opening,10.0,8.0,12.0,2017-02-20 08:00:00,2017-03-03 17:00:00,,0
955,1.1.1.5.3.1.3.8,Moot 10 (binnen slibwand),65.0,65.0,65.0,2017-04-03 08:00:00,2017-06-30 17:00:00,,0
956,1.1.1.5.3.1.3.8.1,"Bekisting, wapening en beton vloerplaat moot 10",13.0,10.4,15.6,2017-04-03 08:00:00,2017-04-19 17:00:00,,0
957,1.1.1.5.3.1.3.8.2,"Bekisting, wapening en beton keerwand moot 10",10.0,8.0,12.0,2017-04-21 08:00:00,2017-05-04 17:00:00,,0
958,1.1.1.5.3.1.3.8.3,"Bekisting, wapening en beton dakplaat moot 10",15.0,12.0,18.0,2017-05-08 08:00:00,2017-05-26 17:00:00,,0
959,1.1.1.5.3.1.3.8.4,Dakdichting moot 10,5.0,4.0,6.0,2017-06-20 08:00:00,2017-06-26 17:00:00,,0
960,1.1.1.5.3.1.3.8.5,Aanvulling moot 10,4.0,3.2,4.8,2017-06-27 08:00:00,2017-06-30 17:00:00,,0
961,1.1.1.5.3.1.3.9,Moot 9 (binnen slibwand),85.0,85.0,85.0,2017-03-14 08:00:00,2017-07-10 17:00:00,,0
962,1.1.1.5.3.1.3.9.1,"Bekisting, wapening en beton vloerplaat moot 9",13.0,10.4,15.6,2017-03-14 08:00:00,2017-03-30 17:00:00,,0
963,1.1.1.5.3.1.3.9.2,"Bekisting, wapening en beton keerwand moot 9",19.0,15.2,22.8,2017-04-03 08:00:00,2017-04-27 17:00:00,,0
964,1.1.1.5.3.1.3.9.3,"Bekisting, wapening en beton dakplaat moot 9",11.0,8.8,13.2,2017-05-23 08:00:00,2017-06-06 17:00:00,,0
965,1.1.1.5.3.1.3.9.4,Dakdichting moot 9,5.0,4.0,6.0,2017-06-28 08:00:00,2017-07-04 17:00:00,,0
966,1.1.1.5.3.1.3.9.5,Aanvulling moot 9,4.0,3.2,4.8,2017-07-05 08:00:00,2017-07-10 17:00:00,,0
967,1.1.1.5.3.1.3.10,Moot 8 (binnen slibwand),104.0,104.0,104.0,2017-03-06 08:00:00,2017-07-27 17:00:00,,0
968,1.1.1.5.3.1.3.10.1,"Bekisting, wapening en beton vloerplaat moot 8",39.0,31.2,46.8,2017-03-06 08:00:00,2017-04-27 17:00:00,,0
969,1.1.1.5.3.1.3.10.2,"Bekisting, wapening en beton keerwand moot 8",17.0,13.6,20.4,2017-05-02 08:00:00,2017-05-24 17:00:00,,0
970,1.1.1.5.3.1.3.10.3,"Bekisting, wapening en beton dakplaat moot 8",10.0,8.0,12.0,2017-06-12 08:00:00,2017-06-23 17:00:00,,0
971,1.1.1.5.3.1.3.10.4,Dakdichting moot 8,5.0,4.0,6.0,2017-07-17 08:00:00,2017-07-21 17:00:00,,0
972,1.1.1.5.3.1.3.10.5,Aanvullingen moot 8,4.0,3.2,4.8,2017-07-24 08:00:00,2017-07-27 17:00:00,,0
973,1.1.1.5.3.1.4,Dichtleggen strossopening niv +0/-1,6.0,4.8,7.2,2018-05-01 08:00:00,2018-05-08 17:00:00,,24
974,1.1.1.5.3.1.5,Dichtmaken strossopening + wand,31.0,24.8,37.2,2019-03-08 08:00:00,2019-04-19 17:00:00,,0
975,1.1.1.5.3.1.6,RWA Ventilatie schacht tussen ATZO en Livan Tramtunnel (T-121-BET-110),295.0,295.0,295.0,2017-10-16 08:00:00,2018-11-30 17:00:00,,7
976,1.1.1.5.3.1.6.1,Grondwerk tot niveau 1.89mTAW,10.0,8.0,12.0,2017-10-16 08:00:00,2017-10-27 17:00:00,,0
977,1.1.1.5.3.1.6.2,Realiseren balk op niveau 1.89mTAW,5.0,4.0,6.0,2017-10-30 08:00:00,2017-11-03 17:00:00,,0
978,1.1.1.5.3.1.6.3,Realiseren dakplaat op stelling (7.62mTAW),26.0,20.8,31.2,2017-11-06 08:00:00,2017-12-11 17:00:00,,0
979,1.1.1.5.3.1.6.4,"Grondwerk in ventilatieschacht tot niveau -6,15m TAW",10.0,8.0,12.0,2018-01-10 08:00:00,2018-01-23 17:00:00,,0
980,1.1.1.5.3.1.6.5,"Uithakken in slibwand, inboren ankerwapening",5.0,4.0,6.0,2018-01-24 08:00:00,2018-01-30 17:00:00,,0
981,1.1.1.5.3.1.6.6,"bekisting, wapening, beton vloerplaat niveau -5,35m TAW",5.0,4.0,6.0,2018-01-31 08:00:00,2018-02-06 17:00:00,,0
982,1.1.1.5.3.1.6.7,"realiseren van venster (4,00m * 4,00m) in slibwand richting parking",10.0,8.0,12.0,2018-02-07 08:00:00,2018-02-20 17:00:00,,0
983,1.1.1.5.3.1.6.8,"bekisting, wapening, beton wand 30cm tegen wand ATZO aan",15.0,12.0,18.0,2018-02-21 08:00:00,2018-03-13 17:00:00,,0
984,1.1.1.5.3.1.6.9,"bekisting, wapening, beton opstanden op dakplaat",5.0,4.0,6.0,2017-12-12 08:00:00,2017-12-18 17:00:00,,0
985,1.1.1.5.3.1.6.10,uitharden dakplaat Ventilatie schacht,14.0,11.2,16.8,2017-12-19 08:00:00,2018-01-05 17:00:00,,0
986,1.1.1.5.3.1.6.11,waterdichting ventilatieschacht,75.0,60.0,90.0,2018-01-19 08:00:00,2018-05-03 17:00:00,,4
987,1.1.1.5.3.1.6.12,"leveren en plaatsen van ventilatierooster (Frankrijklei oost naast ATZ-oost, opvolger DP1)",5.0,4.0,6.0,2018-11-26 08:00:00,2018-11-30 17:00:00,,3
988,1.1.1.5.3.1.7,311322 Tunnel ZUID-WEST (ruwbouw),381.0,381.0,381.0,2017-06-06 08:00:00,2018-11-20 17:00:00,,44
989,1.1.1.5.3.1.7.1,Voorbereidende werken,19.0,19.0,19.0,2017-06-06 08:00:00,2017-06-30 17:00:00,,0
990,1.1.1.5.3.1.7.1.1,Plaatsen werfinstallatie,4.0,3.2,4.8,2017-06-06 08:00:00,2017-06-09 17:00:00,,0
991,1.1.1.5.3.1.7.1.2,Stempelen van technische lokalen (ATZO),5.0,4.0,6.0,2017-06-12 08:00:00,2017-06-16 17:00:00,,0
992,1.1.1.5.3.1.7.1.3,Externe mijlpaal (DP1): Wegenis opgebroken thv berlinerwand,0.0,0.0,0.0,2017-06-09 17:00:00,2017-06-09 17:00:00,,0
993,1.1.1.5.3.1.7.1.4,Afgraven grond thv uit te breken berlinerwand+ afbraak sas CDA bestaande slibwand (1+2),5.0,4.0,6.0,2017-06-15 08:00:00,2017-06-21 17:00:00,,0
994,1.1.1.5.3.1.7.1.5,Uitbreken bestaande berlinerwand ,2.0,1.6,2.4,2017-06-22 08:00:00,2017-06-23 17:00:00,,0
995,1.1.1.5.3.1.7.1.6,Opbouwen berlinerwand thv café des arts (René),3.0,2.4,3.6,2017-06-26 08:00:00,2017-06-28 17:00:00,,0
996,1.1.1.5.3.1.7.1.7,Voorbereiding en aanleg voetgangersoversteek,5.0,4.0,6.0,2017-06-26 08:00:00,2017-06-30 17:00:00,,0
997,1.1.1.5.3.1.7.2,Gesloten gedeelte tunnel Zuid-West,377.0,377.0,377.0,2017-06-12 08:00:00,2018-11-20 17:00:00,,44
998,1.1.1.5.3.1.7.2.1,Grondwerk moot 7 t.e.m. 5 (eerste deel),7.0,5.6,8.4,2017-06-12 08:00:00,2017-06-20 17:00:00,,0
999,1.1.1.5.3.1.7.2.2,Berlinerwand,8.0,6.4,9.6,2017-06-21 08:00:00,2017-06-30 17:00:00,,0
1000,1.1.1.5.3.1.7.2.3,Saldo grondwerk moot 7 t.e.m. 5 (1),5.0,4.0,6.0,2017-07-03 08:00:00,2017-07-07 17:00:00,,0
1001,1.1.1.5.3.1.7.2.4,Moot 7,342.0,342.0,342.0,2017-07-31 08:00:00,2018-11-20 17:00:00,,40
1002,1.1.1.5.3.1.7.2.4.1,oplegtand aan slibwand station,10.0,8.0,12.0,2017-07-31 08:00:00,2017-08-11 17:00:00,,0
1003,1.1.1.5.3.1.7.2.4.2,"aanleg werkvloer, bekisting, wapening, beton vloerplaat 7",5.0,4.0,6.0,2017-08-03 08:00:00,2017-08-09 17:00:00,,0
1004,1.1.1.5.3.1.7.2.4.3,"bekisting, wapening, beton wand W0.21 moot 7 (tegen slibwand)",8.0,6.4,9.6,2017-10-16 08:00:00,2017-10-25 17:00:00,,0
1005,1.1.1.5.3.1.7.2.4.4,"bekisting, wapening, beton wand W0.22 moot 7",8.0,6.4,9.6,2017-10-26 08:00:00,2017-11-06 17:00:00,,0
1006,1.1.1.5.3.1.7.2.4.5,"bekisting, wapening, beton wand W0.24 moot 7",8.0,6.4,9.6,2017-10-26 08:00:00,2017-11-06 17:00:00,,0
1007,1.1.1.5.3.1.7.2.4.6,Afbraak tijdelijke voetgangers- en fietserbrug,10.0,8.0,12.0,2018-08-13 08:00:00,2018-08-24 17:00:00,,0
1008,1.1.1.5.3.1.7.2.4.7,"Bekisting, wapening en beton dakplaat moot 7",9.0,7.2,10.8,2018-08-28 08:00:00,2018-09-07 17:00:00,,36
1009,1.1.1.5.3.1.7.2.4.8,Waterdichting dakplaat moot 7,10.0,8.0,12.0,2018-11-07 08:00:00,2018-11-20 17:00:00,,4
1010,1.1.1.5.3.1.7.2.5,Moot 6,193.0,193.0,193.0,2017-08-10 08:00:00,2018-05-07 17:00:00,,4
1011,1.1.1.5.3.1.7.2.5.1,"aanleg werkvloer, bekisting, wapening, beton vloerplaat 6",7.0,5.6,8.4,2017-08-10 08:00:00,2017-08-18 17:00:00,,0
1012,1.1.1.5.3.1.7.2.5.2,"bekisting, wapening, beton wand W0.20 moot 6 (tegen slibwand)",8.0,6.4,9.6,2017-10-31 08:00:00,2017-11-09 17:00:00,,0
1013,1.1.1.5.3.1.7.2.5.3,"bekisting, wapening, beton wand W0.16 moot 6",8.0,6.4,9.6,2017-11-10 08:00:00,2017-11-21 17:00:00,,0
1014,1.1.1.5.3.1.7.2.5.4,"bekisting, wapening, beton wand W0.19b moot 6",3.0,2.4,3.6,2017-11-22 08:00:00,2017-11-24 17:00:00,,0
1015,1.1.1.5.3.1.7.2.5.5,"bekisting, wapening, beton wand W0.23 moot 6",8.0,6.4,9.6,2017-10-31 08:00:00,2017-11-09 17:00:00,,0
1016,1.1.1.5.3.1.7.2.5.6,"bekisting, wapening, beton wand W.025 moot6",5.0,4.0,6.0,2017-11-10 08:00:00,2017-11-16 17:00:00,,0
1017,1.1.1.5.3.1.7.2.5.7,goedkeuring plannen dakplaat technische ruimte ATZO,0.0,0.0,0.0,2018-01-19 17:00:00,2018-01-19 17:00:00,,0
1018,1.1.1.5.3.1.7.2.5.8,Wapenen en betonnage dakplaat technische ruimte,5.0,4.0,6.0,2018-01-22 08:00:00,2018-01-26 17:00:00,,0
1019,1.1.1.5.3.1.7.2.5.9,"bekisting, wapening, beton dakplaat moot 6",10.0,8.0,12.0,2018-01-29 08:00:00,2018-02-09 17:00:00,,0
1020,1.1.1.5.3.1.7.2.5.10,Uitharden dakplaat moot 6,14.0,11.2,16.8,2018-02-12 08:00:00,2018-03-01 17:00:00,,0
1021,1.1.1.5.3.1.7.2.5.11,Waterdichting dakplaat moot 6,6.0,4.8,7.2,2018-04-30 08:00:00,2018-05-07 17:00:00,,4
1022,1.1.1.5.3.1.7.3,Open helling Zuid-West,209.0,209.0,209.0,2017-08-01 08:00:00,2018-05-18 17:00:00,,0
1023,1.1.1.5.3.1.7.3.1,Moot 5,190.0,190.0,190.0,2017-08-28 08:00:00,2018-05-18 17:00:00,,0
1024,1.1.1.5.3.1.7.3.1.1,"aanleg werkvloer, bekisting, wapening, beton vloerplaat 5",13.0,10.4,15.6,2017-08-28 08:00:00,2017-09-13 17:00:00,,0
1025,1.1.1.5.3.1.7.3.1.2,"bekisting, wapening, beton wand W.016 fase 1",5.0,4.0,6.0,2017-09-14 08:00:00,2017-09-20 17:00:00,,0
1026,1.1.1.5.3.1.7.3.1.3,"bekisting, wapening, beton wand W.017 fase 1",5.0,4.0,6.0,2017-09-14 08:00:00,2017-09-20 17:00:00,,0
1027,1.1.1.5.3.1.7.3.1.4,"bekisting, wapening, beton tussenwanden (4 stuks)",5.0,4.0,6.0,2017-09-21 08:00:00,2017-09-27 17:00:00,,0
1028,1.1.1.5.3.1.7.3.1.5,plaatsen predallen,2.0,1.6,2.4,2017-09-28 08:00:00,2017-09-29 17:00:00,,0
1029,1.1.1.5.3.1.7.3.1.6,"bekisting, wapening, beton vloerplaat rijweg moot 5",5.0,4.0,6.0,2017-10-02 08:00:00,2017-10-06 17:00:00,,0
1030,1.1.1.5.3.1.7.3.1.7,"bekisting, wapening, beton wand W.016 fase 2",8.0,6.4,9.6,2017-10-09 08:00:00,2017-10-18 17:00:00,,0
1031,1.1.1.5.3.1.7.3.1.8,"bekisting, wapening, beton wand W0.15 moot 5 (tegen slibwand), volle hoogte",5.0,4.0,6.0,2017-10-19 08:00:00,2017-10-25 17:00:00,,0
1032,1.1.1.5.3.1.7.3.1.9,"bekisting, wapening, beton wand W0.14 moot 5 (tegen slibwand)",3.0,2.4,3.6,2017-10-26 08:00:00,2017-10-30 17:00:00,,0
1033,1.1.1.5.3.1.7.3.1.10,"bekisting, wapening, beton wand W.017 fase 2",8.0,6.4,9.6,2017-10-19 08:00:00,2017-10-30 17:00:00,,0
1034,1.1.1.5.3.1.7.3.1.11,"bekisting, wapening, beton dakplaat zijde diesellokaal (HS +LS) fase 2",10.0,8.0,12.0,2017-11-27 08:00:00,2017-12-08 17:00:00,,0
1035,1.1.1.5.3.1.7.3.1.12,"bekisting, wapening, beton dakplaat technische tussenruimte",5.0,4.0,6.0,2017-12-11 08:00:00,2017-12-15 17:00:00,,0
1036,1.1.1.5.3.1.7.3.1.13,Uitharding + ontkisten,10.0,8.0,12.0,2017-12-11 08:00:00,2017-12-22 17:00:00,,0
1037,1.1.1.5.3.1.7.3.1.14,Metsen hoog- laagspanningslokaal,5.0,4.0,6.0,2018-01-08 08:00:00,2018-01-12 17:00:00,,0
1038,1.1.1.5.3.1.7.3.1.15,Verhoogde vloer hoog in laagspanningslokaal,35.0,28.0,42.0,2018-04-02 08:00:00,2018-05-18 17:00:00,,0
1039,1.1.1.5.3.1.7.3.1.16,Opkuis + schilderwerk + tijdelijke deuren technische tussenruimte,55.0,44.0,66.0,2018-01-15 08:00:00,2018-03-30 17:00:00,,0
1040,1.1.1.5.3.1.7.3.1.17,"bekisting, wapening, beton keermuur op dakplaat zijde diesellokaal",3.0,2.4,3.6,2017-12-11 08:00:00,2017-12-13 17:00:00,,0
1041,1.1.1.5.3.1.7.3.1.18,"bekisting, wapening, beton keermuur op dakplaat zijde technische ruimte",3.0,2.4,3.6,2017-12-18 08:00:00,2017-12-20 17:00:00,,0
1042,1.1.1.5.3.1.7.3.1.19,uitharden dakplaten moot 5,14.0,11.2,16.8,2017-12-21 08:00:00,2018-01-09 17:00:00,,0
1043,1.1.1.5.3.1.7.3.1.20,waterdichting dakplaten moot 5 (diesellokaal en technische ruimte),48.0,38.4,57.6,2018-01-24 08:00:00,2018-03-30 17:00:00,,0
1044,1.1.1.5.3.1.7.3.2,moot 4,72.0,72.0,72.0,2017-08-01 08:00:00,2017-11-08 17:00:00,,0
1045,1.1.1.5.3.1.7.3.2.1,grondwerk moot 4,3.0,2.4,3.6,2017-08-01 08:00:00,2017-08-03 17:00:00,,0
1046,1.1.1.5.3.1.7.3.2.2,"aanleg werkvloer, bekisting, wapening, beton vloerplaat 4",7.0,5.6,8.4,2017-09-14 08:00:00,2017-09-22 17:00:00,,0
1047,1.1.1.5.3.1.7.3.2.3,"bekisting, wapening, beton keermuur W0.03",9.0,7.2,10.8,2017-10-16 08:00:00,2017-10-26 17:00:00,,0
1048,1.1.1.5.3.1.7.3.2.4,"bekisting, wapening, beton keermuur W0.04 Oost",9.0,7.2,10.8,2017-10-27 08:00:00,2017-11-08 17:00:00,,0
1049,1.1.1.5.3.1.7.3.3,moot 3,58.0,58.0,58.0,2017-08-04 08:00:00,2017-10-24 17:00:00,,0
1050,1.1.1.5.3.1.7.3.3.1, grondwerk moot 3,3.0,2.4,3.6,2017-08-04 08:00:00,2017-08-08 17:00:00,,0
1051,1.1.1.5.3.1.7.3.3.2," aanleg werkvloer, bekisting, wapening, beton vloerplaat 3",7.0,5.6,8.4,2017-09-20 08:00:00,2017-09-28 17:00:00,,0
1052,1.1.1.5.3.1.7.3.3.3," bekisting, wapening, beton keermuur W0.01",9.0,7.2,10.8,2017-09-29 08:00:00,2017-10-11 17:00:00,,0
1053,1.1.1.5.3.1.7.3.3.4," bekisting, wapening, beton keermuur W0.02 Oost",9.0,7.2,10.8,2017-10-12 08:00:00,2017-10-24 17:00:00,,0
1054,1.1.1.5.3.1.7.3.4,moot 2,52.0,52.0,52.0,2017-08-09 08:00:00,2017-10-19 17:00:00,,0
1055,1.1.1.5.3.1.7.3.4.1, grondwerk moot 2,3.0,2.4,3.6,2017-08-09 08:00:00,2017-08-11 17:00:00,,0
1056,1.1.1.5.3.1.7.3.4.2," aanleg werkvloer, bekisting, wapening, beton vloerplaat 2",7.0,5.6,8.4,2017-09-21 08:00:00,2017-09-29 17:00:00,,0
1057,1.1.1.5.3.1.7.3.4.3," bekisting, wapening, beton keermuur W0.01",7.0,5.6,8.4,2017-10-02 08:00:00,2017-10-10 17:00:00,,0
1058,1.1.1.5.3.1.7.3.4.4," bekisting, wapening, beton keermuur W0.02 Oost",7.0,5.6,8.4,2017-10-11 08:00:00,2017-10-19 17:00:00,,0
1059,1.1.1.5.3.1.7.3.5,moot 1,61.0,61.0,61.0,2017-08-16 08:00:00,2017-11-08 17:00:00,,0
1060,1.1.1.5.3.1.7.3.5.1, grondwerk moot 1,3.0,2.4,3.6,2017-08-16 08:00:00,2017-08-18 17:00:00,,0
1061,1.1.1.5.3.1.7.3.5.2," aanleg werkvloer, bekisting, wapening, beton vloerplaat 1",11.0,8.8,13.2,2017-09-27 08:00:00,2017-10-11 17:00:00,,0
1062,1.1.1.5.3.1.7.3.5.3," bekisting, wapening, beton keermuur W0.01",7.0,5.6,8.4,2017-10-20 08:00:00,2017-10-30 17:00:00,,0
1063,1.1.1.5.3.1.7.3.5.4," bekisting, wapening, beton keermuur W0.02",7.0,5.6,8.4,2017-10-31 08:00:00,2017-11-08 17:00:00,,0
1064,1.1.1.5.3.1.7.3.6,moot 1 tem 4,31.0,31.0,31.0,2017-10-31 08:00:00,2017-12-12 17:00:00,,0
1065,1.1.1.5.3.1.7.3.6.1,waterdichting wanden + drainage mat + drainering West,5.0,4.0,6.0,2017-10-31 08:00:00,2017-11-06 17:00:00,,0
1066,1.1.1.5.3.1.7.3.6.2,waterdichting wanden + drainage mat + drainering Oost,5.0,4.0,6.0,2017-11-09 08:00:00,2017-11-15 17:00:00,,0
1067,1.1.1.5.3.1.7.3.6.3,aanvulling bouwput West,5.0,4.0,6.0,2017-11-20 08:00:00,2017-11-24 17:00:00,,0
1068,1.1.1.5.3.1.7.3.6.4,Trekken damplanken,3.0,2.4,3.6,2017-11-27 08:00:00,2017-11-29 17:00:00,,0
1069,1.1.1.5.3.1.7.3.6.5,aanvulling bouwput Oost tussen ATZW en ATZO,10.0,8.0,12.0,2017-11-29 08:00:00,2017-12-12 17:00:00,,0
1070,1.1.1.5.3.2,ruwbouw,327.0,327.0,327.0,2017-06-16 08:00:00,2018-09-17 17:00:00,,8
1071,1.1.1.5.3.2.1,ATN-West,251.0,251.0,251.0,2017-06-16 08:00:00,2018-06-01 17:00:00,,4
1072,1.1.1.5.3.2.1.1,Beschoeiing ATN-W,10.0,8.0,12.0,2017-06-16 08:00:00,2017-06-29 17:00:00,,0
1073,1.1.1.5.3.2.1.2,Moot 1W (open),92.0,92.0,92.0,2017-06-16 08:00:00,2017-10-23 17:00:00,,0
1074,1.1.1.5.3.2.1.2.1,Uitgraving ,2.0,1.6,2.4,2017-06-16 08:00:00,2017-06-19 17:00:00,,0
1075,1.1.1.5.3.2.1.2.2,Werkvloer + riolering,3.0,2.4,3.6,2017-06-20 08:00:00,2017-06-22 17:00:00,,0
1076,1.1.1.5.3.2.1.2.3,"Bekisting, wapening en betonstort vloerplaat",10.0,8.0,12.0,2017-06-23 08:00:00,2017-07-06 17:00:00,,0
1077,1.1.1.5.3.2.1.2.4,"Bekisting, wapening en betonstort wanden",10.0,8.0,12.0,2017-07-07 08:00:00,2017-07-20 17:00:00,,0
1078,1.1.1.5.3.2.1.2.5,drainage + waterdichting,5.0,4.0,6.0,2017-10-17 08:00:00,2017-10-23 17:00:00,,0
1079,1.1.1.5.3.2.1.3,Moot 2W (open),95.0,95.0,95.0,2017-06-20 08:00:00,2017-10-30 17:00:00,,0
1080,1.1.1.5.3.2.1.3.1,Uitgraving ,2.0,1.6,2.4,2017-06-20 08:00:00,2017-06-21 17:00:00,,0
1081,1.1.1.5.3.2.1.3.2,Werkvloer + riolering,5.0,4.0,6.0,2017-06-23 08:00:00,2017-06-29 17:00:00,,0
1082,1.1.1.5.3.2.1.3.3,"Bekisting, wapening en betonstort vloerplaat",10.0,8.0,12.0,2017-07-07 08:00:00,2017-07-20 17:00:00,,0
1083,1.1.1.5.3.2.1.3.4,"Bekisting, wapening en betonstort wanden",10.0,8.0,12.0,2017-08-11 08:00:00,2017-08-24 17:00:00,,0
1084,1.1.1.5.3.2.1.3.5,drainage + waterdichting,5.0,4.0,6.0,2017-10-24 08:00:00,2017-10-30 17:00:00,,0
1085,1.1.1.5.3.2.1.4,Moot 3W (open),87.0,87.0,87.0,2017-07-07 08:00:00,2017-11-06 17:00:00,,0
1086,1.1.1.5.3.2.1.4.1,Uitgraving ,2.0,1.6,2.4,2017-07-07 08:00:00,2017-07-10 17:00:00,,0
1087,1.1.1.5.3.2.1.4.2,Werkvloer + riolering,5.0,4.0,6.0,2017-08-01 08:00:00,2017-08-07 17:00:00,,0
1088,1.1.1.5.3.2.1.4.3,"Bekisting, wapening en betonstort vloerplaat",10.0,8.0,12.0,2017-08-11 08:00:00,2017-08-24 17:00:00,,0
1089,1.1.1.5.3.2.1.4.4,"Bekisting, wapening en betonstort wanden",10.0,8.0,12.0,2017-08-29 08:00:00,2017-09-11 17:00:00,,0
1090,1.1.1.5.3.2.1.4.5,drainage + waterdichting,5.0,4.0,6.0,2017-10-31 08:00:00,2017-11-06 17:00:00,,0
1091,1.1.1.5.3.2.1.5,Moot 4W (open),75.0,75.0,75.0,2017-08-01 08:00:00,2017-11-13 17:00:00,,0
1092,1.1.1.5.3.2.1.5.1,Uitgraving ,2.0,1.6,2.4,2017-08-01 08:00:00,2017-08-02 17:00:00,,0
1093,1.1.1.5.3.2.1.5.2,Archeologische registratie,10.0,8.0,12.0,2017-08-03 08:00:00,2017-08-16 17:00:00,,0
1094,1.1.1.5.3.2.1.5.3,Afbraak archeologische structuren,10.0,8.0,12.0,2017-08-21 08:00:00,2017-09-01 17:00:00,,0
1095,1.1.1.5.3.2.1.5.4,Werkvloer + riolering,3.0,2.4,3.6,2017-09-04 08:00:00,2017-09-06 17:00:00,,0
1096,1.1.1.5.3.2.1.5.5,"Bekisting, wapening en betonstort vloerplaat",10.0,8.0,12.0,2017-09-07 08:00:00,2017-09-20 17:00:00,,0
1097,1.1.1.5.3.2.1.5.6,"Bekisting, wapening en betonstort wanden",10.0,8.0,12.0,2017-09-21 08:00:00,2017-10-04 17:00:00,,0
1098,1.1.1.5.3.2.1.5.7,drainage + waterdichting,5.0,4.0,6.0,2017-11-07 08:00:00,2017-11-13 17:00:00,,0
1099,1.1.1.5.3.2.1.6,Moot 5W (open),65.0,65.0,65.0,2017-08-21 08:00:00,2017-11-17 17:00:00,,0
1100,1.1.1.5.3.2.1.6.1,Uitgraving ,2.0,1.6,2.4,2017-08-21 08:00:00,2017-08-22 17:00:00,,0
1101,1.1.1.5.3.2.1.6.2,Werkvloer + riolering,5.0,4.0,6.0,2017-09-07 08:00:00,2017-09-13 17:00:00,,0
1102,1.1.1.5.3.2.1.6.3,"Bekisting, wapening en betonstort vloerplaat",10.0,8.0,12.0,2017-09-21 08:00:00,2017-10-04 17:00:00,,0
1103,1.1.1.5.3.2.1.6.4,"Bekisting, wapening en betonstort wanden",7.0,5.6,8.4,2017-10-05 08:00:00,2017-10-13 17:00:00,,0
1104,1.1.1.5.3.2.1.6.5,drainage + waterdichting,4.0,3.2,4.8,2017-11-14 08:00:00,2017-11-17 17:00:00,,0
1105,1.1.1.5.3.2.1.7,Verwijderen beschoeiing West + aanvullen tegen tunnelwand (westzijde),2.0,1.6,2.4,2017-11-20 08:00:00,2017-11-21 17:00:00,,0
1106,1.1.1.5.3.2.1.8,Moot 6W (gesloten),202.0,202.0,202.0,2017-08-23 08:00:00,2018-05-31 17:00:00,,2
1107,1.1.1.5.3.2.1.8.1,Uitgraving ,3.0,2.4,3.6,2017-08-23 08:00:00,2017-08-25 17:00:00,,0
1108,1.1.1.5.3.2.1.8.2,Archeologische registratie,5.0,4.0,6.0,2017-08-28 08:00:00,2017-09-01 17:00:00,,0
1109,1.1.1.5.3.2.1.8.3,Afbraak archeologische structuren,5.0,4.0,6.0,2017-09-04 08:00:00,2017-09-08 17:00:00,,0
1110,1.1.1.5.3.2.1.8.4,Werkvloer + riolering,5.0,4.0,6.0,2017-10-11 08:00:00,2017-10-17 17:00:00,,0
1111,1.1.1.5.3.2.1.8.5,"Bekisting, wapening en betonstort vloerplaat",10.0,8.0,12.0,2017-10-18 08:00:00,2017-10-31 17:00:00,,0
1112,1.1.1.5.3.2.1.8.6,"Bekisting, wapening en betonstort wanden",10.0,8.0,12.0,2017-11-01 08:00:00,2017-11-14 17:00:00,,0
1113,1.1.1.5.3.2.1.8.7,"Bekisting, wapening en betonstort dakplaat",10.0,8.0,12.0,2017-11-15 08:00:00,2017-11-28 17:00:00,,0
1114,1.1.1.5.3.2.1.8.8,Aanvulling dakplaat moot 6,8.0,6.4,9.6,2017-11-29 08:00:00,2017-12-08 17:00:00,,0
1115,1.1.1.5.3.2.1.8.9,drainage + waterdichting,3.0,2.4,3.6,2018-05-29 08:00:00,2018-05-31 17:00:00,,2
1116,1.1.1.5.3.2.1.9,Moot 7W (gesloten),200.0,200.0,200.0,2017-08-28 08:00:00,2018-06-01 17:00:00,,2
1117,1.1.1.5.3.2.1.9.1,Uitgraving ,3.0,2.4,3.6,2017-08-28 08:00:00,2017-08-30 17:00:00,,0
1118,1.1.1.5.3.2.1.9.2,Archeologische registratie,5.0,4.0,6.0,2017-09-04 08:00:00,2017-09-08 17:00:00,,0
1119,1.1.1.5.3.2.1.9.3,Aanvullen voor uitgraving archeologische put,5.0,4.0,6.0,2017-09-11 08:00:00,2017-09-15 17:00:00,,0
1120,1.1.1.5.3.2.1.9.4,Uitgraving,3.0,2.4,3.6,2017-10-11 08:00:00,2017-10-13 17:00:00,,0
1121,1.1.1.5.3.2.1.9.5,Werkvloer + riolering,5.0,4.0,6.0,2017-10-18 08:00:00,2017-10-24 17:00:00,,0
1122,1.1.1.5.3.2.1.9.6,"Bekisting, wapening en betonstort vloerplaat",10.0,8.0,12.0,2017-11-01 08:00:00,2017-11-14 17:00:00,,0
1123,1.1.1.5.3.2.1.9.7,"Bekisting, wapening en betonstort wanden",10.0,8.0,12.0,2017-11-15 08:00:00,2017-11-28 17:00:00,,0
1124,1.1.1.5.3.2.1.9.8,"Bekisting, wapening en betonstort dakplaat",10.0,8.0,12.0,2017-11-29 08:00:00,2017-12-12 17:00:00,,0
1125,1.1.1.5.3.2.1.9.9,drainage + waterdichting,3.0,2.4,3.6,2018-05-29 08:00:00,2018-05-31 17:00:00,,2
1126,1.1.1.5.3.2.1.9.10,Aanvullen voor uitgraving archeologische put,4.0,3.2,4.8,2018-05-29 08:00:00,2018-06-01 17:00:00,,0
1127,1.1.1.5.3.2.2,ATN-Oost,248.0,248.0,248.0,2017-10-05 08:00:00,2018-09-17 17:00:00,,4
1128,1.1.1.5.3.2.2.1,Moot 1O (open),37.0,37.0,37.0,2017-10-05 08:00:00,2017-11-24 17:00:00,,0
1129,1.1.1.5.3.2.2.1.1,Uitgraving ,2.0,1.6,2.4,2017-10-05 08:00:00,2017-10-06 17:00:00,,0
1130,1.1.1.5.3.2.2.1.2,Werkvloer + riolering,5.0,4.0,6.0,2017-10-09 08:00:00,2017-10-13 17:00:00,,0
1131,1.1.1.5.3.2.2.1.3,"Bekisting, wapening en betonstort vloerplaat",10.0,8.0,12.0,2017-10-16 08:00:00,2017-10-27 17:00:00,,0
1132,1.1.1.5.3.2.2.1.4,"Bekisting, wapening en betonstort wanden",10.0,8.0,12.0,2017-10-30 08:00:00,2017-11-10 17:00:00,,0
1133,1.1.1.5.3.2.2.1.5,drainage + waterdichting,5.0,4.0,6.0,2017-11-20 08:00:00,2017-11-24 17:00:00,,0
1134,1.1.1.5.3.2.2.2,Moot 2O(open),40.0,40.0,40.0,2017-10-09 08:00:00,2017-12-01 17:00:00,,0
1135,1.1.1.5.3.2.2.2.1,Uitgraving ,2.0,1.6,2.4,2017-10-09 08:00:00,2017-10-10 17:00:00,,0
1136,1.1.1.5.3.2.2.2.2,Archeologische registratie,3.0,2.4,3.6,2017-10-11 08:00:00,2017-10-13 17:00:00,,0
1137,1.1.1.5.3.2.2.2.3,Afbraak archeologische structuren,2.0,1.6,2.4,2017-10-16 08:00:00,2017-10-17 17:00:00,,0
1138,1.1.1.5.3.2.2.2.4,Werkvloer + riolering,5.0,4.0,6.0,2017-10-18 08:00:00,2017-10-24 17:00:00,,0
1139,1.1.1.5.3.2.2.2.5,"Bekisting, wapening en betonstort vloerplaat",10.0,8.0,12.0,2017-10-30 08:00:00,2017-11-10 17:00:00,,0
1140,1.1.1.5.3.2.2.2.6,"Bekisting, wapening en betonstort wanden",10.0,8.0,12.0,2017-11-13 08:00:00,2017-11-24 17:00:00,,0
1141,1.1.1.5.3.2.2.2.7,drainage + waterdichting,5.0,4.0,6.0,2017-11-27 08:00:00,2017-12-01 17:00:00,,0
1142,1.1.1.5.3.2.2.3,Beschoeiing ATN-O MOOT 3+4,5.0,4.0,6.0,2017-12-04 08:00:00,2017-12-08 17:00:00,,0
1143,1.1.1.5.3.2.2.4,Moot 3O (open),60.0,60.0,60.0,2017-12-11 08:00:00,2018-03-02 17:00:00,,0
1144,1.1.1.5.3.2.2.4.1,Uitgraving ,2.0,1.6,2.4,2017-12-11 08:00:00,2017-12-12 17:00:00,,0
1145,1.1.1.5.3.2.2.4.2,Archeologische registratie,6.0,4.8,7.2,2017-12-13 08:00:00,2017-12-20 17:00:00,,0
1146,1.1.1.5.3.2.2.4.3,Afbraak archeologische structuren,7.0,5.6,8.4,2017-12-21 08:00:00,2017-12-29 17:00:00,,0
1147,1.1.1.5.3.2.2.4.4,Werkvloer + riolering,5.0,4.0,6.0,2018-01-15 08:00:00,2018-01-19 17:00:00,,0
1148,1.1.1.5.3.2.2.4.5,"Bekisting, wapening en betonstort vloerplaat",10.0,8.0,12.0,2018-01-22 08:00:00,2018-02-02 17:00:00,,0
1149,1.1.1.5.3.2.2.4.6,"Bekisting, wapening en betonstort wanden",10.0,8.0,12.0,2018-02-05 08:00:00,2018-02-16 17:00:00,,0
1150,1.1.1.5.3.2.2.4.7,drainage + waterdichting,5.0,4.0,6.0,2018-02-26 08:00:00,2018-03-02 17:00:00,,0
1151,1.1.1.5.3.2.2.5,Moot 4O (open),78.0,78.0,78.0,2017-12-11 08:00:00,2018-03-28 17:00:00,,0
1152,1.1.1.5.3.2.2.5.1,Uitgraving ,2.0,1.6,2.4,2017-12-11 08:00:00,2017-12-12 17:00:00,,0
1153,1.1.1.5.3.2.2.5.2,Archeologische registratie,6.0,4.8,7.2,2017-12-21 08:00:00,2017-12-28 17:00:00,,0
1154,1.1.1.5.3.2.2.5.3,Afbraak archeologische structuren,5.0,4.0,6.0,2018-01-15 08:00:00,2018-01-19 17:00:00,,0
1155,1.1.1.5.3.2.2.5.4,Werkvloer + riolering,5.0,4.0,6.0,2018-01-22 08:00:00,2018-01-26 17:00:00,,0
1156,1.1.1.5.3.2.2.5.5,"Bekisting, wapening en betonstort vloerplaat",10.0,8.0,12.0,2018-02-05 08:00:00,2018-02-16 17:00:00,,0
1157,1.1.1.5.3.2.2.5.6,"Bekisting, wapening en betonstort wanden",10.0,8.0,12.0,2018-02-19 08:00:00,2018-03-02 17:00:00,,0
1158,1.1.1.5.3.2.2.5.7,drainage + waterdichting,5.0,4.0,6.0,2018-03-05 08:00:00,2018-03-09 17:00:00,,0
1159,1.1.1.5.3.2.2.5.8,"Archeoligische registratie tussen ATN-W en ATO (gereed voor deze planning, verdere werkzaamheden bij aanleg Leien)",10.0,8.0,12.0,2018-03-15 08:00:00,2018-03-28 17:00:00,,0
1160,1.1.1.5.3.2.2.6,Moot 5O (open),116.0,116.0,116.0,2018-02-14 08:00:00,2018-07-25 17:00:00,,2
1161,1.1.1.5.3.2.2.6.1,Uitgraving tot niveau beschoeiing,3.0,2.4,3.6,2018-02-14 08:00:00,2018-02-16 17:00:00,,0
1162,1.1.1.5.3.2.2.6.2,"Plaatsen damwanden (enkelzijdig, 50m)",5.0,4.0,6.0,2018-02-19 08:00:00,2018-02-23 17:00:00,,0
1163,1.1.1.5.3.2.2.6.3,Uitgraving tot onderkant vloerplaat,3.0,2.4,3.6,2018-02-26 08:00:00,2018-02-28 17:00:00,,0
1164,1.1.1.5.3.2.2.6.4,Werkvloer + riolering,5.0,4.0,6.0,2018-03-01 08:00:00,2018-03-07 17:00:00,,0
1165,1.1.1.5.3.2.2.6.5,"Bekisting, wapening en betonstort vloerplaat",10.0,8.0,12.0,2018-03-08 08:00:00,2018-03-21 17:00:00,,0
1166,1.1.1.5.3.2.2.6.6,"Bekisting, wapening en betonstort wanden",21.0,16.8,25.2,2018-03-22 08:00:00,2018-04-19 17:00:00,,0
1167,1.1.1.5.3.2.2.6.7,drainage + waterdichting,3.0,2.4,3.6,2018-07-23 08:00:00,2018-07-25 17:00:00,,2
1168,1.1.1.5.3.2.2.7,Moot 6 Oost (gesloten),138.0,138.0,138.0,2018-03-08 08:00:00,2018-09-17 17:00:00,,2
1169,1.1.1.5.3.2.2.7.1,Werkvloer + riolering,5.0,4.0,6.0,2018-03-08 08:00:00,2018-03-14 17:00:00,,0
1170,1.1.1.5.3.2.2.7.2,"Bekisting, wapening en betonstort vloerplaat",26.0,20.8,31.2,2018-03-22 08:00:00,2018-04-26 17:00:00,,0
1171,1.1.1.5.3.2.2.7.3,"Bekisting, wapening en betonstort wand Oost",17.0,13.6,20.4,2018-04-30 08:00:00,2018-05-22 17:00:00,,0
1172,1.1.1.5.3.2.2.7.4,"Bekisting, wapening en betonstort wand West",12.0,9.6,14.4,2018-05-23 08:00:00,2018-06-07 17:00:00,,0
1173,1.1.1.5.3.2.2.7.5,"Bekisting, wapening en betonstort dakplaat",13.0,10.4,15.6,2018-06-08 08:00:00,2018-06-26 17:00:00,,0
1174,1.1.1.5.3.2.2.7.6,drainage + waterdichting,38.0,30.4,45.6,2018-07-26 08:00:00,2018-09-17 17:00:00,,2
1175,1.1.1.5.3.3,Autotunnels oost Afwerkingen en Technieken,390.0,390.0,390.0,2018-05-25 08:00:00,2019-11-21 17:00:00,,771
1176,1.1.1.5.3.3.1,Glazen valbescherming tunnelinritten,10.0,8.0,12.0,2019-09-23 08:00:00,2019-10-04 17:00:00,,0
1177,1.1.1.5.3.3.2,Wegmarkeringen,1.0,0.8,1.2,2019-10-25 08:00:00,2019-10-25 17:00:00,,0
1178,1.1.1.5.3.3.3,AT-oost algemeen: fasering,225.0,225.0,225.0,2019-01-07 08:00:00,2019-11-15 17:00:00,,0
1179,1.1.1.5.3.3.3.1,"Fase 1 tunnel oost, BAM (w02-w06)",25.0,20.0,30.0,2019-01-07 08:00:00,2019-02-08 17:00:00,,0
1180,1.1.1.5.3.3.3.2,"Fase 2 tunnel oost, Fabricom (w07-w13)",35.0,28.0,42.0,2019-02-11 08:00:00,2019-03-29 17:00:00,,0
1181,1.1.1.5.3.3.3.3,"Fase 3 tunnel oost, BAM (w13-w15)",15.0,12.0,18.0,2019-03-25 08:00:00,2019-04-12 17:00:00,,0
1182,1.1.1.5.3.3.3.4,"Fase 4 tunnel oost, Fabricom (w16-w18)",15.0,12.0,18.0,2019-04-15 08:00:00,2019-05-03 17:00:00,,0
1183,1.1.1.5.3.3.3.5,"Fase 5 tunnel oost, BAM (w19-w21)",15.0,12.0,18.0,2019-05-06 08:00:00,2019-05-24 17:00:00,,0
1184,1.1.1.5.3.3.3.6,"Fase 6 tunnel oost, Fabricom (w21-w28)",40.0,32.0,48.0,2019-05-20 08:00:00,2019-07-12 17:00:00,,0
1185,1.1.1.5.3.3.3.7,"Fase 7 tunnel oost, BAM (w29-w32)",20.0,16.0,24.0,2019-08-28 08:00:00,2019-09-24 17:00:00,,0
1186,1.1.1.5.3.3.3.8,"Start fase 8 tunnel oost, Fabricom (12.08.19-w33)",0.0,0.0,0.0,2019-09-24 17:00:00,2019-09-24 17:00:00,,0
1187,1.1.1.5.3.3.3.9,"Einde fase 8 tunnel oost, Fabricom (27.09.19-w39)",0.0,0.0,0.0,2019-11-15 17:00:00,2019-11-15 17:00:00,,0
1188,1.1.1.5.3.3.3.10,Aanbrengen epoxy-afwerking,12.0,9.6,14.4,2019-07-15 08:00:00,2019-07-30 17:00:00,,0
1189,1.1.1.5.3.3.4,AT-oost noord-deel,373.0,373.0,373.0,2018-06-18 17:00:00,2019-11-21 17:00:00,,329
1190,1.1.1.5.3.3.4.1,Afwerking autotunnels Oost noord-deel,373.0,373.0,373.0,2018-06-18 17:00:00,2019-11-21 17:00:00,,329
1191,1.1.1.5.3.3.4.1.1,RUWBOUW Autotunnel noord klaar,0.0,0.0,0.0,2018-10-31 17:00:00,2018-10-31 17:00:00,,0
1192,1.1.1.5.3.3.4.1.2,Betonnen Jersey (M-2) oostelijke wand,4.0,3.2,4.8,2018-12-03 08:00:00,2018-12-06 17:00:00,,32
1193,1.1.1.5.3.3.4.1.3,Start opmeting + productie Geprefabriceerde betonnen borstwering (E-1B)(flank afwisselend met lijnvormige elementen),0.0,0.0,0.0,2018-06-18 17:00:00,2018-06-18 17:00:00,,0
1194,1.1.1.5.3.3.4.1.4,"Voorbereidende werken borstwering (L-profielen, inboren, …) oostelijke wand",2.0,1.6,2.4,2019-01-21 08:00:00,2019-01-22 17:00:00,,20
1195,1.1.1.5.3.3.4.1.5,Geprefabriceerde betonnen borstwering (E-1B) oostelijke wand,9.0,7.2,10.8,2019-01-23 08:00:00,2019-02-04 17:00:00,,48
1196,1.1.1.5.3.3.4.1.6,"Voorbereidende werken borstwering (L-profielen, inboren, …) westelijke wand",2.0,1.6,2.4,2019-02-08 08:00:00,2019-02-11 17:00:00,,20
1197,1.1.1.5.3.3.4.1.7,Geprefabriceerde betonnen borstwering (E-1B) westelijke wand,9.0,7.2,10.8,2019-02-12 08:00:00,2019-02-22 17:00:00,,48
1198,1.1.1.5.3.3.4.1.8,Betonnen vloerelement (V-3) - dienstpad westelijke wand,2.0,1.6,2.4,2018-11-20 08:00:00,2018-11-21 17:00:00,,32
1199,1.1.1.5.3.3.4.1.9,Betonnen prefab verticale uitvulpanelen oostelijke wand,3.0,2.4,3.6,2019-02-05 08:00:00,2019-02-07 17:00:00,,40
1200,1.1.1.5.3.3.4.1.10,Betonnen prefab verticale uitvulpanelen westelijke wand,10.0,8.0,12.0,2019-02-25 08:00:00,2019-03-08 17:00:00,,40
1201,1.1.1.5.3.3.4.1.11,Geluidspanelen/akoestische panelen - DRAAGSTRUCTUUR - (M-1),5.0,4.0,6.0,2019-04-08 08:00:00,2019-04-12 17:00:00,,0
1202,1.1.1.5.3.3.4.1.12,Geluidspanelen/akoestische panelen - DRAAGSTRUCTUUR - (M-1),10.0,8.0,12.0,2019-05-06 08:00:00,2019-05-17 17:00:00,,0
1203,1.1.1.5.3.3.4.1.13,Geluidspanelen/akoestische panelen (M-1) - SHIFTEN,9.0,7.2,10.8,2019-06-14 08:00:00,2019-06-26 17:00:00,,0
1204,1.1.1.5.3.3.4.1.14,Asfalt (V-1),10.0,8.0,12.0,2019-07-29 08:00:00,2019-08-09 17:00:00,,4
1205,1.1.1.5.3.3.4.1.15,Riolering wegdek,5.0,4.0,6.0,2019-08-05 08:00:00,2019-08-09 17:00:00,,0
1206,1.1.1.5.3.3.4.1.16,Vluchttrap tunnel TPG (T25),22.0,17.6,26.4,2018-10-29 08:00:00,2018-11-27 17:00:00,,45
1207,1.1.1.5.3.3.4.1.17,Vluchttrap tunnel prefab (T25),10.0,8.0,12.0,2019-01-28 08:00:00,2019-02-08 17:00:00,,0
1208,1.1.1.5.3.3.4.1.18,Opmeten leuningen vluchttrappen,1.0,0.8,1.2,2019-08-19 08:00:00,2019-08-19 17:00:00,,0
1209,1.1.1.5.3.3.4.1.19,"Vluchthuis T22, T23 & T26",20.0,16.0,24.0,2019-09-30 08:00:00,2019-10-25 17:00:00,,0
1210,1.1.1.5.3.3.4.1.20,"Leuningen op trappen T22, T23 & T26",5.0,4.0,6.0,2019-11-15 08:00:00,2019-11-21 17:00:00,,0
1211,1.1.1.5.3.3.4.2,Technieken autotunnel Oost noord-deel (toegevoegd 20.02.09),187.0,187.0,187.0,2019-02-11 08:00:00,2019-10-29 17:00:00,,0
1212,1.1.1.5.3.3.4.2.1,Plaatsen kabelbanen in tunnel,15.0,12.0,18.0,2019-02-11 08:00:00,2019-03-01 17:00:00,,0
1213,1.1.1.5.3.3.4.2.2,Plaatsen kabelbanen in vluchtwegen en lokalen,15.0,12.0,18.0,2019-02-25 08:00:00,2019-03-15 17:00:00,,0
1214,1.1.1.5.3.3.4.2.3,Plaatsen draadgoten,10.0,8.0,12.0,2019-03-11 08:00:00,2019-03-22 17:00:00,,0
1215,1.1.1.5.3.3.4.2.4,Installatiewerken VDK fase 1 (plaatsen borden+aansluitwerken),25.0,20.0,30.0,2019-02-11 08:00:00,2019-03-15 17:00:00,,0
1216,1.1.1.5.3.3.4.2.5,Installatiewerken VDK fase 2 (voor akoestische panelen),8.0,6.4,9.6,2019-04-15 08:00:00,2019-04-24 17:00:00,,0
1217,1.1.1.5.3.3.4.2.6,Installatiewerken vDK fase 3 (installatie werken +aansluitwerken),14.0,11.2,16.8,2019-06-11 08:00:00,2019-06-28 17:00:00,,0
1218,1.1.1.5.3.3.4.2.7,Installatiewerken VDK fase 4 (afwerking),8.0,6.4,9.6,2019-09-25 08:00:00,2019-10-04 17:00:00,,0
1219,1.1.1.5.3.3.4.2.8,Versterkingsverlichting fase 1,30.0,24.0,36.0,2019-02-11 08:00:00,2019-03-22 17:00:00,,0
1220,1.1.1.5.3.3.4.2.9,Kabeltrek secundaire kabels fase 1,10.0,8.0,12.0,2019-03-11 08:00:00,2019-03-22 17:00:00,,0
1221,1.1.1.5.3.3.4.2.10,Kabeltrek secundaire kabels fase 2,4.0,3.2,4.8,2019-04-15 08:00:00,2019-04-18 17:00:00,,0
1222,1.1.1.5.3.3.4.2.11,Kabeltrek hoofdvoedingskabels tunnel oost,12.0,9.6,14.4,2019-04-15 08:00:00,2019-04-30 17:00:00,,0
1223,1.1.1.5.3.3.4.2.12,BBI fase 4,23.0,18.4,27.6,2019-09-25 08:00:00,2019-10-25 17:00:00,,0
1224,1.1.1.5.3.3.4.2.13,RWA-installatie + technieken voor akoestische panelen,8.0,6.4,9.6,2019-06-03 08:00:00,2019-06-12 17:00:00,,0
1225,1.1.1.5.3.3.4.2.14,Aansluiting detectoren,9.0,7.2,10.8,2019-06-11 08:00:00,2019-06-21 17:00:00,,0
1226,1.1.1.5.3.3.4.2.15,Programmatie +Indienstelling RWA-installatie,23.0,18.4,27.6,2019-08-12 08:00:00,2019-09-11 17:00:00,,0
1227,1.1.1.5.3.3.4.2.16,"Installatiewerken ICT fase 1 (installatie datakasten, steunen,…)",15.0,12.0,18.0,2019-03-04 08:00:00,2019-03-22 17:00:00,,0
1228,1.1.1.5.3.3.4.2.17,Installatiewerken ICT fase 2 (installatie voor akoestische panelen + kabeltrek),8.0,6.4,9.6,2019-04-15 08:00:00,2019-04-24 17:00:00,,0
1229,1.1.1.5.3.3.4.2.18,Installatiewerken ICT fase 3 (aansluitwerken na akoestische panelen),12.0,9.6,14.4,2019-06-27 08:00:00,2019-07-12 17:00:00,,0
1230,1.1.1.5.3.3.4.2.19,Installatiewerken ICT fase 4 (Fiberopitic + indienststelling),25.0,20.0,30.0,2019-09-25 08:00:00,2019-10-29 17:00:00,,0
1231,1.1.1.5.3.3.4.2.20,Installatiewerken Roads fase 1,19.0,15.2,22.8,2019-06-03 08:00:00,2019-06-27 17:00:00,,0
1232,1.1.1.5.3.3.4.2.21,Installatiewerken Roads fase 2,23.0,18.4,27.6,2019-09-25 08:00:00,2019-10-25 17:00:00,,0
1233,1.1.1.5.3.3.5,AT-oost centraal,205.0,205.0,205.0,2018-12-13 08:00:00,2019-09-25 17:00:00,,74
1234,1.1.1.5.3.3.5.1,Afwerking autotunnel Oost centraal-deel,192.0,192.0,192.0,2018-12-13 08:00:00,2019-09-06 17:00:00,,74
1235,1.1.1.5.3.3.5.1.1,Betonnen vloerelement (V-3) - dienstpad westelijke wand tem PL6,42.0,33.6,50.4,2018-12-13 08:00:00,2019-02-08 17:00:00,,30
1236,1.1.1.5.3.3.5.1.2,Betonnen vloerelement (V-3) - dienstpad westelijke wand PL7-PL8,5.0,4.0,6.0,2019-03-12 08:00:00,2019-03-18 17:00:00,,30
1237,1.1.1.5.3.3.5.1.3,Betonnen Jersey (M-2) incl. ophangstaven oostelijke wand  FASE 1,28.0,22.4,33.6,2018-12-13 08:00:00,2019-01-21 17:00:00,,0
1238,1.1.1.5.3.3.5.1.4,Dienstpad en stepbarrier thv kruising premetro,6.0,4.8,7.2,2019-02-12 08:00:00,2019-02-19 17:00:00,,0
1239,1.1.1.5.3.3.5.1.5,Akoestische plafondbeplating,8.0,6.4,9.6,2019-02-18 08:00:00,2019-02-27 17:00:00,,0
1240,1.1.1.5.3.3.5.1.6,Betonnen Jersey (M-2) incl. ophangstaven oostelijke wand FASE 2,8.0,6.4,9.6,2019-03-27 08:00:00,2019-04-05 17:00:00,,0
1241,1.1.1.5.3.3.5.1.7,Betonnen prefab verticale uitvulpanelen westelijke wand ,4.0,3.2,4.8,2019-04-11 08:00:00,2019-04-16 17:00:00,,0
1242,1.1.1.5.3.3.5.1.8,Geluidspanelen/akoestische panelen - DRAAGSTRUCTUUR - (M-1),10.0,8.0,12.0,2019-05-06 08:00:00,2019-05-17 17:00:00,,0
1243,1.1.1.5.3.3.5.1.9,Geluidspanelen/akoestische panelen (M-1) - SHIFTEN,9.0,7.2,10.8,2019-06-17 08:00:00,2019-06-27 17:00:00,,0
1244,1.1.1.5.3.3.5.1.10,Structuur U-glas,7.0,5.6,8.4,2019-06-27 08:00:00,2019-07-05 17:00:00,,0
1245,1.1.1.5.3.3.5.1.11,Waterdichte rok (Viabuild),5.0,4.0,6.0,2019-07-22 08:00:00,2019-07-26 17:00:00,,0
1246,1.1.1.5.3.3.5.1.12,Asfalt (V-1),10.0,8.0,12.0,2019-07-29 08:00:00,2019-08-09 17:00:00,,6
1247,1.1.1.5.3.3.5.1.13,Riolering wegdek,5.0,4.0,6.0,2019-08-05 08:00:00,2019-08-09 17:00:00,,8
1248,1.1.1.5.3.3.5.1.14,U-glas + ophangstructuur,10.0,8.0,12.0,2019-08-26 08:00:00,2019-09-06 17:00:00,,0
1249,1.1.1.5.3.3.5.2,Technieken autotunnel Oost centraal-deel (toegevoegd 20.02.09),163.0,163.0,163.0,2019-02-11 08:00:00,2019-09-25 17:00:00,,0
1250,1.1.1.5.3.3.5.2.1,Plaatsen kabelbanen tunnel,30.0,24.0,36.0,2019-02-11 08:00:00,2019-03-22 17:00:00,,0
1251,1.1.1.5.3.3.5.2.2,Installatiewerken VDK fase 1 (plaatsen borden+aansluitwerken),30.0,24.0,36.0,2019-02-18 08:00:00,2019-03-29 17:00:00,,0
1252,1.1.1.5.3.3.5.2.3,Installatiewerken VDK fase 2 (voor akoestische panelen),10.0,8.0,12.0,2019-04-11 08:00:00,2019-04-24 17:00:00,,0
1253,1.1.1.5.3.3.5.2.4,Installatiewerken vDK fase 3 (installatie werken +aansluitwerken na akoestische panelen),14.0,11.2,16.8,2019-06-11 08:00:00,2019-06-28 17:00:00,,0
1254,1.1.1.5.3.3.5.2.5,Installatiewerken VDK fase 4 (afwerking),10.0,8.0,12.0,2019-08-08 08:00:00,2019-08-21 17:00:00,,0
1255,1.1.1.5.3.3.5.2.6,Plaatsen en aansluiten verlichting fase 1,25.0,20.0,30.0,2019-02-25 08:00:00,2019-03-29 17:00:00,,0
1256,1.1.1.5.3.3.5.2.7,Plaatsen en aansluiten verlichting fase 2,15.0,12.0,18.0,2019-04-10 08:00:00,2019-04-30 17:00:00,,0
1257,1.1.1.5.3.3.5.2.8,Plaatsen en aansluiten verlichting fase 3,10.0,8.0,12.0,2019-06-07 08:00:00,2019-06-20 17:00:00,,0
1258,1.1.1.5.3.3.5.2.9,Kabeltrek secundaire kabels,15.0,12.0,18.0,2019-03-04 08:00:00,2019-03-22 17:00:00,,0
1259,1.1.1.5.3.3.5.2.10,Kabeltrek hoofdvoedingskabels tunnel oost,15.0,12.0,18.0,2019-04-10 08:00:00,2019-04-30 17:00:00,,0
1260,1.1.1.5.3.3.5.2.11,Kabeltrek hoofdvoedingskabels naar parking,20.0,16.0,24.0,2019-05-22 08:00:00,2019-06-18 17:00:00,,0
1261,1.1.1.5.3.3.5.2.12,Blusinstallatie fase 3,25.0,20.0,30.0,2019-05-29 08:00:00,2019-07-02 17:00:00,,0
1262,1.1.1.5.3.3.5.2.13,Blusinstallatie fase 4,18.0,14.4,21.6,2019-08-05 08:00:00,2019-08-28 17:00:00,,0
1263,1.1.1.5.3.3.5.2.14,RWA-installatie (voor akoestische panelen),8.0,6.4,9.6,2019-06-03 08:00:00,2019-06-12 17:00:00,,0
1264,1.1.1.5.3.3.5.2.15,RWA-installatie aansluiten gasdetectie,5.0,4.0,6.0,2019-06-17 08:00:00,2019-06-21 17:00:00,,0
1265,1.1.1.5.3.3.5.2.16,"Installatiewerken ICT fase 1 (installatie datakasten, steunen,…)",15.0,12.0,18.0,2019-03-11 08:00:00,2019-03-29 17:00:00,,0
1266,1.1.1.5.3.3.5.2.17,Installatiewerken ICT fase 2 (installatie voor akoestische panelen + kabeltrek),10.0,8.0,12.0,2019-04-11 08:00:00,2019-04-24 17:00:00,,0
1267,1.1.1.5.3.3.5.2.18,Installatiewerken ICT fase 3 (aansluitwerken na akoestische panelen),20.0,16.0,24.0,2019-06-07 08:00:00,2019-07-04 17:00:00,,0
1268,1.1.1.5.3.3.5.2.19,Installatiewerken ICT fase 4 (Fiberopitic + indienststelling),35.0,28.0,42.0,2019-08-08 08:00:00,2019-09-25 17:00:00,,0
1269,1.1.1.5.3.3.5.2.20,Installatiewerken Roads fase 3,20.0,16.0,24.0,2019-06-07 08:00:00,2019-07-04 17:00:00,,0
1270,1.1.1.5.3.3.5.2.21,Installatiewerken Roads fase 4,25.0,20.0,30.0,2019-08-08 08:00:00,2019-09-11 17:00:00,,0
1271,1.1.1.5.3.3.6,AT-oost zuid,386.0,386.0,386.0,2018-05-25 08:00:00,2019-11-15 17:00:00,,368
1272,1.1.1.5.3.3.6.1,afwerking autotunnel Oost zuid-deel,316.0,316.0,316.0,2018-05-25 08:00:00,2019-08-09 17:00:00,,368
1273,1.1.1.5.3.3.6.1.1,Start Opmeting + productie Geprefabriceerde betonnen borstwering (E-1B) (flank afwisselend met lijvormige elementen),0.0,0.0,0.0,2018-06-08 17:00:00,2018-06-08 17:00:00,,0
1274,1.1.1.5.3.3.6.1.2,"Voorbereidende werken borstwering (L-profielen, inboren, …)",5.0,4.0,6.0,2018-10-01 08:00:00,2018-10-05 17:00:00,,20
1275,1.1.1.5.3.3.6.1.3,Geprefabriceerde betonnen borstwering (E-1B) (westelijke wand),8.0,6.4,9.6,2018-10-08 08:00:00,2018-10-17 17:00:00,,32
1276,1.1.1.5.3.3.6.1.4,"Voorbereidende werken borstwering (L-profielen, inboren, …)",5.0,4.0,6.0,2018-10-18 08:00:00,2018-10-24 17:00:00,,20
1277,1.1.1.5.3.3.6.1.5,Geprefabriceerde betonnen borstwering (E-1B) (oostelijke wand),9.0,7.2,10.8,2018-11-13 08:00:00,2018-11-23 17:00:00,,32
1278,1.1.1.5.3.3.6.1.6,Betonnen Jersey (M-2) oostelijke wand (excl. zone kruising PM),5.0,4.0,6.0,2018-12-07 08:00:00,2018-12-13 17:00:00,,32
1279,1.1.1.5.3.3.6.1.7,Betonnen vloerelement (V-3) - dienstpad westelijke wand (excl. zone kruising PM),2.0,1.6,2.4,2018-11-22 08:00:00,2018-11-23 17:00:00,,32
1280,1.1.1.5.3.3.6.1.8,Betonnen prefab verticale uitvulpanelen oostelijke wand (excl. zone kruising PM),3.0,2.4,3.6,2019-03-18 08:00:00,2019-03-20 17:00:00,,40
1281,1.1.1.5.3.3.6.1.9,Betonnen prefab verticale uitvulpanelen westelijke wand (excl. zone kruising PM),3.0,2.4,3.6,2019-03-21 08:00:00,2019-03-25 17:00:00,,40
1282,1.1.1.5.3.3.6.1.10,Betonnen vloerelement (V-3) - dienstpad westelijke wand (zone kruising PM),1.0,0.8,1.2,2019-05-03 08:00:00,2019-05-03 17:00:00,,0
1283,1.1.1.5.3.3.6.1.11,Betonnen Jersey (M-2) oostelijke wand (zone kruising PM),1.0,0.8,1.2,2019-05-06 08:00:00,2019-05-06 17:00:00,,0
1284,1.1.1.5.3.3.6.1.12,Betonnen prefab verticale uitvulpanelen westelijke wand (zone kruising PM),2.0,1.6,2.4,2019-06-14 08:00:00,2019-06-17 17:00:00,,40
1285,1.1.1.5.3.3.6.1.13,Betonnen prefab verticale uitvulpanelen oostelijke wand (zone kruising PM),3.0,2.4,3.6,2019-06-18 08:00:00,2019-06-20 17:00:00,,40
1286,1.1.1.5.3.3.6.1.14,Geluidspanelen/akoestische panelen - DRAAGSTRUCTUUR - (M-1) (excl. zone kruising PM),10.0,8.0,12.0,2019-05-06 08:00:00,2019-05-17 17:00:00,,0
1287,1.1.1.5.3.3.6.1.15,Geluidspanelen/akoestische panelen - DRAAGSTRUCTUUR - (M-1) (zone kruising PM),5.0,4.0,6.0,2019-06-11 08:00:00,2019-06-17 17:00:00,,0
1288,1.1.1.5.3.3.6.1.16,Plaatsen Geluidspanelen/akoestische panelen (M-1) - SHIFTEN,9.0,7.2,10.8,2019-06-11 08:00:00,2019-06-21 17:00:00,,0
1289,1.1.1.5.3.3.6.1.17,Wegenis PM - Uitvulling in beton,5.0,4.0,6.0,2019-06-24 08:00:00,2019-06-28 17:00:00,,0
1290,1.1.1.5.3.3.6.1.18,Wegenis PM - Plaatsen epoxy,10.0,8.0,12.0,2019-07-15 08:00:00,2019-07-26 17:00:00,,0
1291,1.1.1.5.3.3.6.1.19,Asfalt (V-1),10.0,8.0,12.0,2019-07-29 08:00:00,2019-08-09 17:00:00,,4
1292,1.1.1.5.3.3.6.1.20,Riolering wegdek,5.0,4.0,6.0,2019-08-05 08:00:00,2019-08-09 17:00:00,,6
1293,1.1.1.5.3.3.6.1.21,Vluchttrap Frankrijklei Tunnel ter plaatse gestort(T24),90.0,72.0,108.0,2018-05-25 08:00:00,2018-09-27 17:00:00,,30
1294,1.1.1.5.3.3.6.2,Technieken autotunnel Oost zuid-deel (toegevoegd 20.02.09),199.0,199.0,199.0,2019-02-12 08:00:00,2019-11-15 17:00:00,,0
1295,1.1.1.5.3.3.6.2.1,Plaatsen kabelbanen tunnel,15.0,12.0,18.0,2019-03-04 08:00:00,2019-03-22 17:00:00,,0
1296,1.1.1.5.3.3.6.2.2,Installatiewerken VDK fase 1 (plaatsen borden+aansluitwerken),19.0,15.2,22.8,2019-02-12 08:00:00,2019-03-08 17:00:00,,0
1297,1.1.1.5.3.3.6.2.3,Installatiewerken VDK fase 2 (voor akoestische panelen),8.0,6.4,9.6,2019-04-15 08:00:00,2019-04-24 17:00:00,,0
1298,1.1.1.5.3.3.6.2.4,Installatiewerken vDK fase 3 (installatie werken +aansluitwerken),24.0,19.2,28.8,2019-06-03 08:00:00,2019-07-04 17:00:00,,0
1299,1.1.1.5.3.3.6.2.5,Installatiewerken VDK fase 4 (afwerking),8.0,6.4,9.6,2019-09-25 08:00:00,2019-10-04 17:00:00,,0
1300,1.1.1.5.3.3.6.2.6,Plaatsen versterkingsverlichting fase 1,20.0,16.0,24.0,2019-02-25 08:00:00,2019-03-22 17:00:00,,0
1301,1.1.1.5.3.3.6.2.7,Plaatsen versterkingsverlichting fase 2,12.0,9.6,14.4,2019-04-15 08:00:00,2019-04-30 17:00:00,,0
1302,1.1.1.5.3.3.6.2.8,Plaatsen versterkingsverlichting fase 3,13.0,10.4,15.6,2019-05-20 08:00:00,2019-06-05 17:00:00,,0
1303,1.1.1.5.3.3.6.2.9,Kabeltrek secundaire kabels,12.0,9.6,14.4,2019-04-15 08:00:00,2019-04-30 17:00:00,,0
1304,1.1.1.5.3.3.6.2.10,Kabeltrek hoofdvoedingskabels tunnel oost,12.0,9.6,14.4,2019-04-15 08:00:00,2019-04-30 17:00:00,,0
1305,1.1.1.5.3.3.6.2.11,Kabeltrek hoofdvoedingskabels naar parking,17.0,13.6,20.4,2019-05-27 08:00:00,2019-06-18 17:00:00,,0
1306,1.1.1.5.3.3.6.2.12,Blusinstallatie fase 3,29.0,23.2,34.8,2019-06-03 08:00:00,2019-07-11 17:00:00,,0
1307,1.1.1.5.3.3.6.2.13,Blusinstallatie fase 4,13.0,10.4,15.6,2019-09-25 08:00:00,2019-10-11 17:00:00,,0
1308,1.1.1.5.3.3.6.2.14,RWA-installatie + technieken voor akoestische panelen,7.0,5.6,8.4,2019-06-03 08:00:00,2019-06-11 17:00:00,,0
1309,1.1.1.5.3.3.6.2.15,Aansluiting detectoren,4.0,3.2,4.8,2019-06-24 08:00:00,2019-06-27 17:00:00,,0
1310,1.1.1.5.3.3.6.2.16,Programmatie +Indienstelling RWA-installatie,10.0,8.0,12.0,2019-09-02 08:00:00,2019-09-13 17:00:00,,0
1311,1.1.1.5.3.3.6.2.17,"Installatiewerken ICT fase 1 (installatie datakasten, steunen,…)",10.0,8.0,12.0,2019-03-11 08:00:00,2019-03-22 17:00:00,,0
1312,1.1.1.5.3.3.6.2.18,Installatiewerken ICT fase 2 (installatie voor akoestische panelen + kabeltrek),8.0,6.4,9.6,2019-04-15 08:00:00,2019-04-24 17:00:00,,0
1313,1.1.1.5.3.3.6.2.19,Installatiewerken ICT fase 3 (aansluitwerken na akoestische panelen),25.0,20.0,30.0,2019-06-10 08:00:00,2019-07-12 17:00:00,,0
1314,1.1.1.5.3.3.6.2.20,Installatiewerken ICT fase 4 (Fiberopitic + indienststelling),25.0,20.0,30.0,2019-09-25 08:00:00,2019-10-29 17:00:00,,0
1315,1.1.1.5.3.3.6.2.21,Installatiewerken Roads fase 3,20.0,16.0,24.0,2019-06-17 08:00:00,2019-07-12 17:00:00,,0
1316,1.1.1.5.3.3.6.2.22,Installatiewerken Roads fase 4,38.0,30.4,45.6,2019-09-25 08:00:00,2019-11-15 17:00:00,,0
1317,1.1.1.5.3.4,Autotunnels West: Afwerkingen en Technieken,247.0,247.0,247.0,2018-10-25 08:00:00,2019-10-04 17:00:00,,614
1318,1.1.1.5.3.4.1,AT-west algemeen: fasering,195.0,195.0,195.0,2019-01-07 08:00:00,2019-10-04 17:00:00,,0
1319,1.1.1.5.3.4.1.1,"Fase 1 tunnel west, Fabricom (w02-w06)",25.0,20.0,30.0,2019-01-07 08:00:00,2019-02-08 17:00:00,,0
1320,1.1.1.5.3.4.1.2,"Fase 2 tunnel west, BAM (w07-w12)",30.0,24.0,36.0,2019-02-11 08:00:00,2019-03-22 17:00:00,,0
1321,1.1.1.5.3.4.1.3,"Fase 3 tunnel west, Fabricom (w13-w15)",15.0,12.0,18.0,2019-03-25 08:00:00,2019-04-12 17:00:00,,0
1322,1.1.1.5.3.4.1.4,"Fase 4 tunnel west, BAM (w16-w17)",10.0,8.0,12.0,2019-04-15 08:00:00,2019-04-26 17:00:00,,0
1323,1.1.1.5.3.4.1.5,"Fase 5 tunnel west, Fabricom (w18-w25)",40.0,32.0,48.0,2019-04-29 08:00:00,2019-06-21 17:00:00,,0
1324,1.1.1.5.3.4.1.6,"Fase 6 tunnel west, BAM (w26-w32)",35.0,28.0,42.0,2019-06-24 08:00:00,2019-08-09 17:00:00,,0
1325,1.1.1.5.3.4.1.7,"Start fase 7 tunnel west, Fabricom (12.08.19-w33)",0.0,0.0,0.0,2019-08-09 17:00:00,2019-08-09 17:00:00,,0
1326,1.1.1.5.3.4.1.8,"Einde fase 7 tunnel west, Fabricom (27.09.19-w39)",0.0,0.0,0.0,2019-10-04 17:00:00,2019-10-04 17:00:00,,0
1327,1.1.1.5.3.4.1.9,Aanbrengen van epoxy-afwerking,13.0,10.4,15.6,2019-07-31 08:00:00,2019-08-16 17:00:00,,0
1328,1.1.1.5.3.4.2,AT-west noord,230.0,230.0,230.0,2018-11-15 08:00:00,2019-10-02 17:00:00,,300
1329,1.1.1.5.3.4.2.1,Afwerking autotunnel West noord-deel,192.0,192.0,192.0,2018-11-15 08:00:00,2019-08-09 17:00:00,,300
1330,1.1.1.5.3.4.2.1.1,"Geprefabriceerde betonnen borstwering (E-1B) westelijke wand, deel 1",28.0,22.4,33.6,2018-12-10 08:00:00,2019-01-16 17:00:00,,48
1331,1.1.1.5.3.4.2.1.2,"Voorbereidende werken borstwering (L-profielen, inboren, …) oostelijke wand",3.0,2.4,3.6,2018-11-26 08:00:00,2018-11-28 17:00:00,,0
1332,1.1.1.5.3.4.2.1.3,Geprefabriceerde betonnen borstwering (E-1B) oostelijke wand,7.0,5.6,8.4,2018-11-28 08:00:00,2018-12-06 17:00:00,,48
1333,1.1.1.5.3.4.2.1.4,"Voorbereidende werken borstwering (L-profielen, inboren, …) westelijke wand",1.0,0.8,1.2,2018-12-07 08:00:00,2018-12-07 17:00:00,,0
1334,1.1.1.5.3.4.2.1.5,"Geprefabriceerde betonnen borstwering (E-1B) westelijke wand, deel 2",7.0,5.6,8.4,2019-02-12 08:00:00,2019-02-20 17:00:00,,48
1335,1.1.1.5.3.4.2.1.6,Betonnen Jersey (M-2) westelijke wand,5.0,4.0,6.0,2018-11-26 08:00:00,2018-11-30 17:00:00,,32
1336,1.1.1.5.3.4.2.1.7,Betonnen vloerelement (V-3) - dienstpad oostelijke wand,3.0,2.4,3.6,2018-11-15 08:00:00,2018-11-19 17:00:00,,32
1337,1.1.1.5.3.4.2.1.8,Betonnen prefab verticale uitvulpanelen oostelijke wand,10.0,8.0,12.0,2019-05-22 08:00:00,2019-06-04 17:00:00,,40
1338,1.1.1.5.3.4.2.1.9,Betonnen prefab verticale uitvulpanelen westelijke wand,5.0,4.0,6.0,2019-06-05 08:00:00,2019-06-11 17:00:00,,40
1339,1.1.1.5.3.4.2.1.10,Geluidspanelen/akoestische panelen - DRAAGSTRUCTUUR - (M-1) - SHIFTEN,4.0,3.2,4.8,2019-06-12 08:00:00,2019-06-17 17:00:00,,0
1340,1.1.1.5.3.4.2.1.11,Geluidspanelen/akoestische panelen (M-1),10.0,8.0,12.0,2019-06-24 08:00:00,2019-07-05 17:00:00,,0
1341,1.1.1.5.3.4.2.1.12,Asfalt (V-1),10.0,8.0,12.0,2019-07-29 08:00:00,2019-08-09 17:00:00,,4
1342,1.1.1.5.3.4.2.1.13,Riolering wegdek,5.0,4.0,6.0,2019-08-05 08:00:00,2019-08-09 17:00:00,,8
1343,1.1.1.5.3.4.2.2,Technieken autotunnel West noord-deel (toegevoegd 20.02.09),213.0,213.0,213.0,2018-12-10 08:00:00,2019-10-02 17:00:00,,0
1344,1.1.1.5.3.4.2.2.1,Plaatsen kabelbanen fase 1,35.0,28.0,42.0,2018-12-10 08:00:00,2019-01-25 17:00:00,,0
1345,1.1.1.5.3.4.2.2.2,Installatiewerken VDK fase 1 (plaatsen borden+aansluitwerken),15.0,12.0,18.0,2019-01-14 08:00:00,2019-02-01 17:00:00,,0
1346,1.1.1.5.3.4.2.2.3,Installatiewerken VDK fase 2 (voor akoestische panelen),23.0,18.4,27.6,2019-03-25 08:00:00,2019-04-24 17:00:00,,0
1347,1.1.1.5.3.4.2.2.4,Installatiewerken vDK fase 3 (installatie werken +aansluitwerken),18.0,14.4,21.6,2019-05-13 08:00:00,2019-06-05 17:00:00,,0
1348,1.1.1.5.3.4.2.2.5,Installatiewerken VDK fase 4 (afwerking),10.0,8.0,12.0,2019-08-26 08:00:00,2019-09-06 17:00:00,,0
1349,1.1.1.5.3.4.2.2.6,Plaatsen versterkingsverlichting fase 1,20.0,16.0,24.0,2019-01-14 08:00:00,2019-02-08 17:00:00,,0
1350,1.1.1.5.3.4.2.2.7,Plaatsen versterkingsverlichting fase 2,15.0,12.0,18.0,2019-03-25 08:00:00,2019-04-12 17:00:00,,0
1351,1.1.1.5.3.4.2.2.8,3Plaatsen versterkingsverlichting fase 3,7.0,5.6,8.4,2019-04-29 08:00:00,2019-05-07 17:00:00,,0
1352,1.1.1.5.3.4.2.2.9,Kabeltrek secundaire kabels,15.0,12.0,18.0,2019-03-25 08:00:00,2019-04-12 17:00:00,,0
1353,1.1.1.5.3.4.2.2.10,Kabeltrek hoofdvoedingskabels,15.0,12.0,18.0,2019-03-25 08:00:00,2019-04-12 17:00:00,,0
1354,1.1.1.5.3.4.2.2.11,Kabeltrek hoofdvoedingskabels,9.0,7.2,10.8,2019-04-29 08:00:00,2019-05-09 17:00:00,,0
1355,1.1.1.5.3.4.2.2.12,Blusinstallatie fase 3,27.0,21.6,32.4,2019-05-13 08:00:00,2019-06-18 17:00:00,,0
1356,1.1.1.5.3.4.2.2.13,Blusinstallatie fase 4,13.0,10.4,15.6,2019-08-12 08:00:00,2019-08-28 17:00:00,,0
1357,1.1.1.5.3.4.2.2.14,RWA-installatie fase 1a: Bekabeling ventilatoren,15.0,12.0,18.0,2019-03-25 08:00:00,2019-04-12 17:00:00,,0
1358,1.1.1.5.3.4.2.2.15,RWA-installatie fase 1b: Installatie ventilatoren,5.0,4.0,6.0,2019-06-11 08:00:00,2019-06-17 17:00:00,,0
1359,1.1.1.5.3.4.2.2.16,RWA-installatie fase 2 (installatie voor akoestische panelen),9.0,7.2,10.8,2019-06-03 08:00:00,2019-06-13 17:00:00,,0
1360,1.1.1.5.3.4.2.2.17,RWA-installatie fase 4 indiensstelling,10.0,8.0,12.0,2019-09-02 08:00:00,2019-09-13 17:00:00,,0
1361,1.1.1.5.3.4.2.2.18,"Installatiewerken ICT fase 1 (installatie datakasten, steunen,…)",10.0,8.0,12.0,2019-01-28 08:00:00,2019-02-08 17:00:00,,0
1362,1.1.1.5.3.4.2.2.19,Installatiewerken ICT fase 2 (installatie voor akoestische panelen + kabeltrek),23.0,18.4,27.6,2019-03-25 08:00:00,2019-04-24 17:00:00,,0
1363,1.1.1.5.3.4.2.2.20,Installatiewerken ICT fase 3 (aansluitwerken),13.0,10.4,15.6,2019-05-13 08:00:00,2019-05-29 17:00:00,,0
1364,1.1.1.5.3.4.2.2.21,Installatiewerken ICT fase 4 (Fiberopitic + indienststelling),30.0,24.0,36.0,2019-08-19 08:00:00,2019-09-27 17:00:00,,0
1365,1.1.1.5.3.4.2.2.22,Installatiewerken Roads fase 3,20.0,16.0,24.0,2019-05-27 08:00:00,2019-06-21 17:00:00,,0
1366,1.1.1.5.3.4.2.2.23,Installatiewerken Roads fase 4,38.0,30.4,45.6,2019-08-12 08:00:00,2019-10-02 17:00:00,,0
1367,1.1.1.5.3.4.3,AT-west centraal,210.0,210.0,210.0,2018-12-10 08:00:00,2019-09-27 17:00:00,,44
1368,1.1.1.5.3.4.3.1,Afwerking tunnel West centraal-deel,137.0,137.0,137.0,2019-01-31 08:00:00,2019-08-09 17:00:00,,44
1369,1.1.1.5.3.4.3.1.1,Betonnen vloerelement (V-3) - dienstpad oostelijke wand,7.0,5.6,8.4,2019-02-20 08:00:00,2019-02-28 17:00:00,,30
1370,1.1.1.5.3.4.3.1.2,Betonnen Jersey (M-2) incl. ophangstaven westelijke wand FASE 1,10.0,8.0,12.0,2019-01-31 08:00:00,2019-02-13 17:00:00,,0
1371,1.1.1.5.3.4.3.1.3,Betonnen Jersey (M-2) incl. ophangstaven westelijke wand FASE 2,35.0,28.0,42.0,2019-02-05 08:00:00,2019-03-25 17:00:00,,0
1372,1.1.1.5.3.4.3.1.4,Betonnen prefab verticale uitvulpanelen oostelijke wand ,14.0,11.2,16.8,2019-04-24 08:00:00,2019-05-13 17:00:00,,0
1373,1.1.1.5.3.4.3.1.5,Geluidspanelen/akoestische panelen - DRAAGSTRUCTUUR - (M-1) - SHIFTEN,5.0,4.0,6.0,2019-05-15 08:00:00,2019-05-21 17:00:00,,0
1374,1.1.1.5.3.4.3.1.6,Geluidspanelen/akoestische panelen - DRAAGSTRUCTUUR - (M-1) - SHIFTEN,10.0,8.0,12.0,2019-06-03 08:00:00,2019-06-14 17:00:00,,0
1375,1.1.1.5.3.4.3.1.7,Geluidspanelen/akoestische panelen (M-1),10.0,8.0,12.0,2019-06-24 08:00:00,2019-07-05 17:00:00,,0
1376,1.1.1.5.3.4.3.1.8,Waterdichte rok (viabuild),5.0,4.0,6.0,2019-07-22 08:00:00,2019-07-26 17:00:00,,0
1377,1.1.1.5.3.4.3.1.9,Asfalt (V-1),10.0,8.0,12.0,2019-07-29 08:00:00,2019-08-09 17:00:00,,6
1378,1.1.1.5.3.4.3.1.10,Riolering wegdek,5.0,4.0,6.0,2019-08-05 08:00:00,2019-08-09 17:00:00,,8
1379,1.1.1.5.3.4.3.2,Technieken autotunnel West centraal-deel (toegevoegd 20.02.19),210.0,210.0,210.0,2018-12-10 08:00:00,2019-09-27 17:00:00,,0
1380,1.1.1.5.3.4.3.2.1,Plaatsen kabelbanen fase 1,35.0,28.0,42.0,2018-12-10 08:00:00,2019-01-25 17:00:00,,0
1381,1.1.1.5.3.4.3.2.2,Installatiewerken VDK fase 1 (plaatsen borden+aansluitwerken),20.0,16.0,24.0,2019-01-14 08:00:00,2019-02-08 17:00:00,,0
1382,1.1.1.5.3.4.3.2.3,Installatiewerken VDK fase 2 (voor akoestische panelen),29.0,23.2,34.8,2019-03-15 08:00:00,2019-04-24 17:00:00,,0
1383,1.1.1.5.3.4.3.2.4,Installatiewerken vDK fase 3 (installatie werken +aansluitwerken),13.0,10.4,15.6,2019-07-29 08:00:00,2019-08-14 17:00:00,,0
1384,1.1.1.5.3.4.3.2.5,Installatiewerken VDK fase 4 (afwerking),10.0,8.0,12.0,2019-08-26 08:00:00,2019-09-06 17:00:00,,0
1385,1.1.1.5.3.4.3.2.6,Plaatsen verlichting L-L1 fase 1,20.0,16.0,24.0,2019-01-14 08:00:00,2019-02-08 17:00:00,,0
1386,1.1.1.5.3.4.3.2.7,Plaatsen verlichting L-L1 fase 2,15.0,12.0,18.0,2019-03-25 08:00:00,2019-04-12 17:00:00,,0
1387,1.1.1.5.3.4.3.2.8,Plaatsen verlichting L-L1 fase 3,14.0,11.2,16.8,2019-04-29 08:00:00,2019-05-16 17:00:00,,0
1388,1.1.1.5.3.4.3.2.9,Kabeltrek secundaire kabels,14.0,11.2,16.8,2019-04-29 08:00:00,2019-05-16 17:00:00,,0
1389,1.1.1.5.3.4.3.2.10,Kabeltrek hoofdvoedingskabels,15.0,12.0,18.0,2019-03-25 08:00:00,2019-04-12 17:00:00,,0
1390,1.1.1.5.3.4.3.2.11,Kabeltrek hoofdvoedingskabels,9.0,7.2,10.8,2019-04-29 08:00:00,2019-05-09 17:00:00,,0
1391,1.1.1.5.3.4.3.2.12,Blusinstallatie fase 3,27.0,21.6,32.4,2019-05-13 08:00:00,2019-06-18 17:00:00,,0
1392,1.1.1.5.3.4.3.2.13,Blusinstallatie fase 4,13.0,10.4,15.6,2019-08-12 08:00:00,2019-08-28 17:00:00,,0
1393,1.1.1.5.3.4.3.2.14,RWA-installatie fase 1,15.0,12.0,18.0,2019-03-25 08:00:00,2019-04-12 17:00:00,,0
1394,1.1.1.5.3.4.3.2.15,RWA-installatie fase 2 (installatie voor akoestische panelen),9.0,7.2,10.8,2019-06-03 08:00:00,2019-06-13 17:00:00,,0
1395,1.1.1.5.3.4.3.2.16,RWA-installatie fase 4 indiensstelling,10.0,8.0,12.0,2019-09-02 08:00:00,2019-09-13 17:00:00,,0
1396,1.1.1.5.3.4.3.2.17,"Installatiewerken ICT fase 1 (installatie datakasten, steunen,…)",15.0,12.0,18.0,2019-01-21 08:00:00,2019-02-08 17:00:00,,0
1397,1.1.1.5.3.4.3.2.18,Installatiewerken ICT fase 2 (installatie voor akoestische panelen + kabeltrek),23.0,18.4,27.6,2019-03-25 08:00:00,2019-04-24 17:00:00,,0
1398,1.1.1.5.3.4.3.2.19,Installatiewerken ICT fase 3 (aansluitwerken),22.0,17.6,26.4,2019-05-20 08:00:00,2019-06-18 17:00:00,,0
1399,1.1.1.5.3.4.3.2.20,Installatiewerken ICT fase 4 (Fiberopitic + indienststelling),30.0,24.0,36.0,2019-08-19 08:00:00,2019-09-27 17:00:00,,0
1400,1.1.1.5.3.4.3.2.21,Installatiewerken Roads fase 3,17.0,13.6,20.4,2019-05-27 08:00:00,2019-06-18 17:00:00,,0
1401,1.1.1.5.3.4.3.2.22,Installatiewerken Roads fase 4,23.0,18.4,27.6,2019-08-12 08:00:00,2019-09-11 17:00:00,,0
1402,1.1.1.5.3.4.4,AT-west zuid,242.0,242.0,242.0,2018-10-25 08:00:00,2019-09-27 17:00:00,,270
1403,1.1.1.5.3.4.4.1,Afwerking autotunnel West zuid-deel,207.0,207.0,207.0,2018-10-25 08:00:00,2019-08-09 17:00:00,,270
1404,1.1.1.5.3.4.4.1.1,"Voorbereidende werken borstwering (L-profielen, inboren, …)",5.0,4.0,6.0,2018-10-25 08:00:00,2018-10-31 17:00:00,,20
1405,1.1.1.5.3.4.4.1.2,Geprefabriceerde betonnen borstwering (E-1B)(flank afwisselend met lijnvormige elementen),8.0,6.4,9.6,2018-11-01 08:00:00,2018-11-12 17:00:00,,32
1406,1.1.1.5.3.4.4.1.3,Betonnen Jersey (M-2) westelijke wand (excl. zone kruising PM),5.0,4.0,6.0,2018-12-14 08:00:00,2018-12-20 17:00:00,,32
1407,1.1.1.5.3.4.4.1.4,Betonnen vloerelement (V-3) - dienstpad oostelijke wand (excl. zone kruising PM),3.0,2.4,3.6,2018-11-26 08:00:00,2018-11-28 17:00:00,,32
1408,1.1.1.5.3.4.4.1.5,Betonnen prefab verticale uitvulpanelen oostelijke wand (excl. zone PM),2.0,1.6,2.4,2019-04-01 08:00:00,2019-04-02 17:00:00,,40
1409,1.1.1.5.3.4.4.1.6,Vloerplaat met akoestische matten,10.0,8.0,12.0,2019-04-22 08:00:00,2019-05-03 17:00:00,,0
1410,1.1.1.5.3.4.4.1.7,Betonnen vloerelement (V-3) - dienstpad oostelijke wand (zone kruising PM),5.0,4.0,6.0,2019-05-06 08:00:00,2019-05-10 17:00:00,,32
1411,1.1.1.5.3.4.4.1.8,Betonnen Jersey (M-2) westelijke wand (zone kruising PM),1.0,0.8,1.2,2019-05-13 08:00:00,2019-05-13 17:00:00,,32
1412,1.1.1.5.3.4.4.1.9,Betonnen prefab verticale uitvulpanelen westelijke wand,3.0,2.4,3.6,2019-06-21 08:00:00,2019-06-25 17:00:00,,40
1413,1.1.1.5.3.4.4.1.10,Betonnen prefab verticale uitvulpanelen oostelijke wand (zone PM),1.0,0.8,1.2,2019-06-26 08:00:00,2019-06-26 17:00:00,,0
1414,1.1.1.5.3.4.4.1.11,Geluidspanelen/akoestische panelen - DRAAGSTRUCTUUR - (M-1) - SHIFTEN,9.0,7.2,10.8,2019-06-27 08:00:00,2019-07-09 17:00:00,,0
1415,1.1.1.5.3.4.4.1.12,Geluidspanelen/akoestische panelen (M-1),10.0,8.0,12.0,2019-06-24 08:00:00,2019-07-05 17:00:00,,0
1416,1.1.1.5.3.4.4.1.13,Asfalt (V-1),10.0,8.0,12.0,2019-07-29 08:00:00,2019-08-09 17:00:00,,4
1417,1.1.1.5.3.4.4.1.14,Riolering wegdek,5.0,4.0,6.0,2019-08-05 08:00:00,2019-08-09 17:00:00,,6
1418,1.1.1.5.3.4.4.2,Technieken autotunnel West zuid-deel (toegevoegd 20.02.09),215.0,215.0,215.0,2018-12-03 08:00:00,2019-09-27 17:00:00,,0
1419,1.1.1.5.3.4.4.2.1,Plaatsen kabelbanen fase 1,40.0,32.0,48.0,2018-12-03 08:00:00,2019-01-25 17:00:00,,0
1420,1.1.1.5.3.4.4.2.2,Installatiewerken VDK fase 1 (plaatsen borden+aansluitwerken),15.0,12.0,18.0,2019-01-21 08:00:00,2019-02-08 17:00:00,,0
1421,1.1.1.5.3.4.4.2.3,Installatiewerken VDK fase 2 (voor akoestische panelen),18.0,14.4,21.6,2019-04-01 08:00:00,2019-04-24 17:00:00,,0
1422,1.1.1.5.3.4.4.2.4,Installatiewerken vDK fase 3 (installatie werken +aansluitwerken),18.0,14.4,21.6,2019-07-29 08:00:00,2019-08-21 17:00:00,,0
1423,1.1.1.5.3.4.4.2.5,Installatiewerken VDK fase 4 (afwerking),10.0,8.0,12.0,2019-08-26 08:00:00,2019-09-06 17:00:00,,0
1424,1.1.1.5.3.4.4.2.6,Plaatsen verlichting fase 3,14.0,11.2,16.8,2019-04-29 08:00:00,2019-05-16 17:00:00,,0
1425,1.1.1.5.3.4.4.2.7,Kabeltrek secundaire kabels,14.0,11.2,16.8,2019-04-29 08:00:00,2019-05-16 17:00:00,,0
1426,1.1.1.5.3.4.4.2.8,Kabeltrek hoofdvoedingskabels fase 2,15.0,12.0,18.0,2019-03-25 08:00:00,2019-04-12 17:00:00,,0
1427,1.1.1.5.3.4.4.2.9,Kabeltrek hoofdvoedingskabels fase 3,9.0,7.2,10.8,2019-04-29 08:00:00,2019-05-09 17:00:00,,0
1428,1.1.1.5.3.4.4.2.10,Blusinstallatie fase 3,9.0,7.2,10.8,2019-06-11 08:00:00,2019-06-21 17:00:00,,0
1429,1.1.1.5.3.4.4.2.11,Blusinstallatie fase 4,33.0,26.4,39.6,2019-08-12 08:00:00,2019-09-25 17:00:00,,0
1430,1.1.1.5.3.4.4.2.12,RWA-installatie fase 1,15.0,12.0,18.0,2019-03-25 08:00:00,2019-04-12 17:00:00,,0
1431,1.1.1.5.3.4.4.2.13,RWA-installatie fase 2 (installatie voor akoestische panelen),9.0,7.2,10.8,2019-06-03 08:00:00,2019-06-13 17:00:00,,0
1432,1.1.1.5.3.4.4.2.14,RWA-installatie fase 4 indiensstelling,10.0,8.0,12.0,2019-09-02 08:00:00,2019-09-13 17:00:00,,0
1433,1.1.1.5.3.4.4.2.15,"Installatiewerken ICT fase 1 (installatie datakasten, steunen,…)",15.0,12.0,18.0,2019-01-21 08:00:00,2019-02-08 17:00:00,,0
1434,1.1.1.5.3.4.4.2.16,Installatiewerken ICT fase 2 (installatie voor akoestische panelen + kabeltrek),23.0,18.4,27.6,2019-03-25 08:00:00,2019-04-24 17:00:00,,0
1435,1.1.1.5.3.4.4.2.17,Installatiewerken ICT fase 3 (aansluitwerken),20.0,16.0,24.0,2019-07-31 08:00:00,2019-08-27 17:00:00,,0
1436,1.1.1.5.3.4.4.2.18,Installatiewerken ICT fase 4 (Fiberopitic + indienststelling),30.0,24.0,36.0,2019-08-19 08:00:00,2019-09-27 17:00:00,,0
1437,1.1.1.5.3.4.4.2.19,Installatiewerken Roads fase 3,20.0,16.0,24.0,2019-05-27 08:00:00,2019-06-21 17:00:00,,0
1438,1.1.1.5.3.4.4.2.20,Installatiewerken Roads fase 4,23.0,18.4,27.6,2019-08-12 08:00:00,2019-09-11 17:00:00,,0
1439,1.1.1.5.3.5,C.1) Autotunnels Noord+ Toeritten,321.0,256.8,385.2,2017-06-16 08:00:00,2018-09-07 17:00:00,,0
1440,1.1.1.5.3.6,Autotunnels Asfalt,13.0,13.0,13.0,2019-07-24 08:00:00,2019-08-09 17:00:00,,0
1441,1.1.1.5.3.6.1,Uitzetten niveau afgewerkte toplaag op dienstpaden en jersey/stepbarrier,3.0,2.4,3.6,2019-07-24 08:00:00,2019-07-26 17:00:00,,0
1442,1.1.1.5.3.6.2,Beschermen voegen zwevende plaat,1.0,0.8,1.2,2019-07-26 08:00:00,2019-07-26 17:00:00,,0
1443,1.1.1.5.3.6.3,ATZ-W,10.0,10.0,10.0,2019-07-29 08:00:00,2019-08-09 17:00:00,,0
1444,1.1.1.5.3.6.3.1,Zuiver maken beton [Veegwagen],2.0,1.6,2.4,2019-07-29 08:00:00,2019-07-29 10:00:00,,0
1445,1.1.1.5.3.6.3.2,Aanbrengen kleeflaag op beton,2.0,1.6,2.4,2019-07-29 10:00:00,2019-07-29 12:00:00,,0
1446,1.1.1.5.3.6.3.3,Uitzetten hoogtepeilen op kleeflaag i.f.v. onderlagen/ profileerlagen,3.0,2.4,3.6,2019-07-29 13:00:00,2019-07-29 16:00:00,,0
1447,1.1.1.5.3.6.3.4,Profileerlagen,2.0,1.6,2.4,2019-07-30 08:00:00,2019-07-30 10:00:00,,0
1448,1.1.1.5.3.6.3.5,Asfalt - OL1,4.0,3.2,4.8,2019-07-30 10:00:00,2019-07-30 15:00:00,,0
1449,1.1.1.5.3.6.3.6,Aanbrengen kleeflaag op OL1,2.0,1.6,2.4,2019-07-30 15:00:00,2019-07-30 17:00:00,,0
1450,1.1.1.5.3.6.3.7,Asfalt - OL2,4.0,3.2,4.8,2019-07-31 08:00:00,2019-07-31 12:00:00,,0
1451,1.1.1.5.3.6.3.8,Frezen trappen aansluiting asfalt Frankrijklei,4.0,3.2,4.8,2019-07-31 13:00:00,2019-07-31 17:00:00,,0
1452,1.1.1.5.3.6.3.9,Plaatsen putdeksels,3.0,2.4,3.6,2019-08-01 08:00:00,2019-08-05 17:00:00,,0
1453,1.1.1.5.3.6.3.10,Aanbrengen kleeflaag op OL2,1.0,0.8,1.2,2019-08-06 08:00:00,2019-08-06 17:00:00,,0
1454,1.1.1.5.3.6.3.11,Asfalt - TL,1.0,0.8,1.2,2019-08-07 08:00:00,2019-08-07 17:00:00,,0
1455,1.1.1.5.3.6.3.12,DEMOB/ kuiswerken,2.0,1.6,2.4,2019-08-08 08:00:00,2019-08-09 17:00:00,,0
1456,1.1.1.5.3.6.4,ATZ-O,10.0,10.0,10.0,2019-07-29 08:00:00,2019-08-09 17:00:00,,0
1457,1.1.1.5.3.6.4.1,Zuiver maken beton [Veegwagen],2.0,1.6,2.4,2019-07-29 08:00:00,2019-07-29 10:00:00,,0
1458,1.1.1.5.3.6.4.2,Aanbrengen kleeflaag op beton,2.0,1.6,2.4,2019-07-29 10:00:00,2019-07-29 12:00:00,,0
1459,1.1.1.5.3.6.4.3,Uitzetten hoogtepeilen op kleeflaag i.f.v. onderlagen/ profileerlagen,3.0,2.4,3.6,2019-07-29 13:00:00,2019-07-29 16:00:00,,0
1460,1.1.1.5.3.6.4.4,Profileerlagen,2.0,1.6,2.4,2019-07-30 08:00:00,2019-07-30 10:00:00,,0
1461,1.1.1.5.3.6.4.5,Asfalt - OL1,4.0,3.2,4.8,2019-07-30 10:00:00,2019-07-30 15:00:00,,0
1462,1.1.1.5.3.6.4.6,Aanbrengen kleeflaag op OL1,2.0,1.6,2.4,2019-07-30 15:00:00,2019-07-30 17:00:00,,0
1463,1.1.1.5.3.6.4.7,Asfalt - OL2,4.0,3.2,4.8,2019-07-31 08:00:00,2019-07-31 12:00:00,,0
1464,1.1.1.5.3.6.4.8,Frezen trappen aansluiting asfalt Frankrijklei,4.0,3.2,4.8,2019-07-31 13:00:00,2019-07-31 17:00:00,,0
1465,1.1.1.5.3.6.4.9,Plaatsen putdeksels,3.0,2.4,3.6,2019-08-01 08:00:00,2019-08-05 17:00:00,,0
1466,1.1.1.5.3.6.4.10,Aanbrengen kleeflaag op OL2,1.0,0.8,1.2,2019-08-06 08:00:00,2019-08-06 17:00:00,,0
1467,1.1.1.5.3.6.4.11,Asfalt - TL,1.0,0.8,1.2,2019-08-07 08:00:00,2019-08-07 17:00:00,,0
1468,1.1.1.5.3.6.4.12,DEMOB/ kuiswerken,2.0,1.6,2.4,2019-08-08 08:00:00,2019-08-09 17:00:00,,0
1469,1.1.1.5.3.6.5,ATN-W (incl. zwevende plaat),9.0,9.0,9.0,2019-07-30 08:00:00,2019-08-09 17:00:00,,0
1470,1.1.1.5.3.6.5.1,Zuiver maken beton [Veegwagen],2.0,1.6,2.4,2019-07-30 08:00:00,2019-07-30 10:00:00,,0
1471,1.1.1.5.3.6.5.2,Aanbrengen kleeflaag op beton,2.0,1.6,2.4,2019-07-30 10:00:00,2019-07-30 12:00:00,,0
1472,1.1.1.5.3.6.5.3,Uitzetten hoogtepeilen op kleeflaag i.f.v. onderlagen/ profileerlagen,3.0,2.4,3.6,2019-07-30 13:00:00,2019-07-30 16:00:00,,0
1473,1.1.1.5.3.6.5.4,Profileerlagen,4.0,3.2,4.8,2019-08-01 08:00:00,2019-08-01 12:00:00,,0
1474,1.1.1.5.3.6.5.5,Aanbrengen kleeflaag op profileerlaag,4.0,3.2,4.8,2019-08-01 13:00:00,2019-08-01 17:00:00,,0
1475,1.1.1.5.3.6.5.6,Uitzetten hoogtepeilen op kleeflaag i.f.v. onderlagen,2.0,1.6,2.4,2019-08-02 08:00:00,2019-08-02 10:00:00,,0
1476,1.1.1.5.3.6.5.7,Asfalt - OL1,1.0,0.8,1.2,2019-08-02 10:00:00,2019-08-05 12:00:00,,0
1477,1.1.1.5.3.6.5.8,Aanbrengen kleeflaag op OL1,1.0,0.8,1.2,2019-08-02 10:00:00,2019-08-05 12:00:00,,0
1478,1.1.1.5.3.6.5.9,Asfalt - OL2,1.0,0.8,1.2,2019-08-05 08:00:00,2019-08-06 12:00:00,,0
1479,1.1.1.5.3.6.5.10,Frezen trappen aansluiting asfalt Italiëlei,4.0,3.2,4.8,2019-08-06 13:00:00,2019-08-06 17:00:00,,0
1480,1.1.1.5.3.6.5.11,Plaatsen putdeksels,2.0,1.6,2.4,2019-08-06 08:00:00,2019-08-07 17:00:00,,0
1481,1.1.1.5.3.6.5.12,Aanbrengen kleeflaag op OL2,1.0,0.8,1.2,2019-08-07 08:00:00,2019-08-07 17:00:00,,0
1482,1.1.1.5.3.6.5.13,Asfalt - TL,1.0,0.8,1.2,2019-08-08 08:00:00,2019-08-08 17:00:00,,0
1483,1.1.1.5.3.6.5.14,DEMOB/ kuiswerken,1.0,0.8,1.2,2019-08-09 08:00:00,2019-08-09 17:00:00,,0
1484,1.1.1.5.3.6.6,ATN-O (incl. zwevende plaat),9.0,9.0,9.0,2019-07-30 08:00:00,2019-08-09 17:00:00,,0
1485,1.1.1.5.3.6.6.1,Zuiver maken beton [Veegwagen],2.0,1.6,2.4,2019-07-30 08:00:00,2019-07-30 10:00:00,,0
1486,1.1.1.5.3.6.6.2,Aanbrengen kleeflaag op beton,2.0,1.6,2.4,2019-07-30 10:00:00,2019-07-30 12:00:00,,0
1487,1.1.1.5.3.6.6.3,Uitzetten hoogtepeilen op kleeflaag i.f.v. onderlagen/ profileerlagen,3.0,2.4,3.6,2019-07-30 13:00:00,2019-07-30 16:00:00,,0
1488,1.1.1.5.3.6.6.4,Profileerlagen,4.0,3.2,4.8,2019-08-01 08:00:00,2019-08-01 12:00:00,,0
1489,1.1.1.5.3.6.6.5,Aanbrengen kleeflaag op profileerlaag,4.0,3.2,4.8,2019-08-01 13:00:00,2019-08-01 17:00:00,,0
1490,1.1.1.5.3.6.6.6,Uitzetten hoogtepeilen op kleeflaag i.f.v. onderlagen,2.0,1.6,2.4,2019-08-02 08:00:00,2019-08-02 10:00:00,,0
1491,1.1.1.5.3.6.6.7,Asfalt - OL1,1.0,0.8,1.2,2019-08-02 10:00:00,2019-08-05 12:00:00,,0
1492,1.1.1.5.3.6.6.8,Aanbrengen kleeflaag op OL1,1.0,0.8,1.2,2019-08-02 10:00:00,2019-08-05 12:00:00,,0
1493,1.1.1.5.3.6.6.9,Asfalt - OL2,1.0,0.8,1.2,2019-08-05 08:00:00,2019-08-06 12:00:00,,0
1494,1.1.1.5.3.6.6.10,Frezen trappen aansluiting asfalt Italiëlei,4.0,3.2,4.8,2019-08-06 13:00:00,2019-08-06 17:00:00,,0
1495,1.1.1.5.3.6.6.11,Plaatsen putdeksels,2.0,1.6,2.4,2019-08-06 08:00:00,2019-08-07 17:00:00,,0
1496,1.1.1.5.3.6.6.12,Aanbrengen kleeflaag op OL2,1.0,0.8,1.2,2019-08-07 08:00:00,2019-08-07 17:00:00,,0
1497,1.1.1.5.3.6.6.13,Asfalt - TL,1.0,0.8,1.2,2019-08-08 08:00:00,2019-08-08 17:00:00,,0
1498,1.1.1.5.3.6.6.14,DEMOB/ kuiswerken,1.0,0.8,1.2,2019-08-09 08:00:00,2019-08-09 17:00:00,,0
1499,1.1.1.5.4,D) Vluchttrap T26 Roosevelt ZW kwadrant,300.0,300.0,300.0,2018-09-03 08:00:00,2019-10-25 17:00:00,,196
1500,1.1.1.5.4.1,Constructie vluchttrap T26 Roosevelt kwadrant I,300.0,300.0,300.0,2018-09-03 08:00:00,2019-10-25 17:00:00,,196
1501,1.1.1.5.4.1.1,ZONE logistieke opening (D-Vluchttrap T26 Roosevelt ZW kwadrant),295.0,295.0,295.0,2018-09-03 08:00:00,2019-10-18 17:00:00,,120
1502,1.1.1.5.4.1.1.1,Vloerplaat niv.-2 (BP -1.93mTAW),10.0,10.0,10.0,2018-09-03 08:00:00,2018-09-14 17:00:00,,12
1503,1.1.1.5.4.1.1.1.1,Werkvloer + bekisting,2.0,1.6,2.4,2018-09-03 08:00:00,2018-09-04 17:00:00,,8
1504,1.1.1.5.4.1.1.1.2,Wapenen vloerplaat,7.0,5.6,8.4,2018-09-05 08:00:00,2018-09-13 17:00:00,,0
1505,1.1.1.5.4.1.1.1.3,betonstort,1.0,0.8,1.2,2018-09-14 08:00:00,2018-09-14 17:00:00,,4
1506,1.1.1.5.4.1.1.2,Vloerplaat niv.-1 (BP +1.85mTAW),14.0,14.0,14.0,2019-03-11 08:00:00,2019-03-28 17:00:00,,24
1507,1.1.1.5.4.1.1.2.1,"Wand tot onderkant vloerplaat +1,85mTAW",4.0,3.2,4.8,2019-03-11 08:00:00,2019-03-14 17:00:00,,0
1508,1.1.1.5.4.1.1.2.2,Stelling plaatsen op -2,2.0,1.6,2.4,2019-03-15 08:00:00,2019-03-18 17:00:00,,8
1509,1.1.1.5.4.1.1.2.3,Bekisting,3.0,2.4,3.6,2019-03-19 08:00:00,2019-03-21 17:00:00,,12
1510,1.1.1.5.4.1.1.2.4,Wapenen vloerplaat,4.0,3.2,4.8,2019-03-22 08:00:00,2019-03-27 17:00:00,,0
1511,1.1.1.5.4.1.1.2.5,Betonstort,1.0,0.8,1.2,2019-03-28 08:00:00,2019-03-28 17:00:00,,4
1512,1.1.1.5.4.1.1.3,Vloerplaat vluchtweg (BP +5.80mTAW),88.0,88.0,88.0,2019-03-29 08:00:00,2019-07-30 17:00:00,,24
1513,1.1.1.5.4.1.1.3.1,Uitzagen opening richting Kipdorp,5.0,4.0,6.0,2019-03-29 08:00:00,2019-04-04 17:00:00,,0
1514,1.1.1.5.4.1.1.3.2,"Wand tot onderkant vloerplaat +5,80mTAW",3.0,2.4,3.6,2019-04-05 08:00:00,2019-04-09 17:00:00,,0
1515,1.1.1.5.4.1.1.3.3,"Trap van niveau 1,85mTAW naar 5,80mTAW",10.0,8.0,12.0,2019-07-17 08:00:00,2019-07-30 17:00:00,,0
1516,1.1.1.5.4.1.1.3.4,Stelling plaatsen op -1,1.0,0.8,1.2,2019-05-13 08:00:00,2019-05-13 17:00:00,,8
1517,1.1.1.5.4.1.1.3.5,Bekisting,1.0,0.8,1.2,2019-05-14 08:00:00,2019-05-14 17:00:00,,12
1518,1.1.1.5.4.1.1.3.6,Wapenen vloerplaat,2.0,1.6,2.4,2019-05-15 08:00:00,2019-05-16 17:00:00,,0
1519,1.1.1.5.4.1.1.3.7,Betonstort,1.0,0.8,1.2,2019-05-17 08:00:00,2019-05-17 17:00:00,,4
1520,1.1.1.5.4.1.1.4,Verwijderd stelling op -1,0.0,0.0,0.0,2019-07-16 17:00:00,2019-07-16 17:00:00,,0
1521,1.1.1.5.4.1.1.5,"Wand van 5,80mTAW tot onderkant dakplaat",23.0,23.0,23.0,2019-04-10 08:00:00,2019-05-10 17:00:00,,36
1522,1.1.1.5.4.1.1.5.1,Bekisting + stelling,15.0,12.0,18.0,2019-04-10 08:00:00,2019-04-30 17:00:00,,28
1523,1.1.1.5.4.1.1.5.2,Wapenen,4.0,3.2,4.8,2019-05-06 08:00:00,2019-05-09 17:00:00,,0
1524,1.1.1.5.4.1.1.5.3,Betonstort,1.0,0.8,1.2,2019-05-10 08:00:00,2019-05-10 17:00:00,,8
1525,1.1.1.5.4.1.1.6,Afwerking vluchthuisje T26,5.0,5.0,5.0,2019-10-14 08:00:00,2019-10-18 17:00:00,,0
1526,1.1.1.5.4.1.1.6.1,Vluchthuisje type 3 (T26),5.0,4.0,6.0,2019-10-14 08:00:00,2019-10-18 17:00:00,,0
1527,1.1.1.5.4.1.1.7,Dakplaat niv.0 (BP +8.36mTAW),45.0,45.0,45.0,2019-01-07 08:00:00,2019-03-08 17:00:00,,24
1528,1.1.1.5.4.1.1.7.1,Stelling plaatsen op vluchtweg,6.0,4.8,7.2,2019-01-07 08:00:00,2019-01-14 17:00:00,,8
1529,1.1.1.5.4.1.1.7.2,Bekisting,15.0,12.0,18.0,2019-01-15 08:00:00,2019-02-04 17:00:00,,12
1530,1.1.1.5.4.1.1.7.3,Wapenen vloerplaat,8.0,6.4,9.6,2019-02-05 08:00:00,2019-02-14 17:00:00,,0
1531,1.1.1.5.4.1.1.7.4,"Betonstort (T26, Zone Logistieke opening, dakplaat)",1.0,0.8,1.2,2019-02-15 08:00:00,2019-02-15 17:00:00,,4
1532,1.1.1.5.4.1.1.7.5,Waterdichting logistieke opening,10.0,8.0,12.0,2019-02-18 08:00:00,2019-03-01 17:00:00,,0
1533,1.1.1.5.4.1.1.7.6,Ontkisten,5.0,4.0,6.0,2019-03-04 08:00:00,2019-03-08 17:00:00,,0
1534,1.1.1.5.4.1.2,ZONE vluchtgang haakse deel,148.0,148.0,148.0,2018-09-05 08:00:00,2019-03-29 17:00:00,,76
1535,1.1.1.5.4.1.2.1,Opbraak tijdelijk verharding kwadrant I,2.0,1.6,2.4,2018-09-05 08:00:00,2018-09-06 17:00:00,,0
1536,1.1.1.5.4.1.2.2,"Plaatsen damwanden (tweezijde, +-40lm)",5.0,4.0,6.0,2019-01-11 08:00:00,2019-01-17 17:00:00,,0
1537,1.1.1.5.4.1.2.3,Uitgraafwerkzaamheden en plaatsen stempelramen,11.0,8.8,13.2,2019-01-21 08:00:00,2019-02-04 17:00:00,,0
1538,1.1.1.5.4.1.2.4,Werkvloer,1.0,0.8,1.2,2019-02-05 08:00:00,2019-02-05 17:00:00,,0
1539,1.1.1.5.4.1.2.5,Vloerplaat vluchtweg T26 (BP +5.80mTAW),3.0,3.0,3.0,2019-02-06 08:00:00,2019-02-08 17:00:00,,12
1540,1.1.1.5.4.1.2.5.1,Bekisting,1.0,0.8,1.2,2019-02-06 08:00:00,2019-02-06 17:00:00,,8
1541,1.1.1.5.4.1.2.5.2,Wapenen vloerplaat,1.0,0.8,1.2,2019-02-07 08:00:00,2019-02-07 17:00:00,,0
1542,1.1.1.5.4.1.2.5.3,Betonstort,1.0,0.8,1.2,2019-02-08 08:00:00,2019-02-08 17:00:00,,4
1543,1.1.1.5.4.1.2.6,"Wanden vluchtweg T26 (enkelzijdige kist, tegen elkaar afstempelen)",6.0,6.0,6.0,2019-02-11 08:00:00,2019-02-18 17:00:00,,12
1544,1.1.1.5.4.1.2.6.1,Wapening & demontage onderste stempelraam,3.0,2.4,3.6,2019-02-11 08:00:00,2019-02-13 17:00:00,,8
1545,1.1.1.5.4.1.2.6.2,Bekisting,2.0,1.6,2.4,2019-02-14 08:00:00,2019-02-15 17:00:00,,0
1546,1.1.1.5.4.1.2.6.3,Betonstort,1.0,0.8,1.2,2019-02-18 08:00:00,2019-02-18 17:00:00,,4
1547,1.1.1.5.4.1.2.7,Dakplaat vluchtweg T26 (niv +8.36mTAW),7.0,7.0,7.0,2019-02-19 08:00:00,2019-02-27 17:00:00,,12
1548,1.1.1.5.4.1.2.7.1,Ontkisten wanden & plaatsen stelling dakplaat,1.0,0.8,1.2,2019-02-19 08:00:00,2019-02-19 17:00:00,,0
1549,1.1.1.5.4.1.2.7.2,Bekisting,2.0,1.6,2.4,2019-02-19 08:00:00,2019-02-20 17:00:00,,8
1550,1.1.1.5.4.1.2.7.3,Wapening,4.0,3.2,4.8,2019-02-21 08:00:00,2019-02-26 17:00:00,,0
1551,1.1.1.5.4.1.2.7.4,Betonstort,1.0,0.8,1.2,2019-02-27 08:00:00,2019-02-27 17:00:00,,4
1552,1.1.1.5.4.1.2.8,T26b - ruwbouwslede,6.0,6.0,6.0,2019-02-20 08:00:00,2019-02-27 17:00:00,,24
1553,1.1.1.5.4.1.2.8.1,Bekisting op volle grond,2.0,1.6,2.4,2019-02-20 08:00:00,2019-02-21 17:00:00,,20
1554,1.1.1.5.4.1.2.8.2,Wapening,3.0,2.4,3.6,2019-02-22 08:00:00,2019-02-26 17:00:00,,0
1555,1.1.1.5.4.1.2.8.3,Betonstort,1.0,0.8,1.2,2019-02-27 08:00:00,2019-02-27 17:00:00,,4
1556,1.1.1.5.4.1.2.9,T26 - betonafwerking,22.0,22.0,22.0,2019-02-28 08:00:00,2019-03-29 17:00:00,,16
1557,1.1.1.5.4.1.2.9.1,Bekisting tussenwand,3.0,2.4,3.6,2019-02-28 08:00:00,2019-03-04 17:00:00,,12
1558,1.1.1.5.4.1.2.9.2,Wapening tussenwand,5.0,4.0,6.0,2019-03-05 08:00:00,2019-03-11 17:00:00,,0
1559,1.1.1.5.4.1.2.9.3,Betonstort tussenwand,1.0,0.8,1.2,2019-03-12 08:00:00,2019-03-12 17:00:00,,4
1560,1.1.1.5.4.1.2.9.4,Plaatsen prefab traptreden,7.0,5.6,8.4,2019-03-21 08:00:00,2019-03-29 17:00:00,,0
1561,1.1.1.5.4.1.3,Waterdichtingswerken dakplaat (Logistieke opening én vluchtgang haakse deel),2.0,1.6,2.4,2019-03-08 08:00:00,2019-03-11 17:00:00,,0
1562,1.1.1.5.4.1.4,PM Technieken zone vluchtgang (06.07.18 PM ingevoegd door Fsi),99.0,99.0,99.0,2019-06-11 08:00:00,2019-10-25 17:00:00,,0
1563,1.1.1.5.4.1.4.1,Stelling op vluchtweg verwijderen,1.0,0.8,1.2,2019-06-26 08:00:00,2019-06-26 17:00:00,,0
1564,1.1.1.5.4.1.4.2,"Technieken, montage VDK trap T26",15.0,12.0,18.0,2019-06-11 08:00:00,2019-07-01 17:00:00,,0
1565,1.1.1.5.4.1.4.3,Saldo Technieken vluchthuisje ,5.0,4.0,6.0,2019-10-21 08:00:00,2019-10-25 17:00:00,,0
1566,1.1.1.5.4.1.4.4,"Technieken, montage RWA (Rook- en Warmte Afvoer) trap T26",10.0,8.0,12.0,2019-07-02 08:00:00,2019-07-15 17:00:00,,0
1567,1.1.1.5.4.1.4.5,"Technieken, montage ICT trap T26",15.0,12.0,18.0,2019-09-02 08:00:00,2019-09-20 17:00:00,,0
1568,1.1.1.5.4.1.4.6,"Technieken, montage HVAC kanaal T26",5.0,4.0,6.0,2019-08-06 08:00:00,2019-08-12 17:00:00,,0
1569,1.1.1.5.5,E) TESTEN TUNNELS,1153.0,1153.0,1153.0,2016-09-30 08:00:00,2021-03-02 17:00:00,,0
1570,1.1.1.5.5.1,Testen Fabricom tbv indienstname tunnels,393.0,393.0,393.0,2019-08-30 08:00:00,2021-03-02 17:00:00,,0
1571,1.1.1.5.5.1.1,VO-11 Tunnels Einde uitvoeringsperiode ,0.0,0.0,0.0,2019-10-25 17:00:00,2019-10-25 17:00:00,,0
1572,1.1.1.5.5.1.2,Start testen tunnel (voorlopige testen Fabricom),0.0,0.0,0.0,2019-10-04 17:00:00,2019-10-04 17:00:00,,0
1573,1.1.1.5.5.1.3,Voorlopige testen Fabricom tunnel,60.0,48.0,72.0,2019-08-30 08:00:00,2019-11-21 17:00:00,,0
1574,1.1.1.5.5.1.4,Testen Fabricom ten behoeve van brandscenario's Tunnel,30.0,24.0,36.0,2019-11-22 08:00:00,2020-01-02 17:00:00,,0
1575,1.1.1.5.5.1.5,Testperiode OG Tunnel,30.0,24.0,36.0,2019-11-28 08:00:00,2020-01-08 17:00:00,,0
1576,1.1.1.5.5.1.6,Einde testen tunnels,0.0,0.0,0.0,2020-08-31 17:00:00,2020-08-31 17:00:00,,0
1577,1.1.1.5.5.1.7,Start testen Parking,0.0,0.0,0.0,2020-08-31 17:00:00,2020-08-31 17:00:00,,0
1578,1.1.1.5.5.1.8,Testen ON voor parking,60.0,48.0,72.0,2020-12-09 08:00:00,2021-03-02 17:00:00,,0
1579,1.1.1.5.5.1.9,Testperiode OG Parking,35.0,28.0,42.0,2020-03-02 08:00:00,2020-04-17 17:00:00,,0
1580,1.1.1.5.5.2,32 TUNNEL,131.0,131.0,131.0,2019-07-12 17:00:00,2020-01-14 10:00:00,,0
1581,1.1.1.5.5.2.1,F.A) MILESTONES TESTEN TUNNEL (techniek klaar voor type 1 test),118.0,118.0,118.0,2019-07-12 17:00:00,2019-12-25 17:00:00,,0
1582,1.1.1.5.5.2.1.1,NETWERK / FO ( BEKABELING ),44.0,44.0,44.0,2019-08-26 08:00:00,2019-10-24 17:00:00,,0
1583,1.1.1.5.5.2.1.1.1,BOVENGRONDS : knooppunt Gewest - Uitrustingszaal ZUID,44.0,44.0,44.0,2019-08-26 08:00:00,2019-10-24 17:00:00,,0
1584,1.1.1.5.5.2.1.1.1.1,FO (fiber optic) getrokken (BOVENGRONDS : UITRUSTZAAL --> knooppunt gewest,2.0,1.6,2.4,2019-08-26 08:00:00,2019-08-27 17:00:00,,0
1585,1.1.1.5.5.2.1.1.1.2,FO (fiber optic) afgelast (BOVENGRONDS : UITRUSTZAAL --> knooppunt gewest,4.0,3.2,4.8,2019-10-21 08:00:00,2019-10-24 17:00:00,,0
1586,1.1.1.5.5.2.1.1.2,BOVENGRONDS :  Rack P0 - T1 - M1 - M2 - M3 - M4 - T3,10.0,10.0,10.0,2019-08-26 08:00:00,2019-09-06 17:00:00,,0
1587,1.1.1.5.5.2.1.1.2.1,FO (fiber optic) getrokken (Rack P0 - T1 - M1 - M2 - M3 - M4 - T3),5.0,4.0,6.0,2019-08-26 08:00:00,2019-08-30 17:00:00,,0
1588,1.1.1.5.5.2.1.1.2.2,FO (fiber optic) afgelast (Rack P0 - T1 - M1 - M2 - M3 - M4 - T3),5.0,4.0,6.0,2019-09-02 08:00:00,2019-09-06 17:00:00,,0
1589,1.1.1.5.5.2.1.1.3,Hoofdring : Rack T1 - T2 - T3 - P0 - T1,11.0,11.0,11.0,2019-09-20 08:00:00,2019-10-04 17:00:00,,0
1590,1.1.1.5.5.2.1.1.3.1,FO getrokken (T1 - T2 - T3 - P1 - P0 - T1),5.0,4.0,6.0,2019-09-20 08:00:00,2019-09-26 17:00:00,,0
1591,1.1.1.5.5.2.1.1.3.2,FO (fiber optic) afgelast  (T1 - T2 - T3 - P0 - T1),6.0,4.8,7.2,2019-09-27 08:00:00,2019-10-04 17:00:00,,0
1592,1.1.1.5.5.2.1.1.4,Subring 4 : Rack T1 - T2 - T3-T4,10.0,10.0,10.0,2019-08-26 08:00:00,2019-09-06 17:00:00,,0
1593,1.1.1.5.5.2.1.1.4.1,FO (fiber optic) getrokken (T1 - T2 - T3 - T4),5.0,4.0,6.0,2019-08-26 08:00:00,2019-08-30 17:00:00,,0
1594,1.1.1.5.5.2.1.1.4.2,FO (fiber optic) afgelast (T1 - T2 - T3 - T4),5.0,4.0,6.0,2019-09-02 08:00:00,2019-09-06 17:00:00,,0
1595,1.1.1.5.5.2.1.2,BORDEN VVDK (incl. PIJL-KRUIS BORDEN / VERLICHTING),17.0,17.0,17.0,2019-09-02 08:00:00,2019-09-24 17:00:00,,0
1596,1.1.1.5.5.2.1.2.1,Hoogspannig (hoofdbord in hoogspanningslokaal tunnel),15.0,15.0,15.0,2019-09-02 08:00:00,2019-09-20 17:00:00,,0
1597,1.1.1.5.5.2.1.2.1.1,bord volledig aangesloten / onder spanning,1.0,0.8,1.2,2019-09-02 08:00:00,2019-09-02 17:00:00,,0
1598,1.1.1.5.5.2.1.2.1.2,Verbinding tussen Hoogspanningsbord en datarack ICT  gereed (in onderstation -3) ,1.0,0.8,1.2,2019-09-20 08:00:00,2019-09-20 17:00:00,,0
1599,1.1.1.5.5.2.1.2.2,TRANSFO  (hoofdbord hoogspanningslokaal tunnel),15.0,15.0,15.0,2019-09-02 08:00:00,2019-09-20 17:00:00,,0
1600,1.1.1.5.5.2.1.2.2.1,bord volledig aangesloten / onder spanning,1.0,0.8,1.2,2019-09-02 08:00:00,2019-09-02 17:00:00,,0
1601,1.1.1.5.5.2.1.2.2.2,Verbinding tussen Tansformatorbord en datarack ICT gereed (in onderstation -3) ,1.0,0.8,1.2,2019-09-20 08:00:00,2019-09-20 17:00:00,,0
1602,1.1.1.5.5.2.1.2.3,NO BREAK (hoofdbord in onderstation -3),15.0,15.0,15.0,2019-09-02 08:00:00,2019-09-20 17:00:00,,0
1603,1.1.1.5.5.2.1.2.3.1,bord volledig aangesloten / onder spanning,1.0,0.8,1.2,2019-09-02 08:00:00,2019-09-02 17:00:00,,0
1604,1.1.1.5.5.2.1.2.3.2,Verbinding tussen Hoofdbord No Break en datarack ICT gereed (in onderstation -3) ,1.0,0.8,1.2,2019-09-20 08:00:00,2019-09-20 17:00:00,,0
1605,1.1.1.5.5.2.1.2.4,ALSB HN/VN/NN (hoofdbord in uitrustingszaal),15.0,15.0,15.0,2019-09-02 08:00:00,2019-09-20 17:00:00,,0
1606,1.1.1.5.5.2.1.2.4.1,bord volledig aangesloten / onder spanning,1.0,0.8,1.2,2019-09-02 08:00:00,2019-09-02 17:00:00,,0
1607,1.1.1.5.5.2.1.2.4.2,Verbinding tussen Algemeen Laagspanningsbord HN/VN/NN en datarack ICT gereed   (in onderstation -3)  ,1.0,0.8,1.2,2019-09-20 08:00:00,2019-09-20 17:00:00,,0
1608,1.1.1.5.5.2.1.2.5,B4 ZuidNoord Tussentunnel Zuid HN-NN,3.0,3.0,3.0,2019-09-20 08:00:00,2019-09-24 17:00:00,,0
1609,1.1.1.5.5.2.1.2.5.1,Secundair Bord B4 volledig aangesloten / onder spanning,1.0,0.8,1.2,2019-09-20 08:00:00,2019-09-20 17:00:00,,0
1610,1.1.1.5.5.2.1.2.5.2,verbinding tussen bord B4 en datarack ICT ,2.0,1.6,2.4,2019-09-23 08:00:00,2019-09-24 17:00:00,,0
1611,1.1.1.5.5.2.1.2.6,B5 NoordZuid Tussentunnel Zuid NN,3.0,3.0,3.0,2019-09-20 08:00:00,2019-09-24 17:00:00,,0
1612,1.1.1.5.5.2.1.2.6.1,Secundair Bord B5 volledig aangesloten / onder spanning,1.0,0.8,1.2,2019-09-20 08:00:00,2019-09-20 17:00:00,,0
1613,1.1.1.5.5.2.1.2.6.2,verbinding tussen bord B5 en datarack ICT ,2.0,1.6,2.4,2019-09-23 08:00:00,2019-09-24 17:00:00,,0
1614,1.1.1.5.5.2.1.2.7,B5 ZuidNoord Tussentunnel Zuid NN,2.0,2.0,2.0,2019-09-20 08:00:00,2019-09-23 17:00:00,,0
1615,1.1.1.5.5.2.1.2.7.1,Secundair Bord B6 volledig aangesloten / onder spanning,1.0,0.8,1.2,2019-09-20 08:00:00,2019-09-20 17:00:00,,0
1616,1.1.1.5.5.2.1.2.7.2,verbinding tussen bord B6 en datarack ICT ,1.0,0.8,1.2,2019-09-23 08:00:00,2019-09-23 17:00:00,,0
1617,1.1.1.5.5.2.1.2.8,B6 NoordZuid Tussentunnel Zuid HN-NN,3.0,3.0,3.0,2019-09-20 08:00:00,2019-09-24 17:00:00,,0
1618,1.1.1.5.5.2.1.2.8.1,Secundair Bord B5 volledig aangesloten / onder spanning,1.0,0.8,1.2,2019-09-20 08:00:00,2019-09-20 17:00:00,,0
1619,1.1.1.5.5.2.1.2.8.2,verbinding tussen bord B5 en datarack ICT ,2.0,1.6,2.4,2019-09-23 08:00:00,2019-09-24 17:00:00,,0
1620,1.1.1.5.5.2.1.2.9,B6 ZuidNoord Tussentunnel Zuid HN-NN,1.0,1.0,1.0,2019-09-19 17:00:00,2019-09-20 17:00:00,,0
1621,1.1.1.5.5.2.1.2.9.1,Secundair Bord B6 volledig aangesloten / onder spanning,0.0,0.0,0.0,2019-09-19 17:00:00,2019-09-19 17:00:00,,0
1622,1.1.1.5.5.2.1.2.9.2,verbinding tussen bord B6 en datarack ICT ,0.0,0.0,0.0,2019-09-20 17:00:00,2019-09-20 17:00:00,,0
1623,1.1.1.5.5.2.1.3,"BORDEN / DATARACKS (secundaire racks, verspreid over de verdiepingen)",57.0,57.0,57.0,2019-08-01 08:00:00,2019-10-18 17:00:00,,0
1624,1.1.1.5.5.2.1.3.1,T1,11.0,11.0,11.0,2019-09-13 08:00:00,2019-09-27 17:00:00,,0
1625,1.1.1.5.5.2.1.3.1.1,Switch T1 geconfigureerd,1.0,0.8,1.2,2019-09-13 08:00:00,2019-09-13 17:00:00,,0
1626,1.1.1.5.5.2.1.3.1.2,Secundair databord T1 volledig aangesloten,5.0,4.0,6.0,2019-09-23 08:00:00,2019-09-27 17:00:00,,0
1627,1.1.1.5.5.2.1.3.2,T2,21.0,21.0,21.0,2019-09-13 08:00:00,2019-10-11 17:00:00,,0
1628,1.1.1.5.5.2.1.3.2.1,Switch T2 geconfigureerd,1.0,0.8,1.2,2019-09-13 08:00:00,2019-09-13 17:00:00,,0
1629,1.1.1.5.5.2.1.3.2.2,Secundair databord T2 volledig aangesloten,10.0,8.0,12.0,2019-09-30 08:00:00,2019-10-11 17:00:00,,0
1630,1.1.1.5.5.2.1.3.3,T3,57.0,57.0,57.0,2019-08-01 08:00:00,2019-10-18 17:00:00,,0
1631,1.1.1.5.5.2.1.3.3.1,MasterPLC geprogrammeerd,1.0,0.8,1.2,2019-08-01 08:00:00,2019-08-01 17:00:00,,0
1632,1.1.1.5.5.2.1.3.3.2,MasterPLC geinstalleerd,1.0,0.8,1.2,2019-09-20 08:00:00,2019-09-20 17:00:00,,0
1633,1.1.1.5.5.2.1.3.3.3,Switch T3 geconfigureerd,1.0,0.8,1.2,2019-09-13 08:00:00,2019-09-13 17:00:00,,0
1634,1.1.1.5.5.2.1.3.3.4,Secundair databord T3 volledig aangesloten,5.0,4.0,6.0,2019-10-14 08:00:00,2019-10-18 17:00:00,,0
1635,1.1.1.5.5.2.1.3.4,T4,6.0,6.0,6.0,2019-10-07 08:00:00,2019-10-14 17:00:00,,0
1636,1.1.1.5.5.2.1.3.4.1,Secundair databord T4 volledig aangesloten,5.0,4.0,6.0,2019-10-07 08:00:00,2019-10-11 17:00:00,,0
1637,1.1.1.5.5.2.1.3.4.2,Switch T4 geconfigureerd,1.0,0.8,1.2,2019-10-14 08:00:00,2019-10-14 17:00:00,,0
1638,1.1.1.5.5.2.1.3.5,M1,3.0,3.0,3.0,2019-09-11 08:00:00,2019-09-13 17:00:00,,0
1639,1.1.1.5.5.2.1.3.5.1,Secundair databord M1 volledig aangesloten,2.0,1.6,2.4,2019-09-11 08:00:00,2019-09-12 17:00:00,,0
1640,1.1.1.5.5.2.1.3.5.2,Switch M1 geconfigureerd,1.0,0.8,1.2,2019-09-13 08:00:00,2019-09-13 17:00:00,,0
1641,1.1.1.5.5.2.1.3.6,M2,3.0,3.0,3.0,2019-09-16 08:00:00,2019-09-18 17:00:00,,0
1642,1.1.1.5.5.2.1.3.6.1,Secundair databord M2 volledig aangesloten,2.0,1.6,2.4,2019-09-16 08:00:00,2019-09-17 17:00:00,,0
1643,1.1.1.5.5.2.1.3.6.2,Switch M2 geconfigureerd,1.0,0.8,1.2,2019-09-18 08:00:00,2019-09-18 17:00:00,,0
1644,1.1.1.5.5.2.1.3.7,M3,3.0,3.0,3.0,2019-09-16 08:00:00,2019-09-18 17:00:00,,0
1645,1.1.1.5.5.2.1.3.7.1,Secundair databord M3 volledig aangesloten,2.0,1.6,2.4,2019-09-16 08:00:00,2019-09-17 17:00:00,,0
1646,1.1.1.5.5.2.1.3.7.2,Switch M3 geconfigureerd,1.0,0.8,1.2,2019-09-18 08:00:00,2019-09-18 17:00:00,,0
1647,1.1.1.5.5.2.1.3.8,M4,3.0,3.0,3.0,2019-09-16 08:00:00,2019-09-18 17:00:00,,0
1648,1.1.1.5.5.2.1.3.8.1,Secundair databord M4 volledig aangesloten,2.0,1.6,2.4,2019-09-16 08:00:00,2019-09-17 17:00:00,,0
1649,1.1.1.5.5.2.1.3.8.2,Switch M4 geconfigureerd,1.0,0.8,1.2,2019-09-18 08:00:00,2019-09-18 17:00:00,,0
1650,1.1.1.5.5.2.1.4,BRANDDETECTIE TUNNEL,46.0,46.0,46.0,2019-08-19 08:00:00,2019-10-21 17:00:00,,0
1651,1.1.1.5.5.2.1.4.1,toestellen (branddetectoren / handbrandmelders) geplaatst tunnel - evacuatiegangen,3.0,2.4,3.6,2019-08-19 08:00:00,2019-08-21 17:00:00,,0
1652,1.1.1.5.5.2.1.4.2,fibrolaser geplaast tunnel oost,3.0,2.4,3.6,2019-08-30 08:00:00,2019-09-03 17:00:00,,0
1653,1.1.1.5.5.2.1.4.3,fibrolaser geplaast tunnel west,3.0,2.4,3.6,2019-09-04 08:00:00,2019-09-06 17:00:00,,0
1654,1.1.1.5.5.2.1.4.4,tunnelbrandcentrale in dienst,31.0,24.8,37.2,2019-09-09 08:00:00,2019-10-21 17:00:00,,0
1655,1.1.1.5.5.2.1.5,OMROEPINSTALLATIE TUNNEL,50.0,50.0,50.0,2019-07-12 17:00:00,2019-09-20 17:00:00,,0
1656,1.1.1.5.5.2.1.5.1,Luidsprekers geplaatst technische lokalen - evacuatiegangen,0.0,0.0,0.0,2019-07-12 17:00:00,2019-07-12 17:00:00,,0
1657,1.1.1.5.5.2.1.5.2,Luidsprekers geplaatst tunnel oost,0.0,0.0,0.0,2019-07-19 17:00:00,2019-07-19 17:00:00,,0
1658,1.1.1.5.5.2.1.5.3,Luidsprekers geplaatst tunnel west,0.0,0.0,0.0,2019-07-24 17:00:00,2019-07-24 17:00:00,,0
1659,1.1.1.5.5.2.1.5.4,centraal rack geplaatst  en aangesloten (in uitrustingszaal),5.0,4.0,6.0,2019-09-16 08:00:00,2019-09-20 17:00:00,,0
1660,1.1.1.5.5.2.1.6,CCTV-INSTALLATIE  TUNNEL,59.0,59.0,59.0,2019-07-12 17:00:00,2019-10-03 17:00:00,,0
1661,1.1.1.5.5.2.1.6.1,centraal rack geplaatst en aangesloten (in uitrustingszaal),0.0,0.0,0.0,2019-07-12 17:00:00,2019-07-12 17:00:00,,0
1662,1.1.1.5.5.2.1.6.2,camera's geinstalleerd tunnel oost,0.0,0.0,0.0,2019-07-19 17:00:00,2019-07-19 17:00:00,,0
1663,1.1.1.5.5.2.1.6.3,camera's geinstalleerd tunnel west,0.0,0.0,0.0,2019-07-24 17:00:00,2019-07-24 17:00:00,,0
1664,1.1.1.5.5.2.1.6.4,indienstname van DIVARS (opnameapparatuur),2.0,1.6,2.4,2019-09-30 08:00:00,2019-10-01 17:00:00,,0
1665,1.1.1.5.5.2.1.6.5,indienstname BVMS,2.0,1.6,2.4,2019-10-02 08:00:00,2019-10-03 17:00:00,,0
1666,1.1.1.5.5.2.1.7,CCTV-INSTALLATIE  TUNNEL AID,58.0,58.0,58.0,2019-08-02 17:00:00,2019-10-23 17:00:00,,0
1667,1.1.1.5.5.2.1.7.1,centraal rack geplaatst en aangesloten (in uitrustingszaal),2.0,1.6,2.4,2019-10-15 08:00:00,2019-10-16 17:00:00,,0
1668,1.1.1.5.5.2.1.7.2,camera's geinstalleerd tunnel oost,0.0,0.0,0.0,2019-08-02 17:00:00,2019-08-02 17:00:00,,0
1669,1.1.1.5.5.2.1.7.3,camera's geinstalleerd tunnel west,0.0,0.0,0.0,2019-08-02 17:00:00,2019-08-02 17:00:00,,0
1670,1.1.1.5.5.2.1.7.4,indienstname van DIVARS (opnameapparatuur),5.0,4.0,6.0,2019-10-17 08:00:00,2019-10-23 17:00:00,,0
1671,1.1.1.5.5.2.1.8,RADIO,103.0,103.0,103.0,2019-08-05 08:00:00,2019-12-25 17:00:00,,0
1672,1.1.1.5.5.2.1.8.1,centraal rack geplaatst en aangesloten (in uitrustingszaal),0.0,0.0,0.0,2019-09-19 17:00:00,2019-09-19 17:00:00,,0
1673,1.1.1.5.5.2.1.8.2,straalkabel geinstalleerd tunnel oost,52.0,41.6,62.4,2019-08-05 08:00:00,2019-10-15 17:00:00,,0
1674,1.1.1.5.5.2.1.8.3,straalkabel geinstalleerd tunnel west,48.0,38.4,57.6,2019-10-16 08:00:00,2019-12-20 17:00:00,,0
1675,1.1.1.5.5.2.1.8.4,indienstname van centraal rack,3.0,2.4,3.6,2019-12-23 08:00:00,2019-12-25 17:00:00,,0
1676,1.1.1.5.5.2.1.9,TOEGANGSCONTROLE,8.0,8.0,8.0,2019-10-01 08:00:00,2019-10-10 17:00:00,,0
1677,1.1.1.5.5.2.1.9.1,T/BOZ1.1,2.0,1.6,2.4,2019-10-01 08:00:00,2019-10-02 17:00:00,,0
1678,1.1.1.5.5.2.1.9.2,T/BOZ1.2 A,2.0,1.6,2.4,2019-10-03 08:00:00,2019-10-04 17:00:00,,0
1679,1.1.1.5.5.2.1.9.3,T/BOZ1.2 B,2.0,1.6,2.4,2019-10-07 08:00:00,2019-10-08 17:00:00,,0
1680,1.1.1.5.5.2.1.9.4,T/BOZ1.2 C,2.0,1.6,2.4,2019-10-09 08:00:00,2019-10-10 17:00:00,,0
1681,1.1.1.5.5.2.1.10,TELEFONIE,27.0,27.0,27.0,2019-08-12 08:00:00,2019-09-17 17:00:00,,0
1682,1.1.1.5.5.2.1.10.1,telefoons geplaatst tunnel oost,20.0,16.0,24.0,2019-08-12 08:00:00,2019-09-06 17:00:00,,0
1683,1.1.1.5.5.2.1.10.2,telefoons geplaatst tunnel west,20.0,16.0,24.0,2019-08-12 08:00:00,2019-09-06 17:00:00,,0
1684,1.1.1.5.5.2.1.10.3,centraal rack geplaatst en aangesloten (in uitrustingszaal),7.0,5.6,8.4,2019-09-09 08:00:00,2019-09-17 17:00:00,,0
1685,1.1.1.5.5.2.1.11,VMS Borden,6.0,6.0,6.0,2019-10-07 08:00:00,2019-10-14 17:00:00,,0
1686,1.1.1.5.5.2.1.11.1,Tunnel oost,2.0,1.6,2.4,2019-10-07 08:00:00,2019-10-08 17:00:00,,0
1687,1.1.1.5.5.2.1.11.2,tunnel west ,2.0,1.6,2.4,2019-10-09 08:00:00,2019-10-10 17:00:00,,0
1688,1.1.1.5.5.2.1.11.3,connectie met netwerk /PLC,2.0,1.6,2.4,2019-10-11 08:00:00,2019-10-14 17:00:00,,0
1689,1.1.1.5.5.2.1.12,HVAC,7.0,7.0,7.0,2019-10-15 08:00:00,2019-10-23 17:00:00,,0
1690,1.1.1.5.5.2.1.12.1,T/HVAC HN,5.0,4.0,6.0,2019-10-15 08:00:00,2019-10-21 17:00:00,,0
1691,1.1.1.5.5.2.1.12.2,connectie met netwerk / PLC / datarack,2.0,1.6,2.4,2019-10-22 08:00:00,2019-10-23 17:00:00,,0
1692,1.1.1.5.5.2.1.13,RWA (incl. OVERDRUK / GASDETECTIE),5.0,5.0,5.0,2019-10-30 08:00:00,2019-11-05 17:00:00,,0
1693,1.1.1.5.5.2.1.13.1,"P/RWA2+4 (1,2,3 ??)",5.0,4.0,6.0,2019-10-30 08:00:00,2019-11-05 17:00:00,,0
1694,1.1.1.5.5.2.1.14,BBI,11.0,11.0,11.0,2019-10-14 17:00:00,2019-10-29 17:00:00,,0
1695,1.1.1.5.5.2.1.14.1,stuurkast BBI geinstalleerd,0.0,0.0,0.0,2019-10-29 17:00:00,2019-10-29 17:00:00,,0
1696,1.1.1.5.5.2.1.14.2,tracing tunnelmond noord,0.0,0.0,0.0,2019-10-14 17:00:00,2019-10-14 17:00:00,,0
1697,1.1.1.5.5.2.1.14.3,tracing tunnelmond zuid,0.0,0.0,0.0,2019-10-14 17:00:00,2019-10-14 17:00:00,,0
1698,1.1.1.5.5.2.1.15,TECHNIEKEN ROADS,2.0,2.0,2.0,2019-10-11 08:00:00,2019-10-14 17:00:00,,0
1699,1.1.1.5.5.2.1.15.1,Trajectcontrole geinstalleerd,1.0,0.8,1.2,2019-10-11 08:00:00,2019-10-11 17:00:00,,0
1700,1.1.1.5.5.2.1.15.2,Hoogtedetectie geinstalleerd,1.0,0.8,1.2,2019-10-11 08:00:00,2019-10-11 17:00:00,,0
1701,1.1.1.5.5.2.1.15.3,Slagbomen geinstalleerd,1.0,0.8,1.2,2019-10-11 08:00:00,2019-10-11 17:00:00,,0
1702,1.1.1.5.5.2.1.15.4,Intercom slagbomen,1.0,0.8,1.2,2019-10-11 08:00:00,2019-10-11 17:00:00,,0
1703,1.1.1.5.5.2.1.15.5,Verkeerscontroller,1.0,0.8,1.2,2019-10-14 08:00:00,2019-10-14 17:00:00,,0
1704,1.1.1.5.5.2.1.16,POMPEN,0.0,0.0,0.0,2019-10-29 17:00:00,2019-10-29 17:00:00,,0
1705,1.1.1.5.5.2.1.16.1,RGWA Noord,0.0,0.0,0.0,2019-10-29 17:00:00,2019-10-29 17:00:00,,0
1706,1.1.1.5.5.2.1.16.2,RGWA Zuid,0.0,0.0,0.0,2019-10-29 17:00:00,2019-10-29 17:00:00,,0
1707,1.1.1.5.5.2.2,G.A) TESTEN ON TUNNEL,98.0,98.0,98.0,2019-08-23 08:00:00,2020-01-07 17:00:00,,0
1708,1.1.1.5.5.2.2.1,TESTEN TYPE 1 (technische testen per techniek),95.0,95.0,95.0,2019-08-23 08:00:00,2020-01-02 17:00:00,,0
1709,1.1.1.5.5.2.2.1.1,Uitvoeren FAT Software (type 1 test software),5.0,4.0,6.0,2019-08-23 08:00:00,2019-08-29 17:00:00,,0
1710,1.1.1.5.5.2.2.1.2,NETWERK / FO ( BEKABELING ),21.0,21.0,21.0,2019-10-04 08:00:00,2019-11-01 17:00:00,,0
1711,1.1.1.5.5.2.2.1.2.1,Uitvoeren testen type 1 : BOVENGRONDS : knooppunt Gewest - Uitrustingszaal ZUID,1.0,0.8,1.2,2019-11-01 08:00:00,2019-11-01 17:00:00,,0
1712,1.1.1.5.5.2.2.1.2.2,Uitvoeren testen type 1 : BOVENGRONDS : Rack P0 - T1 - M1 - M2 - M3 - M4 - T3,1.0,0.8,1.2,2019-10-07 08:00:00,2019-10-07 17:00:00,,0
1713,1.1.1.5.5.2.2.1.2.3,Uitvoeren testen type 1 : Hoofdring : Rack T1 - T2 - T3 - P0 - T1,1.0,0.8,1.2,2019-10-14 08:00:00,2019-10-14 17:00:00,,0
1714,1.1.1.5.5.2.2.1.2.4,Uitvoeren testen type 1 : Subring 4 : Rack T1 - T2 - T3-T4,1.0,0.8,1.2,2019-10-04 08:00:00,2019-10-04 17:00:00,,0
1715,1.1.1.5.5.2.2.1.3,BORDEN VVDK (incl. PIJL-KRUIS BORDEN),20.0,20.0,20.0,2019-09-30 08:00:00,2019-10-25 17:00:00,,0
1716,1.1.1.5.5.2.2.1.3.1,Uitvoeren testen type 1 : Hoogspanning (hoofdbord in hoogspanningslokaal tunnel),5.0,4.0,6.0,2019-09-30 08:00:00,2019-10-04 17:00:00,,0
1717,1.1.1.5.5.2.2.1.3.2,Uitvoeren testen type 1 : TRANSFO (hoofdbord hoogspanningslokaal tunnel),5.0,4.0,6.0,2019-09-30 08:00:00,2019-10-04 17:00:00,,0
1718,1.1.1.5.5.2.2.1.3.3,Uitvoeren testen type 1: No Break,5.0,4.0,6.0,2019-10-21 08:00:00,2019-10-25 17:00:00,,0
1719,1.1.1.5.5.2.2.1.3.4,Uitvoeren testen type 1 : DIESELAGGREGAAT,5.0,4.0,6.0,2019-09-30 08:00:00,2019-10-04 17:00:00,,0
1720,1.1.1.5.5.2.2.1.3.5,Uitvoeren testen type 1 : ALSB HN/VN/NN (hoofdbord in uitrustingszaal),5.0,4.0,6.0,2019-09-30 08:00:00,2019-10-04 17:00:00,,0
1721,1.1.1.5.5.2.2.1.3.6,Uitvoeren testen type 1 : B4 ZuidNoord Tussentunnel Zuid HN-NN,4.0,3.2,4.8,2019-10-02 08:00:00,2019-10-07 17:00:00,,0
1722,1.1.1.5.5.2.2.1.3.7,Uitvoeren testen type 1 : B5 NoordZuid Tussentunnel Zuid NN,4.0,3.2,4.8,2019-10-02 08:00:00,2019-10-07 17:00:00,,0
1723,1.1.1.5.5.2.2.1.3.8,Uitvoeren testen type 1 : B5 ZuidNoord Tussentunnel Zuid NN,4.0,3.2,4.8,2019-10-01 08:00:00,2019-10-04 17:00:00,,0
1724,1.1.1.5.5.2.2.1.3.9,Uitvoeren testen type 1 : B6 NoordZuid Tussentunnel Zuid HN-NN,4.0,3.2,4.8,2019-10-02 08:00:00,2019-10-07 17:00:00,,0
1725,1.1.1.5.5.2.2.1.3.10,Uitvoeren testen type 1 : B6 ZuidNoord Tussentunnel Zuid HN-NN,4.0,3.2,4.8,2019-09-30 08:00:00,2019-10-03 17:00:00,,0
1726,1.1.1.5.5.2.2.1.4,"BORDEN / DATARACKS (secundaire racks, verspreid over de verdiepingen)",7.0,7.0,7.0,2019-10-11 08:00:00,2019-10-21 17:00:00,,0
1727,1.1.1.5.5.2.2.1.4.1,Uitvoeren testen type 1 : T1,1.0,0.8,1.2,2019-10-21 08:00:00,2019-10-21 17:00:00,,0
1728,1.1.1.5.5.2.2.1.4.2,Uitvoeren testen type 1 : T2,1.0,0.8,1.2,2019-10-21 08:00:00,2019-10-21 17:00:00,,0
1729,1.1.1.5.5.2.2.1.4.3,Uitvoeren testen type 1 : T3,1.0,0.8,1.2,2019-10-21 08:00:00,2019-10-21 17:00:00,,0
1730,1.1.1.5.5.2.2.1.4.4,Uitvoeren testen type 1 : T4,1.0,0.8,1.2,2019-10-21 08:00:00,2019-10-21 17:00:00,,0
1731,1.1.1.5.5.2.2.1.4.5,Uitvoeren testen type 1 : M1,1.0,0.8,1.2,2019-10-11 08:00:00,2019-10-11 17:00:00,,0
1732,1.1.1.5.5.2.2.1.4.6,Uitvoeren testen type 1 : M2,1.0,0.8,1.2,2019-10-11 08:00:00,2019-10-11 17:00:00,,0
1733,1.1.1.5.5.2.2.1.4.7,Uitvoeren testen type 1 : M3,1.0,0.8,1.2,2019-10-11 08:00:00,2019-10-11 17:00:00,,0
1734,1.1.1.5.5.2.2.1.4.8,Uitvoeren testen type 1 : M4,1.0,0.8,1.2,2019-10-11 08:00:00,2019-10-11 17:00:00,,0
1735,1.1.1.5.5.2.2.1.5,BRANDDETECTIE TUNNEL,2.0,2.0,2.0,2019-10-29 08:00:00,2019-10-30 17:00:00,,0
1736,1.1.1.5.5.2.2.1.5.1,Uitvoeren testen type 1 : Test brandcentrale,2.0,1.6,2.4,2019-10-29 08:00:00,2019-10-30 17:00:00,,0
1737,1.1.1.5.5.2.2.1.6,OMROEPINSTALLATIE TUNNEL,36.0,36.0,36.0,2019-09-23 08:00:00,2019-11-11 17:00:00,,0
1738,1.1.1.5.5.2.2.1.6.1,Uitvoeren testen type 1 : Test omroepinstallatie,36.0,28.8,43.2,2019-09-23 08:00:00,2019-11-11 17:00:00,,0
1739,1.1.1.5.5.2.2.1.7,CCTV-INSTALLATIE TUNNEL,16.0,16.0,16.0,2019-10-18 08:00:00,2019-11-08 17:00:00,,0
1740,1.1.1.5.5.2.2.1.7.1,Uitvoeren testen type 1 : Test CCTV,4.0,3.2,4.8,2019-10-18 08:00:00,2019-10-23 17:00:00,,0
1741,1.1.1.5.5.2.2.1.7.2,Uitvoeren testen type 1 : Test CCTV AID,2.0,1.6,2.4,2019-11-07 08:00:00,2019-11-08 17:00:00,,0
1742,1.1.1.5.5.2.2.1.8,RADIO,1.0,1.0,1.0,2020-01-02 08:00:00,2020-01-02 17:00:00,,0
1743,1.1.1.5.5.2.2.1.8.1,Uitvoeren testen type 1 : Test Radiocom/intercom,1.0,0.8,1.2,2020-01-02 08:00:00,2020-01-02 17:00:00,,0
1744,1.1.1.5.5.2.2.1.9,TOEGANGSCONTROLE,1.0,1.0,1.0,2019-10-31 08:00:00,2019-10-31 17:00:00,,0
1745,1.1.1.5.5.2.2.1.9.1,Uitvoeren testen type 1 : T/BOZ1.1,1.0,0.8,1.2,2019-10-31 08:00:00,2019-10-31 17:00:00,,0
1746,1.1.1.5.5.2.2.1.9.2,Uitvoeren testen type 1 : T/BOZ1.2 A,1.0,0.8,1.2,2019-10-31 08:00:00,2019-10-31 17:00:00,,0
1747,1.1.1.5.5.2.2.1.9.3,Uitvoeren testen type 1 : T/BOZ1.2 B,1.0,0.8,1.2,2019-10-31 08:00:00,2019-10-31 17:00:00,,0
1748,1.1.1.5.5.2.2.1.9.4,Uitvoeren testen type 1 : T/BOZ1.2 C,1.0,0.8,1.2,2019-10-31 08:00:00,2019-10-31 17:00:00,,0
1749,1.1.1.5.5.2.2.1.10,TELEFONIE,18.0,18.0,18.0,2019-09-18 08:00:00,2019-10-11 17:00:00,,0
1750,1.1.1.5.5.2.2.1.10.1,Uitvoeren testen type 1 test telefooncentrale ,18.0,14.4,21.6,2019-09-18 08:00:00,2019-10-11 17:00:00,,0
1751,1.1.1.5.5.2.2.1.11,VMS Borden,1.0,1.0,1.0,2019-11-08 08:00:00,2019-11-08 17:00:00,,0
1752,1.1.1.5.5.2.2.1.11.1,Uitvoeren testen type 1 : Tunnel oost + west,1.0,0.8,1.2,2019-11-08 08:00:00,2019-11-08 17:00:00,,0
1753,1.1.1.5.5.2.2.1.12,HVAC,8.0,8.0,8.0,2019-10-24 08:00:00,2019-11-04 17:00:00,,0
1754,1.1.1.5.5.2.2.1.12.1,Uitvoeren testen type 1 : T/HVAC HN,8.0,6.4,9.6,2019-10-24 08:00:00,2019-11-04 17:00:00,,0
1755,1.1.1.5.5.2.2.1.13,RWA (incl. OVERDRUK / GASDETECTIE),5.0,5.0,5.0,2019-11-06 08:00:00,2019-11-12 17:00:00,,0
1756,1.1.1.5.5.2.2.1.13.1,Uitvoeren testen type 1 : P/RWA2+4 inclusief gasdetectie,5.0,4.0,6.0,2019-11-06 08:00:00,2019-11-12 17:00:00,,0
1757,1.1.1.5.5.2.2.1.14,BBI,2.0,2.0,2.0,2019-11-15 08:00:00,2019-11-15 10:00:00,,0
1758,1.1.1.5.5.2.2.1.14.1,Uitvoeren testen type 1 : stuurkast BBI geinstalleerd,2.0,1.6,2.4,2019-11-15 08:00:00,2019-11-15 10:00:00,,0
1759,1.1.1.5.5.2.2.1.15,TECHNIEKEN ROADS,1.0,1.0,1.0,2019-11-08 08:00:00,2019-11-08 17:00:00,,0
1760,1.1.1.5.5.2.2.1.15.1,"Uitvoeren testen type 1 : verkeerscontroller (incl. trajectcontrole, hoogtedetectie, slagbomen, intercom )",1.0,0.8,1.2,2019-11-08 08:00:00,2019-11-08 17:00:00,,0
1761,1.1.1.5.5.2.2.1.16,POMPEN,1.0,1.0,1.0,2019-11-04 08:00:00,2019-11-04 17:00:00,,0
1762,1.1.1.5.5.2.2.1.16.1,Uitvoeren testen type 1 : RGWA Noord,1.0,0.8,1.2,2019-11-04 08:00:00,2019-11-04 17:00:00,,0
1763,1.1.1.5.5.2.2.1.16.2,Uitvoeren testen type 1 : RGWA Zuid,1.0,0.8,1.2,2019-11-04 08:00:00,2019-11-04 17:00:00,,0
1764,1.1.1.5.5.2.2.1.17,Slagbomen,1.0,1.0,1.0,2019-10-15 08:00:00,2019-10-15 17:00:00,,0
1765,1.1.1.5.5.2.2.1.17.1,Uitvoeren testen type 1: Slagboom west,1.0,0.8,1.2,2019-10-15 08:00:00,2019-10-15 17:00:00,,0
1766,1.1.1.5.5.2.2.1.17.2,Uitvoeren testen type 1: Slagboom oost ,1.0,0.8,1.2,2019-10-15 08:00:00,2019-10-15 17:00:00,,0
1767,1.1.1.5.5.2.2.2,TESTEN TYPE 2 (interface testen tussen technieken),62.0,62.0,62.0,2019-10-14 08:00:00,2020-01-07 17:00:00,,0
1768,1.1.1.5.5.2.2.2.1,Start type 2 testen secundaire borden,62.0,62.0,62.0,2019-10-14 08:00:00,2020-01-07 17:00:00,,0
1769,1.1.1.5.5.2.2.2.1.1,Uitvoeren testen type 2 : Hoogspanning (hoofdbord in hoogspanningslokaal tunnel),2.0,1.6,2.4,2019-10-22 08:00:00,2019-10-23 17:00:00,,0
1770,1.1.1.5.5.2.2.2.1.2,Uitvoeren testen type 2 : TRANSFO (hoofdbord hoogspanningslokaal tunnel),1.0,0.8,1.2,2019-10-24 08:00:00,2019-10-24 17:00:00,,0
1771,1.1.1.5.5.2.2.2.1.3,Uitvoeren type 2 test: No Break,1.0,0.8,1.2,2019-11-12 08:00:00,2019-11-12 17:00:00,,0
1772,1.1.1.5.5.2.2.2.1.4,Uitvoeren testen type 2 : DIESELAGGREGAAT,1.0,0.8,1.2,2019-11-12 08:00:00,2019-11-12 17:00:00,,0
1773,1.1.1.5.5.2.2.2.1.5,Uitvoeren testen type 2 : ALSB HN/VN/NN (hoofdbord in uitrustingszaal),2.0,1.6,2.4,2019-11-13 08:00:00,2019-11-14 17:00:00,,0
1774,1.1.1.5.5.2.2.2.1.6,Uitvoeren testen type 2 : B4 ZuidNoord Tussentunnel Zuid HN-NN,1.0,0.8,1.2,2019-11-15 08:00:00,2019-11-15 17:00:00,,0
1775,1.1.1.5.5.2.2.2.1.7,Uitvoeren testen type 2 : B5 NoordZuid Tussentunnel Zuid NN,1.0,0.8,1.2,2019-11-18 08:00:00,2019-11-18 17:00:00,,0
1776,1.1.1.5.5.2.2.2.1.8,Uitvoeren testen type 2 : B5 ZuidNoord Tussentunnel Zuid NN,1.0,0.8,1.2,2019-11-19 08:00:00,2019-11-19 17:00:00,,0
1777,1.1.1.5.5.2.2.2.1.9,Uitvoeren testen type 2 : B6 NoordZuid Tussentunnel Zuid HN-NN,1.0,0.8,1.2,2019-11-20 08:00:00,2019-11-20 17:00:00,,0
1778,1.1.1.5.5.2.2.2.1.10,Uitvoeren testen type 2 : B6 ZuidNoord Tussentunnel Zuid HN-NN,1.0,0.8,1.2,2019-11-21 08:00:00,2019-11-21 17:00:00,,0
1779,1.1.1.5.5.2.2.2.1.11,Uitvoeren type 2 testen Alle type 2 testen secundaire borden succesvol uitgevoerd,0.0,0.0,0.0,2019-11-21 17:00:00,2019-11-21 17:00:00,,0
1780,1.1.1.5.5.2.2.2.1.12,Uitvoeren type 2 test Tunnelbrandcentrale - PLC,1.0,0.8,1.2,2019-11-04 08:00:00,2019-11-04 17:00:00,,0
1781,1.1.1.5.5.2.2.2.1.13,Uitvoeren type 2 test Omroepinstallatie - PLC,15.0,12.0,18.0,2019-11-12 08:00:00,2019-12-03 15:00:00,,0
1782,1.1.1.5.5.2.2.2.1.14,Uitvoeren type 2 test CCTV installatie - PLC,1.0,0.8,1.2,2019-11-12 08:00:00,2019-11-12 17:00:00,,0
1783,1.1.1.5.5.2.2.2.1.15,Uitvoeren type 2 test Radiocom'/intercom - PLC,1.0,0.8,1.2,2020-01-03 08:00:00,2020-01-03 17:00:00,,0
1784,1.1.1.5.5.2.2.2.1.16,Uitvoeren type 2 test toegangscontrole - PLC,1.0,0.8,1.2,2019-11-04 08:00:00,2019-11-04 17:00:00,,0
1785,1.1.1.5.5.2.2.2.1.17,Uitvoeren type 2 test slagbomen - PLC,1.0,0.8,1.2,2019-11-08 08:00:00,2019-11-08 17:00:00,,0
1786,1.1.1.5.5.2.2.2.1.18,Uitvoeren type 2 test VMS borden - PLC,1.0,0.8,1.2,2019-11-12 08:00:00,2019-11-12 17:00:00,,0
1787,1.1.1.5.5.2.2.2.1.19,Uitvoeren type 2 test HVAC- PLC,2.0,1.6,2.4,2019-11-05 08:00:00,2019-11-06 17:00:00,,0
1788,1.1.1.5.5.2.2.2.1.20,Uitvoeren type 2 test RWA - PLC,2.0,1.6,2.4,2019-11-13 08:00:00,2019-11-14 17:00:00,,0
1789,1.1.1.5.5.2.2.2.1.21,Uitvoeren type 2 test BBI - PLC,3.0,2.4,3.6,2019-11-15 10:00:00,2019-11-20 10:00:00,,0
1790,1.1.1.5.5.2.2.2.1.22,Uitvoeren type 2 test POMPEN - PLC,3.0,2.4,3.6,2019-11-05 08:00:00,2019-11-07 17:00:00,,0
1791,1.1.1.5.5.2.2.2.1.23,Uitvoeren type 2 test deuren - PLC,2.0,1.6,2.4,2019-11-04 08:00:00,2019-11-05 17:00:00,,0
1792,1.1.1.5.5.2.2.2.1.24,Uitvoeren type 2 testen PIJL KRUIS BORDEN - PLC,2.0,1.6,2.4,2019-11-22 08:00:00,2019-11-25 17:00:00,,0
1793,1.1.1.5.5.2.2.2.1.25,"Uitvoeren type 2 testen Verkeerscontroller - Hoogtedetectie, VRI palen, Trajectcontrole",4.0,3.2,4.8,2019-11-08 08:00:00,2019-11-13 17:00:00,,0
1794,1.1.1.5.5.2.2.2.1.26,Uitvoeren type 2 testen MASTER-PLC - Supervisie,1.0,0.8,1.2,2019-11-14 08:00:00,2019-11-14 17:00:00,,0
1795,1.1.1.5.5.2.2.2.1.27,Uitvoeren testen type 2 test telefooncentrale - PLC,18.0,14.4,21.6,2019-10-14 08:00:00,2019-11-06 17:00:00,,0
1796,1.1.1.5.5.2.2.2.1.28,Alle type 2 testen uitgevoerd,0.0,0.0,0.0,2020-01-03 17:00:00,2020-01-03 17:00:00,,0
1797,1.1.1.5.5.2.2.2.1.29, Deelinstallaties live,46.0,46.0,46.0,2019-11-05 08:00:00,2020-01-07 17:00:00,,0
1798,1.1.1.5.5.2.2.2.1.29.1,Deelinstallatie live VVDK ,1.0,0.8,1.2,2019-11-22 08:00:00,2019-11-22 17:00:00,,0
1799,1.1.1.5.5.2.2.2.1.29.2,Deelinstallatie live Data netwerk installatie,1.0,0.8,1.2,2019-11-15 08:00:00,2019-11-15 17:00:00,,0
1800,1.1.1.5.5.2.2.2.1.29.3,Deelinstallatie live BBI Brand-blus installatie,1.0,0.8,1.2,2019-11-20 10:00:00,2019-11-21 10:00:00,,0
1801,1.1.1.5.5.2.2.2.1.29.4,Deelinstallatie live Branddetectie installatie,1.0,0.8,1.2,2019-11-05 08:00:00,2019-11-05 17:00:00,,0
1802,1.1.1.5.5.2.2.2.1.29.5,Deelinstallatie live CCTV installatie,1.0,0.8,1.2,2019-11-13 08:00:00,2019-11-13 17:00:00,,0
1803,1.1.1.5.5.2.2.2.1.29.6,Deelinstallatie live HVAC en overdruk vluchtwegen,1.0,0.8,1.2,2019-11-07 08:00:00,2019-11-07 17:00:00,,0
1804,1.1.1.5.5.2.2.2.1.29.7,Deelinstallatie live Omroepinstallatie,1.0,0.8,1.2,2019-12-03 15:00:00,2019-12-04 15:00:00,,0
1805,1.1.1.5.5.2.2.2.1.29.8,Deelinstallatie live Pijl kruisborden,1.0,0.8,1.2,2019-11-26 08:00:00,2019-11-26 17:00:00,,0
1806,1.1.1.5.5.2.2.2.1.29.9,"Deelinstallatie live Pompen installatie, hemelwater",1.0,0.8,1.2,2019-11-08 08:00:00,2019-11-08 17:00:00,,0
1807,1.1.1.5.5.2.2.2.1.29.10,Deelinstallatie live Radio installatie,1.0,0.8,1.2,2020-01-06 08:00:00,2020-01-06 17:00:00,,0
1808,1.1.1.5.5.2.2.2.1.29.11,Deelinstallatie live RWA installatie,1.0,0.8,1.2,2019-11-15 08:00:00,2019-11-15 17:00:00,,0
1809,1.1.1.5.5.2.2.2.1.29.12,Deelinstallatie live Slagboom installatie,1.0,0.8,1.2,2019-11-11 08:00:00,2019-11-11 17:00:00,,0
1810,1.1.1.5.5.2.2.2.1.29.13,Deelinstallatie live Toegangscontrole installatie,1.0,0.8,1.2,2019-11-06 08:00:00,2019-11-06 17:00:00,,0
1811,1.1.1.5.5.2.2.2.1.29.14,Deelinstallatie live VMS borden installatie,1.0,0.8,1.2,2019-11-13 08:00:00,2019-11-13 17:00:00,,0
1812,1.1.1.5.5.2.2.2.1.29.15,Deelinstallatie live Verkeerscontroller installatie,1.0,0.8,1.2,2019-11-15 08:00:00,2019-11-15 17:00:00,,0
1813,1.1.1.5.5.2.2.2.1.29.16,Alle installaties live,1.0,0.8,1.2,2020-01-07 08:00:00,2020-01-07 17:00:00,,0
1814,1.1.1.5.5.2.2.3,TESTEN TYPE 3 (supervisie testen),32.0,32.0,32.0,2019-11-22 10:00:00,2020-01-07 17:00:00,,0
1815,1.1.1.5.5.2.2.3.1,Start type 3 testen,0.0,0.0,0.0,2020-01-03 17:00:00,2020-01-03 17:00:00,,0
1816,1.1.1.5.5.2.2.3.2,Uitvoeren type 3 testen Supervisie,2.0,1.6,2.4,2020-01-06 08:00:00,2020-01-07 17:00:00,,0
1817,1.1.1.5.5.2.2.3.3,Einde type 3 testen,0.0,0.0,0.0,2019-11-22 10:00:00,2019-11-22 10:00:00,,0
1818,1.1.1.5.5.2.2.4,TESTEN TYPE 4 (scenario testen),21.0,21.0,21.0,2019-11-04 08:00:00,2019-12-03 10:00:00,,0
1819,1.1.1.5.5.2.2.4.1,SIL-verificatie,6.0,6.0,6.0,2019-11-22 10:00:00,2019-12-02 10:00:00,,0
1820,1.1.1.5.5.2.2.4.1.1,Start controle SIL  niveau door ProSafe,1.0,0.8,1.2,2019-11-22 10:00:00,2019-11-25 10:00:00,,0
1821,1.1.1.5.5.2.2.4.1.2,SIL verificatie gereed,0.0,0.0,0.0,2019-11-25 10:00:00,2019-11-25 10:00:00,,0
1822,1.1.1.5.5.2.2.4.1.3,Opmaken SIL certificaat door ProSafe en overmaken aan OG,5.0,4.0,6.0,2019-11-25 10:00:00,2019-12-02 10:00:00,,0
1823,1.1.1.5.5.2.2.4.2,Rondgang met Brandweer,1.0,1.0,1.0,2019-11-04 08:00:00,2019-11-04 17:00:00,,0
1824,1.1.1.5.5.2.2.4.2.1,Rondgang met Brandweer door Autotunnel uit hoofde van eis 07828 (verantwoordelijkheid OG),1.0,0.8,1.2,2019-11-04 08:00:00,2019-11-04 17:00:00,,0
1825,1.1.1.5.5.2.2.4.3,"Brandscenario prétesten (alleen ON, OG wordt uitgenodigd aanwezig te zijn)",20.0,20.0,20.0,2019-11-05 08:00:00,2019-12-03 10:00:00,,0
1826,1.1.1.5.5.2.2.4.3.1,Voorbereiding type 4 testen,10.0,8.0,12.0,2019-11-05 08:00:00,2019-11-18 17:00:00,,0
1827,1.1.1.5.5.2.2.4.3.2,Uitvoeren type 4 testen Scenario Detectiegroep tunnel 1,7.0,5.6,8.4,2019-11-22 10:00:00,2019-12-03 10:00:00,,0
1828,1.1.1.5.5.2.2.4.3.3,Uitvoeren type 4 testen Scenario Detectiegroep tunnel 2,7.0,5.6,8.4,2019-11-22 10:00:00,2019-12-03 10:00:00,,0
1829,1.1.1.5.5.2.2.4.3.4,Uitvoeren type 4 testen Scenario Detectiegroep tunnel 3,7.0,5.6,8.4,2019-11-22 10:00:00,2019-12-03 10:00:00,,0
1830,1.1.1.5.5.2.2.4.3.5,Uitvoeren type 4 testen Scenario Detectiegroep tunnel 4,7.0,5.6,8.4,2019-11-22 10:00:00,2019-12-03 10:00:00,,0
1831,1.1.1.5.5.2.2.4.3.6,Uitvoeren type 4 testen Scenario Detectiegroep tunnel 5,7.0,5.6,8.4,2019-11-22 10:00:00,2019-12-03 10:00:00,,0
1832,1.1.1.5.5.2.2.4.3.7,Uitvoeren type 4 testen Scenario Detectiegroep tunnel 6,7.0,5.6,8.4,2019-11-22 10:00:00,2019-12-03 10:00:00,,0
1833,1.1.1.5.5.2.2.4.3.8,Uitvoeren type 4 testen Scenario Detectiegroep tunnel 7,7.0,5.6,8.4,2019-11-22 10:00:00,2019-12-03 10:00:00,,0
1834,1.1.1.5.5.2.2.4.3.9,Uitvoeren type 4 testen Scenario Detectiegroep tunnel 8,7.0,5.6,8.4,2019-11-22 10:00:00,2019-12-03 10:00:00,,0
1835,1.1.1.5.5.2.2.4.4,Functionaliteitstesten,8.0,8.0,8.0,2019-11-21 08:00:00,2019-12-03 10:00:00,,0
1836,1.1.1.5.5.2.2.4.4.1,Uitvoeren functionaliteitstesten met klant,2.0,1.6,2.4,2019-11-21 08:00:00,2019-11-22 17:00:00,,0
1837,1.1.1.5.5.2.2.4.4.2,Indienstname voor type 4 testen tunnel,1.0,1.0,1.0,2019-12-02 10:00:00,2019-12-03 10:00:00,,0
1838,1.1.1.5.5.2.2.4.4.2.1,Indienstname alle installaties,1.0,0.8,1.2,2019-12-02 10:00:00,2019-12-03 10:00:00,,0
1839,1.1.1.5.5.2.3,H.A) TESTEN OG TUNNEL,31.0,31.0,31.0,2019-12-02 10:00:00,2020-01-14 10:00:00,,0
1840,1.1.1.5.5.2.3.1,Brandscenario testen door OG,31.0,31.0,31.0,2019-12-02 10:00:00,2020-01-14 10:00:00,,0
1841,1.1.1.5.5.2.3.1.1,Einde testen ON,0.0,0.0,0.0,2019-12-02 10:00:00,2019-12-02 10:00:00,,0
1842,1.1.1.5.5.2.3.1.2,Uitvoeren testen OG,31.0,24.8,37.2,2019-12-02 10:00:00,2020-01-14 10:00:00,,0
1843,1.1.1.5.5.2.4,I) OPLEIDING,31.0,31.0,31.0,2019-11-27 08:00:00,2020-01-08 17:00:00,,0
1844,1.1.1.5.5.2.4.1,Opleiding on site volgens Detailplanning Opleiding Autotunnels,31.0,24.8,37.2,2019-11-27 08:00:00,2020-01-08 17:00:00,,0
1845,1.1.1.5.5.2.5,J) Opmaken CE en Arei-dossiers,60.0,60.0,60.0,2019-09-02 08:00:00,2019-11-22 17:00:00,,0
1846,1.1.1.5.5.2.5.1,Samenstellen CE-dossier,60.0,48.0,72.0,2019-09-02 08:00:00,2019-11-22 17:00:00,,0
1847,1.1.1.5.5.2.5.2,Samenstellen Arei-dossier (info bij FGI),60.0,48.0,72.0,2019-09-02 08:00:00,2019-11-22 17:00:00,,0
1848,1.1.1.5.5.3,33 PARKING,918.0,918.0,918.0,2016-09-30 08:00:00,2020-04-07 17:00:00,,0
1849,1.1.1.5.5.3.1,F.B) MILESTONES TESTEN PARKING (techniek klaar voor type 1 test),847.0,847.0,847.0,2016-09-30 08:00:00,2019-12-30 17:00:00,,0
1850,1.1.1.5.5.3.1.1,NETWERK / FO ( BEKABELING ),27.0,27.0,27.0,2019-09-30 08:00:00,2019-11-05 17:00:00,,0
1851,1.1.1.5.5.3.1.1.1,Subring 1 : Rack P0 - P2.1 - P2.2 - P2.3 - T2 - T3,27.0,27.0,27.0,2019-09-30 08:00:00,2019-11-05 17:00:00,,0
1852,1.1.1.5.5.3.1.1.1.1,FO (fiber optic) getrokken (P0 - P2.1 - P2.2 - P2.3 - T2 - T3),5.0,4.0,6.0,2019-09-30 08:00:00,2019-10-04 17:00:00,,0
1853,1.1.1.5.5.3.1.1.1.2,FO (fiber optic) afgelast (P0 - P2.1 - P2.2 - P2.3 - T2 - T3),5.0,4.0,6.0,2019-10-30 08:00:00,2019-11-05 17:00:00,,0
1854,1.1.1.5.5.3.1.1.2,Subring 2 : Rack P0 - P1 - P3.1 - P3.2 - T3,27.0,27.0,27.0,2019-09-30 08:00:00,2019-11-05 17:00:00,,0
1855,1.1.1.5.5.3.1.1.2.1,FO (fiber optic) getrokken (P0 - P1 - P3.1 - P3.2 - T3),5.0,4.0,6.0,2019-09-30 08:00:00,2019-10-04 17:00:00,,0
1856,1.1.1.5.5.3.1.1.2.2,FO (fiber optic) afgelast (P0 - P1 - P3.1 - P3.2 - T3),5.0,4.0,6.0,2019-10-30 08:00:00,2019-11-05 17:00:00,,0
1857,1.1.1.5.5.3.1.1.3,Subring 3 : Rack P0 - P1 - P3.1 - P3.2 - T3,27.0,27.0,27.0,2019-09-30 08:00:00,2019-11-05 17:00:00,,0
1858,1.1.1.5.5.3.1.1.3.1,FO (fiber optic) getrokken (P0 - P1 - P3.1 - P3.2 - T3),5.0,4.0,6.0,2019-09-30 08:00:00,2019-10-04 17:00:00,,0
1859,1.1.1.5.5.3.1.1.3.2,FO (fiber optic) afgelast (P0 - P1 - P3.1 - P3.2 - T3),5.0,4.0,6.0,2019-10-30 08:00:00,2019-11-05 17:00:00,,0
1860,1.1.1.5.5.3.1.2,BORDEN VVDK,24.0,24.0,24.0,2019-10-30 08:00:00,2019-12-02 17:00:00,,0
1861,1.1.1.5.5.3.1.2.1,Hoofdbord NO BREAK,5.0,4.0,6.0,2019-11-26 08:00:00,2019-12-02 17:00:00,,0
1862,1.1.1.5.5.3.1.2.2,B1 Wachterslokaal HN-VN,24.0,24.0,24.0,2019-10-30 08:00:00,2019-12-02 17:00:00,,0
1863,1.1.1.5.5.3.1.2.2.1,verbinding tussen bord B1 en datarack ICT ,1.0,0.8,1.2,2019-10-30 08:00:00,2019-10-30 17:00:00,,0
1864,1.1.1.5.5.3.1.2.2.2,Secundair Bord B1 volledig aangesloten / onder spanning,5.0,4.0,6.0,2019-11-26 08:00:00,2019-12-02 17:00:00,,0
1865,1.1.1.5.5.3.1.2.2.3,Secundair Bord No Break volledig aangesloten / onder spanning,5.0,4.0,6.0,2019-11-26 08:00:00,2019-12-02 17:00:00,,0
1866,1.1.1.5.5.3.1.2.3,B2 Batterijladers HN-VN,24.0,24.0,24.0,2019-10-30 08:00:00,2019-12-02 17:00:00,,0
1867,1.1.1.5.5.3.1.2.3.1,Secundair Bord B2 volledig aangesloten / onder spanning,5.0,4.0,6.0,2019-11-26 08:00:00,2019-12-02 17:00:00,,0
1868,1.1.1.5.5.3.1.2.3.2,verbinding tussen bord B2 en datarack ICT ,1.0,0.8,1.2,2019-10-30 08:00:00,2019-10-30 17:00:00,,0
1869,1.1.1.5.5.3.1.2.4,B3 Parking Zuid HN-VN,24.0,24.0,24.0,2019-10-30 08:00:00,2019-12-02 17:00:00,,0
1870,1.1.1.5.5.3.1.2.4.1,Secundair Bord B3 volledig aangesloten / onder spanning,5.0,4.0,6.0,2019-11-26 08:00:00,2019-12-02 17:00:00,,0
1871,1.1.1.5.5.3.1.2.4.2,verbinding tussen bord B3en datarack ICT ,1.0,0.8,1.2,2019-10-30 08:00:00,2019-10-30 17:00:00,,0
1872,1.1.1.5.5.3.1.2.5,B7 Parking Noord - HN-VN,24.0,24.0,24.0,2019-10-30 08:00:00,2019-12-02 17:00:00,,0
1873,1.1.1.5.5.3.1.2.5.1,Secundair Bord B7 volledig aangesloten / onder spanning,5.0,4.0,6.0,2019-11-26 08:00:00,2019-12-02 17:00:00,,0
1874,1.1.1.5.5.3.1.2.5.2,verbinding tussen bord B7 en datarack ICT ,1.0,0.8,1.2,2019-10-30 08:00:00,2019-10-30 17:00:00,,0
1875,1.1.1.5.5.3.1.2.6,B8 Parking Zuid - HN-VN,24.0,24.0,24.0,2019-10-30 08:00:00,2019-12-02 17:00:00,,0
1876,1.1.1.5.5.3.1.2.6.1,Secundair Bord B8 volledig aangesloten / onder spanning,5.0,4.0,6.0,2019-11-26 08:00:00,2019-12-02 17:00:00,,0
1877,1.1.1.5.5.3.1.2.6.2,verbinding tussen bord B8en datarack ICT ,1.0,0.8,1.2,2019-10-30 08:00:00,2019-10-30 17:00:00,,0
1878,1.1.1.5.5.3.1.2.7,B9 Parking Noord HN-VN,24.0,24.0,24.0,2019-10-30 08:00:00,2019-12-02 17:00:00,,0
1879,1.1.1.5.5.3.1.2.7.1,Secundair Bord B9 volledig aangesloten / onder spanning,5.0,4.0,6.0,2019-11-26 08:00:00,2019-12-02 17:00:00,,0
1880,1.1.1.5.5.3.1.2.7.2,verbinding tussen bord B9 en datarack ICT ,1.0,0.8,1.2,2019-10-30 08:00:00,2019-10-30 17:00:00,,0
1881,1.1.1.5.5.3.1.2.8,B10 Parking Zuid HN-VN,24.0,24.0,24.0,2019-10-30 08:00:00,2019-12-02 17:00:00,,0
1882,1.1.1.5.5.3.1.2.8.1,bord volledig aangesloten / onder spanning,5.0,4.0,6.0,2019-11-26 08:00:00,2019-12-02 17:00:00,,0
1883,1.1.1.5.5.3.1.2.8.2,verbinding tussen bord B10 en datarack ICT ,1.0,0.8,1.2,2019-10-30 08:00:00,2019-10-30 17:00:00,,0
1884,1.1.1.5.5.3.1.2.9,FRSVLT Sanitair Parking HN-VN,24.0,24.0,24.0,2019-10-30 08:00:00,2019-12-02 17:00:00,,0
1885,1.1.1.5.5.3.1.2.9.1,bord volledig aangesloten / onder spanning,5.0,4.0,6.0,2019-11-26 08:00:00,2019-12-02 17:00:00,,0
1886,1.1.1.5.5.3.1.2.9.2,verbinding tussen bord BO5 en datarack ICT ,1.0,0.8,1.2,2019-10-30 08:00:00,2019-10-30 17:00:00,,0
1887,1.1.1.5.5.3.1.3,"BORDEN / DATARACKS (secundaire racks, verspreid over de verdiepingen)",47.0,47.0,47.0,2019-10-03 08:00:00,2019-12-06 17:00:00,,0
1888,1.1.1.5.5.3.1.3.1,P0,4.0,4.0,4.0,2019-12-02 17:00:00,2019-12-06 17:00:00,,0
1889,1.1.1.5.5.3.1.3.1.1,Secundair databord P0 volledig aangesloten,0.0,0.0,0.0,2019-12-02 17:00:00,2019-12-02 17:00:00,,0
1890,1.1.1.5.5.3.1.3.1.2,Switch P0 geconfigureerd,2.0,1.6,2.4,2019-12-03 08:00:00,2019-12-04 17:00:00,,0
1891,1.1.1.5.5.3.1.3.1.3,MasterPLC geinstalleerd,2.0,1.6,2.4,2019-12-03 08:00:00,2019-12-04 17:00:00,,0
1892,1.1.1.5.5.3.1.3.1.4,MasterPLC geprogrammeerd,2.0,1.6,2.4,2019-12-05 08:00:00,2019-12-06 17:00:00,,0
1893,1.1.1.5.5.3.1.3.2,P1 ,1.0,1.0,1.0,2019-12-02 17:00:00,2019-12-03 17:00:00,,0
1894,1.1.1.5.5.3.1.3.2.1,Secundair databord P1 volledig aangesloten,0.0,0.0,0.0,2019-12-02 17:00:00,2019-12-02 17:00:00,,0
1895,1.1.1.5.5.3.1.3.2.2,Switch P1 geconfigureerd,1.0,0.8,1.2,2019-12-03 08:00:00,2019-12-03 17:00:00,,0
1896,1.1.1.5.5.3.1.3.3,P2.1,1.0,1.0,1.0,2019-12-02 17:00:00,2019-12-03 17:00:00,,0
1897,1.1.1.5.5.3.1.3.3.1,Secundair databord P2.1 volledig aangesloten,0.0,0.0,0.0,2019-12-02 17:00:00,2019-12-02 17:00:00,,0
1898,1.1.1.5.5.3.1.3.3.2,Switch BOZ21 geconfigureerd,1.0,0.8,1.2,2019-12-03 08:00:00,2019-12-03 17:00:00,,0
1899,1.1.1.5.5.3.1.3.4,P2.2,1.0,1.0,1.0,2019-12-02 17:00:00,2019-12-03 17:00:00,,0
1900,1.1.1.5.5.3.1.3.4.1,Secundair databord P2.2 volledig aangesloten,0.0,0.0,0.0,2019-12-02 17:00:00,2019-12-02 17:00:00,,0
1901,1.1.1.5.5.3.1.3.4.2,Switch P2.2 geconfigureerd,1.0,0.8,1.2,2019-12-03 08:00:00,2019-12-03 17:00:00,,0
1902,1.1.1.5.5.3.1.3.5,P2.3,1.0,1.0,1.0,2019-12-02 17:00:00,2019-12-03 17:00:00,,0
1903,1.1.1.5.5.3.1.3.5.1,Secundair databord P2.3 volledig aangesloten,0.0,0.0,0.0,2019-12-02 17:00:00,2019-12-02 17:00:00,,0
1904,1.1.1.5.5.3.1.3.5.2,Switch P2.3 geconfigureerd,1.0,0.8,1.2,2019-12-03 08:00:00,2019-12-03 17:00:00,,0
1905,1.1.1.5.5.3.1.3.6,P3.1,0.0,0.0,0.0,2019-12-02 17:00:00,2019-12-02 17:00:00,,0
1906,1.1.1.5.5.3.1.3.6.1,Secundair databord P3.1 volledig aangesloten,0.0,0.0,0.0,2019-12-02 17:00:00,2019-12-02 17:00:00,,0
1907,1.1.1.5.5.3.1.3.6.2,switch p3.1 geconfigureerd,0.0,0.0,0.0,2019-12-02 17:00:00,2019-12-02 17:00:00,,0
1908,1.1.1.5.5.3.1.3.7,P3.2,44.0,44.0,44.0,2019-10-03 08:00:00,2019-12-03 17:00:00,,0
1909,1.1.1.5.5.3.1.3.7.1,Secundair databord P3.2 volledig aangesloten,0.0,0.0,0.0,2019-12-02 17:00:00,2019-12-02 17:00:00,,0
1910,1.1.1.5.5.3.1.3.7.2,switch P3.2 geconfigureerd,1.0,0.8,1.2,2019-12-03 08:00:00,2019-12-03 17:00:00,,0
1911,1.1.1.5.5.3.1.3.7.3,Alle borden ,1.0,0.8,1.2,2019-10-03 08:00:00,2019-10-03 17:00:00,,0
1912,1.1.1.5.5.3.1.4,BRANDDETECTIE PARKING,110.0,110.0,110.0,2019-07-29 17:00:00,2019-12-30 17:00:00,,0
1913,1.1.1.5.5.3.1.4.1,toestellen (branddetectoren / handbrandmelders) geplaatst niveau -1,0.0,0.0,0.0,2019-07-29 17:00:00,2019-07-29 17:00:00,,0
1914,1.1.1.5.5.3.1.4.2,toestellen (branddetectoren / handbrandmelders) geplaatst niveau -2,0.0,0.0,0.0,2019-08-29 17:00:00,2019-08-29 17:00:00,,0
1915,1.1.1.5.5.3.1.4.3,toestellen (branddetectoren / handbrandmelders) geplaatst niveau -3,0.0,0.0,0.0,2019-09-27 17:00:00,2019-09-27 17:00:00,,0
1916,1.1.1.5.5.3.1.4.4,parking brandcentrale in dienst,20.0,16.0,24.0,2019-12-03 08:00:00,2019-12-30 17:00:00,,0
1917,1.1.1.5.5.3.1.5,OMROEPINSTALLATIE PARKING,64.0,64.0,64.0,2019-07-29 17:00:00,2019-10-25 17:00:00,,0
1918,1.1.1.5.5.3.1.5.1,luidsprekers geplaatst niveau -1,0.0,0.0,0.0,2019-07-29 17:00:00,2019-07-29 17:00:00,,0
1919,1.1.1.5.5.3.1.5.2,luidsprekers geplaatst niveau -2,0.0,0.0,0.0,2019-08-29 17:00:00,2019-08-29 17:00:00,,0
1920,1.1.1.5.5.3.1.5.3,luidsprekers geplaatst niveau -3,0.0,0.0,0.0,2019-09-27 17:00:00,2019-09-27 17:00:00,,0
1921,1.1.1.5.5.3.1.5.4,centraal rack geplaatst  en aangesloten (in wachterslokaal),20.0,16.0,24.0,2019-09-30 08:00:00,2019-10-25 17:00:00,,0
1922,1.1.1.5.5.3.1.6,CCTV-INSTALLATIE  parking (bekabeling),0.0,0.0,0.0,2019-12-02 17:00:00,2019-12-02 17:00:00,,0
1923,1.1.1.5.5.3.1.7,RADIO,66.0,66.0,66.0,2019-09-13 17:00:00,2019-12-16 17:00:00,,0
1924,1.1.1.5.5.3.1.7.1,centraal rack geplaatst en aangesloten (in wachterslokaal),0.0,0.0,0.0,2019-09-13 17:00:00,2019-09-13 17:00:00,,0
1925,1.1.1.5.5.3.1.7.2,antennes geplaatst niveau -1,0.0,0.0,0.0,2019-11-14 17:00:00,2019-11-14 17:00:00,,0
1926,1.1.1.5.5.3.1.7.3,antennes geplaatst niveau -2,0.0,0.0,0.0,2019-11-29 17:00:00,2019-11-29 17:00:00,,0
1927,1.1.1.5.5.3.1.7.4,antennes geplaatst niveau -3,0.0,0.0,0.0,2019-12-09 17:00:00,2019-12-09 17:00:00,,0
1928,1.1.1.5.5.3.1.7.5,indienstname van centraal rack,5.0,4.0,6.0,2019-12-10 08:00:00,2019-12-16 17:00:00,,0
1929,1.1.1.5.5.3.1.8,TOEGANGSCONTROLE,14.0,14.0,14.0,2019-09-13 17:00:00,2019-10-03 17:00:00,,0
1930,1.1.1.5.5.3.1.8.1,P/BOZ1.2,0.0,0.0,0.0,2019-10-03 17:00:00,2019-10-03 17:00:00,,0
1931,1.1.1.5.5.3.1.8.2,P/BOZ1.1,0.0,0.0,0.0,2019-10-03 17:00:00,2019-10-03 17:00:00,,0
1932,1.1.1.5.5.3.1.8.3,P/BOZ2.1,0.0,0.0,0.0,2019-10-03 17:00:00,2019-10-03 17:00:00,,0
1933,1.1.1.5.5.3.1.8.4,P/BOZ3.1,0.0,0.0,0.0,2019-09-13 17:00:00,2019-09-13 17:00:00,,0
1934,1.1.1.5.5.3.1.9,TELEFONIE,0.0,0.0,0.0,2019-10-14 17:00:00,2019-10-14 17:00:00,,0
1935,1.1.1.5.5.3.1.9.1,telefoons geplaatst niveau -1,0.0,0.0,0.0,2019-10-14 17:00:00,2019-10-14 17:00:00,,0
1936,1.1.1.5.5.3.1.9.2,telefoons geplaatst niveau -2,0.0,0.0,0.0,2019-10-14 17:00:00,2019-10-14 17:00:00,,0
1937,1.1.1.5.5.3.1.9.3,telefoons geplaatst niveau -3,0.0,0.0,0.0,2019-10-14 17:00:00,2019-10-14 17:00:00,,0
1938,1.1.1.5.5.3.1.9.4,centraal rack geplaatst en aangesloten,0.0,0.0,0.0,2019-10-14 17:00:00,2019-10-14 17:00:00,,0
1939,1.1.1.5.5.3.1.10,LIFTEN,3.0,3.0,3.0,2019-10-23 08:00:00,2019-10-25 17:00:00,,0
1940,1.1.1.5.5.3.1.10.1,LIFT 4,3.0,3.0,3.0,2019-10-23 08:00:00,2019-10-25 17:00:00,,0
1941,1.1.1.5.5.3.1.10.1.1,lift / stuurkast geplaatst - onder spanning,2.0,1.6,2.4,2019-10-23 08:00:00,2019-10-24 17:00:00,,0
1942,1.1.1.5.5.3.1.10.1.2,connectie met netwerk,1.0,0.8,1.2,2019-10-25 08:00:00,2019-10-25 17:00:00,,0
1943,1.1.1.5.5.3.1.10.2,LIFT 5,3.0,3.0,3.0,2019-10-23 08:00:00,2019-10-25 17:00:00,,0
1944,1.1.1.5.5.3.1.10.2.1,lift / stuurkast geplaatst - onder spanning,2.0,1.6,2.4,2019-10-23 08:00:00,2019-10-24 17:00:00,,0
1945,1.1.1.5.5.3.1.10.2.2,connectie met netwerk,1.0,0.8,1.2,2019-10-25 08:00:00,2019-10-25 17:00:00,,0
1946,1.1.1.5.5.3.1.11,VMS Borden,0.0,0.0,0.0,2019-10-29 17:00:00,2019-10-29 17:00:00,,0
1947,1.1.1.5.5.3.1.11.1,parking,0.0,0.0,0.0,2019-10-29 17:00:00,2019-10-29 17:00:00,,0
1948,1.1.1.5.5.3.1.11.2,connectie met netwerk /PLC,0.0,0.0,0.0,2019-10-29 17:00:00,2019-10-29 17:00:00,,0
1949,1.1.1.5.5.3.1.12,ROOKGORDIJNEN,817.0,817.0,817.0,2016-09-30 08:00:00,2019-11-18 17:00:00,,0
1950,1.1.1.5.5.3.1.12.1,ROOKGORDIJNEN niv -1,2.0,1.6,2.4,2019-09-30 08:00:00,2019-10-01 17:00:00,,0
1951,1.1.1.5.5.3.1.12.2,ROOKGORDIJNEN niv -2,2.0,1.6,2.4,2016-10-11 08:00:00,2016-10-12 17:00:00,,0
1952,1.1.1.5.5.3.1.12.3,ROOKGORDIJNEN niv -3,2.0,1.6,2.4,2016-09-30 08:00:00,2016-10-03 17:00:00,,0
1953,1.1.1.5.5.3.1.12.4,connectie met netwerk / PLC / datarack,2.0,1.6,2.4,2019-11-15 08:00:00,2019-11-18 17:00:00,,0
1954,1.1.1.5.5.3.1.13,POORTEN,24.0,24.0,24.0,2019-09-27 08:00:00,2019-10-30 17:00:00,,0
1955,1.1.1.5.5.3.1.13.1,Poort PA.1.01+AP1,2.0,1.6,2.4,2019-09-27 08:00:00,2019-09-30 17:00:00,,0
1956,1.1.1.5.5.3.1.13.2,Poort PA.2.01+AP1,2.0,1.6,2.4,2019-09-27 08:00:00,2019-09-30 17:00:00,,0
1957,1.1.1.5.5.3.1.13.3,"connectie met netwerk / PLC / datarack, montage gereed",1.0,0.8,1.2,2019-10-30 08:00:00,2019-10-30 17:00:00,,0
1958,1.1.1.5.5.3.1.14,HVAC,23.0,23.0,23.0,2019-10-29 17:00:00,2019-11-29 17:00:00,,0
1959,1.1.1.5.5.3.1.14.1,P/HVAC - luchtgroep 7 (naam ??),0.0,0.0,0.0,2019-11-29 17:00:00,2019-11-29 17:00:00,,0
1960,1.1.1.5.5.3.1.14.2,connectie met netwerk / PLC / datarack,0.0,0.0,0.0,2019-10-29 17:00:00,2019-10-29 17:00:00,,0
1961,1.1.1.5.5.3.1.15,RWA (incl. OVERDRUK / GASDETECTIE),0.0,0.0,0.0,2019-11-29 17:00:00,2019-11-29 17:00:00,,0
1962,1.1.1.5.5.3.1.15.1,P/RWA1,0.0,0.0,0.0,2019-11-29 17:00:00,2019-11-29 17:00:00,,0
1963,1.1.1.5.5.3.1.15.2,P/RWA2+4,0.0,0.0,0.0,2019-11-29 17:00:00,2019-11-29 17:00:00,,0
1964,1.1.1.5.5.3.1.15.3,P/RWA3,0.0,0.0,0.0,2019-11-29 17:00:00,2019-11-29 17:00:00,,0
1965,1.1.1.5.5.3.1.16,BBI,0.0,0.0,0.0,2019-10-29 17:00:00,2019-10-29 17:00:00,,0
1966,1.1.1.5.5.3.1.16.1,stuurkast BBI geinstalleerd,0.0,0.0,0.0,2019-10-29 17:00:00,2019-10-29 17:00:00,,0
1967,1.1.1.5.5.3.1.17,POMPEN,6.0,6.0,6.0,2019-12-02 08:00:00,2019-12-09 17:00:00,,0
1968,1.1.1.5.5.3.1.17.1,Opvoerpomp debiet RWA koker,1.0,0.8,1.2,2019-12-02 08:00:00,2019-12-02 17:00:00,,0
1969,1.1.1.5.5.3.1.17.2,opvoerpomp kl debier kuislokaal,1.0,0.8,1.2,2019-12-02 08:00:00,2019-12-02 17:00:00,,0
1970,1.1.1.5.5.3.1.17.3,DWA FRV,0.0,0.0,0.0,2019-12-09 17:00:00,2019-12-09 17:00:00,,0
1971,1.1.1.5.5.3.1.18,VERDWIJNPALEN,2.0,2.0,2.0,2019-12-02 08:00:00,2019-12-03 17:00:00,,0
1972,1.1.1.5.5.3.1.18.1,Verdwijnpaal VP2.01 geplaatst en aangesloten,2.0,1.6,2.4,2019-12-02 08:00:00,2019-12-03 17:00:00,,0
1973,1.1.1.5.5.3.1.18.2,Verdwijnpaal VP2.02 geplaatst en aangesloten,2.0,1.6,2.4,2019-12-02 08:00:00,2019-12-03 17:00:00,,0
1974,1.1.1.5.5.3.1.18.3,Verdwijnpaal VP2.03 geplaatst en aangesloten,2.0,1.6,2.4,2019-12-02 08:00:00,2019-12-03 17:00:00,,0
1975,1.1.1.5.5.3.1.18.4,Verdwijnpaal VP3.01 geplaatst en aangesloten,2.0,1.6,2.4,2019-12-02 08:00:00,2019-12-03 17:00:00,,0
1976,1.1.1.5.5.3.1.18.5,Verdwijnpaal VP3.02 geplaatst en aangesloten,2.0,1.6,2.4,2019-12-02 08:00:00,2019-12-03 17:00:00,,0
1977,1.1.1.5.5.3.2,G.B) TESTEN ON PARKING,158.0,158.0,158.0,2019-08-30 08:00:00,2020-04-07 17:00:00,,0
1978,1.1.1.5.5.3.2.1,TESTEN TYPE 1 (technische testen per techniek),97.0,97.0,97.0,2019-08-30 08:00:00,2020-01-13 17:00:00,,0
1979,1.1.1.5.5.3.2.1.1,Uitvoeren FAT Software (type 1 test software),20.0,16.0,24.0,2019-08-30 08:00:00,2019-09-26 17:00:00,,0
1980,1.1.1.5.5.3.2.1.2,NETWERK / FO ( BEKABELING ),1.0,1.0,1.0,2019-12-05 08:00:00,2019-12-05 17:00:00,,0
1981,1.1.1.5.5.3.2.1.2.1,Uitvoeren type 1 test : Subring 1 : Rack P0 - P2.1 - P2.2 - P2.3 - T2 - T3,1.0,0.8,1.2,2019-12-05 08:00:00,2019-12-05 17:00:00,,0
1982,1.1.1.5.5.3.2.1.2.2,Uitvoeren type 1 test : Subring 2 : Rack P0 - P1 - P3.1 - P3.2 - T3,1.0,0.8,1.2,2019-12-05 08:00:00,2019-12-05 17:00:00,,0
1983,1.1.1.5.5.3.2.1.2.3,Uitvoeren type 1 test : Subring 3 : Rack P0 - P1 - P3.1 - P3.2 - T3,1.0,0.8,1.2,2019-12-05 08:00:00,2019-12-05 17:00:00,,0
1984,1.1.1.5.5.3.2.1.3,BORDEN VVDK (incl. PIJL-KRUIS BORDEN),1.0,1.0,1.0,2019-12-03 08:00:00,2019-12-03 17:00:00,,0
1985,1.1.1.5.5.3.2.1.3.1,Uitvoeren type 1 test : B1 Wachterslokaal HN-VN,1.0,0.8,1.2,2019-12-03 08:00:00,2019-12-03 17:00:00,,0
1986,1.1.1.5.5.3.2.1.3.2,Uitvoeren type 1 test : No Break Wachterslokaal,1.0,0.8,1.2,2019-12-03 08:00:00,2019-12-03 17:00:00,,0
1987,1.1.1.5.5.3.2.1.3.3,Uitvoeren type 1 test : B2 Batterijladers HN-VN,1.0,0.8,1.2,2019-12-03 08:00:00,2019-12-03 17:00:00,,0
1988,1.1.1.5.5.3.2.1.3.4,Uitvoeren type 1 test : B3 Parking Zuid HN-VN,1.0,0.8,1.2,2019-12-03 08:00:00,2019-12-03 17:00:00,,0
1989,1.1.1.5.5.3.2.1.3.5,Uitvoeren type 1 test : B7 Parking Noord - HN-VN,1.0,0.8,1.2,2019-12-03 08:00:00,2019-12-03 17:00:00,,0
1990,1.1.1.5.5.3.2.1.3.6,Uitvoeren type 1 test : B8 Parking Zuid - HN-VN,1.0,0.8,1.2,2019-12-03 08:00:00,2019-12-03 17:00:00,,0
1991,1.1.1.5.5.3.2.1.3.7,Uitvoeren type 1 test : B9 Parking Noord HN-VN,1.0,0.8,1.2,2019-12-03 08:00:00,2019-12-03 17:00:00,,0
1992,1.1.1.5.5.3.2.1.3.8,Uitvoeren type 1 test : B10 Parking Zuid HN-VN,1.0,0.8,1.2,2019-12-03 08:00:00,2019-12-03 17:00:00,,0
1993,1.1.1.5.5.3.2.1.3.9,Uitvoeren type 1 test : FRSVLT Sanitair Parking HN-VN,1.0,0.8,1.2,2019-12-03 08:00:00,2019-12-03 17:00:00,,0
1994,1.1.1.5.5.3.2.1.4,"BORDEN / DATARACKS (secundaire racks, verspreid over de verdiepingen)",6.0,6.0,6.0,2019-12-03 08:00:00,2019-12-10 17:00:00,,0
1995,1.1.1.5.5.3.2.1.4.1,Uitvoeren type 1 test : P0,2.0,1.6,2.4,2019-12-09 08:00:00,2019-12-10 17:00:00,,0
1996,1.1.1.5.5.3.2.1.4.2,Uitvoeren type 1 test : P1,2.0,1.6,2.4,2019-12-04 08:00:00,2019-12-05 17:00:00,,0
1997,1.1.1.5.5.3.2.1.4.3,Uitvoeren type 1 test : P2.1,2.0,1.6,2.4,2019-12-04 08:00:00,2019-12-05 17:00:00,,0
1998,1.1.1.5.5.3.2.1.4.4,Uitvoeren type 1 test : P2.2,2.0,1.6,2.4,2019-12-04 08:00:00,2019-12-05 17:00:00,,0
1999,1.1.1.5.5.3.2.1.4.5,Uitvoeren type 1 test : P2.3,2.0,1.6,2.4,2019-12-04 08:00:00,2019-12-05 17:00:00,,0
2000,1.1.1.5.5.3.2.1.4.6,Uitvoeren type 1 test : P3.1,2.0,1.6,2.4,2019-12-03 08:00:00,2019-12-04 17:00:00,,0
2001,1.1.1.5.5.3.2.1.4.7,Uitvoeren type 1 test : P3.2,2.0,1.6,2.4,2019-12-04 08:00:00,2019-12-05 17:00:00,,0
2002,1.1.1.5.5.3.2.1.5,BRANDDETECTIE TUNNEL,5.0,5.0,5.0,2020-01-07 08:00:00,2020-01-13 17:00:00,,0
2003,1.1.1.5.5.3.2.1.5.1,Uitvoeren testen type 1 : Test brandcentrale,5.0,4.0,6.0,2020-01-07 08:00:00,2020-01-13 17:00:00,,0
2004,1.1.1.5.5.3.2.1.6,OMROEPINSTALLATIE TUNNEL,5.0,5.0,5.0,2019-11-05 08:00:00,2019-11-11 17:00:00,,0
2005,1.1.1.5.5.3.2.1.6.1,Uitvoeren testen type 1 : Test omroepinstallatie,5.0,4.0,6.0,2019-11-05 08:00:00,2019-11-11 17:00:00,,0
2006,1.1.1.5.5.3.2.1.7,CCTV-INSTALLATIE,10.0,8.0,12.0,2019-12-02 08:00:00,2019-12-13 17:00:00,,0
2007,1.1.1.5.5.3.2.1.8,RADIO,1.0,1.0,1.0,2019-12-24 08:00:00,2019-12-24 17:00:00,,0
2008,1.1.1.5.5.3.2.1.8.1,Uitvoeren testen type 1 : Test Radiocom,1.0,0.8,1.2,2019-12-24 08:00:00,2019-12-24 17:00:00,,0
2009,1.1.1.5.5.3.2.1.9,TOEGANGSCONTROLE,1.0,1.0,1.0,2019-12-16 08:00:00,2019-12-16 17:00:00,,0
2010,1.1.1.5.5.3.2.1.9.1,Uitvoeren type 1 test : P/BOZ1.2,1.0,0.8,1.2,2019-12-16 08:00:00,2019-12-16 17:00:00,,0
2011,1.1.1.5.5.3.2.1.9.2,Uitvoeren type 1 test : P/BOZ1.1,1.0,0.8,1.2,2019-12-16 08:00:00,2019-12-16 17:00:00,,0
2012,1.1.1.5.5.3.2.1.9.3,Uitvoeren type 1 test : P/BOZ2.1,1.0,0.8,1.2,2019-12-16 08:00:00,2019-12-16 17:00:00,,0
2013,1.1.1.5.5.3.2.1.9.4,Uitvoeren type 1 test : P/BOZ3.1,1.0,0.8,1.2,2019-12-16 08:00:00,2019-12-16 17:00:00,,0
2014,1.1.1.5.5.3.2.1.10,TELEFONIE,1.0,1.0,1.0,2019-11-15 08:00:00,2019-11-15 17:00:00,,0
2015,1.1.1.5.5.3.2.1.10.1,Uitvoeren testen type 1 : telefonie,1.0,0.8,1.2,2019-11-15 08:00:00,2019-11-15 17:00:00,,0
2016,1.1.1.5.5.3.2.1.11,SLAGBOMEN,1.0,1.0,1.0,2019-11-25 08:00:00,2019-11-25 17:00:00,,0
2017,1.1.1.5.5.3.2.1.11.1,Uitvoeren type 1 test : Slagbomen niveau -1 - Enkel bekabeling,1.0,0.8,1.2,2019-11-25 08:00:00,2019-11-25 17:00:00,,0
2018,1.1.1.5.5.3.2.1.11.2,Uitvoeren type 1 test : Slagbomen niveau -2 - Enkel bekabeling,1.0,0.8,1.2,2019-11-25 08:00:00,2019-11-25 17:00:00,,0
2019,1.1.1.5.5.3.2.1.11.3,Uitvoeren type 1 test : Slagbomen niveau -3 - Enkel bekabeling,1.0,0.8,1.2,2019-11-25 08:00:00,2019-11-25 17:00:00,,0
2020,1.1.1.5.5.3.2.1.12,LIFTEN,1.0,1.0,1.0,2019-11-04 08:00:00,2019-11-04 17:00:00,,0
2021,1.1.1.5.5.3.2.1.12.1,Uitvoeren type 1 test : LIFT 4,1.0,0.8,1.2,2019-11-04 08:00:00,2019-11-04 17:00:00,,0
2022,1.1.1.5.5.3.2.1.12.2,Uitvoeren type 1 test : LIFT 5,1.0,0.8,1.2,2019-11-04 08:00:00,2019-11-04 17:00:00,,0
2023,1.1.1.5.5.3.2.1.13,VMS Borden,1.0,1.0,1.0,2019-11-06 08:00:00,2019-11-06 17:00:00,,0
2024,1.1.1.5.5.3.2.1.13.1,Uitvoeren testen type 1 : VMS Borden,1.0,0.8,1.2,2019-11-06 08:00:00,2019-11-06 17:00:00,,0
2025,1.1.1.5.5.3.2.1.14,ROOKGORDIJNEN,2.0,2.0,2.0,2019-11-29 08:00:00,2019-12-02 17:00:00,,0
2026,1.1.1.5.5.3.2.1.14.1,Uitvoeren type 1 test - Rookgordijn 03++1PA+RS6- Parking,2.0,1.6,2.4,2019-11-29 08:00:00,2019-12-02 17:00:00,,0
2027,1.1.1.5.5.3.2.1.14.2,Uitvoeren type 1 test - Rookgodrijn 003++1PA+RS7 - Parking,2.0,1.6,2.4,2019-11-29 08:00:00,2019-12-02 17:00:00,,0
2028,1.1.1.5.5.3.2.1.14.3,Uitvoeren type 1 test - Rookgordijn 03++3PA+RS20- Parking,2.0,1.6,2.4,2019-11-29 08:00:00,2019-12-02 17:00:00,,0
2029,1.1.1.5.5.3.2.1.14.4,SAT (type 1 test)  - rookgordijn 03++2PN+RS21 – station,4.0,3.2,4.8,2019-11-29 08:00:00,2019-11-29 12:00:00,,0
2030,1.1.1.5.5.3.2.1.14.5,SAT (type 1 test)  - rookgordijn 03++2PA+RS22 – station,4.0,3.2,4.8,2019-11-29 08:00:00,2019-11-29 12:00:00,,0
2031,1.1.1.5.5.3.2.1.14.6,SAT (type 1 test)  - rookgordijn 03++2PA+RS23 – station,4.0,3.2,4.8,2019-11-29 08:00:00,2019-11-29 12:00:00,,0
2032,1.1.1.5.5.3.2.1.15,POORTEN,2.0,2.0,2.0,2019-11-27 08:00:00,2019-11-28 17:00:00,,0
2033,1.1.1.5.5.3.2.1.15.1,Uitvoeren type 1 test : POORTEN niv -1 (hekken),2.0,1.6,2.4,2019-11-27 08:00:00,2019-11-28 17:00:00,,0
2034,1.1.1.5.5.3.2.1.15.2,Uitvoeren type 1 test : POORTEN niv -2,2.0,1.6,2.4,2019-11-27 08:00:00,2019-11-28 17:00:00,,0
2035,1.1.1.5.5.3.2.1.16,HVAC,2.0,2.0,2.0,2019-12-09 08:00:00,2019-12-10 17:00:00,,0
2036,1.1.1.5.5.3.2.1.16.1,Uitvoeren testen type 1 : P/HVAC HN,2.0,1.6,2.4,2019-12-09 08:00:00,2019-12-10 17:00:00,,0
2037,1.1.1.5.5.3.2.1.17,RWA,2.0,2.0,2.0,2019-12-09 08:00:00,2019-12-10 17:00:00,,0
2038,1.1.1.5.5.3.2.1.17.1,Uitvoeren type 1 test : P/RWA1 inclusief gasdetectie,2.0,1.6,2.4,2019-12-09 08:00:00,2019-12-10 17:00:00,,0
2039,1.1.1.5.5.3.2.1.17.2,Uitvoeren type 1 test : P/RWA3 inclusief gasdetectie,2.0,1.6,2.4,2019-12-09 08:00:00,2019-12-10 17:00:00,,0
2040,1.1.1.5.5.3.2.1.18,BBI,2.0,2.0,2.0,2019-11-15 08:00:00,2019-11-15 10:00:00,,0
2041,1.1.1.5.5.3.2.1.18.1,Uitvoeren type 1 test : Brandblusinstallatie,2.0,1.6,2.4,2019-11-15 08:00:00,2019-11-15 10:00:00,,0
2042,1.1.1.5.5.3.2.1.19,Pompen Regenwater en Droogweer,1.0,1.0,1.0,2019-11-04 08:00:00,2019-11-04 17:00:00,,0
2043,1.1.1.5.5.3.2.1.19.1,SAT (type 1 test)  - opvoerpomp kl. debiet RWA koker - station Parking,1.0,0.8,1.2,2019-11-04 08:00:00,2019-11-04 17:00:00,,0
2044,1.1.1.5.5.3.2.1.19.2,SAT (type 1 test)  - opvoerpomp kl. Debiet -3 kuislokaal parking -3 ,1.0,0.8,1.2,2019-11-04 08:00:00,2019-11-04 17:00:00,,0
2045,1.1.1.5.5.3.2.1.20,POMPEN,2.0,2.0,2.0,2019-12-10 08:00:00,2019-12-10 10:00:00,,0
2046,1.1.1.5.5.3.2.1.20.1,Uitvoeren type 1 test : DWA FRV,2.0,1.6,2.4,2019-12-10 08:00:00,2019-12-10 10:00:00,,0
2047,1.1.1.5.5.3.2.1.21,VERDWIJNPALEN,5.0,5.0,5.0,2019-12-04 08:00:00,2019-12-10 17:00:00,,0
2048,1.1.1.5.5.3.2.1.21.1,Uitvoeren type 1 test : verdwijnpalen niveau -2,1.0,0.8,1.2,2019-12-04 08:00:00,2019-12-04 17:00:00,,0
2049,1.1.1.5.5.3.2.1.21.2,Uitvoeren type 1 test : verdwijnpalen niveau -3,1.0,0.8,1.2,2019-12-10 08:00:00,2019-12-10 17:00:00,,0
2050,1.1.1.5.5.3.2.2,TESTEN TYPE 2 (interface testen tussen technieken),53.0,53.0,53.0,2019-11-05 08:00:00,2020-01-16 17:00:00,,0
2051,1.1.1.5.5.3.2.2.1,Start type 2 testen secundaire borden,53.0,53.0,53.0,2019-11-05 08:00:00,2020-01-16 17:00:00,,0
2052,1.1.1.5.5.3.2.2.1.1,Uitvoeren type 2 test : B1 Wachterslokaal HN-VN - PLC,5.0,4.0,6.0,2019-12-04 08:00:00,2019-12-10 17:00:00,,0
2053,1.1.1.5.5.3.2.2.1.2,Uitvoeren type 2 test : B2 Batterijladers HN-VN,5.0,4.0,6.0,2019-12-04 08:00:00,2019-12-10 17:00:00,,0
2054,1.1.1.5.5.3.2.2.1.3,Uitvoeren type 2 test : B3 Parking Zuid HN-VN,5.0,4.0,6.0,2019-12-04 08:00:00,2019-12-10 17:00:00,,0
2055,1.1.1.5.5.3.2.2.1.4,Uitvoeren type 2 test : B7 Parking Noord - HN-VN,5.0,4.0,6.0,2019-12-04 08:00:00,2019-12-10 17:00:00,,0
2056,1.1.1.5.5.3.2.2.1.5,Uitvoeren type 2 test : B8 Parking Zuid - HN-VN,5.0,4.0,6.0,2019-12-04 08:00:00,2019-12-10 17:00:00,,0
2057,1.1.1.5.5.3.2.2.1.6,Uitvoeren type 2 test : B9 Parking Noord HN-VN,5.0,4.0,6.0,2019-12-04 08:00:00,2019-12-10 17:00:00,,0
2058,1.1.1.5.5.3.2.2.1.7,Uitvoeren type 2 test : B10 Parking Zuid HN-VN,5.0,4.0,6.0,2019-12-04 08:00:00,2019-12-10 17:00:00,,0
2059,1.1.1.5.5.3.2.2.1.8,Uitvoeren type 2 test : FRSVLT Sanitair Parking HN-VN,5.0,4.0,6.0,2019-12-04 08:00:00,2019-12-10 17:00:00,,0
2060,1.1.1.5.5.3.2.2.1.9,Uitvoeren type 2 testen Alle type 2 testen secundaire borden succesvol uitgevoerd,0.0,0.0,0.0,2019-12-10 17:00:00,2019-12-10 17:00:00,,0
2061,1.1.1.5.5.3.2.2.1.10,Uitvoeren type 2 test parking brandcentrale - PLC,1.0,0.8,1.2,2020-01-14 08:00:00,2020-01-14 17:00:00,,0
2062,1.1.1.5.5.3.2.2.1.11,Uitvoeren type 2 test Omroepinstallatie - PLC,1.0,0.8,1.2,2019-11-13 08:00:00,2019-11-13 17:00:00,,0
2063,1.1.1.5.5.3.2.2.1.12,Uitvoeren type 2 test Radiocom - PLC,1.0,0.8,1.2,2020-01-06 08:00:00,2020-01-06 17:00:00,,0
2064,1.1.1.5.5.3.2.2.1.13,Uitvoeren type 2 test toegangscontrole - PLC,1.0,0.8,1.2,2019-12-17 08:00:00,2019-12-17 17:00:00,,0
2065,1.1.1.5.5.3.2.2.1.14,Uitvoeren type 2 test telefooncentrale - PLC,1.0,0.8,1.2,2019-11-18 08:00:00,2019-11-18 17:00:00,,0
2066,1.1.1.5.5.3.2.2.1.15,Uitvoeren type 2 test liften - PLC,1.0,0.8,1.2,2019-11-05 08:00:00,2019-11-05 17:00:00,,0
2067,1.1.1.5.5.3.2.2.1.16,Uitvoeren type 2 test VMS borden - PLC,1.0,0.8,1.2,2019-11-07 08:00:00,2019-11-07 17:00:00,,0
2068,1.1.1.5.5.3.2.2.1.17,Uitvoeren type 2 test ROOKGORDIJNEN - PLC,1.0,0.8,1.2,2019-12-03 08:00:00,2019-12-03 17:00:00,,0
2069,1.1.1.5.5.3.2.2.1.18,Uitvoeren type 2 test Poorten - PLC,1.0,0.8,1.2,2019-11-29 08:00:00,2019-11-29 17:00:00,,0
2070,1.1.1.5.5.3.2.2.1.19,Uitvoeren type 2 test HVAC- PLC,2.0,1.6,2.4,2019-12-11 08:00:00,2019-12-12 17:00:00,,0
2071,1.1.1.5.5.3.2.2.1.20,Uitvoeren type 2 test RWA inclusief gasdetectie - PLC,2.0,1.6,2.4,2019-12-11 08:00:00,2019-12-12 17:00:00,,0
2072,1.1.1.5.5.3.2.2.1.21,Uitvoeren type 2 test BBI - PLC,3.0,2.4,3.6,2019-11-15 10:00:00,2019-11-20 10:00:00,,0
2073,1.1.1.5.5.3.2.2.1.22,Uitvoeren type 2 test POMPEN - PLC,3.0,2.4,3.6,2019-12-10 10:00:00,2019-12-13 10:00:00,,0
2074,1.1.1.5.5.3.2.2.1.23,Uitvoeren type 2 test verdwijnpalen - PLC,5.0,4.0,6.0,2019-12-05 08:00:00,2019-12-11 17:00:00,,0
2075,1.1.1.5.5.3.2.2.1.24,Uitvoeren type 2 testen MASTER-PLC - Supervisie,1.0,0.8,1.2,2019-12-11 08:00:00,2019-12-11 17:00:00,,0
2076,1.1.1.5.5.3.2.2.1.25,Alle type 2 testen uitgevoerd,0.0,0.0,0.0,2020-01-14 17:00:00,2020-01-14 17:00:00,,0
2077,1.1.1.5.5.3.2.2.1.26,Deelinstallatie live Deelinstallaties ,52.0,52.0,52.0,2019-11-06 08:00:00,2020-01-16 17:00:00,,0
2078,1.1.1.5.5.3.2.2.1.26.1,Deelinstallatie live VVDK ,1.0,0.8,1.2,2019-12-11 08:00:00,2019-12-11 17:00:00,,0
2079,1.1.1.5.5.3.2.2.1.26.2,Deelinstallatie live Data netwerk installatie,1.0,0.8,1.2,2019-12-12 08:00:00,2019-12-12 17:00:00,,0
2080,1.1.1.5.5.3.2.2.1.26.3,Deelinstallatie live Afsluitpoort installatie,1.0,0.8,1.2,2019-12-02 08:00:00,2019-12-02 17:00:00,,0
2081,1.1.1.5.5.3.2.2.1.26.4,Deelinstallatie live BBI Brand-blus installatie,1.0,0.8,1.2,2019-11-20 10:00:00,2019-11-21 10:00:00,,0
2082,1.1.1.5.5.3.2.2.1.26.5,Deelinstallatie live Branddetectie installatie,1.0,0.8,1.2,2020-01-15 08:00:00,2020-01-15 17:00:00,,0
2083,1.1.1.5.5.3.2.2.1.26.6,Deelinstallatie live CCTV installatie,1.0,0.8,1.2,2019-12-10 08:00:00,2019-12-10 17:00:00,,0
2084,1.1.1.5.5.3.2.2.1.26.7,Deelinstallatie live HVAC en overdruk vluchtwegen,1.0,0.8,1.2,2019-12-13 08:00:00,2019-12-13 17:00:00,,0
2085,1.1.1.5.5.3.2.2.1.26.8,Deelinstallatie live liftinstallatie,1.0,0.8,1.2,2019-11-06 08:00:00,2019-11-06 17:00:00,,0
2086,1.1.1.5.5.3.2.2.1.26.9,Deelinstallatie live Omroepinstallatie,1.0,0.8,1.2,2019-11-14 08:00:00,2019-11-14 17:00:00,,0
2087,1.1.1.5.5.3.2.2.1.26.10,"Deelinstallatie live Pompen installatie, hemelwater",1.0,0.8,1.2,2019-12-13 10:00:00,2019-12-16 10:00:00,,0
2088,1.1.1.5.5.3.2.2.1.26.11,Deelinstallatie live Radio installatie,1.0,0.8,1.2,2020-01-07 08:00:00,2020-01-07 17:00:00,,0
2089,1.1.1.5.5.3.2.2.1.26.12,Deelinstallatie live Rookschermen installatie,1.0,0.8,1.2,2019-12-04 08:00:00,2019-12-04 17:00:00,,0
2090,1.1.1.5.5.3.2.2.1.26.13,Deelinstallatie live RWA installatie,1.0,0.8,1.2,2019-12-13 08:00:00,2019-12-13 17:00:00,,0
2091,1.1.1.5.5.3.2.2.1.26.14,Deelinstallatie live Telefoon installatie,1.0,0.8,1.2,2019-11-19 08:00:00,2019-11-19 17:00:00,,0
2092,1.1.1.5.5.3.2.2.1.26.15,Deelinstallatie live Toegangscontrole installatie,1.0,0.8,1.2,2019-12-18 08:00:00,2019-12-18 17:00:00,,0
2093,1.1.1.5.5.3.2.2.1.26.16,Deelinstallatie live verdwijnpalen installatie,1.0,0.8,1.2,2019-12-12 08:00:00,2019-12-12 17:00:00,,0
2094,1.1.1.5.5.3.2.2.1.26.17,Deelinstallatie live VMS borden installatie,1.0,0.8,1.2,2019-11-08 08:00:00,2019-11-08 17:00:00,,0
2095,1.1.1.5.5.3.2.2.1.26.18,Alle installaties live,1.0,0.8,1.2,2020-01-16 08:00:00,2020-01-16 17:00:00,,0
2096,1.1.1.5.5.3.2.3,TESTEN TYPE 3 (supervisie testen),5.0,5.0,5.0,2020-01-14 17:00:00,2020-01-21 17:00:00,,0
2097,1.1.1.5.5.3.2.3.1,Start type 3 testen,0.0,0.0,0.0,2020-01-14 17:00:00,2020-01-14 17:00:00,,0
2098,1.1.1.5.5.3.2.3.2,Uitvoeren type 3 testen Supervisie,5.0,4.0,6.0,2020-01-15 08:00:00,2020-01-21 17:00:00,,0
2099,1.1.1.5.5.3.2.3.3,Einde type 3 testen,0.0,0.0,0.0,2020-01-21 17:00:00,2020-01-21 17:00:00,,0
2100,1.1.1.5.5.3.2.4,TESTEN TYPE 4 (scenario testen),67.0,67.0,67.0,2020-01-06 08:00:00,2020-04-07 17:00:00,,0
2101,1.1.1.5.5.3.2.4.1,SIL-verificatie,6.0,6.0,6.0,2020-01-22 08:00:00,2020-01-29 17:00:00,,0
2102,1.1.1.5.5.3.2.4.1.1,Start controle SIL  niveau door ProSafe,1.0,0.8,1.2,2020-01-22 08:00:00,2020-01-22 17:00:00,,0
2103,1.1.1.5.5.3.2.4.1.2,SIL verificatie gereed,0.0,0.0,0.0,2020-01-22 17:00:00,2020-01-22 17:00:00,,0
2104,1.1.1.5.5.3.2.4.1.3,Opmaken SIL certificaat door ProSafe en overmaken aan OG,5.0,4.0,6.0,2020-01-23 08:00:00,2020-01-29 17:00:00,,0
2105,1.1.1.5.5.3.2.4.2,Rondgang met Brandweer,1.0,1.0,1.0,2020-01-14 08:00:00,2020-01-14 17:00:00,,0
2106,1.1.1.5.5.3.2.4.2.1,Rondgang met Brandweer door Parking uit hoofde van eis 07828,1.0,0.8,1.2,2020-01-14 08:00:00,2020-01-14 17:00:00,,0
2107,1.1.1.5.5.3.2.4.3,"Brandscenario prétesten (alleen ON, OG wordt uitgenodigd aanwezig te zijn)",38.0,38.0,38.0,2020-01-06 08:00:00,2020-02-26 17:00:00,,0
2108,1.1.1.5.5.3.2.4.3.1,Voorbereiding type 4 testen,14.0,11.2,16.8,2020-01-06 08:00:00,2020-01-23 17:00:00,,0
2109,1.1.1.5.5.3.2.4.3.2,Uitvoeren type 4 testen Scenario Detectiegroep parking  1,1.0,0.8,1.2,2020-01-23 08:00:00,2020-01-23 17:00:00,,0
2110,1.1.1.5.5.3.2.4.3.3,Uitvoeren type 4 testen Scenario Detectiegroep parking  2,1.0,0.8,1.2,2020-01-24 08:00:00,2020-01-24 17:00:00,,0
2111,1.1.1.5.5.3.2.4.3.4,Uitvoeren type 4 testen Scenario Detectiegroep parking  3,1.0,0.8,1.2,2020-01-27 08:00:00,2020-01-27 17:00:00,,0
2112,1.1.1.5.5.3.2.4.3.5,Uitvoeren type 4 testen Scenario Detectiegroep parking  4,1.0,0.8,1.2,2020-01-28 08:00:00,2020-01-28 17:00:00,,0
2113,1.1.1.5.5.3.2.4.3.6,Uitvoeren type 4 testen Scenario Detectiegroep parking  5,1.0,0.8,1.2,2020-01-29 08:00:00,2020-01-29 17:00:00,,0
2114,1.1.1.5.5.3.2.4.3.7,Uitvoeren type 4 testen Scenario Detectiegroep parking  6,1.0,0.8,1.2,2020-01-30 08:00:00,2020-01-30 17:00:00,,0
2115,1.1.1.5.5.3.2.4.3.8,Uitvoeren type 4 testen Scenario Detectiegroep parking  7,1.0,0.8,1.2,2020-01-31 08:00:00,2020-01-31 17:00:00,,0
2116,1.1.1.5.5.3.2.4.3.9,Uitvoeren type 4 testen Scenario Detectiegroep parking  8,1.0,0.8,1.2,2020-02-03 08:00:00,2020-02-03 17:00:00,,0
2117,1.1.1.5.5.3.2.4.3.10,Uitvoeren type 4 testen Scenario Detectiegroep parking  9,1.0,0.8,1.2,2020-02-04 08:00:00,2020-02-04 17:00:00,,0
2118,1.1.1.5.5.3.2.4.3.11,Uitvoeren type 4 testen Scenario Detectiegroep parking  10,1.0,0.8,1.2,2020-02-05 08:00:00,2020-02-05 17:00:00,,0
2119,1.1.1.5.5.3.2.4.3.12,Uitvoeren type 4 testen Scenario Detectiegroep parking  11,1.0,0.8,1.2,2020-02-06 08:00:00,2020-02-06 17:00:00,,0
2120,1.1.1.5.5.3.2.4.3.13,Uitvoeren type 4 testen Scenario Detectiegroep parking  12,1.0,0.8,1.2,2020-02-07 08:00:00,2020-02-07 17:00:00,,0
2121,1.1.1.5.5.3.2.4.3.14,Uitvoeren type 4 testen Scenario Detectiegroep parking  13,4.0,3.2,4.8,2020-02-10 08:00:00,2020-02-10 12:00:00,,0
2122,1.1.1.5.5.3.2.4.3.15,Uitvoeren type 4 testen Scenario Detectiegroep parking  14,4.0,3.2,4.8,2020-02-10 13:00:00,2020-02-10 17:00:00,,0
2123,1.1.1.5.5.3.2.4.3.16,Uitvoeren type 4 testen Scenario Detectiegroep parking  15,4.0,3.2,4.8,2020-02-11 08:00:00,2020-02-11 12:00:00,,0
2124,1.1.1.5.5.3.2.4.3.17,Uitvoeren type 4 testen Scenario Detectiegroep parking  16,4.0,3.2,4.8,2020-02-11 13:00:00,2020-02-11 17:00:00,,0
2125,1.1.1.5.5.3.2.4.3.18,Uitvoeren type 4 testen Scenario Detectiegroep parking  17,4.0,3.2,4.8,2020-02-12 08:00:00,2020-02-12 12:00:00,,0
2126,1.1.1.5.5.3.2.4.3.19,Uitvoeren type 4 testen Scenario Detectiegroep parking  18,4.0,3.2,4.8,2020-02-12 13:00:00,2020-02-12 17:00:00,,0
2127,1.1.1.5.5.3.2.4.3.20,Uitvoeren type 4 testen Scenario Detectiegroep parking  19,4.0,3.2,4.8,2020-02-13 08:00:00,2020-02-13 12:00:00,,0
2128,1.1.1.5.5.3.2.4.3.21,Uitvoeren type 4 testen Scenario Detectiegroep parking  20,4.0,3.2,4.8,2020-02-13 13:00:00,2020-02-13 17:00:00,,0
2129,1.1.1.5.5.3.2.4.3.22,Uitvoeren type 4 testen Scenario Detectiegroep parking  21,4.0,3.2,4.8,2020-02-14 08:00:00,2020-02-14 12:00:00,,0
2130,1.1.1.5.5.3.2.4.3.23,Uitvoeren type 4 testen Scenario Detectiegroep parking  22,4.0,3.2,4.8,2020-02-14 13:00:00,2020-02-14 17:00:00,,0
2131,1.1.1.5.5.3.2.4.3.24,Uitvoeren type 4 testen Scenario Detectiegroep parking  23,4.0,3.2,4.8,2020-02-17 08:00:00,2020-02-17 12:00:00,,0
2132,1.1.1.5.5.3.2.4.3.25,Uitvoeren type 4 testen Scenario Detectiegroep parking  24,4.0,3.2,4.8,2020-02-17 13:00:00,2020-02-17 17:00:00,,0
2133,1.1.1.5.5.3.2.4.3.26,Hertesten tunnelbrandscenario's,4.0,4.0,4.0,2020-02-18 08:00:00,2020-02-21 17:00:00,,0
2134,1.1.1.5.5.3.2.4.3.26.1,Uitvoeren type 4 testen Scenario Detectiegroep tunnel 1,4.0,3.2,4.8,2020-02-18 08:00:00,2020-02-18 12:00:00,,0
2135,1.1.1.5.5.3.2.4.3.26.2,Uitvoeren type 4 testen Scenario Detectiegroep tunnel 2,4.0,3.2,4.8,2020-02-18 13:00:00,2020-02-18 17:00:00,,0
2136,1.1.1.5.5.3.2.4.3.26.3,Uitvoeren type 4 testen Scenario Detectiegroep tunnel 3,4.0,3.2,4.8,2020-02-19 08:00:00,2020-02-19 12:00:00,,0
2137,1.1.1.5.5.3.2.4.3.26.4,Uitvoeren type 4 testen Scenario Detectiegroep tunnel 4,4.0,3.2,4.8,2020-02-19 13:00:00,2020-02-19 17:00:00,,0
2138,1.1.1.5.5.3.2.4.3.26.5,Uitvoeren type 4 testen Scenario Detectiegroep tunnel 5,4.0,3.2,4.8,2020-02-20 08:00:00,2020-02-20 12:00:00,,0
2139,1.1.1.5.5.3.2.4.3.26.6,Uitvoeren type 4 testen Scenario Detectiegroep tunnel 6,4.0,3.2,4.8,2020-02-20 13:00:00,2020-02-20 17:00:00,,0
2140,1.1.1.5.5.3.2.4.3.26.7,Uitvoeren type 4 testen Scenario Detectiegroep tunnel 7,4.0,3.2,4.8,2020-02-21 08:00:00,2020-02-21 12:00:00,,0
2141,1.1.1.5.5.3.2.4.3.26.8,Uitvoeren type 4 testen Scenario Detectiegroep tunnel 8,4.0,3.2,4.8,2020-02-21 13:00:00,2020-02-21 17:00:00,,0
2142,1.1.1.5.5.3.2.4.3.27,Functionaliteitstesten,3.0,3.0,3.0,2020-02-24 08:00:00,2020-02-26 17:00:00,,0
2143,1.1.1.5.5.3.2.4.3.27.1,Uitvoeren functionaliteitstesten met klant,3.0,2.4,3.6,2020-02-24 08:00:00,2020-02-26 17:00:00,,0
2144,1.1.1.5.5.3.2.4.4,Indienstname voor type 4 testen parking,29.0,29.0,29.0,2020-02-27 08:00:00,2020-04-07 17:00:00,,0
2145,1.1.1.5.5.3.2.4.4.1,Indienstname alle installaties,29.0,23.2,34.8,2020-02-27 08:00:00,2020-04-07 17:00:00,,0
2146,1.1.1.5.5.3.3,H.A) TESTEN OG PARKING,28.0,28.0,28.0,2020-02-26 17:00:00,2020-04-06 17:00:00,,0
2147,1.1.1.5.5.3.3.1,Brandscenario testen door OG,28.0,28.0,28.0,2020-02-26 17:00:00,2020-04-06 17:00:00,,0
2148,1.1.1.5.5.3.3.1.1,Einde testen ON,0.0,0.0,0.0,2020-02-26 17:00:00,2020-02-26 17:00:00,,0
2149,1.1.1.5.5.3.3.1.2,Uitvoeren type 4 testen Scenario ,28.0,22.4,33.6,2020-02-27 08:00:00,2020-04-06 17:00:00,,0
2150,1.1.1.5.5.3.4,I) OPLEIDING,30.0,30.0,30.0,2020-02-26 08:00:00,2020-04-07 17:00:00,,0
2151,1.1.1.5.5.3.4.1,Opleiding on site volgens Detailplanning Opleiding Parking,30.0,24.0,36.0,2020-02-26 08:00:00,2020-04-07 17:00:00,,0
2152,1.1.1.5.5.3.5,J) Opmaken CE en Arei-dossiers,60.0,60.0,60.0,2019-11-20 08:00:00,2020-02-11 17:00:00,,0
2153,1.1.1.5.5.3.5.1,Samenstellen CE-dossier,60.0,48.0,72.0,2019-11-20 08:00:00,2020-02-11 17:00:00,,0
2154,1.1.1.5.5.3.5.2,Samenstellen Arei-dossier (info bij FGI),60.0,48.0,72.0,2019-11-20 08:00:00,2020-02-11 17:00:00,,0
