node_id,wbs,task_name,duration,optimistic_time,pessimistic_time,baseline_start,baseline_end,resource_demand,total_cost
0,1,Project,897.0,897.0,897.0,2016-03-01 08:00:00,2019-08-07 17:00:00,,0
1,1.1,DP4 TRAMLIJN EILANDJE,897.0,897.0,897.0,2016-03-01 08:00:00,2019-08-07 17:00:00,,0
2,1.1.1,4 TRAMLIJN EILANDJE,897.0,897.0,897.0,2016-03-01 08:00:00,2019-08-07 17:00:00,,0
3,1.1.1.1,START MS TRAMLIJN EILANDJE,0.0,0.0,0.0,2016-03-01 08:00:00,2016-02-29 17:00:00,,0
4,1.1.1.2,FINISH MS TRAMLIJN EILANDJE,0.0,0.0,0.0,2019-08-07 17:00:00,2019-08-07 17:00:00,,0
5,1.1.1.3,Uitgaande relaties vanuit DP4,0.0,0.0,0.0,2019-02-21 17:00:00,2019-02-21 17:00:00,,0
6,1.1.1.3.1,Contractmijlpaal uit DP4 naar DMP t.b.v. BCT5b  (Tram Kattendokdijk Oostkaai-Mexicostraat),0.0,0.0,0.0,2019-02-21 17:00:00,2019-02-21 17:00:00,,0
7,1.1.1.3.2,Afronden opleverpunten t.b.v. BCT5b (Tram Kattendokdijk Oostkaai-Mexicostraat),0.0,0.0,0.0,2019-02-21 17:00:00,2019-02-21 17:00:00,,0
8,1.1.1.4,Voorbereiding,408.0,408.0,408.0,2016-03-01 08:00:00,2017-09-21 17:00:00,,0
9,1.1.1.4.1,Voorafgaande verplaatsingswerken nutsleidingen,47.0,37.6,56.4,2016-03-01 08:00:00,2016-05-04 17:00:00,,0
10,1.1.1.4.2,Aanvangsdatum DP4 Eilandje,0.0,0.0,0.0,2016-04-29 17:00:00,2016-04-29 17:00:00,,0
11,1.1.1.4.3,"Peilen, (ver)plaatsen en aanpassen nutsleidingen",30.0,24.0,36.0,2016-05-03 08:00:00,2016-06-13 17:00:00,,0
12,1.1.1.4.4,Werken door derden op perrons ifv trambaan (leuningen),120.0,96.0,144.0,2017-01-24 08:00:00,2017-07-10 17:00:00,,0
13,1.1.1.4.5,"Werken door derden (straatobjecten, aansluitingen ervan, infoborden, camera’s, …)",113.0,90.4,135.6,2017-02-01 08:00:00,2017-07-07 17:00:00,,0
14,1.1.1.4.6,Groenaanleg en beplantingen (alle zones),15.0,12.0,18.0,2017-09-01 08:00:00,2017-09-21 17:00:00,,0
15,1.1.1.5,Deelfase 1A,17.0,17.0,17.0,2016-04-29 17:00:00,2016-05-24 17:00:00,,0
16,1.1.1.5.1,start,0.0,0.0,0.0,2016-04-29 17:00:00,2016-04-29 17:00:00,,0
17,1.1.1.5.2,einde,0.0,0.0,0.0,2016-05-24 17:00:00,2016-05-24 17:00:00,,0
18,1.1.1.6,start,49.0,49.0,49.0,2016-05-24 17:00:00,2016-08-01 17:00:00,,0
19,1.1.1.6.1,????????,0.0,0.0,0.0,2016-05-24 17:00:00,2016-05-24 17:00:00,,0
20,1.1.1.6.2,einde,0.0,0.0,0.0,2016-08-01 17:00:00,2016-08-01 17:00:00,,0
21,1.1.1.7,Deelfase 1C,53.0,53.0,53.0,2016-08-01 17:00:00,2016-10-13 17:00:00,,0
22,1.1.1.7.1,start,0.0,0.0,0.0,2016-08-01 17:00:00,2016-08-01 17:00:00,,0
23,1.1.1.7.2,einde,0.0,0.0,0.0,2016-10-13 17:00:00,2016-10-13 17:00:00,,0
24,1.1.1.8,Deelfase 2A,16.0,16.0,16.0,2016-10-13 17:00:00,2016-11-04 17:00:00,,0
25,1.1.1.8.1,start,0.0,0.0,0.0,2016-10-13 17:00:00,2016-10-13 17:00:00,,0
26,1.1.1.8.2,einde,0.0,0.0,0.0,2016-11-04 17:00:00,2016-11-04 17:00:00,,0
27,1.1.1.9,Deelfase 2B,146.0,146.0,146.0,2016-11-04 17:00:00,2017-05-29 17:00:00,,0
28,1.1.1.9.1,start,0.0,0.0,0.0,2016-11-04 17:00:00,2016-11-04 17:00:00,,0
29,1.1.1.9.2,einde,0.0,0.0,0.0,2017-05-29 17:00:00,2017-05-29 17:00:00,,0
30,1.1.1.10,Voorbereidende werken deelfase 1A,13.0,13.0,13.0,2016-05-03 08:00:00,2016-05-19 17:00:00,,0
31,1.1.1.10.1,Aanpassingen kruispunt Amsterdamstraat en Bataviastraat,2.0,1.6,2.4,2016-05-03 08:00:00,2016-05-04 17:00:00,,0
32,1.1.1.10.2,Aanpassen VRI kruispunt Amsterdamstraat,1.0,0.8,1.2,2016-05-09 08:00:00,2016-05-09 17:00:00,,0
33,1.1.1.10.3,Fasewissel deel 1: Amsterdamstraat -> Bonapartedok (verkeer westelijke weghelft),1.0,0.8,1.2,2016-05-09 08:00:00,2016-05-09 17:00:00,,0
34,1.1.1.10.4,Aanpassingswerken zone Brouwersvliet,5.0,4.0,6.0,2016-05-09 08:00:00,2016-05-13 17:00:00,,0
35,1.1.1.10.5,Aanpassen VRI kruispunt Brouwersvliet,3.0,2.4,3.6,2016-05-17 08:00:00,2016-05-19 17:00:00,,0
36,1.1.1.10.6,Fasewissel deel 2: Bonapartedok -> Sint-Pietersvliet (verkeer westelijke weghelft),1.0,0.8,1.2,2016-05-17 08:00:00,2016-05-17 17:00:00,,0
37,1.1.1.11,41 Aansluiting Katelijnevest : zie 423 St-Pietersvliet,4.0,4.0,4.0,2017-05-19 17:00:00,2017-05-25 17:00:00,,0
38,1.1.1.11.1,start,0.0,0.0,0.0,2017-05-19 17:00:00,2017-05-19 17:00:00,,0
39,1.1.1.11.2,einde,0.0,0.0,0.0,2017-05-25 17:00:00,2017-05-25 17:00:00,,0
40,1.1.1.12,42 Rijnkaai Zuid,358.0,358.0,358.0,2016-05-03 08:00:00,2017-09-14 17:00:00,,0
41,1.1.1.12.1,Afwerking sporen volledige zone Rijnkaai Zuid,4.0,3.2,4.8,2017-03-28 08:00:00,2017-03-31 17:00:00,,0
42,1.1.1.12.2,421St-Pietersvliet (Zone 9),171.0,171.0,171.0,2016-09-28 17:00:00,2017-05-25 17:00:00,,0
43,1.1.1.12.2.1,"Voorbereidingen, signalisatie en opbraakwerken",5.0,4.0,6.0,2016-10-17 08:00:00,2016-10-21 17:00:00,,0
44,1.1.1.12.2.2,Wachtbuizen en Spoorbedding,18.0,14.4,21.6,2017-01-23 08:00:00,2017-02-15 17:00:00,,0
45,1.1.1.12.2.3,wissels St-Pietersvliet,119.0,119.0,119.0,2016-09-28 17:00:00,2017-03-14 17:00:00,,0
46,1.1.1.12.2.3.1,Leveren kruis 160K001,0.0,0.0,0.0,2016-09-28 17:00:00,2016-09-28 17:00:00,,0
47,1.1.1.12.2.3.2,Plaatsen wissels kruis,12.0,9.6,14.4,2017-02-27 08:00:00,2017-03-14 17:00:00,,0
48,1.1.1.12.2.4,OV kabel,1.0,0.8,1.2,2017-01-27 08:00:00,2017-01-27 17:00:00,,0
49,1.1.1.12.2.5,Boren bvl palen,10.0,8.0,12.0,2017-01-30 08:00:00,2017-02-10 17:00:00,,0
50,1.1.1.12.2.6,Plaatsen armen,4.0,3.2,4.8,2017-03-28 08:00:00,2017-03-31 17:00:00,,0
51,1.1.1.12.2.7,Bestratingen (exclusief voetpad),34.0,27.2,40.8,2017-02-14 08:00:00,2017-03-31 17:00:00,,0
52,1.1.1.12.2.8,Asfalt fietsstrook,1.0,0.8,1.2,2017-04-13 08:00:00,2017-04-13 17:00:00,,0
53,1.1.1.12.2.9,Asfalt fietstrook gedeelte bijzetten,1.0,0.8,1.2,2017-04-20 08:00:00,2017-04-20 17:00:00,,0
54,1.1.1.12.2.10,"BVL draad afrollen, afstellen en primaire kabels trekken",10.0,8.0,12.0,2017-04-03 08:00:00,2017-04-14 17:00:00,,0
55,1.1.1.12.2.11,BVL afstellen,4.0,3.2,4.8,2017-04-24 08:00:00,2017-04-27 17:00:00,,0
56,1.1.1.12.2.12,Wissels aansluiten en testen,5.0,4.0,6.0,2017-04-20 08:00:00,2017-04-26 17:00:00,,0
57,1.1.1.12.2.13,Plaatsen smeerinstallaties (wachtbuizen),4.0,3.2,4.8,2017-04-18 08:00:00,2017-04-21 17:00:00,,0
58,1.1.1.12.2.14,Aansluiten smeerinstallaties,4.0,3.2,4.8,2017-05-22 08:00:00,2017-05-25 17:00:00,,0
59,1.1.1.12.2.15,Werken nutsleidingen,25.0,20.0,30.0,2017-01-09 08:00:00,2017-02-10 17:00:00,,0
60,1.1.1.12.3,"423 Openbaar domein Rijnkaai Zuid, Tavernierkaai, Van Meterenkaai (Zone 1 tot 6)",358.0,358.0,358.0,2016-05-03 08:00:00,2017-09-14 17:00:00,,0
61,1.1.1.12.3.1,"Peilen, (ver)plaatsen en aanpassen nutsleidingen (in werkzone)",49.0,39.2,58.8,2016-05-03 08:00:00,2016-07-08 17:00:00,,0
62,1.1.1.12.3.2,Alle werken klaar voor Stad02a ,0.0,0.0,0.0,2017-06-14 17:00:00,2017-06-14 17:00:00,,0
63,1.1.1.12.3.3,Herstellingswerken + restpunten + VRI,16.0,12.8,19.2,2017-06-15 08:00:00,2017-07-06 17:00:00,,0
64,1.1.1.12.3.4,Rijnkaai - Rechter weghelft - wegenis,149.0,149.0,149.0,2016-05-10 08:00:00,2016-12-02 17:00:00,,0
65,1.1.1.12.3.4.1,Opbraak bestaande toestand,5.0,4.0,6.0,2016-05-10 08:00:00,2016-05-16 17:00:00,,0
66,1.1.1.12.3.4.2,Grindpalen streng R5-R1-R1'-R7,6.0,4.8,7.2,2016-05-17 08:00:00,2016-05-24 17:00:00,,0
67,1.1.1.12.3.4.3,Grindpalen streng R6-R5,3.0,2.4,3.6,2016-05-25 08:00:00,2016-05-27 17:00:00,,0
68,1.1.1.12.3.4.4,Belastingsproef op paal K1,20.0,16.0,24.0,2016-05-30 08:00:00,2016-06-24 17:00:00,,0
69,1.1.1.12.3.4.5,Riolering streng R1 - Total,5.0,4.0,6.0,2016-05-18 08:00:00,2016-05-24 17:00:00,,0
70,1.1.1.12.3.4.6,Riolering streng R1-R5-R6,6.0,4.8,7.2,2016-05-25 08:00:00,2016-06-01 17:00:00,,0
71,1.1.1.12.3.4.7,Riolering streng R1-R7,7.0,5.6,8.4,2016-06-08 08:00:00,2016-06-16 17:00:00,,0
72,1.1.1.12.3.4.8,"Wachtbuizen en kabels voor OV en VRI, trekputten, funderingen masten",5.0,4.0,6.0,2016-06-17 08:00:00,2016-06-23 17:00:00,,0
73,1.1.1.12.3.4.9,Proefputten ,2.0,1.6,2.4,2016-08-24 08:00:00,2016-08-25 17:00:00,,0
74,1.1.1.12.3.4.10,Mastfundering,2.0,1.6,2.4,2016-08-31 08:00:00,2016-09-01 17:00:00,,0
75,1.1.1.12.3.4.11,Grondwerk en onderfundering,3.0,2.4,3.6,2016-09-07 08:00:00,2016-09-09 17:00:00,,0
76,1.1.1.12.3.4.12,Slokkers,4.0,3.2,4.8,2016-09-12 08:00:00,2016-09-15 17:00:00,,0
77,1.1.1.12.3.4.13,Lijnvormige elementen,3.0,2.4,3.6,2016-09-12 08:00:00,2016-09-14 17:00:00,,0
78,1.1.1.12.3.4.14,Plaatsen OV-kabel,3.0,2.4,3.6,2016-09-07 08:00:00,2016-09-09 17:00:00,,0
79,1.1.1.12.3.4.15,Voetpad natuursteen,30.0,24.0,36.0,2016-10-24 08:00:00,2016-12-02 17:00:00,,0
80,1.1.1.12.3.4.16,Plaatsen masten,1.0,0.8,1.2,2016-10-05 08:00:00,2016-10-05 17:00:00,,0
81,1.1.1.12.3.4.17,Plaatsen armaturen ,1.0,0.8,1.2,2016-09-09 08:00:00,2016-09-09 17:00:00,,0
82,1.1.1.12.3.4.18,Spoorwerken kruispunt St-Laureiskaai,37.0,37.0,37.0,2016-08-01 17:00:00,2016-09-21 17:00:00,,0
83,1.1.1.12.3.4.18.1,Wissel Sint-Laureiskaai,34.0,34.0,34.0,2016-08-01 17:00:00,2016-09-16 17:00:00,,0
84,1.1.1.12.3.4.18.1.1,Leveren wissel,0.0,0.0,0.0,2016-08-01 17:00:00,2016-08-01 17:00:00,,0
85,1.1.1.12.3.4.18.1.2,Plaatsen wissel Sint Laureiskaai (159w940) + 6 panelen,4.0,3.2,4.8,2016-09-13 08:00:00,2016-09-16 17:00:00,,0
86,1.1.1.12.3.4.18.2,Opbraak Sint-Laureiskaai voor Total,1.0,0.8,1.2,2016-09-01 08:00:00,2016-09-01 17:00:00,,0
87,1.1.1.12.3.4.18.3,"Grondkoffer, wachtbuizen, fundering voor Total",2.0,1.6,2.4,2016-09-02 08:00:00,2016-09-05 17:00:00,,0
88,1.1.1.12.3.4.18.4,Plaatsing sporen,3.0,2.4,3.6,2016-09-19 08:00:00,2016-09-21 17:00:00,,0
89,1.1.1.12.3.4.19,"Plaatsing OV-palen, bovenleidingspalen, verkeerslichten palen",5.0,4.0,6.0,2016-09-15 08:00:00,2016-09-21 17:00:00,,0
90,1.1.1.12.3.4.20,Laatste funderingslaag,2.0,1.6,2.4,2016-09-22 08:00:00,2016-09-23 17:00:00,,0
91,1.1.1.12.3.4.21,Rijweg - asfalt,5.0,4.0,6.0,2016-09-26 08:00:00,2016-09-30 17:00:00,,0
92,1.1.1.12.3.4.22,Wegmarkering,1.0,0.8,1.2,2016-10-03 08:00:00,2016-10-03 17:00:00,,0
93,1.1.1.12.3.4.23,Voorbereidingen ifv omschakeling verkeer,1.0,0.8,1.2,2016-10-04 08:00:00,2016-10-04 17:00:00,,0
94,1.1.1.12.3.4.24,"Signalisatie, aanpassen verkeerslichten",2.0,1.6,2.4,2016-10-04 08:00:00,2016-10-05 17:00:00,,0
95,1.1.1.12.3.4.25,Omschakeling kruispunt Amsterdamstraat,17.0,17.0,17.0,2016-09-12 08:00:00,2016-10-04 17:00:00,,0
96,1.1.1.12.3.4.25.1,Stap 1 - zuidelijke helft - spoorwerken,15.0,12.0,18.0,2016-09-12 08:00:00,2016-09-30 17:00:00,,0
97,1.1.1.12.3.4.25.2,Stap 3 - noordwestelijke deel,2.0,1.6,2.4,2016-10-03 08:00:00,2016-10-04 17:00:00,,0
98,1.1.1.12.3.4.26,Fasewissel verkeer (naar oostelijke helft),0.0,0.0,0.0,2016-10-13 17:00:00,2016-10-13 17:00:00,,0
99,1.1.1.12.3.4.27,Kruispunt Brouwersvliet - deel 1 ( middenberm),21.0,21.0,21.0,2016-05-18 08:00:00,2016-06-15 17:00:00,,0
100,1.1.1.12.3.4.27.1,Opbraak rijweg en middenberm,3.0,2.4,3.6,2016-05-18 08:00:00,2016-05-20 17:00:00,,0
101,1.1.1.12.3.4.27.2,"Wachtbuizen, kolkaansluitingen",3.0,2.4,3.6,2016-05-23 08:00:00,2016-05-25 17:00:00,,0
102,1.1.1.12.3.4.27.3,grondwerk + onderfundering wegenis,3.0,2.4,3.6,2016-05-26 08:00:00,2016-05-30 17:00:00,,0
103,1.1.1.12.3.4.27.4,Lijnvormige elementen,3.0,2.4,3.6,2016-05-31 08:00:00,2016-06-02 17:00:00,,0
104,1.1.1.12.3.4.27.5,Fundering wegenis + middenberm,3.0,2.4,3.6,2016-06-03 08:00:00,2016-06-07 17:00:00,,0
105,1.1.1.12.3.4.27.6,Asfalt,2.0,1.6,2.4,2016-06-08 08:00:00,2016-06-09 17:00:00,,0
106,1.1.1.12.3.4.27.7,Bestrating middenberm,2.0,1.6,2.4,2016-06-10 08:00:00,2016-06-13 17:00:00,,0
107,1.1.1.12.3.4.27.8,Markering en signalisatie,1.0,0.8,1.2,2016-06-10 08:00:00,2016-06-10 17:00:00,,0
108,1.1.1.12.3.4.27.9,Aanpassing VRI,1.0,0.8,1.2,2016-06-14 08:00:00,2016-06-14 17:00:00,,0
109,1.1.1.12.3.4.27.10,Fasewissel,1.0,0.8,1.2,2016-06-15 08:00:00,2016-06-15 17:00:00,,0
110,1.1.1.12.3.4.28,Kruispunt Brouwersvliet - deel 2 (Rijnkaai ten zuiden van Brouwersvliet),82.0,82.0,82.0,2016-06-16 08:00:00,2016-10-07 17:00:00,,0
111,1.1.1.12.3.4.28.1,Opbraak,5.0,4.0,6.0,2016-06-16 08:00:00,2016-06-22 17:00:00,,0
112,1.1.1.12.3.4.28.2,Grindpalen R11'-R13,4.0,3.2,4.8,2016-06-20 08:00:00,2016-06-23 17:00:00,,0
113,1.1.1.12.3.4.28.3,Proefputten ,2.0,1.6,2.4,2016-06-20 08:00:00,2016-06-21 17:00:00,,0
114,1.1.1.12.3.4.28.4,Mastfundering,2.0,1.6,2.4,2016-06-27 08:00:00,2016-06-28 17:00:00,,0
115,1.1.1.12.3.4.28.5,Riolering R11'-R13,8.0,6.4,9.6,2016-08-24 08:00:00,2016-09-02 17:00:00,,0
116,1.1.1.12.3.4.28.6,"Ingegraven leidingen, wachtbuizen, trekputten, funderingen masten",4.0,3.2,4.8,2016-09-05 08:00:00,2016-09-08 17:00:00,,0
117,1.1.1.12.3.4.28.7,Grondwerk en onderfundering,4.0,3.2,4.8,2016-09-09 08:00:00,2016-09-14 17:00:00,,0
118,1.1.1.12.3.4.28.8,Plaatsen masten,1.0,0.8,1.2,2016-09-15 08:00:00,2016-09-15 17:00:00,,0
119,1.1.1.12.3.4.28.9,Slokkers,4.0,3.2,4.8,2016-09-15 08:00:00,2016-09-20 17:00:00,,0
120,1.1.1.12.3.4.28.10,Lijnvormige elementen,8.0,6.4,9.6,2016-09-15 08:00:00,2016-09-26 17:00:00,,0
121,1.1.1.12.3.4.28.11,Voetpad betonstraatstenen,9.0,7.2,10.8,2016-09-27 08:00:00,2016-10-07 17:00:00,,0
122,1.1.1.12.3.4.28.12,Spoorwerken kruispunt St-Paulusstraat,3.0,2.4,3.6,2016-09-22 08:00:00,2016-09-26 17:00:00,,0
123,1.1.1.12.3.4.28.13,"Plaatsing OV-palen, bovenleidingspalen, verkeerslichten palen",5.0,4.0,6.0,2016-09-27 08:00:00,2016-10-03 17:00:00,,0
124,1.1.1.12.3.4.28.14,Laatste funderingslaag,2.0,1.6,2.4,2016-09-26 08:00:00,2016-09-27 17:00:00,,0
125,1.1.1.12.3.4.28.15,Rijweg - asfalt,5.0,4.0,6.0,2016-09-28 08:00:00,2016-10-04 17:00:00,,0
126,1.1.1.12.3.4.28.16,Wegmarkering,1.0,0.8,1.2,2016-10-04 08:00:00,2016-10-04 17:00:00,,0
127,1.1.1.12.3.5,Rijnkaai - linker weghelft - trambaan,174.0,174.0,174.0,2016-10-11 08:00:00,2017-06-09 17:00:00,,0
128,1.1.1.12.3.5.1,Plaatsen van herbruik boordsteen,4.0,3.2,4.8,2017-04-13 08:00:00,2017-04-18 17:00:00,,0
129,1.1.1.12.3.5.2,Opbraak bestaande toestand,6.0,4.8,7.2,2016-10-14 08:00:00,2016-10-21 17:00:00,,0
130,1.1.1.12.3.5.3,Rioleringen,6.0,4.8,7.2,2016-10-19 08:00:00,2016-10-26 17:00:00,,0
131,1.1.1.12.3.5.4,Dwarse wachtbuizen onder trambaan + slokkeraansluitingen,4.0,3.2,4.8,2016-10-28 08:00:00,2016-11-02 17:00:00,,0
132,1.1.1.12.3.5.5,Grondwerk + Onderfundering,6.0,4.8,7.2,2016-11-10 08:00:00,2016-11-17 17:00:00,,0
133,1.1.1.12.3.5.6,Proefputten ,2.0,1.6,2.4,2016-11-18 08:00:00,2016-11-21 17:00:00,,0
134,1.1.1.12.3.5.7,Mastfundering,2.0,1.6,2.4,2016-11-22 08:00:00,2016-11-23 17:00:00,,0
135,1.1.1.12.3.5.8,"Wachtbuizen parallel aan spoor, trekputten, funderingen masten",9.0,7.2,10.8,2016-11-22 08:00:00,2016-12-02 17:00:00,,0
136,1.1.1.12.3.5.9,Graafwerken parallel aan spoor,9.0,7.2,10.8,2016-10-11 08:00:00,2016-10-21 17:00:00,,0
137,1.1.1.12.3.5.10,Plaatsen onderlaag zand,1.0,0.8,1.2,2016-10-24 08:00:00,2016-10-24 17:00:00,,0
138,1.1.1.12.3.5.11,Plaatsen Feederkabel FM12.1,1.0,0.8,1.2,2016-10-25 08:00:00,2016-10-25 17:00:00,,0
139,1.1.1.12.3.5.12,Plaatsen bovenlaag zand + beschermingsband + lint,1.0,0.8,1.2,2016-10-26 08:00:00,2016-10-26 17:00:00,,0
140,1.1.1.12.3.5.13,Plaatsen Feederkabel FM11,1.0,0.8,1.2,2016-10-27 08:00:00,2016-10-27 17:00:00,,0
141,1.1.1.12.3.5.14,Plaatsen OV-kabel (Rijnkaai) (17st),10.0,8.0,12.0,2016-11-08 08:00:00,2016-11-21 17:00:00,,0
142,1.1.1.12.3.5.15,Spoorbedding,17.0,13.6,20.4,2017-01-23 08:00:00,2017-02-14 17:00:00,,0
143,1.1.1.12.3.5.16,Boren funderingen bvl palen,10.0,8.0,12.0,2017-01-23 08:00:00,2017-02-03 17:00:00,,0
144,1.1.1.12.3.5.17,Plaatsen bvl palen,25.0,20.0,30.0,2017-01-30 08:00:00,2017-03-03 17:00:00,,0
145,1.1.1.12.3.5.18,Bestrating trambaan (incl. heraanleg gedeelte tussen sporen) ,58.0,46.4,69.6,2017-03-13 08:00:00,2017-05-31 17:00:00,,0
146,1.1.1.12.3.5.19,Kantstrook tussen rijweg en trambaan herstellen,5.0,4.0,6.0,2017-04-05 08:00:00,2017-04-11 17:00:00,,0
147,1.1.1.12.3.5.20,Graniet veiligheidsstrook,25.0,20.0,30.0,2017-04-14 08:00:00,2017-05-18 17:00:00,,0
148,1.1.1.12.3.5.21,Verharding tussen spoor en graniet veiligheidsstrook ,25.0,20.0,30.0,2017-04-24 08:00:00,2017-05-26 17:00:00,,0
149,1.1.1.12.3.5.22,Plaatsen armen bvl,40.0,32.0,48.0,2017-02-13 08:00:00,2017-04-07 17:00:00,,0
150,1.1.1.12.3.5.23,"TDI en HFK lus, secundaire kabels, laspot",5.0,4.0,6.0,2017-03-02 08:00:00,2017-03-08 17:00:00,,0
151,1.1.1.12.3.5.24,"BVL draad afrollen, afstellen en primaire kabels trekken",10.0,8.0,12.0,2017-04-03 08:00:00,2017-04-14 17:00:00,,0
152,1.1.1.12.3.5.25,BVL afstellen,4.0,3.2,4.8,2017-04-24 08:00:00,2017-04-27 17:00:00,,0
153,1.1.1.12.3.5.26,Wissels aansluiten en testen,5.0,4.0,6.0,2017-04-20 08:00:00,2017-04-26 17:00:00,,0
154,1.1.1.12.3.5.27,Spoorwerken,58.0,58.0,58.0,2017-01-09 08:00:00,2017-03-29 17:00:00,,0
155,1.1.1.12.3.5.27.1,Plaatsen feederkabel vanuit TS Batavia,10.0,8.0,12.0,2017-02-15 08:00:00,2017-02-28 17:00:00,,0
156,1.1.1.12.3.5.27.2,Aanbrengen panelen (40st),4.0,3.2,4.8,2017-03-09 08:00:00,2017-03-14 17:00:00,,0
157,1.1.1.12.3.5.27.3,Lassen (82st),4.0,3.2,4.8,2017-03-22 08:00:00,2017-03-27 17:00:00,,0
158,1.1.1.12.3.5.27.4,Plaatsen spoorbakjes,1.0,0.8,1.2,2017-03-15 08:00:00,2017-03-15 17:00:00,,0
159,1.1.1.12.3.5.27.5,Plaatsen wachtbuizen + buizen TDI-lus,1.0,0.8,1.2,2017-03-16 08:00:00,2017-03-16 17:00:00,,0
160,1.1.1.12.3.5.27.6,Plaatsen retourkabels,1.0,0.8,1.2,2017-03-28 08:00:00,2017-03-28 17:00:00,,0
161,1.1.1.12.3.5.27.7,Op hoogte brengen en afstellen,5.0,4.0,6.0,2017-03-15 08:00:00,2017-03-21 17:00:00,,0
162,1.1.1.12.3.5.27.8,Plaatsen raillijfbekleding,2.0,1.6,2.4,2017-03-28 08:00:00,2017-03-29 17:00:00,,0
163,1.1.1.12.3.5.27.9,Plaatsen spoorslikkers,1.0,0.8,1.2,2017-03-28 08:00:00,2017-03-28 17:00:00,,0
164,1.1.1.12.3.5.27.10,Plaatsen spoorbakjes feeders,1.0,0.8,1.2,2017-03-15 08:00:00,2017-03-15 17:00:00,,0
165,1.1.1.12.3.5.27.11,Opmeting en aanpassen spoor,1.0,0.8,1.2,2017-03-22 08:00:00,2017-03-22 17:00:00,,0
166,1.1.1.12.3.5.27.12,Oplevering spoor door BTR,0.0,0.0,0.0,2017-03-21 17:00:00,2017-03-21 17:00:00,,0
167,1.1.1.12.3.5.27.13,Aanbrengen kiftbeton,3.0,2.4,3.6,2017-03-17 08:00:00,2017-03-21 17:00:00,,0
168,1.1.1.12.3.5.27.14,Plaatsen en aansluiten TDI-lus,1.0,0.8,1.2,2017-03-22 08:00:00,2017-03-22 17:00:00,,0
169,1.1.1.12.3.5.27.15,Aanpassing gasleiding,10.0,8.0,12.0,2017-01-09 08:00:00,2017-01-20 17:00:00,,0
170,1.1.1.12.3.5.28,Spoorwerken wissels bocht Tavernierkaai,23.0,23.0,23.0,2016-10-25 08:00:00,2016-11-24 17:00:00,,0
171,1.1.1.12.3.5.28.1,Leveren wissels 160w941/201,0.0,0.0,0.0,2016-11-02 17:00:00,2016-11-02 17:00:00,,0
172,1.1.1.12.3.5.28.2,Plaatsen wissel 160W941,2.0,1.6,2.4,2016-11-15 08:00:00,2016-11-16 17:00:00,,0
173,1.1.1.12.3.5.28.3,Plaatsen wissel 160W201 + 4 panelen,2.0,1.6,2.4,2016-11-23 08:00:00,2016-11-24 17:00:00,,0
174,1.1.1.12.3.5.28.4,Spoorwerken tussen wissels,3.0,2.4,3.6,2016-10-25 08:00:00,2016-10-27 17:00:00,,0
175,1.1.1.12.3.5.29,Plaatsen wachtbuizen TDI-lus,2.0,1.6,2.4,2017-03-15 08:00:00,2017-03-16 17:00:00,,0
176,1.1.1.12.3.5.30,Plaatsen TDI-lus,2.0,1.6,2.4,2017-04-03 08:00:00,2017-04-04 17:00:00,,0
177,1.1.1.12.3.5.31,Verharding perrons thv Brouwersstraat (excl. leuningen),53.0,42.4,63.6,2017-03-01 08:00:00,2017-05-12 17:00:00,,0
178,1.1.1.12.3.5.32,Ophangen OV,4.0,3.2,4.8,2017-06-06 08:00:00,2017-06-09 17:00:00,,0
179,1.1.1.12.3.5.33,Bestrating inrit Loodswezen (gefaseerde uitvoering),5.0,4.0,6.0,2017-03-20 08:00:00,2017-03-24 17:00:00,,0
180,1.1.1.12.3.6,Rijnkaai - Voetpad en fietspad,134.0,134.0,134.0,2017-03-13 08:00:00,2017-09-14 17:00:00,,0
181,1.1.1.12.3.6.1,Westzijde voet en fietspad,27.0,27.0,27.0,2017-04-18 08:00:00,2017-05-24 17:00:00,,0
182,1.1.1.12.3.6.1.1,Boordsteen West,11.0,11.0,11.0,2017-04-18 08:00:00,2017-05-02 17:00:00,,0
183,1.1.1.12.3.6.1.1.1,Plaatsen boordstenen zone 1 tot 4 F&V,7.0,5.6,8.4,2017-04-18 08:00:00,2017-04-26 17:00:00,,0
184,1.1.1.12.3.6.1.1.2,Plaatsen boorstenen zone 5 tot 6 F&V,4.0,3.2,4.8,2017-04-27 08:00:00,2017-05-02 17:00:00,,0
185,1.1.1.12.3.6.1.2,Voetpad West,9.0,9.0,9.0,2017-05-12 08:00:00,2017-05-24 17:00:00,,0
186,1.1.1.12.3.6.1.2.1,Voetpad Zone 1 tot 4,5.0,4.0,6.0,2017-05-12 08:00:00,2017-05-18 17:00:00,,0
187,1.1.1.12.3.6.1.2.2,Voetpad Zone 5 tot 6,4.0,3.2,4.8,2017-05-19 08:00:00,2017-05-24 17:00:00,,0
188,1.1.1.12.3.6.1.3,fietspad West,5.0,5.0,5.0,2017-05-04 17:00:00,2017-05-11 17:00:00,,0
189,1.1.1.12.3.6.1.3.1,Fietspad OL+TL Zone 1 t.e.m. 6 (exclusief zone stalling),5.0,4.0,6.0,2017-05-05 08:00:00,2017-05-11 17:00:00,,0
190,1.1.1.12.3.6.1.3.2,Stelling verwijderd uit fietspad zone,0.0,0.0,0.0,2017-05-04 17:00:00,2017-05-04 17:00:00,,0
191,1.1.1.12.3.6.1.3.3,Fietspad OL+TL ter hoogte van stelling (onder voorbehoud),1.0,0.8,1.2,2017-05-05 08:00:00,2017-05-05 17:00:00,,0
192,1.1.1.12.3.6.2,Oostzijde voetpad,134.0,134.0,134.0,2017-03-13 08:00:00,2017-09-14 17:00:00,,0
193,1.1.1.12.3.6.2.1,Dinantstraat - St-Laureiskaai,4.0,3.2,4.8,2017-03-13 08:00:00,2017-03-16 17:00:00,,0
194,1.1.1.12.3.6.2.2,Amsterdamstraat - Dinantstraat,4.0,4.0,4.0,2017-06-12 08:00:00,2017-06-15 17:00:00,,0
195,1.1.1.12.3.6.2.2.1,Platines ter plaatse stockage (2),4.0,3.2,4.8,2017-06-12 08:00:00,2017-06-15 17:00:00,,0
196,1.1.1.12.3.6.2.3,Total,4.0,4.0,4.0,2017-06-12 08:00:00,2017-06-15 17:00:00,,0
197,1.1.1.12.3.6.2.3.1,Heraanleg voetgangersstrook (1),4.0,3.2,4.8,2017-06-12 08:00:00,2017-06-15 17:00:00,,0
198,1.1.1.12.3.6.2.4,Voetpad voor dokken,8.0,8.0,8.0,2017-06-01 08:00:00,2017-06-12 17:00:00,,0
199,1.1.1.12.3.6.2.4.1,Uithalen fundering (3),2.0,1.6,2.4,2017-06-01 08:00:00,2017-06-02 17:00:00,,0
200,1.1.1.12.3.6.2.4.2,Plaatsen 10 cm type IIA,2.0,1.6,2.4,2017-06-07 08:00:00,2017-06-08 17:00:00,,0
201,1.1.1.12.3.6.2.4.3,Bestrating voetpad,2.0,1.6,2.4,2017-06-09 08:00:00,2017-06-12 17:00:00,,0
202,1.1.1.12.3.6.2.5,Dokken - Brouwersvliet,2.0,2.0,2.0,2017-06-09 08:00:00,2017-06-12 17:00:00,,0
203,1.1.1.12.3.6.2.5.1,Bestrating voetpad,2.0,1.6,2.4,2017-06-09 08:00:00,2017-06-12 17:00:00,,0
204,1.1.1.12.3.6.2.6,Brouwersvliet - Sint-Pietersvliet,127.0,127.0,127.0,2017-03-22 08:00:00,2017-09-14 17:00:00,,0
205,1.1.1.12.3.6.2.6.1,Brouwersvliet - St-Pietersvliet,5.0,4.0,6.0,2017-03-22 08:00:00,2017-03-28 17:00:00,,0
206,1.1.1.12.3.6.2.6.2,Bestrating voetpad (resterend restpunt),5.0,4.0,6.0,2017-06-29 08:00:00,2017-07-05 17:00:00,,0
207,1.1.1.12.3.6.2.6.3,Afslagstrook Sint-Pietersvliet (WOG impact op timing te evalueren),10.0,8.0,12.0,2017-09-01 08:00:00,2017-09-14 17:00:00,,0
208,1.1.1.13,43 Keerlus Batavia,376.0,376.0,376.0,2016-03-01 08:00:00,2017-08-08 17:00:00,,0
209,1.1.1.13.1,Afwerking sporen volledige zone keerlus BCT1,4.0,3.2,4.8,2017-03-28 08:00:00,2017-03-31 17:00:00,,0
210,1.1.1.13.2,Plaatsen smeerinstallaties (wachtbuizen),7.0,5.6,8.4,2017-04-03 08:00:00,2017-04-11 17:00:00,,0
211,1.1.1.13.3,Aansluiten smeerinstallaties,4.0,3.2,4.8,2017-05-22 08:00:00,2017-05-25 17:00:00,,0
212,1.1.1.13.4,Ophangen OV,46.0,36.8,55.2,2017-06-06 08:00:00,2017-08-08 17:00:00,,0
213,1.1.1.13.5,Alle werken klaar voor Stad02b,0.0,0.0,0.0,2017-05-29 17:00:00,2017-05-29 17:00:00,,0
214,1.1.1.13.6,Herstellingswerken + restpunten + VRI,28.0,22.4,33.6,2017-05-30 08:00:00,2017-07-06 17:00:00,,0
215,1.1.1.13.7,Alle werken klaar voor start testtram (BCT1),0.0,0.0,0.0,2017-05-04 17:00:00,2017-05-04 17:00:00,,0
216,1.1.1.13.8,St-Laureiskaai (Zone 7a),308.0,308.0,308.0,2016-05-03 08:00:00,2017-07-06 17:00:00,,0
217,1.1.1.13.8.1,"Peilen, (ver)plaatsen en aanpassen nutsleidingen",49.0,39.2,58.8,2016-05-03 08:00:00,2016-07-08 17:00:00,,0
218,1.1.1.13.8.2,Opbraak voor riolering,3.0,2.4,3.6,2016-06-02 08:00:00,2016-06-06 17:00:00,,0
219,1.1.1.13.8.3,Grindpalen streng PS1 - R1,3.0,2.4,3.6,2016-06-07 08:00:00,2016-06-09 17:00:00,,0
220,1.1.1.13.8.4,Riolering streng R1-PS1 + persleiding,7.0,5.6,8.4,2016-06-23 08:00:00,2016-07-01 17:00:00,,0
221,1.1.1.13.8.5,Afgesloten voor verkeer (Total bereikbaar via nieuwe inrit),0.0,0.0,0.0,2016-07-01 17:00:00,2016-07-01 17:00:00,,0
222,1.1.1.13.8.6,Volledige opbraak,3.0,2.4,3.6,2016-09-28 08:00:00,2016-09-30 17:00:00,,0
223,1.1.1.13.8.7,Riolering D2-D2',4.0,3.2,4.8,2016-10-03 08:00:00,2016-10-06 17:00:00,,0
224,1.1.1.13.8.8,Dwarse wachtbuizen onder trambaan + slokkeraansluitingen,1.0,0.8,1.2,2016-10-07 08:00:00,2016-10-07 17:00:00,,0
225,1.1.1.13.8.9,Grondwerk + Onderfundering,3.0,2.4,3.6,2016-10-10 08:00:00,2016-10-12 17:00:00,,0
226,1.1.1.13.8.10,Proefputten ,2.0,1.6,2.4,2016-10-13 08:00:00,2016-10-14 17:00:00,,0
227,1.1.1.13.8.11,Mastfundering,2.0,1.6,2.4,2016-10-17 08:00:00,2016-10-18 17:00:00,,0
228,1.1.1.13.8.12,"Wachtbuizen parallel aan spoor, trekputten, funderingen masten",4.0,3.2,4.8,2016-10-19 08:00:00,2016-10-24 17:00:00,,0
229,1.1.1.13.8.13,Plaatsen Ov-kabel (3st),2.0,1.6,2.4,2016-10-20 08:00:00,2016-10-21 17:00:00,,0
230,1.1.1.13.8.14,Spoorbedding,5.0,4.0,6.0,2016-10-25 08:00:00,2016-10-31 17:00:00,,0
231,1.1.1.13.8.15,Spoorwerken Sint-Laureiskaai,5.0,4.0,6.0,2016-11-03 08:00:00,2016-11-09 17:00:00,,0
232,1.1.1.13.8.16,Plaatsen spoorbakjes,1.0,0.8,1.2,2016-11-07 08:00:00,2016-11-07 17:00:00,,0
233,1.1.1.13.8.17,Plaatsen wachtbuizen,4.0,3.2,4.8,2016-11-08 08:00:00,2016-11-11 17:00:00,,0
234,1.1.1.13.8.18,Plaatsen TDI-lus,2.0,1.6,2.4,2016-11-15 08:00:00,2016-11-16 17:00:00,,0
235,1.1.1.13.8.19,Bestrating trambaan,12.0,9.6,14.4,2016-11-09 08:00:00,2016-11-24 17:00:00,,0
236,1.1.1.13.8.20,"Kasten, ITRIS-palen",6.0,4.8,7.2,2016-11-25 08:00:00,2016-12-02 17:00:00,,0
237,1.1.1.13.8.21,Plaatsen masten,5.0,4.0,6.0,2016-11-30 08:00:00,2016-12-06 17:00:00,,0
238,1.1.1.13.8.22,Plaatsen OV palen,1.0,0.8,1.2,2016-11-30 08:00:00,2016-11-30 17:00:00,,0
239,1.1.1.13.8.23,Plaatsen armaturen ,1.0,0.8,1.2,2016-12-01 08:00:00,2016-12-01 17:00:00,,0
240,1.1.1.13.8.24,Voetpad en groenzone St-Laureiskaai,64.0,64.0,64.0,2017-04-10 08:00:00,2017-07-06 17:00:00,,0
241,1.1.1.13.8.24.1,Voetpad dokken,16.0,12.8,19.2,2017-04-10 08:00:00,2017-05-01 17:00:00,,0
242,1.1.1.13.8.24.2,Voetpad dokken resterende zone (40m),4.0,3.2,4.8,2017-07-03 08:00:00,2017-07-06 17:00:00,,0
243,1.1.1.13.8.24.3,Groenzone,5.0,4.0,6.0,2017-04-25 08:00:00,2017-05-01 17:00:00,,0
244,1.1.1.13.8.24.4,Teelaarde,4.0,3.2,4.8,2017-06-12 08:00:00,2017-06-15 17:00:00,,0
245,1.1.1.13.8.24.5,Voetpad parking Vespa,5.0,4.0,6.0,2017-04-25 08:00:00,2017-05-01 17:00:00,,0
246,1.1.1.13.8.25,Afwerking (kasseien),5.0,4.0,6.0,2017-02-06 08:00:00,2017-02-10 17:00:00,,0
247,1.1.1.13.8.26,Plaatsen armen bvl palen,10.0,8.0,12.0,2017-01-30 08:00:00,2017-02-10 17:00:00,,0
248,1.1.1.13.8.27,"Bvl draad afrollen, afstellen en primaire kabels trekken",30.0,24.0,36.0,2017-03-06 08:00:00,2017-04-14 17:00:00,,0
249,1.1.1.13.8.28,BVL afstellen,4.0,3.2,4.8,2017-04-24 08:00:00,2017-04-27 17:00:00,,0
250,1.1.1.13.8.29,Wissels aansluiten en testen,5.0,4.0,6.0,2017-04-20 08:00:00,2017-04-26 17:00:00,,0
251,1.1.1.13.8.30,Bestrating trambaan Noorderlijke kant ,5.0,4.0,6.0,2017-04-25 08:00:00,2017-05-01 17:00:00,,0
252,1.1.1.13.8.31,Verharding KP St-Laureiskaai - Rijnkaai,10.0,8.0,12.0,2017-05-02 08:00:00,2017-05-15 17:00:00,,0
253,1.1.1.13.8.32,Bestratingen trambaan,10.0,8.0,12.0,2017-01-31 08:00:00,2017-02-13 17:00:00,,0
254,1.1.1.13.9,Bataviastraat (Zone 7B en 7C),314.0,314.0,314.0,2016-03-01 08:00:00,2017-05-12 17:00:00,,0
255,1.1.1.13.9.1,"Voorbereidingen, signalisatie en opbraakwerken",5.0,4.0,6.0,2016-03-01 08:00:00,2016-03-07 17:00:00,,0
256,1.1.1.13.9.2,"Peilen, (ver)plaatsen en aanpassen nutsleidingen",45.0,36.0,54.0,2016-03-08 08:00:00,2016-05-09 17:00:00,,0
257,1.1.1.13.9.3,Fase 1 - Rijweg (oost),129.0,129.0,129.0,2016-05-10 08:00:00,2016-11-04 17:00:00,,0
258,1.1.1.13.9.3.1,Opbraak bestaande situatie,5.0,4.0,6.0,2016-05-18 08:00:00,2016-05-24 17:00:00,,0
259,1.1.1.13.9.3.2,Pompput PS1,74.0,74.0,74.0,2016-05-10 08:00:00,2016-08-19 17:00:00,,0
260,1.1.1.13.9.3.2.1,Voorafgraving tot 1.5m,1.0,0.8,1.2,2016-05-10 08:00:00,2016-05-10 17:00:00,,0
261,1.1.1.13.9.3.2.2,Verplaatsen nutsleidingen + archeologie,20.0,16.0,24.0,2016-05-11 08:00:00,2016-06-07 17:00:00,,0
262,1.1.1.13.9.3.2.3,Levering prefabelementen,0.0,0.0,0.0,2016-06-08 17:00:00,2016-06-08 17:00:00,,0
263,1.1.1.13.9.3.2.4,Afzinken pompput + onderwaterbeton,5.0,4.0,6.0,2016-06-09 08:00:00,2016-06-15 17:00:00,,0
264,1.1.1.13.9.3.2.5,opvulling + storten vloeren,5.0,4.0,6.0,2016-06-16 08:00:00,2016-06-22 17:00:00,,0
265,1.1.1.13.9.3.2.6,Instorten muurdoorvoerstukken,3.0,2.4,3.6,2016-06-23 08:00:00,2016-06-27 17:00:00,,0
266,1.1.1.13.9.3.2.7,EM-installatie,10.0,8.0,12.0,2016-08-08 08:00:00,2016-08-19 17:00:00,,0
267,1.1.1.13.9.3.3,"Grindpalen streng R3-PS1, D3-PS1",3.0,2.4,3.6,2016-06-02 08:00:00,2016-06-06 17:00:00,,0
268,1.1.1.13.9.3.4,"Grindpalen streng R3-R4, D3-D4",4.0,3.2,4.8,2016-06-14 08:00:00,2016-06-17 17:00:00,,0
269,1.1.1.13.9.3.5,"Riolering strengen PS1-R3-R4, PS1-D3-D4",10.0,8.0,12.0,2016-06-23 08:00:00,2016-07-06 17:00:00,,0
270,1.1.1.13.9.3.6,Huisaansluitingen en slokkerbuizen,2.0,1.6,2.4,2016-09-12 08:00:00,2016-09-13 17:00:00,,0
271,1.1.1.13.9.3.7,Wachtbuizen OV en glasvezel,1.0,0.8,1.2,2016-09-14 08:00:00,2016-09-14 17:00:00,,0
272,1.1.1.13.9.3.8,Plaatsen OV kabel,2.0,1.6,2.4,2016-09-14 08:00:00,2016-09-15 17:00:00,,0
273,1.1.1.13.9.3.9,Grondwerk en onderfundering,6.0,4.8,7.2,2016-09-16 08:00:00,2016-09-23 17:00:00,,0
274,1.1.1.13.9.3.10,Plaatsen OV palen,1.0,0.8,1.2,2016-09-16 08:00:00,2016-09-16 17:00:00,,0
275,1.1.1.13.9.3.11,Lijnvormige elementen,6.0,4.8,7.2,2016-09-26 08:00:00,2016-10-03 17:00:00,,0
276,1.1.1.13.9.3.12,Laatste funderingslaag,3.0,2.4,3.6,2016-10-04 08:00:00,2016-10-06 17:00:00,,0
277,1.1.1.13.9.3.13,Verharding rijweg + parkeerstrook (kasseien),10.0,8.0,12.0,2016-10-07 08:00:00,2016-10-20 17:00:00,,0
278,1.1.1.13.9.3.14,Voetpad,20.0,16.0,24.0,2016-09-29 08:00:00,2016-10-26 17:00:00,,0
279,1.1.1.13.9.3.15,Fasewissel Bataviastraat,0.0,0.0,0.0,2016-11-04 17:00:00,2016-11-04 17:00:00,,0
280,1.1.1.13.9.4,Fase 2 - Trambaan (west),142.0,142.0,142.0,2016-10-27 08:00:00,2017-05-12 17:00:00,,0
281,1.1.1.13.9.4.1,Opbraak bestaande situatie,3.0,2.4,3.6,2017-01-11 08:00:00,2017-01-13 17:00:00,,0
282,1.1.1.13.9.4.2,Proefputten ,1.0,0.8,1.2,2016-12-23 08:00:00,2016-12-23 17:00:00,,0
283,1.1.1.13.9.4.3,Mastfundering,2.0,1.6,2.4,2017-01-13 08:00:00,2017-01-16 17:00:00,,0
284,1.1.1.13.9.4.4,"Langse wachtbuizen, wachtbuis tractiekabel, dwarse wachtbuizen",7.0,5.6,8.4,2017-01-16 08:00:00,2017-01-24 17:00:00,,0
285,1.1.1.13.9.4.5,Grondwerk + Onderfundering,14.0,11.2,16.8,2017-01-17 08:00:00,2017-02-03 17:00:00,,0
286,1.1.1.13.9.4.6,Graafwerken parallel aan spoor,9.0,7.2,10.8,2016-10-27 08:00:00,2016-11-08 17:00:00,,0
287,1.1.1.13.9.4.7,Plaatsen onderlaag zand,1.0,0.8,1.2,2016-11-17 08:00:00,2016-11-17 17:00:00,,0
288,1.1.1.13.9.4.8,Plaatsen feederkabel FM12 + afwerking zand,3.0,2.4,3.6,2016-11-18 08:00:00,2016-11-22 17:00:00,,0
289,1.1.1.13.9.4.9,Plaatsen OV-kabel (6st),4.0,3.2,4.8,2017-01-17 08:00:00,2017-01-20 17:00:00,,0
290,1.1.1.13.9.4.10,"Wachtbuizen parallel aan spoor, trekputten, funderingen masten",10.0,8.0,12.0,2017-02-02 08:00:00,2017-02-15 17:00:00,,0
291,1.1.1.13.9.4.11,Spoorwerken wissels Bataviastraat ,70.0,70.0,70.0,2016-11-16 17:00:00,2017-02-22 17:00:00,,0
292,1.1.1.13.9.4.11.1,Leveren wissels 159w939/202,0.0,0.0,0.0,2016-11-16 17:00:00,2016-11-16 17:00:00,,0
293,1.1.1.13.9.4.11.2,Leveren wissels 159w201,0.0,0.0,0.0,2016-11-18 17:00:00,2016-11-18 17:00:00,,0
294,1.1.1.13.9.4.11.3,Plaatsing wissels Bataviastraat-Amsterdamstraat (3st),1.0,0.8,1.2,2017-02-07 08:00:00,2017-02-07 17:00:00,,0
295,1.1.1.13.9.4.11.4,"Plaatsen panelen, spoorbakjes, retourkabels, bekleding en afstellen",8.0,6.4,9.6,2017-02-13 08:00:00,2017-02-22 17:00:00,,0
296,1.1.1.13.9.4.12,Spoorwerken zone 7C- kruispunt,7.0,7.0,7.0,2017-01-20 08:00:00,2017-01-30 17:00:00,,0
297,1.1.1.13.9.4.12.1,"Plaatsen bochtpanelen, lassen, railbekleding en afstellen",7.0,5.6,8.4,2017-01-20 08:00:00,2017-01-30 17:00:00,,0
298,1.1.1.13.9.4.13,Kifteton en afwerking (asfalt onderlaag) - kruispunt,2.0,1.6,2.4,2017-01-31 08:00:00,2017-02-01 17:00:00,,0
299,1.1.1.13.9.4.14,Kiftbeton - Bataviastraat,2.0,1.6,2.4,2017-02-24 08:00:00,2017-02-27 17:00:00,,0
300,1.1.1.13.9.4.15,Plaatsen TDI-lus en secundaire kabels,4.0,3.2,4.8,2017-02-28 08:00:00,2017-03-03 17:00:00,,0
301,1.1.1.13.9.4.16,Afwerking (kasseien) - Bataviastraat,39.0,31.2,46.8,2017-03-06 08:00:00,2017-04-27 17:00:00,,0
302,1.1.1.13.9.4.17,Kantstrook blauwe steen ,4.0,3.2,4.8,2017-04-26 08:00:00,2017-05-01 17:00:00,,0
303,1.1.1.13.9.4.18,Aanleg feederkabel vanuit TS Batavia,13.0,10.4,15.6,2017-02-07 08:00:00,2017-02-23 17:00:00,,0
304,1.1.1.13.9.4.19,Verharinding Perrons (excl leuningen),64.0,51.2,76.8,2017-02-14 08:00:00,2017-05-12 17:00:00,,0
305,1.1.1.13.9.4.20,"Kasten, ITRIS-palen (buiten scope Brabo)",6.0,4.8,7.2,2017-05-02 08:00:00,2017-05-09 17:00:00,,0
306,1.1.1.13.9.4.21,Plaatsen masten,5.0,4.0,6.0,2017-02-15 08:00:00,2017-02-21 17:00:00,,0
307,1.1.1.13.9.4.22,"Bvl draad afrollen, afstellen en primaire kabels trekken",20.0,16.0,24.0,2017-03-06 08:00:00,2017-03-31 17:00:00,,0
308,1.1.1.13.9.4.23,BVL afstellen,4.0,3.2,4.8,2017-04-24 08:00:00,2017-04-27 17:00:00,,0
309,1.1.1.13.9.4.24,Wissels aansluiten en testen,5.0,4.0,6.0,2017-04-20 08:00:00,2017-04-26 17:00:00,,0
310,1.1.1.13.9.4.25,Plaatsen armaturen ,1.0,0.8,1.2,2017-02-22 08:00:00,2017-02-22 17:00:00,,0
311,1.1.1.13.9.4.26,Voetpad zone 7B en 7C ,4.0,3.2,4.8,2017-04-26 08:00:00,2017-05-01 17:00:00,,0
312,1.1.1.13.9.4.27,Groenzone aanleggen,4.0,3.2,4.8,2017-04-26 08:00:00,2017-05-01 17:00:00,,0
313,1.1.1.13.10,Dinantstraat,204.0,204.0,204.0,2016-05-24 17:00:00,2017-03-06 17:00:00,,0
314,1.1.1.13.10.1,Afgesloten voor verkeer,0.0,0.0,0.0,2016-05-24 17:00:00,2016-05-24 17:00:00,,0
315,1.1.1.13.10.2,Opbraak bestaande situatie,3.0,2.4,3.6,2016-05-25 08:00:00,2016-05-27 17:00:00,,0
316,1.1.1.13.10.3,Grindpalen streng R5-R3,3.0,2.4,3.6,2016-05-30 08:00:00,2016-06-01 17:00:00,,0
317,1.1.1.13.10.4,Riolering R5-R3,4.0,3.2,4.8,2016-06-02 08:00:00,2016-06-07 17:00:00,,0
318,1.1.1.13.10.5,Tijdelijke overkoppeling bestaande riolering + aansluiting Freindshipbuilding,1.0,0.8,1.2,2016-06-08 08:00:00,2016-06-08 17:00:00,,0
319,1.1.1.13.10.6,Opbraak bestaande dwa riolering,1.0,0.8,1.2,2016-06-09 08:00:00,2016-06-09 17:00:00,,0
320,1.1.1.13.10.7,Grindpalen streng D3-D5,2.0,1.6,2.4,2016-06-10 08:00:00,2016-06-13 17:00:00,,0
321,1.1.1.13.10.8,Riolering streng D5-D3,2.0,1.6,2.4,2016-06-17 08:00:00,2016-06-20 17:00:00,,0
322,1.1.1.13.10.9,Wachtbuizen en trekputten,2.0,1.6,2.4,2016-06-21 08:00:00,2016-06-22 17:00:00,,0
323,1.1.1.13.10.10,Grondkoffer en fundering wegenis,3.0,2.4,3.6,2016-06-23 08:00:00,2016-06-27 17:00:00,,0
324,1.1.1.13.10.11,Slokkers,2.0,1.6,2.4,2016-06-28 08:00:00,2016-06-29 17:00:00,,0
325,1.1.1.13.10.12,Lijnvormige elementen - natuursteen,3.0,2.4,3.6,2016-06-30 08:00:00,2016-07-04 17:00:00,,0
326,1.1.1.13.10.13,Verharding rijweg en parkeerstroken - kasseien,4.0,3.2,4.8,2016-07-05 08:00:00,2016-07-08 17:00:00,,0
327,1.1.1.13.10.14,Dinantstraat open voor verkeer,0.0,0.0,0.0,2016-08-01 17:00:00,2016-08-01 17:00:00,,0
328,1.1.1.13.10.15,Afwerking voetpaden,16.0,12.8,19.2,2017-02-13 08:00:00,2017-03-06 17:00:00,,0
329,1.1.1.13.11,Trambaan Amsterdamstraat keerlus (Zone 8),113.0,113.0,113.0,2016-11-11 17:00:00,2017-04-19 17:00:00,,0
330,1.1.1.13.11.1,Leveren kruis 159K002,0.0,0.0,0.0,2016-11-18 17:00:00,2016-11-18 17:00:00,,0
331,1.1.1.13.11.2,Leveren wissels 159w203/204,0.0,0.0,0.0,2016-11-11 17:00:00,2016-11-11 17:00:00,,0
332,1.1.1.13.11.3,Plaatsen wissels 159w203/204 en kruis 159K002 + 19 panelen,15.0,12.0,18.0,2016-11-17 08:00:00,2016-12-07 17:00:00,,0
333,1.1.1.13.11.4,Lassen (58st),3.0,2.4,3.6,2017-03-28 08:00:00,2017-03-30 17:00:00,,0
334,1.1.1.13.11.5,Plaatsen spoorbakjes,1.0,0.8,1.2,2017-02-24 08:00:00,2017-02-24 17:00:00,,0
335,1.1.1.13.11.6,Plaatsen wachtbuizen ,1.0,0.8,1.2,2017-02-27 08:00:00,2017-02-27 17:00:00,,0
336,1.1.1.13.11.7,Plaatsen retourkabels,2.0,1.6,2.4,2017-02-24 08:00:00,2017-02-27 17:00:00,,0
337,1.1.1.13.11.8,Bedding terug afgraven en heraanleggen,6.0,4.8,7.2,2017-01-23 08:00:00,2017-01-30 17:00:00,,0
338,1.1.1.13.11.9,Lineaire elementen trekken,2.0,1.6,2.4,2017-03-06 08:00:00,2017-03-07 17:00:00,,0
339,1.1.1.13.11.10,Op hoogte brengen en afstellen,2.0,1.6,2.4,2017-02-24 08:00:00,2017-02-27 17:00:00,,0
340,1.1.1.13.11.11,Plaatsen raillijfbekleding,4.0,3.2,4.8,2017-02-22 08:00:00,2017-02-27 17:00:00,,0
341,1.1.1.13.11.12,Plaatsen spoorslikkers,2.0,1.6,2.4,2017-02-27 08:00:00,2017-02-28 17:00:00,,0
342,1.1.1.13.11.13,Plaatsen spoorbakjes feeders,1.0,0.8,1.2,2017-02-27 08:00:00,2017-02-27 17:00:00,,0
343,1.1.1.13.11.14,Opmeting en aanpassen spoor,1.0,0.8,1.2,2017-02-28 08:00:00,2017-02-28 17:00:00,,0
344,1.1.1.13.11.15,Oplevering spoor door BTR,1.0,0.8,1.2,2017-03-01 08:00:00,2017-03-01 17:00:00,,0
345,1.1.1.13.11.16,Aanbrengen van wapening,2.0,1.6,2.4,2017-02-28 08:00:00,2017-03-01 17:00:00,,0
346,1.1.1.13.11.17,Aanbrengen kiftbeton,2.0,1.6,2.4,2017-03-02 08:00:00,2017-03-03 17:00:00,,0
347,1.1.1.13.11.18,Bestrating trambaan amsterdamstraat (keerlus),6.0,4.8,7.2,2017-04-12 08:00:00,2017-04-19 17:00:00,,0
348,1.1.1.14,44 London-Amsterdamstraat,498.0,498.0,498.0,2016-03-01 08:00:00,2018-01-25 17:00:00,,0
349,1.1.1.14.1,Voorafgaande werken,145.0,145.0,145.0,2016-11-18 17:00:00,2017-06-09 17:00:00,,0
350,1.1.1.14.1.1,Spoorwerken wissels Amsterdamstraat tot Londenbrug,23.0,23.0,23.0,2016-11-18 17:00:00,2016-12-21 17:00:00,,0
351,1.1.1.14.1.1.1,Leveren wissels 159W937/938,0.0,0.0,0.0,2016-11-18 17:00:00,2016-11-18 17:00:00,,0
352,1.1.1.14.1.1.2,Leveren wissel 159K001,0.0,0.0,0.0,2016-12-09 17:00:00,2016-12-09 17:00:00,,0
353,1.1.1.14.1.1.3,Plaatsen wissel + 13 panelen,7.0,5.6,8.4,2016-11-29 08:00:00,2016-12-07 17:00:00,,0
354,1.1.1.14.1.1.4,Plaatsen wissel+kruis + 22 panelen,11.0,8.8,13.2,2016-12-07 08:00:00,2016-12-21 17:00:00,,0
355,1.1.1.14.1.2,Plaatsen spoorbakjes,1.0,0.8,1.2,2016-12-22 08:00:00,2016-12-22 17:00:00,,0
356,1.1.1.14.1.3,Plaatsen herassen Londenstraat  - +/- 800 m,2.0,1.6,2.4,2017-05-29 08:00:00,2017-05-30 17:00:00,,0
357,1.1.1.14.1.4,Beschermen bomen Londenstraat - +/- 31 st,2.0,1.6,2.4,2017-05-29 08:00:00,2017-05-30 17:00:00,,0
358,1.1.1.14.1.5,Inrichten werfzone - containerzone + sanitair,1.0,0.8,1.2,2017-06-09 08:00:00,2017-06-09 17:00:00,,0
359,1.1.1.14.2,Amsterdamstraat,67.0,67.0,67.0,2017-06-16 17:00:00,2017-09-19 17:00:00,,0
360,1.1.1.14.2.1,Wegeniswerken Rondom Londenbrug Westelijke Oever,52.0,52.0,52.0,2017-07-10 08:00:00,2017-09-19 17:00:00,,0
361,1.1.1.14.2.1.1,Uitvoering wegeniswerken rondom Londenbrug westelijke oever,52.0,41.6,62.4,2017-07-10 08:00:00,2017-09-19 17:00:00,,0
362,1.1.1.14.2.2,Amsterdamstraat fase 1 (Rode zone op plan),21.0,21.0,21.0,2017-07-14 17:00:00,2017-08-14 17:00:00,,0
363,1.1.1.14.2.2.1,Opbraak asfalt,0.0,0.0,0.0,2017-07-14 17:00:00,2017-07-14 17:00:00,,0
364,1.1.1.14.2.2.2,Grondwerk,0.0,0.0,0.0,2017-07-17 17:00:00,2017-07-17 17:00:00,,0
365,1.1.1.14.2.2.3,Tractiekabel trekken,0.0,0.0,0.0,2017-07-17 17:00:00,2017-07-17 17:00:00,,0
366,1.1.1.14.2.2.4,Plaatsen onderfundering,0.0,0.0,0.0,2017-07-18 17:00:00,2017-07-18 17:00:00,,0
367,1.1.1.14.2.2.5,Plaatproef en opmeting onderfundering,0.0,0.0,0.0,2017-07-18 17:00:00,2017-07-18 17:00:00,,0
368,1.1.1.14.2.2.6,Wachtbuizen,0.0,0.0,0.0,2017-07-19 17:00:00,2017-07-19 17:00:00,,0
369,1.1.1.14.2.2.7,Blaasbuis trekken (voor plaatsen trekput),0.0,0.0,0.0,2017-07-19 17:00:00,2017-07-19 17:00:00,,0
370,1.1.1.14.2.2.8,Plaatsen fundering 0/32,0.0,0.0,0.0,2017-07-24 17:00:00,2017-07-24 17:00:00,,0
371,1.1.1.14.2.2.9,Plaatproef en opmeting fundering 0/32,0.0,0.0,0.0,2017-07-25 17:00:00,2017-07-25 17:00:00,,0
372,1.1.1.14.2.2.10,Plaatsen panelen en grof afstellen,0.0,0.0,0.0,2017-07-26 17:00:00,2017-07-26 17:00:00,,0
373,1.1.1.14.2.2.11,Bekisting kifbeton + afwatering,0.0,0.0,0.0,2017-07-27 17:00:00,2017-07-27 17:00:00,,0
374,1.1.1.14.2.2.12,Wachtbuizen FAB,1.0,0.8,1.2,2017-07-31 08:00:00,2017-07-31 17:00:00,,0
375,1.1.1.14.2.2.13,Fijn afstellen spoor,1.0,0.8,1.2,2017-08-01 08:00:00,2017-08-01 17:00:00,,0
376,1.1.1.14.2.2.14,kifbeton,1.0,0.8,1.2,2017-08-02 08:00:00,2017-08-02 17:00:00,,0
377,1.1.1.14.2.2.15,Opmeting sporen na kifbeton,1.0,0.8,1.2,2017-08-03 08:00:00,2017-08-03 17:00:00,,0
378,1.1.1.14.2.2.16,Aanbrengen lassen,2.0,1.6,2.4,2017-08-04 08:00:00,2017-08-07 17:00:00,,0
379,1.1.1.14.2.2.17,bekisting borduren,1.0,0.8,1.2,2017-08-03 08:00:00,2017-08-03 17:00:00,,0
380,1.1.1.14.2.2.18,borduren gieten,1.0,0.8,1.2,2017-08-07 08:00:00,2017-08-07 17:00:00,,0
381,1.1.1.14.2.2.19,Spoorwijdte controleren en eventueel herstellen voor aanbrengen verharding,1.0,0.8,1.2,2017-08-07 08:00:00,2017-08-07 17:00:00,,0
382,1.1.1.14.2.2.20,Aanbrengen resterende raillijfbekleding,1.0,0.8,1.2,2017-08-07 08:00:00,2017-08-07 17:00:00,,0
383,1.1.1.14.2.2.21,Aanbrengen verharding,6.0,4.8,7.2,2017-08-07 08:00:00,2017-08-14 17:00:00,,0
384,1.1.1.14.2.2.22,Blauwe steen langs asfalt,1.0,0.8,1.2,2017-08-03 08:00:00,2017-08-03 17:00:00,,0
385,1.1.1.14.2.2.23,Onderlaag asfalt,1.0,0.8,1.2,2017-08-04 08:00:00,2017-08-04 17:00:00,,0
386,1.1.1.14.2.2.24,Toplaag asfalt,1.0,0.8,1.2,2017-08-07 08:00:00,2017-08-07 17:00:00,,0
387,1.1.1.14.2.2.25,Aanleg perron,6.0,4.8,7.2,2017-07-31 08:00:00,2017-08-07 17:00:00,,0
388,1.1.1.14.2.2.26,Afrol bvl vanaf sint-Laureiskaai (Nachtwerk),11.0,8.8,13.2,2017-07-31 08:00:00,2017-08-14 17:00:00,,0
389,1.1.1.14.2.3,Amsterdamstraat fase 2 (Blauwe zone op plan),41.0,41.0,41.0,2017-06-16 17:00:00,2017-08-14 17:00:00,,0
390,1.1.1.14.2.3.1,Fasewissel Amsterdamstraat (start fase 2),0.0,0.0,0.0,2017-06-16 17:00:00,2017-06-16 17:00:00,,0
391,1.1.1.14.2.3.2,Grondwerk,2.0,1.6,2.4,2017-06-19 08:00:00,2017-06-20 17:00:00,,0
392,1.1.1.14.2.3.3,Plaatproef grondwerk,1.0,0.8,1.2,2017-06-21 08:00:00,2017-06-21 17:00:00,,0
393,1.1.1.14.2.3.4,Eventuele grondverbetering,1.0,0.8,1.2,2017-06-22 08:00:00,2017-06-22 17:00:00,,0
394,1.1.1.14.2.3.5,Aanleg onderfundering + plaatproef,2.0,1.6,2.4,2017-06-23 08:00:00,2017-06-26 17:00:00,,0
395,1.1.1.14.2.3.6,Plaatsen trekputten en wachtbuizen,3.0,2.4,3.6,2017-06-27 08:00:00,2017-06-29 17:00:00,,0
396,1.1.1.14.2.3.7,Plaatsen drain,3.0,2.4,3.6,2017-06-27 08:00:00,2017-06-29 17:00:00,,0
397,1.1.1.14.2.3.8,Aanleg fundering + plaatproef,2.0,1.6,2.4,2017-06-30 08:00:00,2017-07-03 17:00:00,,0
398,1.1.1.14.2.3.9,Trekken slibvorm,2.0,1.6,2.4,2017-07-04 08:00:00,2017-07-05 17:00:00,,0
399,1.1.1.14.2.3.10,Plaatsen borduur,1.0,0.8,1.2,2017-07-05 08:00:00,2017-07-05 17:00:00,,0
400,1.1.1.14.2.3.11,Leggen panelen + grof afstellen,1.0,0.8,1.2,2017-07-06 08:00:00,2017-07-06 17:00:00,,0
401,1.1.1.14.2.3.12,Plaatsen wachtbuizen FAB,1.0,0.8,1.2,2017-07-06 08:00:00,2017-07-06 17:00:00,,0
402,1.1.1.14.2.3.13,Bekisting plaatsen en aanbrengen wapening kiftbeton,1.0,0.8,1.2,2017-07-06 08:00:00,2017-07-06 17:00:00,,0
403,1.1.1.14.2.3.14,fijnafstellen spoor,1.0,0.8,1.2,2017-07-07 08:00:00,2017-07-07 17:00:00,,0
404,1.1.1.14.2.3.15,Aanbrengen kiftbeton (BCO)-> Eerste dag doorsteek,0.0,0.0,0.0,2017-07-07 17:00:00,2017-07-07 17:00:00,,0
405,1.1.1.14.2.3.16,Opmeting spoor na plaatsen kiftbeton,0.0,0.0,0.0,2017-07-10 17:00:00,2017-07-10 17:00:00,,0
406,1.1.1.14.2.3.17,Aanbrengen lassen (16 sts),0.0,0.0,0.0,2017-07-11 17:00:00,2017-07-11 17:00:00,,0
407,1.1.1.14.2.3.18,Plaatsen borduren,0.0,0.0,0.0,2017-07-11 17:00:00,2017-07-11 17:00:00,,0
408,1.1.1.14.2.3.19,Onderlaag asfalt,0.0,0.0,0.0,2017-07-12 17:00:00,2017-07-12 17:00:00,,0
409,1.1.1.14.2.3.20,Toplaag asfalt,0.0,0.0,0.0,2017-07-13 17:00:00,2017-07-13 17:00:00,,0
410,1.1.1.14.2.3.21,Aanbrengen resterende raillijfbekleding,0.0,0.0,0.0,2017-07-12 17:00:00,2017-07-12 17:00:00,,0
411,1.1.1.14.2.3.22,Eventueel aanpassen spoor nav opmeting,0.0,0.0,0.0,2017-07-12 17:00:00,2017-07-12 17:00:00,,0
412,1.1.1.14.2.3.23,Doorsteek klaar voor start fase 1 Amsterdamstraat,0.0,0.0,0.0,2017-07-13 17:00:00,2017-07-13 17:00:00,,0
413,1.1.1.14.2.3.24,Split aanvullen,0.0,0.0,0.0,2017-07-13 17:00:00,2017-07-13 17:00:00,,0
414,1.1.1.14.2.3.25,Bestrating,0.0,0.0,0.0,2017-07-14 17:00:00,2017-07-14 17:00:00,,0
415,1.1.1.14.2.3.26,Maken massief MN0910,5.0,4.0,6.0,2017-07-03 08:00:00,2017-07-07 17:00:00,,0
416,1.1.1.14.2.3.27,Maken proefput MN0912,0.0,0.0,0.0,2017-07-07 17:00:00,2017-07-07 17:00:00,,0
417,1.1.1.14.2.3.28,Boren fundering MN0912,0.0,0.0,0.0,2017-07-21 17:00:00,2017-07-21 17:00:00,,0
418,1.1.1.14.2.3.29,Plaatsen masten + afrollen + afstellen bovenleiding (dag en nachtwerk),5.0,4.0,6.0,2017-07-31 08:00:00,2017-08-04 17:00:00,,0
419,1.1.1.14.2.3.30,Afrollen + afstellen bovenleiding (nachtwerk),6.0,4.8,7.2,2017-08-07 08:00:00,2017-08-14 17:00:00,,0
420,1.1.1.14.2.3.31,Ophalen container Aelterman Londenbrug,1.0,0.8,1.2,2017-07-06 08:00:00,2017-07-06 17:00:00,,0
421,1.1.1.14.3,Londenstraat,472.0,472.0,472.0,2016-03-01 08:00:00,2017-12-20 17:00:00,,0
422,1.1.1.14.3.1,Vertraging tgv ontwerp Kattendijkdok,42.0,42.0,42.0,2017-06-16 17:00:00,2017-08-15 17:00:00,,0
423,1.1.1.14.3.1.1,Start stilstand Londenstraat wegens ontwerp KP Kattendijkdok,0.0,0.0,0.0,2017-06-16 17:00:00,2017-06-16 17:00:00,,0
424,1.1.1.14.3.1.2,Goedkeuring ontwerp KP Kattendijkdok,0.0,0.0,0.0,2017-07-31 17:00:00,2017-07-31 17:00:00,,0
425,1.1.1.14.3.1.3,Voorbereiding heropstart werf,5.0,4.0,6.0,2017-08-01 08:00:00,2017-08-07 17:00:00,,0
426,1.1.1.14.3.1.4,Herstellen / aanpassen grondwerk nav ontwerp Kattendijkdok,6.0,4.8,7.2,2017-08-08 08:00:00,2017-08-15 17:00:00,,0
427,1.1.1.14.3.2,Wegeniswerken Rondom Londenbrug Oostelijke Oever,37.0,37.0,37.0,2017-08-07 17:00:00,2017-09-27 17:00:00,,0
428,1.1.1.14.3.2.1,Klaar om werken te starten Londenbrug Oostelijke oever nav KP Kattendijkdok,0.0,0.0,0.0,2017-08-07 17:00:00,2017-08-07 17:00:00,,0
429,1.1.1.14.3.2.2,Uitvoering wegenis incl. laatste sporen,37.0,29.6,44.4,2017-08-08 08:00:00,2017-09-27 17:00:00,,0
430,1.1.1.14.3.3,Kruispunt Londonstraat - Kattendijkdok Oostkaai (Groene zone op plan),49.0,49.0,49.0,2017-09-04 17:00:00,2017-11-10 17:00:00,,0
431,1.1.1.14.3.3.1,Fasewissel Afsluiten kruispunt Londenstraat - Kattendijkdok Oostkaai,0.0,0.0,0.0,2017-09-04 17:00:00,2017-09-04 17:00:00,,0
432,1.1.1.14.3.3.2,Opbraak + uitgraven bedding,5.0,4.0,6.0,2017-09-05 08:00:00,2017-09-11 17:00:00,,0
433,1.1.1.14.3.3.3,Eventuele grondverbetering,3.0,2.4,3.6,2017-09-12 08:00:00,2017-09-14 17:00:00,,0
434,1.1.1.14.3.3.4,Onderfundering + plaatproef,3.0,2.4,3.6,2017-09-15 08:00:00,2017-09-19 17:00:00,,0
435,1.1.1.14.3.3.5,Maken proefputten bvl,3.0,2.4,3.6,2017-09-15 08:00:00,2017-09-19 17:00:00,,0
436,1.1.1.14.3.3.6,Plaatsen trekputten,3.0,2.4,3.6,2017-09-20 08:00:00,2017-09-22 17:00:00,,0
437,1.1.1.14.3.3.7,Plaatsen wachtbuizen,3.0,2.4,3.6,2017-09-20 08:00:00,2017-09-22 17:00:00,,0
438,1.1.1.14.3.3.8,Plaatsen drain,2.0,1.6,2.4,2017-09-20 08:00:00,2017-09-21 17:00:00,,0
439,1.1.1.14.3.3.9,Plaatsen fundering,2.0,1.6,2.4,2017-09-25 08:00:00,2017-09-26 17:00:00,,0
440,1.1.1.14.3.3.10,Fundering bvl,5.0,4.0,6.0,2017-09-25 08:00:00,2017-09-29 17:00:00,,0
441,1.1.1.14.3.3.11,Plaatproef fundering,1.0,0.8,1.2,2017-09-27 08:00:00,2017-09-27 17:00:00,,0
442,1.1.1.14.3.3.12,Plaatsen bovenleidingspalen,4.0,3.2,4.8,2017-10-02 08:00:00,2017-10-05 17:00:00,,0
443,1.1.1.14.3.3.13,"Leggen 6 wissels, 3 kruisen, 10 gebogen panelen",1.0,0.8,1.2,2017-10-03 08:00:00,2017-10-03 17:00:00,,0
444,1.1.1.14.3.3.14,"Grof afstellen wissels, kruisen en panelen",2.0,1.6,2.4,2017-10-04 08:00:00,2017-10-05 17:00:00,,0
445,1.1.1.14.3.3.15,Plaatsen d63 wachtbuizen,1.0,0.8,1.2,2017-10-06 08:00:00,2017-10-06 17:00:00,,0
446,1.1.1.14.3.3.16,Steken waterbuizen wissels (BCO),1.0,0.8,1.2,2017-10-06 08:00:00,2017-10-06 17:00:00,,0
447,1.1.1.14.3.3.17,Plaatsen slokkers,1.0,0.8,1.2,2017-10-06 08:00:00,2017-10-06 17:00:00,,0
448,1.1.1.14.3.3.18,Bekisting plaatsen en aanbrengen wapening (BCO),1.0,0.8,1.2,2017-10-06 08:00:00,2017-10-06 17:00:00,,0
449,1.1.1.14.3.3.19,Plaatsen retourkabels,1.0,0.8,1.2,2017-10-06 08:00:00,2017-10-06 17:00:00,,0
450,1.1.1.14.3.3.20,Plaatsen spoorbakjes en laspadden,1.0,0.8,1.2,2017-10-06 08:00:00,2017-10-06 17:00:00,,0
451,1.1.1.14.3.3.21,Wachtbuizen + sokkel kast wisselsturing voorzien,1.0,0.8,1.2,2017-10-06 08:00:00,2017-10-06 17:00:00,,0
452,1.1.1.14.3.3.22,Opmeting en fijnafstellen spoor,3.0,2.4,3.6,2017-10-09 08:00:00,2017-10-11 17:00:00,,0
453,1.1.1.14.3.3.23,Oplevering spoor door BTR ( fotoreportage),2.0,1.6,2.4,2017-10-10 08:00:00,2017-10-11 17:00:00,,0
454,1.1.1.14.3.3.24,Aanbrengen kiftbeton (BCO),3.0,2.4,3.6,2017-10-10 08:00:00,2017-10-12 17:00:00,,0
455,1.1.1.14.3.3.25,Opmeting spoor na plaatsen kiftbeton,2.0,1.6,2.4,2017-10-13 08:00:00,2017-10-16 17:00:00,,0
456,1.1.1.14.3.3.26,Plaatsen TDI-lus + HFK-lus wissel,2.0,1.6,2.4,2017-10-17 08:00:00,2017-10-18 17:00:00,,0
457,1.1.1.14.3.3.27,Aanbrengen lassen (72 sts) (2 lasploegen),10.0,8.0,12.0,2017-10-17 08:00:00,2017-10-30 17:00:00,,0
458,1.1.1.14.3.3.28,Aanbrengen resterende raillijfbekleding,5.0,4.0,6.0,2017-10-24 08:00:00,2017-10-30 17:00:00,,0
459,1.1.1.14.3.3.29,Eventueel aanpassen spoor nav opmeting,3.0,2.4,3.6,2017-10-24 08:00:00,2017-10-26 17:00:00,,0
460,1.1.1.14.3.3.30,Aanbrengen bestrating,9.0,7.2,10.8,2017-10-31 08:00:00,2017-11-10 17:00:00,,0
461,1.1.1.14.3.4,Kruispunt Londonstraat - richting Cadixplein (Zwarte zone op plan),72.0,72.0,72.0,2017-09-12 08:00:00,2017-12-20 17:00:00,,0
462,1.1.1.14.3.4.1,Uitgraven bedding,3.0,2.4,3.6,2017-09-12 08:00:00,2017-09-14 17:00:00,,0
463,1.1.1.14.3.4.2,Plaatsen trekputten en wachtbuizen,2.0,1.6,2.4,2017-09-25 08:00:00,2017-09-26 17:00:00,,0
464,1.1.1.14.3.4.3,Plaatsen drain,2.0,1.6,2.4,2017-09-27 08:00:00,2017-09-28 17:00:00,,0
465,1.1.1.14.3.4.4,Plaatproef grondwerk,1.0,0.8,1.2,2017-09-29 08:00:00,2017-09-29 17:00:00,,0
466,1.1.1.14.3.4.5,Eventuele grondverbetering,2.0,1.6,2.4,2017-10-02 08:00:00,2017-10-03 17:00:00,,0
467,1.1.1.14.3.4.6,Aanleg onderfundering + plaatproef,2.0,1.6,2.4,2017-10-18 08:00:00,2017-10-19 17:00:00,,0
468,1.1.1.14.3.4.7,Aanleg fundering + plaatproef,2.0,1.6,2.4,2017-10-20 08:00:00,2017-10-23 17:00:00,,0
469,1.1.1.14.3.4.8,Trekken slibvorm,2.0,1.6,2.4,2017-10-24 08:00:00,2017-10-25 17:00:00,,0
470,1.1.1.14.3.4.9,Leggen 6 panelen,1.0,0.8,1.2,2017-10-26 08:00:00,2017-10-26 17:00:00,,0
471,1.1.1.14.3.4.10,Grof afstellen panelen,1.0,0.8,1.2,2017-10-27 08:00:00,2017-10-27 17:00:00,,0
472,1.1.1.14.3.4.11,Plaatsen d63 wachtbuizen,3.0,2.4,3.6,2017-10-30 08:00:00,2017-11-01 17:00:00,,0
473,1.1.1.14.3.4.12,Steken waterbuizen wissels (BCO),3.0,2.4,3.6,2017-10-30 08:00:00,2017-11-01 17:00:00,,0
474,1.1.1.14.3.4.13,Plaatsen slokkers,3.0,2.4,3.6,2017-10-30 08:00:00,2017-11-01 17:00:00,,0
475,1.1.1.14.3.4.14,Aanbrengen bakjes lussen (BTR/Fabricom),3.0,2.4,3.6,2017-10-30 08:00:00,2017-11-01 17:00:00,,0
476,1.1.1.14.3.4.15,Wachtbuizen + sokkel kast wisselsturing voorzien,3.0,2.4,3.6,2017-10-30 08:00:00,2017-11-01 17:00:00,,0
477,1.1.1.14.3.4.16,Aanbrengen beschermleidingen smeer- en sensorbakken,3.0,2.4,3.6,2017-10-30 08:00:00,2017-11-01 17:00:00,,0
478,1.1.1.14.3.4.17,Bekisting plaatsen en aanbrengen wapening (BCO),3.0,2.4,3.6,2017-10-30 08:00:00,2017-11-01 17:00:00,,0
479,1.1.1.14.3.4.18,Plaatsen retourkabels,3.0,2.4,3.6,2017-10-30 08:00:00,2017-11-01 17:00:00,,0
480,1.1.1.14.3.4.19,Plaatsen en aansluiten spoorslikkers,3.0,2.4,3.6,2017-10-30 08:00:00,2017-11-01 17:00:00,,0
481,1.1.1.14.3.4.20,Herstellen spoor na werkzaamheden andere partijen,1.0,0.8,1.2,2017-11-06 08:00:00,2017-11-06 17:00:00,,0
482,1.1.1.14.3.4.21,Opmeting en fijnafstellen spoor,2.0,1.6,2.4,2017-11-07 08:00:00,2017-11-08 17:00:00,,0
483,1.1.1.14.3.4.22,Oplevering spoor door BTR (fotoreportage),2.0,1.6,2.4,2017-11-09 08:00:00,2017-11-10 17:00:00,,0
484,1.1.1.14.3.4.23,Aanbrengen kiftbeton (BCO),1.0,0.8,1.2,2017-11-10 08:00:00,2017-11-10 17:00:00,,0
485,1.1.1.14.3.4.24,Opmeting spoor na plaatsen kiftbeton,1.0,0.8,1.2,2017-11-10 08:00:00,2017-11-10 17:00:00,,0
486,1.1.1.14.3.4.25,Plaatsen TDI-lus + HFK-lus wissel,2.0,1.6,2.4,2017-11-14 08:00:00,2017-11-15 17:00:00,,0
487,1.1.1.14.3.4.26,Aanbrengen lassen (8 sts),1.0,0.8,1.2,2017-11-14 08:00:00,2017-11-14 17:00:00,,0
488,1.1.1.14.3.4.27,Aanbrengen resterende raillijfbekleding,2.0,1.6,2.4,2017-11-15 08:00:00,2017-11-16 17:00:00,,0
489,1.1.1.14.3.4.28,Eventueel aanpassen spoor nav opmeting,1.0,0.8,1.2,2017-11-15 08:00:00,2017-11-15 17:00:00,,0
490,1.1.1.14.3.4.29,Bestrating,24.0,19.2,28.8,2017-11-17 08:00:00,2017-12-20 17:00:00,,0
491,1.1.1.14.3.5,Kruising Londonstraat - Noorderplaats (Paarse zone op plan excl laatste 4 panelen),114.0,114.0,114.0,2017-06-01 08:00:00,2017-11-07 17:00:00,,0
492,1.1.1.14.3.5.1,Afvoeren grond nuts,2.0,1.6,2.4,2017-06-01 08:00:00,2017-06-02 17:00:00,,0
493,1.1.1.14.3.5.2,Afgraven grindgazon,1.0,0.8,1.2,2017-06-06 08:00:00,2017-06-06 17:00:00,,0
494,1.1.1.14.3.5.3,Grondwerk,1.0,0.8,1.2,2017-06-07 08:00:00,2017-06-07 17:00:00,,0
495,1.1.1.14.3.5.4,Grondverbetering,1.0,0.8,1.2,2017-06-07 08:00:00,2017-06-07 17:00:00,,0
496,1.1.1.14.3.5.5,Dwarse wachtbuizen,3.0,2.4,3.6,2017-06-12 08:00:00,2017-06-14 17:00:00,,0
497,1.1.1.14.3.5.6,Aanleg onderfundering,1.0,0.8,1.2,2017-06-08 08:00:00,2017-06-08 17:00:00,,0
498,1.1.1.14.3.5.7,Plaatproef onderfundering,1.0,0.8,1.2,2017-06-09 08:00:00,2017-06-09 17:00:00,,0
499,1.1.1.14.3.5.8,Uitgraving voor trekputten en wachtbuizen,2.0,1.6,2.4,2017-06-15 08:00:00,2017-06-16 17:00:00,,0
500,1.1.1.14.3.5.9,Externe mijlpaal (uit DP1): Werken KP Noorderplaats gevorderd voor aanleg feederkabel (TBD),0.0,0.0,0.0,2017-07-04 17:00:00,2017-07-04 17:00:00,,0
501,1.1.1.14.3.5.10,Trekken feederkabel,3.0,2.4,3.6,2017-07-05 08:00:00,2017-07-07 17:00:00,,0
502,1.1.1.14.3.5.11,Plaatsen trekputten,2.0,1.6,2.4,2017-06-15 08:00:00,2017-06-16 17:00:00,,0
503,1.1.1.14.3.5.12,Plaatsen wachtbuizen (incl. wachtbuis feeder),2.0,1.6,2.4,2017-06-15 08:00:00,2017-06-16 17:00:00,,0
504,1.1.1.14.3.5.13,Plaatsen drain,2.0,1.6,2.4,2017-06-15 08:00:00,2017-06-16 17:00:00,,0
505,1.1.1.14.3.5.14,Klaar om werken te hervatten Londenstraat-Noorderplaats nav KP Kattendijkdok ,0.0,0.0,0.0,2017-08-07 17:00:00,2017-08-07 17:00:00,,0
506,1.1.1.14.3.5.15,Plaatsen bvl palen,3.0,2.4,3.6,2017-08-08 08:00:00,2017-08-10 17:00:00,,0
507,1.1.1.14.3.5.16,Aanleg fundering,3.0,2.4,3.6,2017-08-08 08:00:00,2017-08-10 17:00:00,,0
508,1.1.1.14.3.5.17,Plaatproef fundering,1.0,0.8,1.2,2017-08-11 08:00:00,2017-08-11 17:00:00,,0
509,1.1.1.14.3.5.18,Ter plaatste storten trotoirband,2.0,1.6,2.4,2017-08-16 08:00:00,2017-08-17 17:00:00,,0
510,1.1.1.14.3.5.19,Leggen 10 panelen mbv wegkraan middenberm (tussen fietsersoversteek en Noorderplaats),2.0,1.6,2.4,2017-08-18 08:00:00,2017-08-21 17:00:00,,0
511,1.1.1.14.3.5.20,Leggen 12 panelen mbv trailers (tussen kattendijkdok en fietsersoversteek),1.0,0.8,1.2,2017-08-22 08:00:00,2017-08-22 17:00:00,,0
512,1.1.1.14.3.5.21,Grof afstellen panelen,3.0,2.4,3.6,2017-08-21 08:00:00,2017-08-23 17:00:00,,0
513,1.1.1.14.3.5.22,Steken waterbuizen wissels (BCO),3.0,2.4,3.6,2017-08-24 08:00:00,2017-08-28 17:00:00,,0
514,1.1.1.14.3.5.23,Wachtbuizen + sokkel kast wisselsturing voorzien,3.0,2.4,3.6,2017-08-24 08:00:00,2017-08-28 17:00:00,,0
515,1.1.1.14.3.5.24,Aanbrengen bakjes lussen (BTR/Fabricom),3.0,2.4,3.6,2017-08-24 08:00:00,2017-08-28 17:00:00,,0
516,1.1.1.14.3.5.25,Aanbrengen beschermleidingen smeer- en sensorbakken,3.0,2.4,3.6,2017-08-24 08:00:00,2017-08-28 17:00:00,,0
517,1.1.1.14.3.5.26,Bekisting plaatsen ,3.0,2.4,3.6,2017-08-24 08:00:00,2017-08-28 17:00:00,,0
518,1.1.1.14.3.5.27,Plaatsen retourkabels,3.0,2.4,3.6,2017-08-24 08:00:00,2017-08-28 17:00:00,,0
519,1.1.1.14.3.5.28,Plaatsen en aansluiten spoorslikkers,3.0,2.4,3.6,2017-08-24 08:00:00,2017-08-28 17:00:00,,0
520,1.1.1.14.3.5.29,Opmeting en fijnafstellen spoor,3.0,2.4,3.6,2017-08-29 08:00:00,2017-08-31 17:00:00,,0
521,1.1.1.14.3.5.30,Oplevering spoor door BTR,3.0,2.4,3.6,2017-08-30 08:00:00,2017-09-01 17:00:00,,0
522,1.1.1.14.3.5.31,Aanbrengen kiftbeton (BCO),3.0,2.4,3.6,2017-08-30 08:00:00,2017-09-01 17:00:00,,0
523,1.1.1.14.3.5.32,Opmeting spoor na plaatsen kiftbeton,1.0,0.8,1.2,2017-09-04 08:00:00,2017-09-04 17:00:00,,0
524,1.1.1.14.3.5.33,Plaatsen TDI-lus + HFK-lus wissel,2.0,1.6,2.4,2017-09-05 08:00:00,2017-09-06 17:00:00,,0
525,1.1.1.14.3.5.34,Aanbrengen lassen (44 sts),5.0,4.0,6.0,2017-08-31 08:00:00,2017-09-06 17:00:00,,0
526,1.1.1.14.3.5.35,Boren gaten,5.0,4.0,6.0,2017-09-25 08:00:00,2017-09-29 17:00:00,,0
527,1.1.1.14.3.5.36,Aanbrengen resterende raillijfbekleding,4.0,3.2,4.8,2017-09-01 08:00:00,2017-09-06 17:00:00,,0
528,1.1.1.14.3.5.37,Eventueel aanpassen spoor nav opmeting,4.0,3.2,4.8,2017-09-01 08:00:00,2017-09-06 17:00:00,,0
529,1.1.1.14.3.5.38,Plaatsen perron (2st),10.0,8.0,12.0,2017-09-25 08:00:00,2017-10-06 17:00:00,,0
530,1.1.1.14.3.5.39,Kasseiverharding,30.0,24.0,36.0,2017-09-27 08:00:00,2017-11-07 17:00:00,,0
531,1.1.1.14.3.6,Kruising Londenstraat - Londenbrug (gele zone op plan),423.0,423.0,423.0,2016-03-01 08:00:00,2017-10-12 17:00:00,,0
532,1.1.1.14.3.6.1,Uitfrezen asfalt,2.0,1.6,2.4,2017-09-06 08:00:00,2017-09-07 17:00:00,,0
533,1.1.1.14.3.6.2,Uitgraven grindgazon,1.0,0.8,1.2,2017-09-06 08:00:00,2017-09-06 17:00:00,,0
534,1.1.1.14.3.6.3,Grondwerk + plaatproef,1.0,0.8,1.2,2017-09-07 08:00:00,2017-09-07 17:00:00,,0
535,1.1.1.14.3.6.4,Onderfundering + plaatproef,2.0,1.6,2.4,2017-06-06 08:00:00,2017-06-07 17:00:00,,0
536,1.1.1.14.3.6.5, Uitgraving voor trekputten en wachtbuizen,2.0,1.6,2.4,2017-06-12 08:00:00,2017-06-13 17:00:00,,0
537,1.1.1.14.3.6.6, Plaatsen trekputten,2.0,1.6,2.4,2017-06-14 08:00:00,2017-06-15 17:00:00,,0
538,1.1.1.14.3.6.7, Plaatsen wachtbuizen,3.0,2.4,3.6,2017-06-14 08:00:00,2017-06-16 17:00:00,,0
539,1.1.1.14.3.6.8,Klaar om werken te hervatten Londenstraat-Londenbrug nav KP Kattendijkdok (na herstel grondwerk),0.0,0.0,0.0,2017-08-21 17:00:00,2017-08-21 17:00:00,,0
540,1.1.1.14.3.6.9, Aanleg fundering,2.0,1.6,2.4,2017-08-22 08:00:00,2017-08-23 17:00:00,,0
541,1.1.1.14.3.6.10, Plaatproef fundering,1.0,0.8,1.2,2017-08-24 08:00:00,2017-08-24 17:00:00,,0
542,1.1.1.14.3.6.11, Leggen 8 panelen,1.0,0.8,1.2,2017-08-24 08:00:00,2017-08-24 17:00:00,,0
543,1.1.1.14.3.6.12,Maken tijdelijke oversteek (spoor + verharding + technieken) ,7.0,5.6,8.4,2017-08-25 08:00:00,2017-09-04 17:00:00,,0
544,1.1.1.14.3.6.13,Tijdelijke oversteek klaar voor start werken KP Londenstraat - Kattendijkdok,0.0,0.0,0.0,2017-09-04 17:00:00,2017-09-04 17:00:00,,0
545,1.1.1.14.3.6.14,Kruispunt Kattendijkdok afgewerkt,1.0,0.8,1.2,2016-03-01 08:00:00,2016-03-01 17:00:00,,0
546,1.1.1.14.3.6.15, Grof afstellen panelen,1.0,0.8,1.2,2017-08-25 08:00:00,2017-08-25 17:00:00,,0
547,1.1.1.14.3.6.16, Steken waterbuizen wissels (BCO),3.0,2.4,3.6,2017-08-28 08:00:00,2017-08-30 17:00:00,,0
548,1.1.1.14.3.6.17,Wachtbuizen + sokkel kast wisselsturing voorzien,3.0,2.4,3.6,2017-08-28 08:00:00,2017-08-30 17:00:00,,0
549,1.1.1.14.3.6.18,Plaatsen spoorbakjes tractie,3.0,2.4,3.6,2017-08-28 08:00:00,2017-08-30 17:00:00,,0
550,1.1.1.14.3.6.19, Aanbrengen bakjes lussen (BTR/Fabricom),3.0,2.4,3.6,2017-08-28 08:00:00,2017-08-30 17:00:00,,0
551,1.1.1.14.3.6.20, Aanbrengen beschermleidingen smeer- en sensorbakken,3.0,2.4,3.6,2017-08-28 08:00:00,2017-08-30 17:00:00,,0
552,1.1.1.14.3.6.21, Bekisting plaatsen en aanbrengen wapening (BCO),3.0,2.4,3.6,2017-08-28 08:00:00,2017-08-30 17:00:00,,0
553,1.1.1.14.3.6.22, Plaatsen retourkabels,3.0,2.4,3.6,2017-08-28 08:00:00,2017-08-30 17:00:00,,0
554,1.1.1.14.3.6.23, Plaatsen en aansluiten spoorslikkers,3.0,2.4,3.6,2017-08-28 08:00:00,2017-08-30 17:00:00,,0
555,1.1.1.14.3.6.24,Herstellen spoor na werkzaamheden andere partijen,1.0,0.8,1.2,2017-08-31 08:00:00,2017-08-31 17:00:00,,0
556,1.1.1.14.3.6.25, Opmeting en fijnafstellen spoor,2.0,1.6,2.4,2017-09-01 08:00:00,2017-09-04 17:00:00,,0
557,1.1.1.14.3.6.26, Oplevering spoor door BTR,2.0,1.6,2.4,2017-09-04 08:00:00,2017-09-05 17:00:00,,0
558,1.1.1.14.3.6.27, Aanbrengen kiftbeton (BCO),2.0,1.6,2.4,2017-09-06 08:00:00,2017-09-07 17:00:00,,0
559,1.1.1.14.3.6.28, Opmeting spoor na plaatsen kiftbeton,1.0,0.8,1.2,2017-09-08 08:00:00,2017-09-08 17:00:00,,0
560,1.1.1.14.3.6.29,Plaatsen TDI-lus + HFK-lus wissel,2.0,1.6,2.4,2017-09-11 08:00:00,2017-09-12 17:00:00,,0
561,1.1.1.14.3.6.30, Aanbrengen lassen (12 sts),2.0,1.6,2.4,2017-09-11 08:00:00,2017-09-12 17:00:00,,0
562,1.1.1.14.3.6.31, Aanbrengen resterende raillijfbekleding,2.0,1.6,2.4,2017-09-13 08:00:00,2017-09-14 17:00:00,,0
563,1.1.1.14.3.6.32,Eventueel aanpassen spoor nav opmeting,2.0,1.6,2.4,2017-09-13 08:00:00,2017-09-14 17:00:00,,0
564,1.1.1.14.3.6.33,Boren en plaatsen funderingsbuizen,0.0,0.0,0.0,2017-07-07 17:00:00,2017-07-07 17:00:00,,0
565,1.1.1.14.3.6.34,Boren gaten,5.0,4.0,6.0,2017-09-29 08:00:00,2017-10-05 17:00:00,,0
566,1.1.1.14.3.6.35, Kasseiverharding,20.0,16.0,24.0,2017-09-15 08:00:00,2017-10-12 17:00:00,,0
567,1.1.1.14.3.6.36,Asfalt,5.0,4.0,6.0,2017-09-15 08:00:00,2017-09-21 17:00:00,,0
568,1.1.1.14.3.6.37,Plaatsen bovenleidingspaal,0.0,0.0,0.0,2017-07-21 17:00:00,2017-07-21 17:00:00,,0
569,1.1.1.14.4,Technieken over volledig tracé,26.0,26.0,26.0,2017-12-21 08:00:00,2018-01-25 17:00:00,,0
570,1.1.1.14.4.1,Bovenleiding trekken,11.0,8.8,13.2,2017-12-21 08:00:00,2018-01-04 17:00:00,,0
571,1.1.1.14.4.2,Openbare verlichting plaatsen,10.0,8.0,12.0,2018-01-12 08:00:00,2018-01-25 17:00:00,,0
572,1.1.1.15,45 Kattendijkdok Oostkaai,645.0,645.0,645.0,2016-05-23 08:00:00,2018-11-09 17:00:00,,0
573,1.1.1.15.1,Cadixplein (voorafgaand),63.0,63.0,63.0,2016-05-23 08:00:00,2016-08-17 17:00:00,,0
574,1.1.1.15.1.1,Wachtbuizen en trekputten,20.0,16.0,24.0,2016-05-23 08:00:00,2016-06-17 17:00:00,,0
575,1.1.1.15.1.2,Spoorwerken (80m),5.0,4.0,6.0,2016-08-08 08:00:00,2016-08-12 17:00:00,,0
576,1.1.1.15.1.3,Funderingen bvl,2.0,1.6,2.4,2016-08-16 08:00:00,2016-08-17 17:00:00,,0
577,1.1.1.15.2,Fasewissel Kattendijkdok Oostkaai,0.0,0.0,0.0,2018-01-12 17:00:00,2018-01-12 17:00:00,,0
578,1.1.1.15.3,Fase 2 August Michielstraat-Indiestraat,108.0,108.0,108.0,2018-01-15 08:00:00,2018-06-13 17:00:00,,0
579,1.1.1.15.3.1,Plaatsen signalisatie,1.0,0.8,1.2,2018-01-15 08:00:00,2018-01-15 17:00:00,,0
580,1.1.1.15.3.2,Peilingen Nutsleidingen,5.0,4.0,6.0,2018-01-16 08:00:00,2018-01-22 17:00:00,,0
581,1.1.1.15.3.3,Opbraak verharding,2.0,1.6,2.4,2018-01-23 08:00:00,2018-01-24 17:00:00,,0
582,1.1.1.15.3.4,Uitgraven bedding,12.0,9.6,14.4,2018-01-25 08:00:00,2018-02-09 17:00:00,,0
583,1.1.1.15.3.5,Plaatsen drainering,1.0,0.8,1.2,2018-02-09 08:00:00,2018-02-09 17:00:00,,0
584,1.1.1.15.3.6,Onderfundering type II,2.0,1.6,2.4,2018-02-08 08:00:00,2018-02-09 17:00:00,,0
585,1.1.1.15.3.7,Plaatsen wachtbuizen,5.0,4.0,6.0,2018-02-12 08:00:00,2018-02-16 17:00:00,,0
586,1.1.1.15.3.8,Plaatsen fundering 0/32,3.0,2.4,3.6,2018-02-19 08:00:00,2018-02-21 17:00:00,,0
587,1.1.1.15.3.9,Spoorwerken,15.0,12.0,18.0,2018-02-22 08:00:00,2018-03-14 17:00:00,,0
588,1.1.1.15.3.10,Plaatsen kiftbeton,3.0,2.4,3.6,2018-03-30 08:00:00,2018-04-03 17:00:00,,0
589,1.1.1.15.3.11,Boren gaten in kiftbeton,2.0,1.6,2.4,2018-04-05 08:00:00,2018-04-06 17:00:00,,0
590,1.1.1.15.3.12,Ingraven leidingen - trekputten fundering masten,5.0,4.0,6.0,2018-04-09 08:00:00,2018-04-13 17:00:00,,0
591,1.1.1.15.3.13,Plaatsen kasseien,11.0,8.8,13.2,2018-04-16 08:00:00,2018-04-30 17:00:00,,0
592,1.1.1.15.3.14,BVL,30.0,24.0,36.0,2018-05-03 08:00:00,2018-06-13 17:00:00,,0
593,1.1.1.15.4,Fasewissel Indiestraat-Mexicobrug,1.0,0.8,1.2,2018-05-03 08:00:00,2018-05-03 17:00:00,,0
594,1.1.1.15.5,Fase 3 Indiestraat-Mexicobrug,135.0,135.0,135.0,2018-05-07 08:00:00,2018-11-09 17:00:00,,0
595,1.1.1.15.5.1,Plaatsen signalisatie,1.0,0.8,1.2,2018-05-07 08:00:00,2018-05-07 17:00:00,,0
596,1.1.1.15.5.2,Peilingen Nutsleidingen,18.0,14.4,21.6,2018-05-08 08:00:00,2018-06-01 10:00:00,,0
597,1.1.1.15.5.3,Opbraak verharding,2.0,1.6,2.4,2018-05-14 08:00:00,2018-05-15 17:00:00,,0
598,1.1.1.15.5.4,Uitgraven bedding,3.0,2.4,3.6,2018-05-16 08:00:00,2018-05-18 17:00:00,,0
599,1.1.1.15.5.5,Plaatsen drainering,2.0,1.6,2.4,2018-05-22 08:00:00,2018-05-23 17:00:00,,0
600,1.1.1.15.5.6,Onderfundering type II,2.0,1.6,2.4,2018-05-24 08:00:00,2018-05-25 17:00:00,,0
601,1.1.1.15.5.7,Plaatsen wachtbuizen,5.0,4.0,6.0,2018-05-28 08:00:00,2018-06-01 17:00:00,,0
602,1.1.1.15.5.8,Plaatsen fundering 0/32,3.0,2.4,3.6,2018-06-04 08:00:00,2018-06-06 17:00:00,,0
603,1.1.1.15.5.9,Spoorwerken,18.0,14.4,21.6,2018-06-07 08:00:00,2018-07-02 17:00:00,,0
604,1.1.1.15.5.10,Plaatsen kiftbeton,3.0,2.4,3.6,2018-07-03 08:00:00,2018-07-05 17:00:00,,0
605,1.1.1.15.5.11,Boren gaten in kiftbeton,2.0,1.6,2.4,2018-07-06 08:00:00,2018-07-09 17:00:00,,0
606,1.1.1.15.5.12,Ingraven leidingen - trekputten fundering masten,5.0,4.0,6.0,2018-07-31 08:00:00,2018-08-06 17:00:00,,0
607,1.1.1.15.5.13,Plaatsen kasseien,23.0,18.4,27.6,2018-08-07 08:00:00,2018-09-06 17:00:00,,0
608,1.1.1.15.5.14,BVL,20.0,16.0,24.0,2018-09-10 08:00:00,2018-10-05 17:00:00,,0
609,1.1.1.15.5.15,Afrol BVL,10.0,8.0,12.0,2018-10-29 08:00:00,2018-11-09 17:00:00,,0
610,1.1.1.16,46 Mexicostraat + Keerlus Havenhuis,383.0,383.0,383.0,2018-02-19 08:00:00,2019-08-07 17:00:00,,0
611,1.1.1.16.1,46 Mexicostraat + Keerlus Havenhuis,383.0,383.0,383.0,2018-02-19 08:00:00,2019-08-07 17:00:00,,0
612,1.1.1.16.1.1,Fase 0A Aanleg tijdelijke verhardingen,19.0,19.0,19.0,2018-02-19 08:00:00,2018-03-15 17:00:00,,0
613,1.1.1.16.1.1.1,Omleiding fietspad Merantiestraat,5.0,4.0,6.0,2018-02-19 08:00:00,2018-02-23 17:00:00,,0
614,1.1.1.16.1.1.2,Fasewissel,1.0,0.8,1.2,2018-02-26 08:00:00,2018-02-26 17:00:00,,0
615,1.1.1.16.1.1.3,Plaatsen signalisatie,1.0,0.8,1.2,2018-02-26 08:00:00,2018-02-26 17:00:00,,0
616,1.1.1.16.1.1.4,Inrichten tijdelijke rijweg ,4.0,3.2,4.8,2018-02-27 08:00:00,2018-03-02 17:00:00,,0
617,1.1.1.16.1.1.5,Nutsleidingen,9.0,7.2,10.8,2018-03-05 08:00:00,2018-03-15 17:00:00,,0
618,1.1.1.16.1.2,Fase 0B Aanpassen eilandjes,10.0,10.0,10.0,2018-03-05 08:00:00,2018-03-16 17:00:00,,0
619,1.1.1.16.1.2.1,Fasewissel,1.0,0.8,1.2,2018-03-05 08:00:00,2018-03-05 17:00:00,,0
620,1.1.1.16.1.2.2,Plaatsen signalisatie,1.0,0.8,1.2,2018-03-05 08:00:00,2018-03-05 17:00:00,,0
621,1.1.1.16.1.2.3,Aanpassen verharding,9.0,7.2,10.8,2018-03-06 08:00:00,2018-03-16 17:00:00,,0
622,1.1.1.16.1.3,GrindGazon,40.0,40.0,40.0,2019-06-13 08:00:00,2019-08-07 17:00:00,,0
623,1.1.1.16.1.3.1,"Rijden met testtram ten behoeve van stabillisatie ondergrond, voor grindgazon",2.0,1.6,2.4,2019-06-13 08:00:00,2019-06-14 17:00:00,,0
624,1.1.1.16.1.3.2,Grindgazon,3.0,2.4,3.6,2019-08-05 08:00:00,2019-08-07 17:00:00,,0
625,1.1.1.16.1.4,Fase0 Keerlus,144.0,144.0,144.0,2018-04-26 08:00:00,2018-11-13 17:00:00,,0
626,1.1.1.16.1.4.1,Grondwerk trambedding keerlus,5.0,4.0,6.0,2018-04-26 08:00:00,2018-05-02 17:00:00,,0
627,1.1.1.16.1.4.2,Voorbereiding sleuf tractie naar TS Straatsburgbrug,5.0,4.0,6.0,2018-05-07 08:00:00,2018-05-11 17:00:00,,0
628,1.1.1.16.1.4.3,wachtbuizen en trekputten,1.0,0.8,1.2,2018-05-07 08:00:00,2018-05-07 17:00:00,,0
629,1.1.1.16.1.4.4,Onderfundering type II,2.0,1.6,2.4,2018-05-08 08:00:00,2018-05-09 17:00:00,,0
630,1.1.1.16.1.4.5,ballast 0/32,3.0,2.4,3.6,2018-05-28 08:00:00,2018-05-30 17:00:00,,0
631,1.1.1.16.1.4.6,Spoorwerken,10.0,8.0,12.0,2018-05-31 08:00:00,2018-06-13 17:00:00,,0
632,1.1.1.16.1.4.7,Onderstoppen,2.0,1.6,2.4,2018-06-14 08:00:00,2018-06-15 17:00:00,,0
633,1.1.1.16.1.4.8,Feederkabel V362 (+361???) vanuit TS,3.0,2.4,3.6,2018-06-18 08:00:00,2018-06-20 17:00:00,,0
634,1.1.1.16.1.4.9,BVL masten,26.0,20.8,31.2,2018-10-09 08:00:00,2018-11-13 17:00:00,,0
635,1.1.1.16.1.5,Fase 1A Kruispunt keerlus,172.0,172.0,172.0,2018-03-19 08:00:00,2018-11-13 17:00:00,,0
636,1.1.1.16.1.5.1,Fasewissel ,1.0,0.8,1.2,2018-03-19 08:00:00,2018-03-19 17:00:00,,0
637,1.1.1.16.1.5.2,Opbraak verharding rijweg,3.0,2.4,3.6,2018-03-20 08:00:00,2018-03-22 17:00:00,,0
638,1.1.1.16.1.5.3,Grondwerk rijweg,2.0,1.6,2.4,2018-05-03 08:00:00,2018-05-04 17:00:00,,0
639,1.1.1.16.1.5.4,wachtbuizen en trekputten-funderingsmasten,5.0,4.0,6.0,2018-05-07 08:00:00,2018-05-11 17:00:00,,0
640,1.1.1.16.1.5.5,grondwerk trambedding rijweg,1.0,0.8,1.2,2018-05-14 08:00:00,2018-05-14 17:00:00,,0
641,1.1.1.16.1.5.6,Onderfundering tram,1.0,0.8,1.2,2018-05-15 08:00:00,2018-05-15 17:00:00,,0
642,1.1.1.16.1.5.7,Ballast 0/32,1.0,0.8,1.2,2018-05-28 08:00:00,2018-05-28 17:00:00,,0
643,1.1.1.16.1.5.8,Feederkabel V362 (+361???) vanuit TS,1.0,0.8,1.2,2018-05-16 08:00:00,2018-05-16 17:00:00,,0
644,1.1.1.16.1.5.9,Spoorwerken,2.0,1.6,2.4,2018-06-14 08:00:00,2018-06-15 17:00:00,,0
645,1.1.1.16.1.5.10,Kiftbeton,2.0,1.6,2.4,2018-06-18 08:00:00,2018-06-19 17:00:00,,0
646,1.1.1.16.1.5.11,Verharding ts tramsporen,2.0,1.6,2.4,2018-06-20 08:00:00,2018-06-21 17:00:00,,0
647,1.1.1.16.1.5.12,BVL masten,26.0,20.8,31.2,2018-10-09 08:00:00,2018-11-13 17:00:00,,0
648,1.1.1.16.1.5.13,Onderfundering rijweg,2.0,1.6,2.4,2018-06-20 08:00:00,2018-06-21 17:00:00,,0
649,1.1.1.16.1.5.14,kolken,2.0,1.6,2.4,2018-05-28 08:00:00,2018-05-29 17:00:00,,0
650,1.1.1.16.1.5.15,lineaire elementen,3.0,2.4,3.6,2018-05-30 08:00:00,2018-06-01 17:00:00,,0
651,1.1.1.16.1.5.16,fundering rijweg,2.0,1.6,2.4,2018-06-04 08:00:00,2018-06-05 17:00:00,,0
652,1.1.1.16.1.5.17,verharding rijweg,1.0,0.8,1.2,2018-06-13 08:00:00,2018-06-13 17:00:00,,0
653,1.1.1.16.1.5.18,Grondwerk fietspad,1.0,0.8,1.2,2018-06-14 08:00:00,2018-06-14 17:00:00,,0
654,1.1.1.16.1.5.19,Onderfundering fietspad,1.0,0.8,1.2,2018-06-15 08:00:00,2018-06-15 17:00:00,,0
655,1.1.1.16.1.5.20,lineaire elementen,1.0,0.8,1.2,2018-06-18 08:00:00,2018-06-18 17:00:00,,0
656,1.1.1.16.1.5.21,Fundering fietspad,1.0,0.8,1.2,2018-06-19 08:00:00,2018-06-19 17:00:00,,0
657,1.1.1.16.1.5.22,BSS fiets-voetpad,2.0,1.6,2.4,2018-06-20 08:00:00,2018-06-21 17:00:00,,0
658,1.1.1.16.1.5.23,Afwerking,1.0,0.8,1.2,2018-06-22 08:00:00,2018-06-22 17:00:00,,0
659,1.1.1.16.1.6,Fase 1B Wegenis thv  parking Havenhuis,104.0,104.0,104.0,2018-03-19 08:00:00,2018-08-09 17:00:00,,0
660,1.1.1.16.1.6.1,Fasewissel,1.0,0.8,1.2,2018-03-19 08:00:00,2018-03-19 17:00:00,,0
661,1.1.1.16.1.6.2,Opbraak verharding,3.0,2.4,3.6,2018-03-20 08:00:00,2018-03-22 17:00:00,,0
662,1.1.1.16.1.6.3,Grondwerk rijweg,3.0,2.4,3.6,2018-04-06 08:00:00,2018-04-10 17:00:00,,0
663,1.1.1.16.1.6.4,wachtbuizen en trekputten-funderingsmasten,15.0,12.0,18.0,2018-05-03 08:00:00,2018-05-23 17:00:00,,0
664,1.1.1.16.1.6.5,Onderfundering rijweg,2.0,1.6,2.4,2018-05-29 08:00:00,2018-05-30 17:00:00,,0
665,1.1.1.16.1.6.6,Kolken,3.0,2.4,3.6,2018-05-31 08:00:00,2018-06-04 17:00:00,,0
666,1.1.1.16.1.6.7,lineaire elementen,3.0,2.4,3.6,2018-06-05 08:00:00,2018-06-07 17:00:00,,0
667,1.1.1.16.1.6.8,Fundering rijweg,2.0,1.6,2.4,2018-06-08 08:00:00,2018-06-11 17:00:00,,0
668,1.1.1.16.1.6.9,Verharding asfalt,2.0,1.6,2.4,2018-08-01 08:00:00,2018-08-02 17:00:00,,0
669,1.1.1.16.1.6.10,Afwerking,5.0,4.0,6.0,2018-08-03 08:00:00,2018-08-09 17:00:00,,0
670,1.1.1.16.1.7,Fase 1B Overgang asfalt midden,3.0,3.0,3.0,2018-06-22 08:00:00,2018-06-26 17:00:00,,0
671,1.1.1.16.1.7.1,Plaatsen signalisatie,1.0,0.8,1.2,2018-06-22 08:00:00,2018-06-22 17:00:00,,0
672,1.1.1.16.1.7.2,Frezen asfalt,1.0,0.8,1.2,2018-06-25 08:00:00,2018-06-25 17:00:00,,0
673,1.1.1.16.1.7.3,Opbraak fundering,1.0,0.8,1.2,2018-06-25 08:00:00,2018-06-25 17:00:00,,0
674,1.1.1.16.1.7.4,Grondwerk,1.0,0.8,1.2,2018-06-25 08:00:00,2018-06-25 17:00:00,,0
675,1.1.1.16.1.7.5,Asfalt,1.0,0.8,1.2,2018-06-26 08:00:00,2018-06-26 17:00:00,,0
676,1.1.1.16.1.8,Fase2 Wegenis kruispunt thv Pomphuis,37.0,37.0,37.0,2018-06-26 17:00:00,2018-08-16 17:00:00,,0
677,1.1.1.16.1.8.1,Fasewissel,0.0,0.0,0.0,2018-06-26 17:00:00,2018-06-26 17:00:00,,0
678,1.1.1.16.1.8.2,Plaatsen signalisatie,1.0,0.8,1.2,2018-06-27 08:00:00,2018-06-27 17:00:00,,0
679,1.1.1.16.1.8.3,Opbraak verharding,1.0,0.8,1.2,2018-06-28 08:00:00,2018-06-28 17:00:00,,0
680,1.1.1.16.1.8.4,Grondwerk rijweg,1.0,0.8,1.2,2018-06-29 08:00:00,2018-06-29 17:00:00,,0
681,1.1.1.16.1.8.5,Wachtbuizen-trekputten ,5.0,4.0,6.0,2018-07-02 08:00:00,2018-07-06 17:00:00,,0
682,1.1.1.16.1.8.6,Onderfundering rijweg,1.0,0.8,1.2,2018-07-09 08:00:00,2018-07-09 17:00:00,,0
683,1.1.1.16.1.8.7,lineaire elementen,2.0,1.6,2.4,2018-07-10 08:00:00,2018-07-11 17:00:00,,0
684,1.1.1.16.1.8.8,Fundering rijweg,2.0,1.6,2.4,2018-07-12 08:00:00,2018-07-13 17:00:00,,0
685,1.1.1.16.1.8.9,Verharding rijweg,2.0,1.6,2.4,2018-07-31 08:00:00,2018-08-01 17:00:00,,0
686,1.1.1.16.1.8.10,Afwerking,11.0,8.8,13.2,2018-08-02 08:00:00,2018-08-16 17:00:00,,0
687,1.1.1.16.1.9,Fase 3 kruispunt thv havenhuis,129.0,129.0,129.0,2018-08-20 17:00:00,2019-02-15 17:00:00,,0
688,1.1.1.16.1.9.1,Fasewissel,0.0,0.0,0.0,2018-08-20 17:00:00,2018-08-20 17:00:00,,0
689,1.1.1.16.1.9.2,Plaatsen signalisatie,1.0,0.8,1.2,2018-08-21 08:00:00,2018-08-21 17:00:00,,0
690,1.1.1.16.1.9.3,Opbraak verharding,1.0,0.8,1.2,2018-08-22 08:00:00,2018-08-22 17:00:00,,0
691,1.1.1.16.1.9.4,Grondwerk trambedding-rijweg,10.0,8.0,12.0,2018-08-23 08:00:00,2018-09-05 17:00:00,,0
692,1.1.1.16.1.9.5,Wachtbuizen-trekputten -funderingsmasten,3.0,2.4,3.6,2018-09-06 08:00:00,2018-09-10 17:00:00,,0
693,1.1.1.16.1.9.6,Onderfundering tram,1.0,0.8,1.2,2018-09-11 08:00:00,2018-09-11 17:00:00,,0
694,1.1.1.16.1.9.7,Fundering 0/32,1.0,0.8,1.2,2018-09-12 08:00:00,2018-09-12 17:00:00,,0
695,1.1.1.16.1.9.8,Spoorwerken,3.0,2.4,3.6,2018-09-13 08:00:00,2018-09-17 17:00:00,,0
696,1.1.1.16.1.9.9,Kiftbeton,2.0,1.6,2.4,2018-09-18 08:00:00,2018-09-19 17:00:00,,0
697,1.1.1.16.1.9.10,Ballast 0/32,1.0,0.8,1.2,2018-09-18 08:00:00,2018-09-18 17:00:00,,0
698,1.1.1.16.1.9.11,Rijwegbeton tram,1.0,0.8,1.2,2018-09-20 08:00:00,2018-09-20 17:00:00,,0
699,1.1.1.16.1.9.12,Kolken,2.0,1.6,2.4,2018-09-21 08:00:00,2018-09-24 17:00:00,,0
700,1.1.1.16.1.9.13,lineaire elementen,2.0,1.6,2.4,2018-09-25 08:00:00,2018-09-26 17:00:00,,0
701,1.1.1.16.1.9.14,Fundering rijweg,2.0,1.6,2.4,2018-09-27 08:00:00,2018-09-28 17:00:00,,0
702,1.1.1.16.1.9.15,BSS fiets-voetpad,2.0,1.6,2.4,2018-10-01 08:00:00,2018-10-02 17:00:00,,0
703,1.1.1.16.1.9.16,Verharding rijweg,2.0,1.6,2.4,2018-10-03 08:00:00,2018-10-04 17:00:00,,0
704,1.1.1.16.1.9.17,Fase 4A Aanleg trambaan Havenhuis,104.0,104.0,104.0,2018-09-24 17:00:00,2019-02-15 17:00:00,,0
705,1.1.1.16.1.9.17.1,Fasewissel,1.0,0.8,1.2,2018-10-09 08:00:00,2018-10-09 17:00:00,,0
706,1.1.1.16.1.9.17.2,Plaatsen signalisatie,1.0,0.8,1.2,2018-10-09 08:00:00,2018-10-09 17:00:00,,0
707,1.1.1.16.1.9.17.3,Opbraak verharding,2.0,1.6,2.4,2018-10-10 08:00:00,2018-10-11 17:00:00,,0
708,1.1.1.16.1.9.17.4,Besluit OG ivm aanleg bajonet ,0.0,0.0,0.0,2018-09-24 17:00:00,2018-09-24 17:00:00,,0
709,1.1.1.16.1.9.17.5,Grondwerk trambedding,2.0,1.6,2.4,2018-10-12 08:00:00,2018-10-15 17:00:00,,0
710,1.1.1.16.1.9.17.6,Wachtbuizen-trekputten -funderingsmasten,5.0,4.0,6.0,2018-10-16 08:00:00,2018-10-22 17:00:00,,0
711,1.1.1.16.1.9.17.7,Onderfundering ,4.0,3.2,4.8,2018-10-23 08:00:00,2018-10-26 17:00:00,,0
712,1.1.1.16.1.9.17.8,Spoorwerken,11.0,8.8,13.2,2018-10-29 08:00:00,2018-11-12 17:00:00,,0
713,1.1.1.16.1.9.17.9,Kiftbeton oversteken,2.0,1.6,2.4,2018-11-16 08:00:00,2018-11-19 17:00:00,,0
714,1.1.1.16.1.9.17.10,Rijwegbeton oversteken,1.0,0.8,1.2,2018-12-10 08:00:00,2018-12-10 17:00:00,,0
715,1.1.1.16.1.9.17.11,Grindgazon,3.0,2.4,3.6,2018-11-16 08:00:00,2018-11-20 17:00:00,,0
716,1.1.1.16.1.9.17.12,BVL-Afrol,51.0,40.8,61.2,2018-11-16 08:00:00,2019-01-25 17:00:00,,0
717,1.1.1.16.1.9.17.13,Fase 4B kruispunt Havenhuis,46.0,46.0,46.0,2018-10-09 08:00:00,2018-12-11 17:00:00,,0
718,1.1.1.16.1.9.17.13.1,Fasewissel,1.0,0.8,1.2,2018-10-09 08:00:00,2018-10-09 17:00:00,,0
719,1.1.1.16.1.9.17.13.2,Grondwerk rijweg,1.0,0.8,1.2,2018-10-10 08:00:00,2018-10-10 17:00:00,,0
720,1.1.1.16.1.9.17.13.3,Onderfundering rijweg,1.0,0.8,1.2,2018-10-11 08:00:00,2018-10-11 17:00:00,,0
721,1.1.1.16.1.9.17.13.4,Lineaire elementen rijweg,1.0,0.8,1.2,2018-11-16 08:00:00,2018-11-16 17:00:00,,0
722,1.1.1.16.1.9.17.13.5,Fundering rijweg,1.0,0.8,1.2,2018-11-19 08:00:00,2018-11-19 17:00:00,,0
723,1.1.1.16.1.9.17.13.6,Verharding rijweg,2.0,1.6,2.4,2018-11-26 08:00:00,2018-11-27 17:00:00,,0
724,1.1.1.16.1.9.17.13.7,Openstelling Kruispunt,1.0,0.8,1.2,2018-12-11 08:00:00,2018-12-11 17:00:00,,0
725,1.1.1.16.1.9.17.14,Aanleg perrons,31.0,24.8,37.2,2018-11-16 08:00:00,2018-12-28 17:00:00,,0
726,1.1.1.16.1.9.17.15,Onderfundering fietspad-voetpad,1.0,0.8,1.2,2018-11-30 08:00:00,2018-11-30 17:00:00,,0
727,1.1.1.16.1.9.17.16,Lineaire elementen,3.0,2.4,3.6,2018-12-03 08:00:00,2018-12-05 17:00:00,,0
728,1.1.1.16.1.9.17.17,Fundering fietspad-voetpad,2.0,1.6,2.4,2018-12-10 08:00:00,2018-12-11 17:00:00,,0
729,1.1.1.16.1.9.17.18,BSS fiets-voetpad(BSS is arfalt geworden),1.0,0.8,1.2,2019-01-18 08:00:00,2019-01-18 17:00:00,,0
730,1.1.1.16.1.9.17.19,Afwerking,4.0,3.2,4.8,2019-02-12 08:00:00,2019-02-15 17:00:00,,0
731,1.1.1.16.2,Mexicostraat,120.0,120.0,120.0,2018-05-01 08:00:00,2018-10-15 17:00:00,,0
732,1.1.1.16.2.1,Einde rioleringswerken havenhuis,1.0,0.8,1.2,2018-05-01 08:00:00,2018-05-01 17:00:00,,0
733,1.1.1.16.2.2,Fase 3,25.0,25.0,25.0,2018-05-01 17:00:00,2018-06-05 17:00:00,,0
734,1.1.1.16.2.2.1,Fasewissel,0.0,0.0,0.0,2018-05-01 17:00:00,2018-05-01 17:00:00,,0
735,1.1.1.16.2.2.2,Plaatsen signalisatie,1.0,0.8,1.2,2018-05-02 08:00:00,2018-05-02 17:00:00,,0
736,1.1.1.16.2.2.3,Nutsleidingen,24.0,19.2,28.8,2018-05-03 08:00:00,2018-06-05 17:00:00,,0
737,1.1.1.16.2.3,Fase 5,91.0,91.0,91.0,2018-06-11 08:00:00,2018-10-15 17:00:00,,0
738,1.1.1.16.2.3.1,Fasewissel,1.0,0.8,1.2,2018-06-11 08:00:00,2018-06-11 17:00:00,,0
739,1.1.1.16.2.3.2,Opbraak verharding,2.0,1.6,2.4,2018-06-12 08:00:00,2018-06-13 17:00:00,,0
740,1.1.1.16.2.3.3,Uitgraven bedding,2.0,1.6,2.4,2018-06-14 08:00:00,2018-06-15 17:00:00,,0
741,1.1.1.16.2.3.4,Drainering,2.0,1.6,2.4,2018-06-18 08:00:00,2018-06-19 17:00:00,,0
742,1.1.1.16.2.3.5,Voorbereiding sleuf tractie V361 Mexico,2.0,1.6,2.4,2018-06-18 08:00:00,2018-06-19 17:00:00,,0
743,1.1.1.16.2.3.6,Wachtbuizen-trekputten-funderingsmasten,10.0,8.0,12.0,2018-06-18 08:00:00,2018-06-29 17:00:00,,0
744,1.1.1.16.2.3.7,Boring wachtbuizen tractiekabel onder brug,5.0,4.0,6.0,2018-06-18 08:00:00,2018-06-22 17:00:00,,0
745,1.1.1.16.2.3.8,Trekken tractiekabel V361 Mexico,5.0,4.0,6.0,2018-06-20 08:00:00,2018-06-26 17:00:00,,0
746,1.1.1.16.2.3.9,Onderfundering ,6.0,4.8,7.2,2018-07-02 08:00:00,2018-07-09 17:00:00,,0
747,1.1.1.16.2.3.10,Riolering D6 WOG,15.0,12.0,18.0,2018-07-31 08:00:00,2018-08-20 17:00:00,,0
748,1.1.1.16.2.3.11,ballast 0/32,3.0,2.4,3.6,2018-08-21 08:00:00,2018-08-23 17:00:00,,0
749,1.1.1.16.2.3.12,Spoorwerken,10.0,8.0,12.0,2018-08-24 08:00:00,2018-09-06 17:00:00,,0
750,1.1.1.16.2.3.13,Wachtbuizen naar spoorbakjes Landhoofdverbinding,1.0,0.8,1.2,2018-07-02 08:00:00,2018-07-02 17:00:00,,0
751,1.1.1.16.2.3.14,Kiftbeton,5.0,4.0,6.0,2018-09-07 08:00:00,2018-09-13 17:00:00,,0
752,1.1.1.16.2.3.15,Boren gaten in kiftbeton,5.0,4.0,6.0,2018-09-14 08:00:00,2018-09-20 17:00:00,,0
753,1.1.1.16.2.3.16,Kasseiverharding tram,6.0,4.8,7.2,2018-09-21 08:00:00,2018-09-28 17:00:00,,0
754,1.1.1.16.2.3.17,Onderstoppen,2.0,1.6,2.4,2018-09-07 08:00:00,2018-09-10 17:00:00,,0
755,1.1.1.16.2.3.18,Grindgazon,5.0,4.0,6.0,2018-09-11 08:00:00,2018-09-17 17:00:00,,0
756,1.1.1.16.2.3.19,BVL,5.0,4.0,6.0,2018-09-18 08:00:00,2018-09-24 17:00:00,,0
757,1.1.1.16.2.3.20,Aanpassen wegenis,20.0,16.0,24.0,2018-09-18 08:00:00,2018-10-15 17:00:00,,0
