node_id,wbs,task_name,duration,optimistic_time,pessimistic_time,baseline_start,baseline_end,resource_demand,total_cost
0,1,Project,1165.375,1153.72,1177.03,2016-03-01 08:00:00,2019-05-10 17:00:00,,0
1,1.1,DP6 TRAMLIJN NOORDERLAAN,1165.375,1153.72,1177.03,2016-03-01 08:00:00,2019-05-10 17:00:00,,0
2,1.1.1,6 TRAMLIJN NOORDERLAAN,1165.375,1153.72,1177.03,2016-03-01 08:00:00,2019-05-10 17:00:00,,0
3,1.1.1.1,START MS TRAMLIJN NOORDERLAAN,0.625,0.5,0.75,2016-03-01 08:00:00,2016-02-29 17:00:00,,0
4,1.1.1.2,FINISH MS NOORDERLAAN,0.0,0.0,0.0,2018-06-28 17:00:00,2018-06-28 17:00:00,,0
5,1.1.1.3,FINISH MS  NOORDERLAAN excl deel beplanting en werkzaamh tgv DWA-riolering,0.0,0.0,0.0,2018-06-28 17:00:00,2018-06-28 17:00:00,,0
6,1.1.1.4,FINISH MS  NOORDERLAAN incl vertraging wegens riolering,0.0,0.0,0.0,2018-09-18 17:00:00,2018-09-18 17:00:00,,0
7,1.1.1.5,FINISH MS  NOORDERLAAN incl alle beplanting,0.0,0.0,0.0,2019-05-10 17:00:00,2019-05-10 17:00:00,,0
8,1.1.1.6,Deelfase 1 - Trambusbaan + weg Oost,1162.375,1150.75,1174.0,2016-03-01 08:00:00,2019-05-07 17:00:00,,0
9,1.1.1.6.1,start,0.625,0.5,0.75,2016-03-01 08:00:00,2016-02-29 17:00:00,,0
10,1.1.1.6.2,Voorbereidende werken,3.375,3.34,3.41,2016-03-01 08:00:00,2016-03-04 17:00:00,,0
11,1.1.1.6.2.1,belijning & signalisatie westelijke helft,0.375,0.3,0.45,2016-03-01 08:00:00,2016-03-01 17:00:00,,0
12,1.1.1.6.2.2,Vellen bomen + ontstronken,0.375,0.3,0.45,2016-03-02 08:00:00,2016-03-02 17:00:00,,0
13,1.1.1.6.2.3,Opbraak & wegname OV-palen,0.375,0.3,0.45,2016-03-02 08:00:00,2016-03-02 17:00:00,,0
14,1.1.1.6.2.4,Steenslagfundering,0.375,0.3,0.45,2016-03-03 08:00:00,2016-03-03 17:00:00,,0
15,1.1.1.6.2.5,Asfalt,0.375,0.3,0.45,2016-03-04 08:00:00,2016-03-04 17:00:00,,0
16,1.1.1.6.2.6,Installatie tijdelijke VRI,2.375,1.9,2.85,2016-03-02 08:00:00,2016-03-04 17:00:00,,0
17,1.1.1.6.3,Kruispunt Santiagostraat afgesloten,116.0,114.84,117.16,2016-03-07 17:00:00,2016-07-01 17:00:00,,0
18,1.1.1.6.3.1,begin,0.0,0.0,0.0,2016-03-07 17:00:00,2016-03-07 17:00:00,,0
19,1.1.1.6.3.2,Einde,0.0,0.0,0.0,2016-07-01 17:00:00,2016-07-01 17:00:00,,0
20,1.1.1.6.4,Kruispunt Manchesterlaan afgesloten,298.0,295.02,300.98,2016-07-04 17:00:00,2017-04-28 17:00:00,,0
21,1.1.1.6.4.1,begin,0.0,0.0,0.0,2016-07-04 17:00:00,2016-07-04 17:00:00,,0
22,1.1.1.6.4.2,Einde,0.0,0.0,0.0,2017-04-28 17:00:00,2017-04-28 17:00:00,,0
23,1.1.1.6.5,Santiagostraat - Groenendaallaan (430 lm),1161.375,1149.76,1172.99,2016-03-02 08:00:00,2019-05-07 17:00:00,,0
24,1.1.1.6.5.1,opbraak + afgraving,23.375,23.14,23.61,2016-03-02 08:00:00,2016-03-25 17:00:00,,0
25,1.1.1.6.5.1.1,Opbraak OV-palen,0.375,0.3,0.45,2016-03-07 08:00:00,2016-03-07 17:00:00,,0
26,1.1.1.6.5.1.2,Wegname VRI,4.375,3.5,5.25,2016-03-07 08:00:00,2016-03-11 17:00:00,,0
27,1.1.1.6.5.1.3,Vellen bomen + ontstronken,7.375,5.9,8.85,2016-03-02 08:00:00,2016-03-09 17:00:00,,0
28,1.1.1.6.5.1.4,Opbraak rijweg,4.375,3.5,5.25,2016-03-07 08:00:00,2016-03-11 17:00:00,,0
29,1.1.1.6.5.1.5,Opbraak voetpad-fietspad,4.375,3.5,5.25,2016-03-07 08:00:00,2016-03-11 17:00:00,,0
30,1.1.1.6.5.1.6,Afgraving middenberm,15.375,12.3,18.45,2016-03-10 08:00:00,2016-03-25 17:00:00,,0
31,1.1.1.6.5.2,rioleringen,17.375,17.2,17.55,2016-03-14 08:00:00,2016-03-31 17:00:00,,0
32,1.1.1.6.5.2.1,RWA D600 + putten,15.375,12.3,18.45,2016-03-14 08:00:00,2016-03-29 17:00:00,,0
33,1.1.1.6.5.2.2,aansluitingen slokkers,6.375,5.1,7.65,2016-03-25 08:00:00,2016-03-31 17:00:00,,0
34,1.1.1.6.5.3,fietspad-voetpad,319.375,316.18,322.57,2016-03-14 08:00:00,2017-01-27 17:00:00,,0
35,1.1.1.6.5.3.1,Verplaatsen nutsleidingen + overkoppelingen,56.375,45.1,67.65,2016-03-14 08:00:00,2016-05-09 17:00:00,,0
36,1.1.1.6.5.3.2,Opbraak / opvullen bestaande riolering,6.375,5.1,7.65,2016-05-10 08:00:00,2016-05-16 17:00:00,,0
37,1.1.1.6.5.3.3,"Wachtbuizen, trekputten & funderingen",1.375,1.1,1.65,2016-05-17 08:00:00,2016-05-18 17:00:00,,0
38,1.1.1.6.5.3.4,Grondkoffer,1.375,1.1,1.65,2016-05-19 08:00:00,2016-05-20 17:00:00,,0
39,1.1.1.6.5.3.5,Onderfundering type I,1.375,1.1,1.65,2016-05-23 08:00:00,2016-05-24 17:00:00,,0
40,1.1.1.6.5.3.6,Steenslagfundering type I,1.375,1.1,1.65,2016-05-25 08:00:00,2016-05-26 17:00:00,,0
41,1.1.1.6.5.3.7,Steenslagfundering type IIA,3.375,2.7,4.05,2016-05-27 08:00:00,2016-05-30 17:00:00,,0
42,1.1.1.6.5.3.8,Asfalt OL,3.375,2.7,4.05,2016-05-31 08:00:00,2016-06-03 17:00:00,,0
43,1.1.1.6.5.3.9,Asfalt TL,4.375,3.5,5.25,2016-10-03 08:00:00,2016-10-07 17:00:00,,0
44,1.1.1.6.5.3.10,Borduur + betonstraatstenen + koffer,18.375,14.7,22.05,2016-10-10 08:00:00,2016-10-28 17:00:00,,0
45,1.1.1.6.5.3.11,Afwerking VP klinkers,8.375,6.7,10.05,2017-01-19 08:00:00,2017-01-27 17:00:00,,0
46,1.1.1.6.5.4,trambusbaan,339.375,335.98,342.77,2016-04-05 08:00:00,2017-03-10 17:00:00,,0
47,1.1.1.6.5.4.1,Dwarse wachtbuizen,14.375,11.5,17.25,2016-04-05 08:00:00,2016-04-19 17:00:00,,0
48,1.1.1.6.5.4.2,Grondkoffer,2.375,1.9,2.85,2016-04-19 08:00:00,2016-04-21 17:00:00,,0
49,1.1.1.6.5.4.3,Onderfundering type III,6.375,5.1,7.65,2016-04-22 08:00:00,2016-04-28 17:00:00,,0
50,1.1.1.6.5.4.4,Geotextiel,5.375,4.3,6.45,2016-04-29 08:00:00,2016-05-04 17:00:00,,0
51,1.1.1.6.5.4.5,Porfiersteenslag 0/32 + proeven,6.375,5.1,7.65,2016-04-29 08:00:00,2016-05-05 17:00:00,,0
52,1.1.1.6.5.4.6,Mager beton lijnvormige elementen,9.375,7.5,11.25,2016-05-11 08:00:00,2016-05-20 17:00:00,,0
53,1.1.1.6.5.4.7,Afwerking porfiersteenslag 0/32 + oplevering,7.375,5.9,8.85,2016-05-24 08:00:00,2016-05-31 17:00:00,,0
54,1.1.1.6.5.4.8,Oplevering bedding door BCO,0.375,0.3,0.45,2016-06-01 08:00:00,2016-06-01 17:00:00,,0
55,1.1.1.6.5.4.9,Uitzetten piketten en steeksproefsgewijze controle bedding,0.375,0.3,0.45,2016-06-02 08:00:00,2016-06-02 17:00:00,,0
56,1.1.1.6.5.4.10,Plaatsen spoorpanelen,4.375,3.5,5.25,2016-06-03 08:00:00,2016-06-07 17:00:00,,0
57,1.1.1.6.5.4.11,Plaatsen spoorbakjes wissels,0.375,0.3,0.45,2016-06-08 08:00:00,2016-06-08 17:00:00,,0
58,1.1.1.6.5.4.12,Schiften spoorpanelen,0.375,0.3,0.45,2016-06-09 08:00:00,2016-06-09 17:00:00,,0
59,1.1.1.6.5.4.13,Lassen spoorpanelen,6.375,5.1,7.65,2016-06-10 08:00:00,2016-06-16 17:00:00,,0
60,1.1.1.6.5.4.14,Plaatsen spoorbakjes tractie,0.375,0.3,0.45,2016-06-17 08:00:00,2016-06-17 17:00:00,,0
61,1.1.1.6.5.4.15,Aanleg wachtbuizen tractie ,0.375,0.3,0.45,2016-06-17 08:00:00,2016-06-17 17:00:00,,0
62,1.1.1.6.5.4.16,Uitzetten perron doorsteek ,0.375,0.3,0.45,2016-06-17 08:00:00,2016-06-17 17:00:00,,0
63,1.1.1.6.5.4.17,Aanleg wachtbuizen perron (TDI),0.375,0.3,0.45,2016-06-20 08:00:00,2016-06-20 17:00:00,,0
64,1.1.1.6.5.4.18,Nulpunt locatie markering wissels,0.375,0.3,0.45,2016-06-17 08:00:00,2016-06-17 17:00:00,,0
65,1.1.1.6.5.4.19,Plaatsen wachtbuizen,0.375,0.3,0.45,2016-06-10 08:00:00,2016-06-10 17:00:00,,0
66,1.1.1.6.5.4.20,Plaatsen retourkabels,0.375,0.3,0.45,2016-06-10 08:00:00,2016-06-10 17:00:00,,0
67,1.1.1.6.5.4.21,Plaatsen raillijfbekleding,10.375,8.3,12.45,2016-06-13 08:00:00,2016-06-23 17:00:00,,0
68,1.1.1.6.5.4.22,Plaatsen stalen strip,10.375,8.3,12.45,2016-07-01 08:00:00,2016-07-11 17:00:00,,0
69,1.1.1.6.5.4.23,Opmeting spoor,0.375,0.3,0.45,2016-08-02 08:00:00,2016-08-02 17:00:00,,0
70,1.1.1.6.5.4.24,Oplevering spoor door BTR,0.375,0.3,0.45,2016-08-02 08:00:00,2016-08-02 17:00:00,,0
71,1.1.1.6.5.4.25,Opmeting spoor na plaatsen kifbeton,0.375,0.3,0.45,2016-07-01 08:00:00,2016-07-01 17:00:00,,0
72,1.1.1.6.5.4.26,Plaatsen spoorslikkers,0.375,0.3,0.45,2016-08-01 08:00:00,2016-08-01 17:00:00,,0
73,1.1.1.6.5.4.27,"Aansluiten wisselsturing, lussen,…",1.375,1.1,1.65,2016-06-13 08:00:00,2016-06-14 17:00:00,,0
74,1.1.1.6.5.4.28,Kiftbeton,6.375,5.1,7.65,2016-06-24 08:00:00,2016-06-30 17:00:00,,0
75,1.1.1.6.5.4.29,Plaatsen TDI-lussen (perron/wissels),0.375,0.3,0.45,2016-07-01 08:00:00,2016-07-01 17:00:00,,0
76,1.1.1.6.5.4.30,Plaatsen kathodische bescherming perron,0.375,0.3,0.45,2016-07-01 08:00:00,2016-07-01 17:00:00,,0
77,1.1.1.6.5.4.31,Uitzetten bovenleiding masten,4.375,3.5,5.25,2016-06-24 08:00:00,2016-06-28 17:00:00,,0
78,1.1.1.6.5.4.32,Maken proefputten,6.375,5.1,7.65,2016-06-28 08:00:00,2016-07-04 17:00:00,,0
79,1.1.1.6.5.4.33,Fundering masten (bvl + ov),6.375,5.1,7.65,2016-07-01 08:00:00,2016-07-07 17:00:00,,0
80,1.1.1.6.5.4.34,Funderingen bovenleiding,8.375,6.7,10.05,2016-08-02 08:00:00,2016-08-10 17:00:00,,0
81,1.1.1.6.5.4.35,Wachtbuizen & trekputten,13.375,10.7,16.05,2016-07-08 08:00:00,2016-07-21 17:00:00,,0
82,1.1.1.6.5.4.36,Wapening DGB,7.375,5.9,8.85,2016-08-10 08:00:00,2016-08-17 17:00:00,,0
83,1.1.1.6.5.4.37,Uitgewassen beton,4.375,3.5,5.25,2016-08-19 08:00:00,2016-08-23 17:00:00,,0
84,1.1.1.6.5.4.38,1 Perron,25.375,20.3,30.45,2016-09-26 08:00:00,2016-10-21 17:00:00,,0
85,1.1.1.6.5.4.39,Spoorwerken wissels Santiagostraat,31.0,30.69,31.31,2016-09-02 17:00:00,2016-10-03 17:00:00,,0
86,1.1.1.6.5.4.39.1,162W201,24.0,23.76,24.24,2016-09-09 17:00:00,2016-10-03 17:00:00,,0
87,1.1.1.6.5.4.39.1.1,Leveren wissels 162w201,0.0,0.0,0.0,2016-09-09 17:00:00,2016-09-09 17:00:00,,0
88,1.1.1.6.5.4.39.1.2,Plaatsen wissel + panelen + grondbak,0.375,0.3,0.45,2016-09-26 08:00:00,2016-09-26 17:00:00,,0
89,1.1.1.6.5.4.39.1.3,Lassen wissel + grondbak,1.375,1.1,1.65,2016-09-27 08:00:00,2016-09-28 17:00:00,,0
90,1.1.1.6.5.4.39.1.4,Nulpunt locatie markering wissels,0.375,0.3,0.45,2016-09-29 08:00:00,2016-09-29 17:00:00,,0
91,1.1.1.6.5.4.39.1.5,Plaatsen spoorbakjes,0.375,0.3,0.45,2016-09-27 08:00:00,2016-09-27 17:00:00,,0
92,1.1.1.6.5.4.39.1.6,Plaatsen wachtbuizen + plaatsen kleine trekput wisselsturing,0.375,0.3,0.45,2016-09-27 08:00:00,2016-09-27 17:00:00,,0
93,1.1.1.6.5.4.39.1.7,buizen / kabelaanleg wissel,0.375,0.3,0.45,2016-09-28 08:00:00,2016-09-28 17:00:00,,0
94,1.1.1.6.5.4.39.1.8,Afregelen wissel (mechanisch en electrisch),0.375,0.3,0.45,2016-09-29 08:00:00,2016-09-29 17:00:00,,0
95,1.1.1.6.5.4.39.1.9,Afregelen wisselsturing,0.375,0.3,0.45,2016-09-30 08:00:00,2016-09-30 17:00:00,,0
96,1.1.1.6.5.4.39.1.10,In dienst name wisselbak+wisselsturing,0.375,0.3,0.45,2016-10-03 08:00:00,2016-10-03 17:00:00,,0
97,1.1.1.6.5.4.39.2,162W202,31.0,30.69,31.31,2016-09-02 17:00:00,2016-10-03 17:00:00,,0
98,1.1.1.6.5.4.39.2.1,Leveren wissels 162w202,0.0,0.0,0.0,2016-09-02 17:00:00,2016-09-02 17:00:00,,0
99,1.1.1.6.5.4.39.2.2,Plaatsen wissel + panelen + grondbak,0.375,0.3,0.45,2016-09-26 08:00:00,2016-09-26 17:00:00,,0
100,1.1.1.6.5.4.39.2.3,Lassen wissel + grondbak,1.375,1.1,1.65,2016-09-27 08:00:00,2016-09-28 17:00:00,,0
101,1.1.1.6.5.4.39.2.4,Nulpunt locatie markering wissels,0.375,0.3,0.45,2016-09-29 08:00:00,2016-09-29 17:00:00,,0
102,1.1.1.6.5.4.39.2.5,Plaatsen spoorbakjes,0.375,0.3,0.45,2016-09-27 08:00:00,2016-09-27 17:00:00,,0
103,1.1.1.6.5.4.39.2.6,Plaatsen wachtbuizen + plaatsen kleine trekput wisselsturing,0.375,0.3,0.45,2016-09-27 08:00:00,2016-09-27 17:00:00,,0
104,1.1.1.6.5.4.39.2.7,buizen / kabelaanleg wissel,0.375,0.3,0.45,2016-09-28 08:00:00,2016-09-28 17:00:00,,0
105,1.1.1.6.5.4.39.2.8,Afregelen wissel (mechanisch en electrisch),0.375,0.3,0.45,2016-09-29 08:00:00,2016-09-29 17:00:00,,0
106,1.1.1.6.5.4.39.2.9,Afregelen wisselsturing,0.375,0.3,0.45,2016-09-30 08:00:00,2016-09-30 17:00:00,,0
107,1.1.1.6.5.4.39.2.10,In dienst name wisselbak+wisselsturing,0.375,0.3,0.45,2016-10-03 08:00:00,2016-10-03 17:00:00,,0
108,1.1.1.6.5.4.39.3,162W947,31.0,30.69,31.31,2016-09-02 17:00:00,2016-10-03 17:00:00,,0
109,1.1.1.6.5.4.39.3.1,Leveren wissels 162w947,0.0,0.0,0.0,2016-09-02 17:00:00,2016-09-02 17:00:00,,0
110,1.1.1.6.5.4.39.3.2,Plaatsen wissel + panelen + grondbak,0.375,0.3,0.45,2016-09-26 08:00:00,2016-09-26 17:00:00,,0
111,1.1.1.6.5.4.39.3.3,Lassen wissel + grondbak,1.375,1.1,1.65,2016-09-27 08:00:00,2016-09-28 17:00:00,,0
112,1.1.1.6.5.4.39.3.4,Nulpunt locatie markering wissels,0.375,0.3,0.45,2016-09-29 08:00:00,2016-09-29 17:00:00,,0
113,1.1.1.6.5.4.39.3.5,Plaatsen spoorbakjes,0.375,0.3,0.45,2016-09-27 08:00:00,2016-09-27 17:00:00,,0
114,1.1.1.6.5.4.39.3.6,Plaatsen wachtbuizen + plaatsen kleine trekput wisselsturing,0.375,0.3,0.45,2016-09-27 08:00:00,2016-09-27 17:00:00,,0
115,1.1.1.6.5.4.39.3.7,Buizen / kabelaanleg wissel,0.375,0.3,0.45,2016-09-28 08:00:00,2016-09-28 17:00:00,,0
116,1.1.1.6.5.4.39.3.8,Afregelen wissel (mechanisch en electrisch),0.375,0.3,0.45,2016-09-29 08:00:00,2016-09-29 17:00:00,,0
117,1.1.1.6.5.4.39.3.9,Afregelen wisselsturing,0.375,0.3,0.45,2016-09-30 08:00:00,2016-09-30 17:00:00,,0
118,1.1.1.6.5.4.39.3.10,In dienst name wisselbak+wisselsturing,0.375,0.3,0.45,2016-10-03 08:00:00,2016-10-03 17:00:00,,0
119,1.1.1.6.5.4.40,Spoorwerken wissels Groenendaallaan,57.0,56.43,57.57,2016-08-31 17:00:00,2016-10-27 17:00:00,,0
120,1.1.1.6.5.4.40.1,161W942,14.0,13.86,14.14,2016-10-13 17:00:00,2016-10-27 17:00:00,,0
121,1.1.1.6.5.4.40.1.1,Leveren wissels 161w942,0.0,0.0,0.0,2016-10-13 17:00:00,2016-10-13 17:00:00,,0
122,1.1.1.6.5.4.40.1.2,Plaatsen wissel + panelen + grondbak,0.375,0.3,0.45,2016-10-17 08:00:00,2016-10-17 17:00:00,,0
123,1.1.1.6.5.4.40.1.3,Lassen wissel + grondbak,1.375,1.1,1.65,2016-10-20 08:00:00,2016-10-21 17:00:00,,0
124,1.1.1.6.5.4.40.1.4,Nulpunt locatie markering wissels,0.375,0.3,0.45,2016-10-24 08:00:00,2016-10-24 17:00:00,,0
125,1.1.1.6.5.4.40.1.5,Plaatsen spoorbakjes,0.375,0.3,0.45,2016-10-20 08:00:00,2016-10-20 17:00:00,,0
126,1.1.1.6.5.4.40.1.6,Plaatsen wachtbuizen + plaatsen kleine trekput wisselsturing,0.375,0.3,0.45,2016-10-20 08:00:00,2016-10-20 17:00:00,,0
127,1.1.1.6.5.4.40.1.7,Buizen / kabelaanleg wissel,3.375,2.7,4.05,2016-10-21 08:00:00,2016-10-24 17:00:00,,0
128,1.1.1.6.5.4.40.1.8,Afregelen wissel (mechanisch en electrisch),0.375,0.3,0.45,2016-10-25 08:00:00,2016-10-25 17:00:00,,0
129,1.1.1.6.5.4.40.1.9,Afregelen wisselsturing,0.375,0.3,0.45,2016-10-26 08:00:00,2016-10-26 17:00:00,,0
130,1.1.1.6.5.4.40.1.10,In dienst name wisselbak+wisselsturing,0.375,0.3,0.45,2016-10-27 08:00:00,2016-10-27 17:00:00,,0
131,1.1.1.6.5.4.40.2,162W945,23.0,22.77,23.23,2016-08-31 17:00:00,2016-09-23 17:00:00,,0
132,1.1.1.6.5.4.40.2.1,Leveren wissels  162W945,0.0,0.0,0.0,2016-08-31 17:00:00,2016-08-31 17:00:00,,0
133,1.1.1.6.5.4.40.2.2,Plaatsen wissel + panelen + grondbak,0.375,0.3,0.45,2016-09-15 08:00:00,2016-09-15 17:00:00,,0
134,1.1.1.6.5.4.40.2.3,Lassen wissel + grondbak,3.375,2.7,4.05,2016-09-16 08:00:00,2016-09-19 17:00:00,,0
135,1.1.1.6.5.4.40.2.4,Nulpunt locatie markering wissels,0.375,0.3,0.45,2016-09-20 08:00:00,2016-09-20 17:00:00,,0
136,1.1.1.6.5.4.40.2.5,Plaatsen spoorbakjes,0.375,0.3,0.45,2016-09-16 08:00:00,2016-09-16 17:00:00,,0
137,1.1.1.6.5.4.40.2.6,Plaatsen wachtbuizen + plaatsen kleine trekput wisselsturing,0.375,0.3,0.45,2016-09-16 08:00:00,2016-09-16 17:00:00,,0
138,1.1.1.6.5.4.40.2.7,Buizen / kabelaanleg wissel,1.375,1.1,1.65,2016-09-19 08:00:00,2016-09-20 17:00:00,,0
139,1.1.1.6.5.4.40.2.8,Afregelen wissel (mechanisch en electrisch),0.375,0.3,0.45,2016-09-21 08:00:00,2016-09-21 17:00:00,,0
140,1.1.1.6.5.4.40.2.9,Afregelen wisselsturing,0.375,0.3,0.45,2016-09-22 08:00:00,2016-09-22 17:00:00,,0
141,1.1.1.6.5.4.40.2.10,In dienst name wisselbak+wisselsturing,0.375,0.3,0.45,2016-09-23 08:00:00,2016-09-23 17:00:00,,0
142,1.1.1.6.5.4.41,Controle trekputten + afwerking er rond,1.375,1.1,1.65,2017-01-31 08:00:00,2017-02-01 17:00:00,,0
143,1.1.1.6.5.4.42,Opkuis berm + controle plantvakken,4.375,3.5,5.25,2017-01-23 08:00:00,2017-01-27 17:00:00,,0
144,1.1.1.6.5.4.43,Afwerking bermen,39.375,31.5,47.25,2017-01-30 08:00:00,2017-03-10 17:00:00,,0
145,1.1.1.6.5.5,rijweg,806.375,798.31,814.44,2017-02-20 08:00:00,2019-05-07 17:00:00,,0
146,1.1.1.6.5.5.1,Resterende opbraak oude sporen,2.375,1.9,2.85,2017-04-26 08:00:00,2017-04-28 17:00:00,,0
147,1.1.1.6.5.5.2,Opbraak oude  tramsporen,11.375,9.1,13.65,2017-02-20 08:00:00,2017-03-03 17:00:00,,0
148,1.1.1.6.5.5.3,Onderfundering type III & Steenslagfundering type IA rijweg,31.375,25.1,37.65,2017-05-01 08:00:00,2017-06-01 17:00:00,,0
149,1.1.1.6.5.5.4,Opkuis + controle plantvakken + wachtbuizen,11.375,9.1,13.65,2017-03-27 08:00:00,2017-04-07 17:00:00,,0
150,1.1.1.6.5.5.5,Slokkers,8.375,6.7,10.05,2017-05-24 08:00:00,2017-06-01 17:00:00,,0
151,1.1.1.6.5.5.6,Lijnvormige elementen,0.375,0.3,0.45,2017-06-02 08:00:00,2017-06-02 17:00:00,,0
152,1.1.1.6.5.5.7,Grondwerk berm,15.375,12.3,18.45,2017-06-05 08:00:00,2017-06-20 17:00:00,,0
153,1.1.1.6.5.5.8,asfalt,1.375,1.1,1.65,2017-05-03 08:00:00,2017-05-04 17:00:00,,0
154,1.1.1.6.5.5.9,"Beplanting 90%, exclusief Winter-eiken (Santiagostraat - Groenendaallaan (430 lm))",305.375,244.3,366.45,2018-02-19 08:00:00,2018-12-21 17:00:00,,0
155,1.1.1.6.5.5.10,"Beplanting (Santiagostraat - Groenendaallaan (430 lm)), planten restant beplanting: winter-eiken totaal 96st",43.375,34.7,52.05,2019-03-25 08:00:00,2019-05-07 17:00:00,,0
156,1.1.1.6.5.5.11,Wegmarkering,4.375,3.5,5.25,2017-05-18 08:00:00,2017-05-22 17:00:00,,0
157,1.1.1.6.5.5.12,Signalisatie,0.375,0.3,0.45,2017-05-18 08:00:00,2017-05-18 17:00:00,,0
158,1.1.1.6.5.5.13,Plaatsen en aansluiten tijdelijke OV,3.375,2.7,4.05,2017-05-22 08:00:00,2017-05-25 17:00:00,,0
159,1.1.1.6.5.6,Algemene afwerking,25.375,25.12,25.63,2017-05-08 08:00:00,2017-06-02 17:00:00,,0
160,1.1.1.6.5.6.1,Bijwerken borduur + aanwerken fundering FP,8.375,6.7,10.05,2017-05-08 08:00:00,2017-05-16 17:00:00,,0
161,1.1.1.6.5.6.2,Frezen + borstel TL asfalt,0.375,0.3,0.45,2017-05-17 08:00:00,2017-05-17 17:00:00,,0
162,1.1.1.6.5.6.3,Herplaatsen klinkers,4.375,3.5,5.25,2017-05-18 08:00:00,2017-05-22 17:00:00,,0
163,1.1.1.6.5.6.4,Aanwerken asfalt + nieuwe TL,1.375,1.1,1.65,2017-05-23 08:00:00,2017-05-24 17:00:00,,0
164,1.1.1.6.5.6.5,Opkuis boomvak tussen TBB en FP + aanvullen,1.375,1.1,1.65,2017-06-01 08:00:00,2017-06-02 17:00:00,,0
165,1.1.1.6.6,Havanastraat zuid afgesloten,177.0,175.23,178.77,2016-03-07 17:00:00,2016-08-31 17:00:00,,0
166,1.1.1.6.6.1,begin,0.0,0.0,0.0,2016-03-07 17:00:00,2016-03-07 17:00:00,,0
167,1.1.1.6.6.2,Einde,0.0,0.0,0.0,2016-08-31 17:00:00,2016-08-31 17:00:00,,0
168,1.1.1.6.7,Havanastraat noord afgesloten,89.0,88.11,89.89,2016-09-01 17:00:00,2016-11-29 17:00:00,,0
169,1.1.1.6.7.1,begin,0.0,0.0,0.0,2016-09-01 17:00:00,2016-09-01 17:00:00,,0
170,1.1.1.6.7.2,Einde,0.0,0.0,0.0,2016-11-29 17:00:00,2016-11-29 17:00:00,,0
171,1.1.1.6.8,Havanastraat - Santiagostraat (1350 lm),1161.375,1149.76,1172.99,2016-03-02 08:00:00,2019-05-07 17:00:00,,0
172,1.1.1.6.8.1,opbraak + afgraving,30.375,30.07,30.68,2016-03-02 08:00:00,2016-04-01 17:00:00,,0
173,1.1.1.6.8.1.1,Opbraak OV-palen,1.375,1.1,1.65,2016-03-08 08:00:00,2016-03-09 17:00:00,,0
174,1.1.1.6.8.1.2,Wegname VRI,4.375,3.5,5.25,2016-03-07 08:00:00,2016-03-11 17:00:00,,0
175,1.1.1.6.8.1.3,Vellen bomen + ontstronken,7.375,5.9,8.85,2016-03-02 08:00:00,2016-03-09 17:00:00,,0
176,1.1.1.6.8.1.4,Opbraak rijweg,18.375,14.7,22.05,2016-03-14 08:00:00,2016-04-01 17:00:00,,0
177,1.1.1.6.8.1.5,Opbraak voetpad-fietspad,11.375,9.1,13.65,2016-03-14 08:00:00,2016-03-25 17:00:00,,0
178,1.1.1.6.8.1.6,Afgraving middenberm,15.375,12.3,18.45,2016-03-10 08:00:00,2016-03-25 17:00:00,,0
179,1.1.1.6.8.2,rioleringen,61.375,60.76,61.99,2016-04-06 08:00:00,2016-06-06 17:00:00,,0
180,1.1.1.6.8.2.1,DWA D1000 + put + OS01,6.375,5.1,7.65,2016-05-31 08:00:00,2016-06-06 17:00:00,,0
181,1.1.1.6.8.2.2,RWA D800 + putten,20.375,16.3,24.45,2016-04-06 08:00:00,2016-04-26 17:00:00,,0
182,1.1.1.6.8.2.3,RWA D600 + putten,27.375,21.9,32.85,2016-04-27 08:00:00,2016-05-24 17:00:00,,0
183,1.1.1.6.8.2.4,aansluitingen slokkers,20.375,16.3,24.45,2016-05-17 08:00:00,2016-06-06 17:00:00,,0
184,1.1.1.6.8.3,fietspad-voetpad,403.375,399.34,407.41,2016-03-28 08:00:00,2017-05-05 17:00:00,,0
185,1.1.1.6.8.3.1,Verplaatsen nutsleidingen + overkoppelingen,65.375,52.3,78.45,2016-03-28 08:00:00,2016-06-01 17:00:00,,0
186,1.1.1.6.8.3.2,Opbraak / opvullen bestaande riolering,13.375,10.7,16.05,2017-02-15 08:00:00,2017-02-28 17:00:00,,0
187,1.1.1.6.8.3.3,"Wachtbuizen, trekputten & funderingen",2.375,1.9,2.85,2017-03-01 08:00:00,2017-03-03 17:00:00,,0
188,1.1.1.6.8.3.4,Funderingen fiets-  voetpad (1e laag),20.375,16.3,24.45,2017-03-03 08:00:00,2017-03-23 17:00:00,,0
189,1.1.1.6.8.3.5,Plaatsen borduren,13.375,10.7,16.05,2017-03-10 08:00:00,2017-03-23 17:00:00,,0
190,1.1.1.6.8.3.6,Herstelling na proximuskabel  incident,9.375,7.5,11.25,2017-04-19 08:00:00,2017-04-28 17:00:00,,0
191,1.1.1.6.8.3.7,Afwerken fundering (2de laag),21.375,17.1,25.65,2017-03-21 08:00:00,2017-04-11 17:00:00,,0
192,1.1.1.6.8.3.8,Asfalt OL,13.375,10.7,16.05,2017-04-04 08:00:00,2017-04-17 17:00:00,,0
193,1.1.1.6.8.3.9,Plaatsen betonstraatsteen,17.375,13.9,20.85,2017-04-10 08:00:00,2017-04-27 17:00:00,,0
194,1.1.1.6.8.3.10,Asfalt TL,1.375,1.1,1.65,2017-05-04 08:00:00,2017-05-05 17:00:00,,0
195,1.1.1.6.8.4,Fietspad-voetpad klaar,0.0,0.0,0.0,2017-05-05 17:00:00,2017-05-05 17:00:00,,0
196,1.1.1.6.8.5,trambusbaan,314.375,311.23,317.52,2016-04-27 08:00:00,2017-03-07 17:00:00,,0
197,1.1.1.6.8.5.1,Dwarse wachtbuizen,6.375,5.1,7.65,2016-04-27 08:00:00,2016-05-03 17:00:00,,0
198,1.1.1.6.8.5.2,Grondkoffer,10.375,8.3,12.45,2016-05-09 08:00:00,2016-05-19 17:00:00,,0
199,1.1.1.6.8.5.3,Onderfundering type III,10.375,8.3,12.45,2016-05-23 08:00:00,2016-06-02 17:00:00,,0
200,1.1.1.6.8.5.4,Geotextiel,10.375,8.3,12.45,2016-06-03 08:00:00,2016-06-13 17:00:00,,0
201,1.1.1.6.8.5.5,Porfiersteenslag 0/32 + proeven,10.375,8.3,12.45,2016-06-03 08:00:00,2016-06-13 17:00:00,,0
202,1.1.1.6.8.5.6,Mager beton lijnvormige elementen,3.375,2.7,4.05,2016-06-14 08:00:00,2016-06-17 17:00:00,,0
203,1.1.1.6.8.5.7,Afwerking porfiersteenslag 0/32 + oplevering,11.375,9.1,13.65,2016-06-20 08:00:00,2016-07-01 17:00:00,,0
204,1.1.1.6.8.5.8,0-200m,14.0,13.86,14.14,2016-06-24 17:00:00,2016-07-08 17:00:00,,0
205,1.1.1.6.8.5.8.1,Oplevering,0.0,0.0,0.0,2016-06-24 17:00:00,2016-06-24 17:00:00,,0
206,1.1.1.6.8.5.8.2,Uitzetten piketten,0.375,0.3,0.45,2016-06-27 08:00:00,2016-06-27 17:00:00,,0
207,1.1.1.6.8.5.8.3,Plaatsen panelen,1.375,1.1,1.65,2016-06-27 08:00:00,2016-06-28 17:00:00,,0
208,1.1.1.6.8.5.8.4,Schiften panelen,0.375,0.3,0.45,2016-06-29 08:00:00,2016-06-29 17:00:00,,0
209,1.1.1.6.8.5.8.5,Lassen panelen,4.375,3.5,5.25,2016-06-30 08:00:00,2016-07-04 17:00:00,,0
210,1.1.1.6.8.5.8.6,Nulpunt locatie markering wissels,0.375,0.3,0.45,2016-07-05 08:00:00,2016-07-05 17:00:00,,0
211,1.1.1.6.8.5.8.7,Plaatsen spoorbakjes,0.375,0.3,0.45,2016-06-30 08:00:00,2016-06-30 17:00:00,,0
212,1.1.1.6.8.5.8.8,Plaatsen wachtbuizen,0.375,0.3,0.45,2016-06-30 08:00:00,2016-06-30 17:00:00,,0
213,1.1.1.6.8.5.8.9,Plaatsen spoorslikkers,0.375,0.3,0.45,2016-06-30 08:00:00,2016-06-30 17:00:00,,0
214,1.1.1.6.8.5.8.10,Plaatsen retourkabels,0.375,0.3,0.45,2016-06-30 08:00:00,2016-06-30 17:00:00,,0
215,1.1.1.6.8.5.8.11,Plaatsen raillijfbekleding,3.375,2.7,4.05,2016-07-01 08:00:00,2016-07-04 17:00:00,,0
216,1.1.1.6.8.5.8.12,Plaatsen stalen strip,1.375,1.1,1.65,2016-07-05 08:00:00,2016-07-06 17:00:00,,0
217,1.1.1.6.8.5.8.13,Opmeten spoor,0.375,0.3,0.45,2016-07-07 08:00:00,2016-07-07 17:00:00,,0
218,1.1.1.6.8.5.8.14,Opleveren spoor,0.375,0.3,0.45,2016-07-08 08:00:00,2016-07-08 17:00:00,,0
219,1.1.1.6.8.5.9,200m-400m,15.0,14.85,15.15,2016-06-27 17:00:00,2016-07-12 17:00:00,,0
220,1.1.1.6.8.5.9.1,Oplevering,0.0,0.0,0.0,2016-06-27 17:00:00,2016-06-27 17:00:00,,0
221,1.1.1.6.8.5.9.2,Uitzetten piketten,0.375,0.3,0.45,2016-06-28 08:00:00,2016-06-28 17:00:00,,0
222,1.1.1.6.8.5.9.3,Plaatsen panelen,1.375,1.1,1.65,2016-06-29 08:00:00,2016-06-30 17:00:00,,0
223,1.1.1.6.8.5.9.4,Schiften panelen,0.375,0.3,0.45,2016-07-01 08:00:00,2016-07-01 17:00:00,,0
224,1.1.1.6.8.5.9.5,Lassen panelen,2.375,1.9,2.85,2016-07-04 08:00:00,2016-07-06 17:00:00,,0
225,1.1.1.6.8.5.9.6,Nulpunt locatie markering wissels,0.375,0.3,0.45,2016-07-07 08:00:00,2016-07-07 17:00:00,,0
226,1.1.1.6.8.5.9.7,Plaatsen spoorbakjes,0.375,0.3,0.45,2016-07-04 08:00:00,2016-07-04 17:00:00,,0
227,1.1.1.6.8.5.9.8,Plaatsen wachtbuizen,0.375,0.3,0.45,2016-07-04 08:00:00,2016-07-04 17:00:00,,0
228,1.1.1.6.8.5.9.9,Plaatsen spoorslikkers,0.375,0.3,0.45,2016-07-04 08:00:00,2016-07-04 17:00:00,,0
229,1.1.1.6.8.5.9.10,Plaatsen retourkabels,0.375,0.3,0.45,2016-07-04 08:00:00,2016-07-04 17:00:00,,0
230,1.1.1.6.8.5.9.11,Plaatsen raillijfbekleding,1.375,1.1,1.65,2016-07-05 08:00:00,2016-07-06 17:00:00,,0
231,1.1.1.6.8.5.9.12,Plaatsen stalen strip,1.375,1.1,1.65,2016-07-07 08:00:00,2016-07-08 17:00:00,,0
232,1.1.1.6.8.5.9.13,Opmeten spoor,0.375,0.3,0.45,2016-07-11 08:00:00,2016-07-11 17:00:00,,0
233,1.1.1.6.8.5.9.14,Opleveren spoor,0.375,0.3,0.45,2016-07-12 08:00:00,2016-07-12 17:00:00,,0
234,1.1.1.6.8.5.10,400m-600m,35.79166666670062,35.43,36.15,2016-06-28 17:00:00,2016-08-03 12:00:00,,0
235,1.1.1.6.8.5.10.1,Oplevering,0.0,0.0,0.0,2016-06-28 17:00:00,2016-06-28 17:00:00,,0
236,1.1.1.6.8.5.10.2,Uitzetten piketten,0.375,0.3,0.45,2016-06-29 08:00:00,2016-06-29 17:00:00,,0
237,1.1.1.6.8.5.10.3,Plaatsen panelen,3.375,2.7,4.05,2016-07-01 08:00:00,2016-07-04 17:00:00,,0
238,1.1.1.6.8.5.10.4,Schiften panelen,0.375,0.3,0.45,2016-07-05 08:00:00,2016-07-05 17:00:00,,0
239,1.1.1.6.8.5.10.5,Lassen panelen,4.375,3.5,5.25,2016-07-07 08:00:00,2016-07-11 17:00:00,,0
240,1.1.1.6.8.5.10.6,Nulpunt locatie markering wissels,0.375,0.3,0.45,2016-07-12 08:00:00,2016-07-12 17:00:00,,0
241,1.1.1.6.8.5.10.7,Plaatsen spoorbakjes,0.375,0.3,0.45,2016-07-07 08:00:00,2016-07-07 17:00:00,,0
242,1.1.1.6.8.5.10.8,Plaatsen wachtbuizen,0.375,0.3,0.45,2016-07-07 08:00:00,2016-07-07 17:00:00,,0
243,1.1.1.6.8.5.10.9,Plaatsen spoorslikkers,0.375,0.3,0.45,2016-07-07 08:00:00,2016-07-07 17:00:00,,0
244,1.1.1.6.8.5.10.10,Plaatsen retourkabels,0.375,0.3,0.45,2016-07-07 08:00:00,2016-07-07 17:00:00,,0
245,1.1.1.6.8.5.10.11,Plaatsen raillijfbekleding,3.375,2.7,4.05,2016-07-08 08:00:00,2016-07-11 17:00:00,,0
246,1.1.1.6.8.5.10.12,Plaatsen stalen strip,1.375,1.1,1.65,2016-07-12 08:00:00,2016-07-13 17:00:00,,0
247,1.1.1.6.8.5.10.13,Opmeten spoor,0.9583333332993789,0.77,1.15,2016-08-01 13:00:00,2016-08-02 12:00:00,,0
248,1.1.1.6.8.5.10.14,Opleveren spoor,0.9583333332993789,0.77,1.15,2016-08-02 13:00:00,2016-08-03 12:00:00,,0
249,1.1.1.6.8.5.11,600m-800m,36.79166666670062,36.42,37.16,2016-06-29 17:00:00,2016-08-05 12:00:00,,0
250,1.1.1.6.8.5.11.1,Oplevering,0.0,0.0,0.0,2016-06-29 17:00:00,2016-06-29 17:00:00,,0
251,1.1.1.6.8.5.11.2,Uitzetten piketten,0.375,0.3,0.45,2016-06-30 08:00:00,2016-06-30 17:00:00,,0
252,1.1.1.6.8.5.11.3,Plaatsen panelen,1.375,1.1,1.65,2016-07-05 08:00:00,2016-07-06 17:00:00,,0
253,1.1.1.6.8.5.11.4,Schiften panelen,0.375,0.3,0.45,2016-07-07 08:00:00,2016-07-07 17:00:00,,0
254,1.1.1.6.8.5.11.5,Lassen panelen,4.375,3.5,5.25,2016-07-08 08:00:00,2016-07-12 17:00:00,,0
255,1.1.1.6.8.5.11.6,Nulpunt locatie markering wissels,0.375,0.3,0.45,2016-07-13 08:00:00,2016-07-13 17:00:00,,0
256,1.1.1.6.8.5.11.7,Plaatsen spoorbakjes,0.375,0.3,0.45,2016-07-08 08:00:00,2016-07-08 17:00:00,,0
257,1.1.1.6.8.5.11.8,Plaatsen wachtbuizen,0.375,0.3,0.45,2016-07-08 08:00:00,2016-07-08 17:00:00,,0
258,1.1.1.6.8.5.11.9,Plaatsen spoorslikkers,0.375,0.3,0.45,2016-07-08 08:00:00,2016-07-08 17:00:00,,0
259,1.1.1.6.8.5.11.10,Plaatsen retourkabels,0.375,0.3,0.45,2016-07-08 08:00:00,2016-07-08 17:00:00,,0
260,1.1.1.6.8.5.11.11,Plaatsen raillijfbekleding,1.375,1.1,1.65,2016-07-12 08:00:00,2016-07-13 17:00:00,,0
261,1.1.1.6.8.5.11.12,Plaatsen stalen strip,1.9583333332993789,1.57,2.35,2016-08-01 13:00:00,2016-08-03 12:00:00,,0
262,1.1.1.6.8.5.11.13,Opmeten spoor,0.9583333332993789,0.77,1.15,2016-08-03 13:00:00,2016-08-04 12:00:00,,0
263,1.1.1.6.8.5.11.14,Opleveren spoor,0.9583333332993789,0.77,1.15,2016-08-04 13:00:00,2016-08-05 12:00:00,,0
264,1.1.1.6.8.5.12,800m-1000m,39.79166666670062,39.39,40.19,2016-06-30 17:00:00,2016-08-09 12:00:00,,0
265,1.1.1.6.8.5.12.1,Oplevering,0.0,0.0,0.0,2016-06-30 17:00:00,2016-06-30 17:00:00,,0
266,1.1.1.6.8.5.12.2,Uitzetten piketten,0.375,0.3,0.45,2016-07-01 08:00:00,2016-07-01 17:00:00,,0
267,1.1.1.6.8.5.12.3,Plaatsen panelen,1.375,1.1,1.65,2016-07-07 08:00:00,2016-07-08 17:00:00,,0
268,1.1.1.6.8.5.12.4,Schiften panelen,0.375,0.3,0.45,2016-07-11 08:00:00,2016-07-11 17:00:00,,0
269,1.1.1.6.8.5.12.5,Lassen panelen,2.375,1.9,2.85,2016-07-12 08:00:00,2016-07-14 17:00:00,,0
270,1.1.1.6.8.5.12.6,Nulpunt locatie markering wissels,0.375,0.3,0.45,2016-08-02 08:00:00,2016-08-02 17:00:00,,0
271,1.1.1.6.8.5.12.7,Plaatsen spoorbakjes,0.375,0.3,0.45,2016-07-12 08:00:00,2016-07-12 17:00:00,,0
272,1.1.1.6.8.5.12.8,Plaatsen wachtbuizen,0.375,0.3,0.45,2016-07-12 08:00:00,2016-07-12 17:00:00,,0
273,1.1.1.6.8.5.12.9,Plaatsen spoorslikkers,0.375,0.3,0.45,2016-07-12 08:00:00,2016-07-12 17:00:00,,0
274,1.1.1.6.8.5.12.10,Plaatsen retourkabels,0.375,0.3,0.45,2016-07-12 08:00:00,2016-07-12 17:00:00,,0
275,1.1.1.6.8.5.12.11,Plaatsen raillijfbekleding,1.375,1.1,1.65,2016-07-13 08:00:00,2016-07-14 17:00:00,,0
276,1.1.1.6.8.5.12.12,Plaatsen stalen strip,1.9583333332993789,1.57,2.35,2016-08-03 13:00:00,2016-08-05 12:00:00,,0
277,1.1.1.6.8.5.12.13,Opmeten spoor,2.958333333299379,2.37,3.55,2016-08-05 13:00:00,2016-08-08 12:00:00,,0
278,1.1.1.6.8.5.12.14,Opleveren spoor,0.9583333332993789,0.77,1.15,2016-08-08 13:00:00,2016-08-09 12:00:00,,0
279,1.1.1.6.8.5.13,1000m-1200m,38.0,37.62,38.38,2016-07-01 17:00:00,2016-08-08 17:00:00,,0
280,1.1.1.6.8.5.13.1,Oplevering,0.0,0.0,0.0,2016-07-01 17:00:00,2016-07-01 17:00:00,,0
281,1.1.1.6.8.5.13.2,Uitzetten piketten,0.375,0.3,0.45,2016-07-04 08:00:00,2016-07-04 17:00:00,,0
282,1.1.1.6.8.5.13.3,Plaatsen panelen,1.375,1.1,1.65,2016-07-07 08:00:00,2016-07-08 17:00:00,,0
283,1.1.1.6.8.5.13.4,Schiften panelen,0.375,0.3,0.45,2016-07-11 08:00:00,2016-07-11 17:00:00,,0
284,1.1.1.6.8.5.13.5,Lassen panelen,2.375,1.9,2.85,2016-07-12 08:00:00,2016-07-14 17:00:00,,0
285,1.1.1.6.8.5.13.6,Nulpunt locatie markering wissels,0.375,0.3,0.45,2016-08-02 08:00:00,2016-08-02 17:00:00,,0
286,1.1.1.6.8.5.13.7,Plaatsen spoorbakjes,0.375,0.3,0.45,2016-07-12 08:00:00,2016-07-12 17:00:00,,0
287,1.1.1.6.8.5.13.8,Plaatsen wachtbuizen,0.375,0.3,0.45,2016-07-12 08:00:00,2016-07-12 17:00:00,,0
288,1.1.1.6.8.5.13.9,Plaatsen spoorslikkers,0.375,0.3,0.45,2016-07-12 08:00:00,2016-07-12 17:00:00,,0
289,1.1.1.6.8.5.13.10,Plaatsen retourkabels,0.375,0.3,0.45,2016-07-12 08:00:00,2016-07-12 17:00:00,,0
290,1.1.1.6.8.5.13.11,Plaatsen raillijfbekleding,1.375,1.1,1.65,2016-07-13 08:00:00,2016-07-14 17:00:00,,0
291,1.1.1.6.8.5.13.12,Plaatsen stalen strip,1.1666666665987577,0.93,1.4,2016-08-03 13:00:00,2016-08-04 17:00:00,,0
292,1.1.1.6.8.5.13.13,Opmeten spoor,0.375,0.3,0.45,2016-08-05 08:00:00,2016-08-05 17:00:00,,0
293,1.1.1.6.8.5.13.14,Opleveren spoor,0.375,0.3,0.45,2016-08-08 08:00:00,2016-08-08 17:00:00,,0
294,1.1.1.6.8.5.14,1200m-1400m,35.0,34.65,35.35,2016-07-04 17:00:00,2016-08-08 17:00:00,,0
295,1.1.1.6.8.5.14.1,Oplevering,0.0,0.0,0.0,2016-07-04 17:00:00,2016-07-04 17:00:00,,0
296,1.1.1.6.8.5.14.2,Uitzetten piketten,0.375,0.3,0.45,2016-07-05 08:00:00,2016-07-05 17:00:00,,0
297,1.1.1.6.8.5.14.3,Plaatsen panelen,1.375,1.1,1.65,2016-07-07 08:00:00,2016-07-08 17:00:00,,0
298,1.1.1.6.8.5.14.4,Schiften panelen,0.375,0.3,0.45,2016-07-11 08:00:00,2016-07-11 17:00:00,,0
299,1.1.1.6.8.5.14.5,Lassen panelen,2.375,1.9,2.85,2016-07-13 08:00:00,2016-07-15 17:00:00,,0
300,1.1.1.6.8.5.14.6,Nulpunt locatie markering wissels,0.9583333332993789,0.77,1.15,2016-08-03 13:00:00,2016-08-04 12:00:00,,0
301,1.1.1.6.8.5.14.7,Plaatsen spoorbakjes,0.375,0.3,0.45,2016-07-13 08:00:00,2016-07-13 17:00:00,,0
302,1.1.1.6.8.5.14.8,Plaatsen wachtbuizen,0.375,0.3,0.45,2016-07-13 08:00:00,2016-07-13 17:00:00,,0
303,1.1.1.6.8.5.14.9,Plaatsen spoorslikkers,0.375,0.3,0.45,2016-07-13 08:00:00,2016-07-13 17:00:00,,0
304,1.1.1.6.8.5.14.10,Plaatsen retourkabels,0.375,0.3,0.45,2016-07-13 08:00:00,2016-07-13 17:00:00,,0
305,1.1.1.6.8.5.14.11,Plaatsen raillijfbekleding,1.9583333332993789,1.57,2.35,2016-08-01 13:00:00,2016-08-03 12:00:00,,0
306,1.1.1.6.8.5.14.12,Plaatsen stalen strip,1.1666666665987577,0.93,1.4,2016-08-03 13:00:00,2016-08-04 17:00:00,,0
307,1.1.1.6.8.5.14.13,Opmeten spoor,0.375,0.3,0.45,2016-08-05 08:00:00,2016-08-05 17:00:00,,0
308,1.1.1.6.8.5.14.14,Opleveren spoor,0.375,0.3,0.45,2016-08-08 08:00:00,2016-08-08 17:00:00,,0
309,1.1.1.6.8.5.15,"Aansluiten wisselsturing, lussen,…",9.375,7.5,11.25,2016-07-11 08:00:00,2016-07-20 17:00:00,,0
310,1.1.1.6.8.5.16,Kiftbeton,9.958333333299379,7.97,11.95,2016-08-01 13:00:00,2016-08-11 12:00:00,,0
311,1.1.1.6.8.5.17,Fundering masten (bvl + ov),6.958333333299379,5.57,8.35,2016-08-01 13:00:00,2016-08-08 12:00:00,,0
312,1.1.1.6.8.5.18,Plaatsen TDI-lussen (perron/wissels),0.9583333332993789,0.77,1.15,2016-08-11 13:00:00,2016-08-12 12:00:00,,0
313,1.1.1.6.8.5.19,Plaatsen kathodische bescherming perron,2.958333333299379,2.37,3.55,2016-08-12 13:00:00,2016-08-15 12:00:00,,0
314,1.1.1.6.8.5.20,Uitzetten bovenleiding masten,3.375,2.7,4.05,2016-08-16 08:00:00,2016-08-19 17:00:00,,0
315,1.1.1.6.8.5.21,Maken van proefputten,8.375,6.7,10.05,2016-08-18 08:00:00,2016-08-26 17:00:00,,0
316,1.1.1.6.8.5.22,Fundering bovenleiding,11.375,9.1,13.65,2016-08-29 08:00:00,2016-09-09 17:00:00,,0
317,1.1.1.6.8.5.23,Wachtbuizen & trekputten,25.375,20.3,30.45,2016-09-12 08:00:00,2016-10-07 17:00:00,,0
318,1.1.1.6.8.5.24,Plaatsen masten,4.375,3.5,5.25,2016-09-12 08:00:00,2016-09-16 17:00:00,,0
319,1.1.1.6.8.5.25,Openbare verlichting,29.375,23.5,35.25,2017-01-16 08:00:00,2017-02-14 17:00:00,,0
320,1.1.1.6.8.5.26,Bovenleiding uitrusting,11.375,9.1,13.65,2016-11-07 08:00:00,2016-11-18 17:00:00,,0
321,1.1.1.6.8.5.27,Afrollen bovenleiding,6.375,5.1,7.65,2016-11-22 08:00:00,2016-11-28 17:00:00,,0
322,1.1.1.6.8.5.28,Afstellen bovenleiding,3.375,2.7,4.05,2016-11-29 08:00:00,2016-12-02 17:00:00,,0
323,1.1.1.6.8.5.29,Aanleg feederkabel vanuit TS Luchtbal,25.375,25.12,25.63,2016-09-26 08:00:00,2016-10-21 17:00:00,,0
324,1.1.1.6.8.5.29.1,Fase 1/ Vanaf FM04 (Santiagostraat) +/- 500m,4.375,3.5,5.25,2016-09-26 08:00:00,2016-09-30 17:00:00,,0
325,1.1.1.6.8.5.29.2,Fase 2/ Deel 2 van FM04,4.375,3.5,5.25,2016-10-03 08:00:00,2016-10-07 17:00:00,,0
326,1.1.1.6.8.5.29.3,Fase 3 / FM03,1.375,1.1,1.65,2016-10-10 08:00:00,2016-10-11 17:00:00,,0
327,1.1.1.6.8.5.29.4,Fase 4 / Vanaf TS Luchtbal +/- 500 m Deel 1 van FM01,2.375,1.9,2.85,2016-10-12 08:00:00,2016-10-14 17:00:00,,0
328,1.1.1.6.8.5.29.5,Fase 5 / FM02 ,1.375,1.1,1.65,2016-10-17 08:00:00,2016-10-18 17:00:00,,0
329,1.1.1.6.8.5.29.6,Fase 6 / Deel 2 FM01,2.375,1.9,2.85,2016-10-19 08:00:00,2016-10-21 17:00:00,,0
330,1.1.1.6.8.5.30,PAL Herstel zone 20/32 --> 0/32,9.375,7.5,11.25,2017-01-25 08:00:00,2017-02-03 17:00:00,,0
331,1.1.1.6.8.5.31,Controle trekputten + afwerking er rond,2.375,1.9,2.85,2017-02-01 08:00:00,2017-02-03 17:00:00,,0
332,1.1.1.6.8.5.32,Opkuis + controle plantvakken + wachtbuizen,25.375,20.3,30.45,2017-01-30 08:00:00,2017-02-24 17:00:00,,0
333,1.1.1.6.8.5.33,Perron DSKO,3.375,2.7,4.05,2017-01-23 08:00:00,2017-01-26 17:00:00,,0
334,1.1.1.6.8.5.34,Fundering schuilhokjes,3.375,2.7,4.05,2017-01-27 08:00:00,2017-01-30 17:00:00,,0
335,1.1.1.6.8.5.35,Betonverharding perron afwerken,1.375,1.1,1.65,2017-01-30 08:00:00,2017-01-31 17:00:00,,0
336,1.1.1.6.8.5.36,Klinkers perron DSKO,0.375,0.3,0.45,2017-01-30 08:00:00,2017-01-30 17:00:00,,0
337,1.1.1.6.8.5.37,Perron Dublin,4.375,3.5,5.25,2017-01-23 08:00:00,2017-01-27 17:00:00,,0
338,1.1.1.6.8.5.38,klinkers perron Dublin,0.375,0.3,0.45,2017-01-31 08:00:00,2017-01-31 17:00:00,,0
339,1.1.1.6.8.5.39,Plaatsen schuilhokjes,1.375,1.1,1.65,2017-03-06 08:00:00,2017-03-07 17:00:00,,0
340,1.1.1.6.8.6,rijweg,827.375,819.1,835.65,2017-01-30 08:00:00,2019-05-07 17:00:00,,0
341,1.1.1.6.8.6.1,Wachtbuizen VRI,11.375,9.1,13.65,2017-01-30 08:00:00,2017-02-10 17:00:00,,0
342,1.1.1.6.8.6.2,Rijweg funderingen (incl. verwijderen verlaten leidingen),36.375,29.1,43.65,2017-02-02 08:00:00,2017-03-10 17:00:00,,0
343,1.1.1.6.8.6.3,Slokkers,27.375,21.9,32.85,2017-02-16 08:00:00,2017-03-15 17:00:00,,0
344,1.1.1.6.8.6.4,Lijnvormige elementen,7.375,5.9,8.85,2017-03-16 08:00:00,2017-03-23 17:00:00,,0
345,1.1.1.6.8.6.5,Openbare verlichting,1.375,1.1,1.65,2017-04-18 08:00:00,2017-04-19 17:00:00,,0
346,1.1.1.6.8.6.6,Wachtbuizen & trekputten,11.375,9.1,13.65,2017-02-27 08:00:00,2017-03-10 17:00:00,,0
347,1.1.1.6.8.6.7,Grondwerk berm,20.375,16.3,24.45,2017-04-27 08:00:00,2017-05-17 17:00:00,,0
348,1.1.1.6.8.6.8,Asfalt,25.375,20.3,30.45,2017-03-30 08:00:00,2017-04-24 17:00:00,,0
349,1.1.1.6.8.6.9,"Beplanting 90%, exclusief Winter-eiken (Havanastraat - Santiagostraat (1350 lm))",305.375,244.3,366.45,2018-02-19 08:00:00,2018-12-21 17:00:00,,0
350,1.1.1.6.8.6.10,"Beplanting (Havanastraat - Santiagostraat (1350 lm)), planten restant beplanting: winter-eiken totaal 96st",43.375,34.7,52.05,2019-03-25 08:00:00,2019-05-07 17:00:00,,0
351,1.1.1.6.8.6.11,Oplossen restpunten,9.375,7.5,11.25,2017-05-17 08:00:00,2017-05-26 17:00:00,,0
352,1.1.1.6.8.6.12,Opkuis boomvak tussen TBB en FP + aanvullen,3.375,2.7,4.05,2017-05-29 08:00:00,2017-06-01 17:00:00,,0
353,1.1.1.6.8.6.13,Wegmarkering,4.375,3.5,5.25,2017-05-18 08:00:00,2017-05-22 17:00:00,,0
354,1.1.1.6.8.6.14,Signalisatie,0.375,0.3,0.45,2017-05-18 08:00:00,2017-05-18 17:00:00,,0
355,1.1.1.6.8.6.15,Plaatsen en aansluiten tijdelijke OV,3.375,2.7,4.05,2017-05-22 08:00:00,2017-05-25 17:00:00,,0
356,1.1.1.6.9,Ekersesteenweg - Havanastraat (300 lm),488.375,483.49,493.26,2016-03-02 08:00:00,2017-07-03 17:00:00,,0
357,1.1.1.6.9.1,opbraak + afgraving,34.375,34.03,34.72,2016-03-02 08:00:00,2016-04-05 17:00:00,,0
358,1.1.1.6.9.1.1,Opbraak OV-palen,1.375,1.1,1.65,2016-03-10 08:00:00,2016-03-11 17:00:00,,0
359,1.1.1.6.9.1.2,Wegname VRI,4.375,3.5,5.25,2016-03-07 08:00:00,2016-03-11 17:00:00,,0
360,1.1.1.6.9.1.3,Vellen bomen + ontstronken,7.375,5.9,8.85,2016-03-02 08:00:00,2016-03-09 17:00:00,,0
361,1.1.1.6.9.1.4,Opbraak rijweg,11.375,9.1,13.65,2016-03-07 08:00:00,2016-03-18 17:00:00,,0
362,1.1.1.6.9.1.5,Opbraak voetpad-fietspad,29.375,23.5,35.25,2016-03-07 08:00:00,2016-04-05 17:00:00,,0
363,1.1.1.6.9.1.6,Afgraving middenberm,26.375,21.1,31.65,2016-03-10 08:00:00,2016-04-05 17:00:00,,0
364,1.1.1.6.9.2,rioleringen,86.375,85.51,87.24,2016-04-04 08:00:00,2016-06-29 17:00:00,,0
365,1.1.1.6.9.2.1,Verplaatsen nutsleidingen,29.375,23.5,35.25,2016-04-04 08:00:00,2016-05-03 17:00:00,,0
366,1.1.1.6.9.2.2,DWA D500 + D400 + D300 + putten,8.375,6.7,10.05,2016-05-31 08:00:00,2016-06-08 17:00:00,,0
367,1.1.1.6.9.2.3,RWA D700 + putten,6.375,5.1,7.65,2016-06-09 08:00:00,2016-06-15 17:00:00,,0
368,1.1.1.6.9.2.4,aansluitingen slokkers,13.375,10.7,16.05,2016-06-16 08:00:00,2016-06-29 17:00:00,,0
369,1.1.1.6.9.3,fietspad-voetpad,382.375,378.55,386.2,2016-04-11 08:00:00,2017-04-28 17:00:00,,0
370,1.1.1.6.9.3.1,Verplaatsen nutsleidingen + overkoppelingen,84.375,67.5,101.25,2016-04-11 08:00:00,2016-07-04 17:00:00,,0
371,1.1.1.6.9.3.2,Funderingen fiets-voetpad,6.375,5.1,7.65,2017-02-15 08:00:00,2017-02-21 17:00:00,,0
372,1.1.1.6.9.3.3,Plaatsen borduren,6.375,5.1,7.65,2017-02-08 08:00:00,2017-02-14 17:00:00,,0
373,1.1.1.6.9.3.4,Afwerken fundering (2de laag),6.375,5.1,7.65,2017-03-01 08:00:00,2017-03-07 17:00:00,,0
374,1.1.1.6.9.3.5,Asfalt OL,6.375,5.1,7.65,2017-03-08 08:00:00,2017-03-14 17:00:00,,0
375,1.1.1.6.9.3.6,Plaatsen betonstraatsteen,4.375,3.5,5.25,2017-03-13 08:00:00,2017-03-17 17:00:00,,0
376,1.1.1.6.9.3.7,Asfalt TL,3.375,2.7,4.05,2017-03-17 08:00:00,2017-03-20 17:00:00,,0
377,1.1.1.6.9.3.8,Heraanleg na controle ontwerp,22.375,17.9,26.85,2017-04-06 08:00:00,2017-04-28 17:00:00,,0
378,1.1.1.6.9.4,Fietspad-voetpad klaar,0.0,0.0,0.0,2017-05-04 17:00:00,2017-05-04 17:00:00,,0
379,1.1.1.6.9.5,rijweg,154.375,152.83,155.92,2017-01-30 08:00:00,2017-07-03 17:00:00,,0
380,1.1.1.6.9.5.1,Rijweg funderingen (incl. verwijderen verlaten leidingen),4.375,3.5,5.25,2017-01-30 08:00:00,2017-02-03 17:00:00,,0
381,1.1.1.6.9.5.2,Rio havanastraat,4.375,3.5,5.25,2017-02-06 08:00:00,2017-02-10 17:00:00,,0
382,1.1.1.6.9.5.3,LE,2.375,1.9,2.85,2017-02-08 08:00:00,2017-02-10 17:00:00,,0
383,1.1.1.6.9.5.4,betonverharding bushalteplaats,31.375,25.1,37.65,2017-02-13 08:00:00,2017-03-16 17:00:00,,0
384,1.1.1.6.9.5.5,afwerklaag beton politiedoorgang + Havana,4.375,3.5,5.25,2017-03-27 08:00:00,2017-03-31 17:00:00,,0
385,1.1.1.6.9.5.6,grindgazon Havanalus,6.375,5.1,7.65,2017-06-06 08:00:00,2017-06-12 17:00:00,,0
386,1.1.1.6.9.5.7,LE grindgazon zone,3.375,2.7,4.05,2017-06-06 08:00:00,2017-06-09 17:00:00,,0
387,1.1.1.6.9.5.8,Aanpassing verharding Shell,11.375,9.1,13.65,2017-06-12 08:00:00,2017-06-23 17:00:00,,0
388,1.1.1.6.9.5.9,Openbare verlichting,2.375,1.9,2.85,2017-06-12 08:00:00,2017-06-14 17:00:00,,0
389,1.1.1.6.9.5.10,Asfalt,15.375,12.3,18.45,2017-06-12 08:00:00,2017-06-27 17:00:00,,0
390,1.1.1.6.9.5.11,Wegmarkering,2.375,1.9,2.85,2017-06-28 08:00:00,2017-06-30 17:00:00,,0
391,1.1.1.6.9.5.12,Signalisatie,0.375,0.3,0.45,2017-06-28 08:00:00,2017-06-28 17:00:00,,0
392,1.1.1.6.9.5.13,Plaatsen en aansluiten tijdelijke OV,5.375,4.3,6.45,2017-06-28 08:00:00,2017-07-03 17:00:00,,0
393,1.1.1.6.10,Havana keerlus ,447.375,442.9,451.85,2016-03-01 08:00:00,2017-05-22 17:00:00,,0
394,1.1.1.6.10.1,Herstellingswerken havanalus,42.375,33.9,50.85,2017-04-10 08:00:00,2017-05-22 17:00:00,,0
395,1.1.1.6.10.2,Voorbereidende werken,392.375,388.45,396.3,2016-03-01 08:00:00,2017-03-28 17:00:00,,0
396,1.1.1.6.10.2.1,Verplaatsen nutsleidingen,52.375,41.9,62.85,2016-03-01 08:00:00,2016-04-22 17:00:00,,0
397,1.1.1.6.10.2.2,RWA D400 + putten,11.375,9.1,13.65,2016-10-03 08:00:00,2016-10-14 17:00:00,,0
398,1.1.1.6.10.2.3,Noorderlijke weghelft Logistiekweg,22.375,17.9,26.85,2017-03-06 08:00:00,2017-03-28 17:00:00,,0
399,1.1.1.6.10.2.4,Zuidelijke weghelft Logistiekweg,14.375,11.5,17.25,2017-01-27 08:00:00,2017-02-10 17:00:00,,0
400,1.1.1.6.10.3,trambusbaan,185.375,183.52,187.23,2016-09-26 08:00:00,2017-03-30 17:00:00,,0
401,1.1.1.6.10.3.1,Kruising Havanastraat,15.375,15.22,15.53,2016-12-07 08:00:00,2016-12-22 17:00:00,,0
402,1.1.1.6.10.3.1.1,Leggen panelen,0.375,0.3,0.45,2016-12-07 08:00:00,2016-12-07 17:00:00,,0
403,1.1.1.6.10.3.1.2,Lassen,0.375,0.3,0.45,2016-12-08 08:00:00,2016-12-08 17:00:00,,0
404,1.1.1.6.10.3.1.3,Plaatsen raillijfbekleding+ stalen strips,0.375,0.3,0.45,2016-12-08 08:00:00,2016-12-08 17:00:00,,0
405,1.1.1.6.10.3.1.4,Afstellen,0.375,0.3,0.45,2016-12-12 08:00:00,2016-12-12 17:00:00,,0
406,1.1.1.6.10.3.1.5,Controle,0.375,0.3,0.45,2016-12-13 08:00:00,2016-12-13 17:00:00,,0
407,1.1.1.6.10.3.1.6,Leggen panelen,0.375,0.3,0.45,2016-12-19 08:00:00,2016-12-19 17:00:00,,0
408,1.1.1.6.10.3.1.7,Lassen,0.375,0.3,0.45,2016-12-20 08:00:00,2016-12-20 17:00:00,,0
409,1.1.1.6.10.3.1.8,Plaatsen raillijfbekleding + stalen strips,0.375,0.3,0.45,2016-12-20 08:00:00,2016-12-20 17:00:00,,0
410,1.1.1.6.10.3.1.9,Afstellen,0.375,0.3,0.45,2016-12-21 08:00:00,2016-12-21 17:00:00,,0
411,1.1.1.6.10.3.1.10,Controle,0.375,0.3,0.45,2016-12-22 08:00:00,2016-12-22 17:00:00,,0
412,1.1.1.6.10.3.2,Havanastraat,4.375,4.33,4.42,2016-11-28 08:00:00,2016-12-02 17:00:00,,0
413,1.1.1.6.10.3.2.1,Afstellen,0.375,0.3,0.45,2016-11-28 08:00:00,2016-11-28 17:00:00,,0
414,1.1.1.6.10.3.2.2,Stalen latten,0.375,0.3,0.45,2016-11-29 08:00:00,2016-11-29 17:00:00,,0
415,1.1.1.6.10.3.2.3,Plaatsen raillijfbekleding,0.375,0.3,0.45,2016-11-30 08:00:00,2016-11-30 17:00:00,,0
416,1.1.1.6.10.3.2.4,Plaatsen stalen strips,0.375,0.3,0.45,2016-12-01 08:00:00,2016-12-01 17:00:00,,0
417,1.1.1.6.10.3.2.5,Controle ,0.375,0.3,0.45,2016-12-01 08:00:00,2016-12-01 17:00:00,,0
418,1.1.1.6.10.3.2.6,Kiftbeton,0.375,0.3,0.45,2016-12-02 08:00:00,2016-12-02 17:00:00,,0
419,1.1.1.6.10.3.3,Inrit politie,86.375,85.51,87.24,2016-10-18 08:00:00,2017-01-12 17:00:00,,0
420,1.1.1.6.10.3.3.1,Dwarse wachtbuizen,3.375,2.7,4.05,2016-10-18 08:00:00,2016-10-21 17:00:00,,0
421,1.1.1.6.10.3.3.2,Grondkoffer,1.375,1.1,1.65,2016-10-24 08:00:00,2016-10-25 17:00:00,,0
422,1.1.1.6.10.3.3.3,Onderfundering type III,1.375,1.1,1.65,2016-10-26 08:00:00,2016-10-27 17:00:00,,0
423,1.1.1.6.10.3.3.4,Geotextiel,3.375,2.7,4.05,2016-10-28 08:00:00,2016-10-31 17:00:00,,0
424,1.1.1.6.10.3.3.5,Porfiersteenslag 0/32 + proeven,3.375,2.7,4.05,2016-10-28 08:00:00,2016-10-31 17:00:00,,0
425,1.1.1.6.10.3.3.6,Mager beton lijnvormige elementen,3.375,2.7,4.05,2016-11-08 08:00:00,2016-11-11 17:00:00,,0
426,1.1.1.6.10.3.3.7,Afwerking porfiersteenslag 0/32 + oplevering,1.375,1.1,1.65,2016-11-15 08:00:00,2016-11-16 17:00:00,,0
427,1.1.1.6.10.3.3.8,Oplevering bedding door BCO,0.375,0.3,0.45,2016-11-17 08:00:00,2016-11-17 17:00:00,,0
428,1.1.1.6.10.3.3.9,Uitzetten piketten en steeksproefsgewijze controle bedding,0.375,0.3,0.45,2016-11-18 08:00:00,2016-11-18 17:00:00,,0
429,1.1.1.6.10.3.3.10,Plaatsen spoorpanelen,0.375,0.3,0.45,2016-11-23 08:00:00,2016-11-23 17:00:00,,0
430,1.1.1.6.10.3.3.11,Plaatsen spoorbakjes wissels,0.375,0.3,0.45,2016-11-23 08:00:00,2016-11-23 17:00:00,,0
431,1.1.1.6.10.3.3.12,Schiften spoorpanelen,0.375,0.3,0.45,2016-11-24 08:00:00,2016-11-24 17:00:00,,0
432,1.1.1.6.10.3.3.13,Lassen spoorpanelen,0.375,0.3,0.45,2016-11-25 08:00:00,2016-11-25 17:00:00,,0
433,1.1.1.6.10.3.3.14,Plaatsen spoorbakjes tractie,0.375,0.3,0.45,2016-11-28 08:00:00,2016-11-28 17:00:00,,0
434,1.1.1.6.10.3.3.15,Aanleg wachtbuizen tractie ,0.375,0.3,0.45,2016-11-28 08:00:00,2016-11-28 17:00:00,,0
435,1.1.1.6.10.3.3.16,Uitzetten perron doorsteek ,0.375,0.3,0.45,2016-11-28 08:00:00,2016-11-28 17:00:00,,0
436,1.1.1.6.10.3.3.17,Aanleg wachtbuizen perron (TDI),0.375,0.3,0.45,2016-11-29 08:00:00,2016-11-29 17:00:00,,0
437,1.1.1.6.10.3.3.18,Nulpunt locatie markering wissels,0.375,0.3,0.45,2016-11-28 08:00:00,2016-11-28 17:00:00,,0
438,1.1.1.6.10.3.3.19,Plaatsen wachtbuizen,0.375,0.3,0.45,2016-11-25 08:00:00,2016-11-25 17:00:00,,0
439,1.1.1.6.10.3.3.20,Plaatsen spoorslikkers,0.375,0.3,0.45,2016-11-25 08:00:00,2016-11-25 17:00:00,,0
440,1.1.1.6.10.3.3.21,Plaatsen raillijfbekleding,2.375,1.9,2.85,2016-11-28 08:00:00,2016-11-30 17:00:00,,0
441,1.1.1.6.10.3.3.22,Plaatsen stalen strip,4.375,3.5,5.25,2016-12-01 08:00:00,2016-12-05 17:00:00,,0
442,1.1.1.6.10.3.3.23,Opmeting spoor,0.375,0.3,0.45,2016-12-06 08:00:00,2016-12-06 17:00:00,,0
443,1.1.1.6.10.3.3.24,Oplevering bedding door BTR,0.375,0.3,0.45,2016-12-07 08:00:00,2016-12-07 17:00:00,,0
444,1.1.1.6.10.3.3.25,Opmeting spoor na plaatsen kifbeton,0.375,0.3,0.45,2016-12-08 08:00:00,2016-12-08 17:00:00,,0
445,1.1.1.6.10.3.3.26,"Aansluiten wisselsturing, lussen,…",3.375,2.7,4.05,2016-11-28 08:00:00,2016-12-01 17:00:00,,0
446,1.1.1.6.10.3.3.27,overgang TBB voor politie en verkeer,0.375,0.3,0.45,2016-12-06 08:00:00,2016-12-06 17:00:00,,0
447,1.1.1.6.10.3.3.28,Plaatsen panelen,0.375,0.3,0.45,2016-11-28 08:00:00,2016-11-28 17:00:00,,0
448,1.1.1.6.10.3.3.29,Plaatsen panelen inovinleiding,0.375,0.3,0.45,2016-11-29 08:00:00,2016-11-29 17:00:00,,0
449,1.1.1.6.10.3.3.30,Lassen,0.375,0.3,0.45,2016-11-30 08:00:00,2016-11-30 17:00:00,,0
450,1.1.1.6.10.3.3.31,Plaatsen raillijfbekleding,1.375,1.1,1.65,2016-11-30 08:00:00,2016-12-01 17:00:00,,0
451,1.1.1.6.10.3.3.32,afstellen panelen,0.375,0.3,0.45,2016-12-02 08:00:00,2016-12-02 17:00:00,,0
452,1.1.1.6.10.3.3.33,controle,0.375,0.3,0.45,2016-12-05 08:00:00,2016-12-05 17:00:00,,0
453,1.1.1.6.10.3.3.34,Kiftbeton,0.375,0.3,0.45,2016-12-09 08:00:00,2016-12-09 17:00:00,,0
454,1.1.1.6.10.3.3.35,Fundering masten (bvl + ov),1.375,1.1,1.65,2016-12-12 08:00:00,2016-12-13 17:00:00,,0
455,1.1.1.6.10.3.3.36,"Palen, bovenleidingen, kasten & ITRIS-palen",6.375,5.1,7.65,2016-12-14 08:00:00,2016-12-20 17:00:00,,0
456,1.1.1.6.10.3.3.37,Wachtbuizen & trekputten,1.375,1.1,1.65,2016-12-14 08:00:00,2016-12-15 17:00:00,,0
457,1.1.1.6.10.3.3.38,Openbare verlichting,10.166666666700621,8.13,12.2,2016-12-16 08:00:00,2016-12-26 12:00:00,,0
458,1.1.1.6.10.3.3.39,Wapening DGB,1.375,1.1,1.65,2017-01-09 08:00:00,2017-01-10 17:00:00,,0
459,1.1.1.6.10.3.3.40,Uitgewassen beton,1.375,1.1,1.65,2017-01-11 08:00:00,2017-01-12 17:00:00,,0
460,1.1.1.6.10.3.4,Inrit Shell en CP,88.375,87.49,89.26,2016-09-26 08:00:00,2016-12-23 17:00:00,,0
461,1.1.1.6.10.3.4.1,Dwarse wachtbuizen,9.375,7.5,11.25,2016-09-26 08:00:00,2016-10-05 17:00:00,,0
462,1.1.1.6.10.3.4.2,Grondkoffer,1.375,1.1,1.65,2016-10-06 08:00:00,2016-10-07 17:00:00,,0
463,1.1.1.6.10.3.4.3,Onderfundering type III,1.375,1.1,1.65,2016-10-10 08:00:00,2016-10-11 17:00:00,,0
464,1.1.1.6.10.3.4.4,Geotextiel,1.375,1.1,1.65,2016-10-12 08:00:00,2016-10-13 17:00:00,,0
465,1.1.1.6.10.3.4.5,Porfiersteenslag 0/32 + proeven,1.375,1.1,1.65,2016-10-12 08:00:00,2016-10-13 17:00:00,,0
466,1.1.1.6.10.3.4.6,Mager beton lijnvormige elementen,3.375,2.7,4.05,2016-10-14 08:00:00,2016-10-17 17:00:00,,0
467,1.1.1.6.10.3.4.7,Afwerking porfiersteenslag 0/32 + oplevering,1.375,1.1,1.65,2016-10-18 08:00:00,2016-10-19 17:00:00,,0
468,1.1.1.6.10.3.4.8,Oplevering bedding door BCO,0.375,0.3,0.45,2016-10-20 08:00:00,2016-10-20 17:00:00,,0
469,1.1.1.6.10.3.4.9,Uitzetten piketten en steeksproefsgewijze controle bedding,0.375,0.3,0.45,2016-10-21 08:00:00,2016-10-21 17:00:00,,0
470,1.1.1.6.10.3.4.10,Uitzetten perron doorsteek ,0.375,0.3,0.45,2016-12-05 08:00:00,2016-12-05 17:00:00,,0
471,1.1.1.6.10.3.4.11,Aanleg wachtbuizen perron (TDI),0.375,0.3,0.45,2016-12-06 08:00:00,2016-12-06 17:00:00,,0
472,1.1.1.6.10.3.4.12,Plaatsen wachtbuizen,0.375,0.3,0.45,2016-11-29 08:00:00,2016-11-29 17:00:00,,0
473,1.1.1.6.10.3.4.13,Leggen panelen,0.375,0.3,0.45,2016-11-28 08:00:00,2016-11-28 17:00:00,,0
474,1.1.1.6.10.3.4.14,Lassen,0.375,0.3,0.45,2016-11-29 08:00:00,2016-11-29 17:00:00,,0
475,1.1.1.6.10.3.4.15,Plaatsen bakken wisselsturing,0.375,0.3,0.45,2016-11-29 08:00:00,2016-11-29 17:00:00,,0
476,1.1.1.6.10.3.4.16,Plaatsen grondbak wissels en laspadden,0.375,0.3,0.45,2016-11-29 08:00:00,2016-11-29 17:00:00,,0
477,1.1.1.6.10.3.4.17,Plaatsen railijfbekleding + stalen strips,0.375,0.3,0.45,2016-11-30 08:00:00,2016-11-30 17:00:00,,0
478,1.1.1.6.10.3.4.18,Afstellen,0.375,0.3,0.45,2016-12-01 08:00:00,2016-12-01 17:00:00,,0
479,1.1.1.6.10.3.4.19,Controle,0.375,0.3,0.45,2016-12-02 08:00:00,2016-12-02 17:00:00,,0
480,1.1.1.6.10.3.4.20,Kiftbeton,0.375,0.3,0.45,2016-12-05 08:00:00,2016-12-05 17:00:00,,0
481,1.1.1.6.10.3.4.21,Plaatsen TDI-lussen (perron/wissels),0.375,0.3,0.45,2016-12-06 08:00:00,2016-12-06 17:00:00,,0
482,1.1.1.6.10.3.4.22,Plaatsen kathodische bescherming perron,0.375,0.3,0.45,2016-12-05 08:00:00,2016-12-05 17:00:00,,0
483,1.1.1.6.10.3.4.23,Fundering masten (bvl + ov),1.375,1.1,1.65,2016-11-28 08:00:00,2016-11-29 17:00:00,,0
484,1.1.1.6.10.3.4.24,"Palen, bovenleidingen, kasten & ITRIS-palen",13.375,10.7,16.05,2016-11-30 08:00:00,2016-12-13 17:00:00,,0
485,1.1.1.6.10.3.4.25,Wachtbuizen & trekputten,1.375,1.1,1.65,2016-12-08 08:00:00,2016-12-09 17:00:00,,0
486,1.1.1.6.10.3.4.26,Openbare verlichting,8.375,6.7,10.05,2016-12-12 08:00:00,2016-12-20 17:00:00,,0
487,1.1.1.6.10.3.4.27,Wapening DGB,1.375,1.1,1.65,2016-12-21 08:00:00,2016-12-22 17:00:00,,0
488,1.1.1.6.10.3.4.28,Uitgewassen beton,0.375,0.3,0.45,2016-12-23 08:00:00,2016-12-23 17:00:00,,0
489,1.1.1.6.10.3.5,Aanleg tijdelijke ingang Shell + CP,3.375,2.7,4.05,2016-11-25 08:00:00,2016-11-28 17:00:00,,0
490,1.1.1.6.10.3.6,Grintgazon zone,8.375,8.29,8.46,2016-11-24 08:00:00,2016-12-02 17:00:00,,0
491,1.1.1.6.10.3.6.1,Leggen panelen,1.375,1.1,1.65,2016-11-24 08:00:00,2016-11-25 17:00:00,,0
492,1.1.1.6.10.3.6.2,lassen,1.375,1.1,1.65,2016-11-24 08:00:00,2016-11-25 17:00:00,,0
493,1.1.1.6.10.3.6.3,plaatsen bakken wisselsturing,0.375,0.3,0.45,2016-11-28 08:00:00,2016-11-28 17:00:00,,0
494,1.1.1.6.10.3.6.4,plaatsen grondbakken wissels incl laspadden,0.375,0.3,0.45,2016-11-28 08:00:00,2016-11-28 17:00:00,,0
495,1.1.1.6.10.3.6.5,Onderstoppen,1.375,1.1,1.65,2016-12-01 08:00:00,2016-12-02 17:00:00,,0
496,1.1.1.6.10.3.7,Tram- & bushalteplaats,78.375,77.59,79.16,2016-10-06 08:00:00,2016-12-23 17:00:00,,0
497,1.1.1.6.10.3.7.1,Dwarse wachtbuizen,5.375,4.3,6.45,2016-10-06 08:00:00,2016-10-11 17:00:00,,0
498,1.1.1.6.10.3.7.2,Grondkoffer,1.375,1.1,1.65,2016-10-12 08:00:00,2016-10-13 17:00:00,,0
499,1.1.1.6.10.3.7.3,Onderfundering type III,3.375,2.7,4.05,2016-10-14 08:00:00,2016-10-17 17:00:00,,0
500,1.1.1.6.10.3.7.4,Geotextiel,1.375,1.1,1.65,2016-10-18 08:00:00,2016-10-19 17:00:00,,0
501,1.1.1.6.10.3.7.5,Porfiersteenslag 0/32 + proeven,1.375,1.1,1.65,2016-10-18 08:00:00,2016-10-19 17:00:00,,0
502,1.1.1.6.10.3.7.6,Mager beton lijnvormige elementen,5.375,4.3,6.45,2016-10-20 08:00:00,2016-10-25 17:00:00,,0
503,1.1.1.6.10.3.7.7,Afwerking porfiersteenslag 0/32 + oplevering,5.375,4.3,6.45,2016-10-26 08:00:00,2016-10-31 17:00:00,,0
504,1.1.1.6.10.3.7.8,Oplevering bedding door BCO,6.375,5.1,7.65,2016-11-03 08:00:00,2016-11-09 17:00:00,,0
505,1.1.1.6.10.3.7.9,"Aansluiten wisselsturing, lussen,…",5.375,4.3,6.45,2016-11-17 08:00:00,2016-11-22 17:00:00,,0
506,1.1.1.6.10.3.7.10,Afstellen panelen,0.375,0.3,0.45,2016-11-24 08:00:00,2016-11-24 17:00:00,,0
507,1.1.1.6.10.3.7.11,Plaatsen spoorslikkers en kabel,0.375,0.3,0.45,2016-11-25 08:00:00,2016-11-25 17:00:00,,0
508,1.1.1.6.10.3.7.12,Plaatsen raillijfbekleding + stalen strips,0.375,0.3,0.45,2016-11-25 08:00:00,2016-11-25 17:00:00,,0
509,1.1.1.6.10.3.7.13,Controle ,0.375,0.3,0.45,2016-11-28 08:00:00,2016-11-28 17:00:00,,0
510,1.1.1.6.10.3.7.14,Kiftbeton,0.375,0.3,0.45,2016-11-29 08:00:00,2016-11-29 17:00:00,,0
511,1.1.1.6.10.3.7.15,Fundering masten (bvl + ov),1.375,1.1,1.65,2016-11-30 08:00:00,2016-12-01 17:00:00,,0
512,1.1.1.6.10.3.7.16,Wachtbuizen & trekputten,3.375,2.7,4.05,2016-12-02 08:00:00,2016-12-05 17:00:00,,0
513,1.1.1.6.10.3.7.17,Wapening DGB,1.375,1.1,1.65,2016-12-05 08:00:00,2016-12-06 17:00:00,,0
514,1.1.1.6.10.3.7.18,Uitgewassen beton,1.375,1.1,1.65,2016-12-07 08:00:00,2016-12-08 17:00:00,,0
515,1.1.1.6.10.3.7.19,"Palen, bovenleidingen, kasten & ITRIS-palen",11.375,9.1,13.65,2016-12-02 08:00:00,2016-12-13 17:00:00,,0
516,1.1.1.6.10.3.7.20,Openbare verlichting,10.375,8.3,12.45,2016-12-02 08:00:00,2016-12-12 17:00:00,,0
517,1.1.1.6.10.3.7.21,Perrons,14.375,11.5,17.25,2016-12-09 08:00:00,2016-12-23 17:00:00,,0
518,1.1.1.6.10.3.8,Inrit stadsmagazijnen,51.375,50.86,51.89,2016-11-22 08:00:00,2017-01-12 17:00:00,,0
519,1.1.1.6.10.3.8.1,Opbraak,0.375,0.3,0.45,2016-11-22 08:00:00,2016-11-22 17:00:00,,0
520,1.1.1.6.10.3.8.2,Dwarse wachtbuizen,0.375,0.3,0.45,2016-11-23 08:00:00,2016-11-23 17:00:00,,0
521,1.1.1.6.10.3.8.3,Grondkoffer,0.375,0.3,0.45,2016-11-24 08:00:00,2016-11-24 17:00:00,,0
522,1.1.1.6.10.3.8.4,Onderfundering type III,0.375,0.3,0.45,2016-11-25 08:00:00,2016-11-25 17:00:00,,0
523,1.1.1.6.10.3.8.5,Geotextiel,0.375,0.3,0.45,2016-11-28 08:00:00,2016-11-28 17:00:00,,0
524,1.1.1.6.10.3.8.6,Porfiersteenslag 0/32 + proeven,0.375,0.3,0.45,2016-11-28 08:00:00,2016-11-28 17:00:00,,0
525,1.1.1.6.10.3.8.7,Mager beton lijnvormige elementen,0.375,0.3,0.45,2016-11-29 08:00:00,2016-11-29 17:00:00,,0
526,1.1.1.6.10.3.8.8,Afwerking porfiersteenslag 0/32 + oplevering,1.375,1.1,1.65,2016-11-30 08:00:00,2016-12-01 17:00:00,,0
527,1.1.1.6.10.3.8.9,Oplevering bedding door BCO,0.375,0.3,0.45,2016-12-02 08:00:00,2016-12-02 17:00:00,,0
528,1.1.1.6.10.3.8.10,Plaatsen wachtbuizen,0.375,0.3,0.45,2016-12-08 08:00:00,2016-12-08 17:00:00,,0
529,1.1.1.6.10.3.8.11,"Aansluiten wisselsturing, lussen,…",5.375,4.3,6.45,2016-12-09 08:00:00,2016-12-14 17:00:00,,0
530,1.1.1.6.10.3.8.12,Leggen panelen,0.375,0.3,0.45,2016-12-07 08:00:00,2016-12-07 17:00:00,,0
531,1.1.1.6.10.3.8.13,lassen,0.375,0.3,0.45,2016-12-08 08:00:00,2016-12-08 17:00:00,,0
532,1.1.1.6.10.3.8.14,Plaatsen spoorslikkers,0.375,0.3,0.45,2016-12-08 08:00:00,2016-12-08 17:00:00,,0
533,1.1.1.6.10.3.8.15,Plaatsen raillijfbekleding + stalen strips,0.375,0.3,0.45,2016-12-09 08:00:00,2016-12-09 17:00:00,,0
534,1.1.1.6.10.3.8.16,Afstellen panelen,0.375,0.3,0.45,2016-12-12 08:00:00,2016-12-12 17:00:00,,0
535,1.1.1.6.10.3.8.17,Controle ,0.375,0.3,0.45,2016-12-13 08:00:00,2016-12-13 17:00:00,,0
536,1.1.1.6.10.3.8.18,Kiftbeton,0.375,0.3,0.45,2016-12-14 08:00:00,2016-12-14 17:00:00,,0
537,1.1.1.6.10.3.8.19,Fundering masten (bvl + ov),1.375,1.1,1.65,2016-12-05 08:00:00,2016-12-06 17:00:00,,0
538,1.1.1.6.10.3.8.20,"Bovenleidingen, kasten & ITRIS-palen",6.375,5.1,7.65,2016-12-07 08:00:00,2016-12-13 17:00:00,,0
539,1.1.1.6.10.3.8.21,Wachtbuizen & trekputten,1.375,1.1,1.65,2016-12-19 08:00:00,2016-12-20 17:00:00,,0
540,1.1.1.6.10.3.8.22,Wapening DGB,1.375,1.1,1.65,2016-12-21 08:00:00,2016-12-22 17:00:00,,0
541,1.1.1.6.10.3.8.23,Openbare verlichting,2.375,1.9,2.85,2017-01-10 08:00:00,2017-01-12 17:00:00,,0
542,1.1.1.6.10.3.8.24,Uitgewassen beton,0.375,0.3,0.45,2016-12-23 08:00:00,2016-12-23 17:00:00,,0
543,1.1.1.6.10.3.9,Spoorwerken wissels,1.375,1.36,1.39,2016-12-19 08:00:00,2016-12-20 17:00:00,,0
544,1.1.1.6.10.3.9.1,163W950 (logistiek),1.375,1.36,1.39,2016-12-19 08:00:00,2016-12-20 17:00:00,,0
545,1.1.1.6.10.3.9.1.1,Onderstoppen ,0.375,0.3,0.45,2016-12-19 08:00:00,2016-12-19 17:00:00,,0
546,1.1.1.6.10.3.9.1.2,Controle,0.375,0.3,0.45,2016-12-20 08:00:00,2016-12-20 17:00:00,,0
547,1.1.1.6.10.3.10,Bovenleiding uitrusting,9.375,7.5,11.25,2016-12-05 08:00:00,2016-12-14 17:00:00,,0
548,1.1.1.6.10.3.11,Afrol bovenleiding,6.375,5.1,7.65,2016-12-15 08:00:00,2016-12-21 17:00:00,,0
549,1.1.1.6.10.3.12,Afstellen bovenleiding,2.375,1.9,2.85,2016-12-21 08:00:00,2016-12-23 17:00:00,,0
550,1.1.1.6.10.3.13,Smeerinstallaties herstellingen,2.375,1.9,2.85,2017-01-23 08:00:00,2017-01-25 17:00:00,,0
551,1.1.1.6.10.3.14,onderstoppen sporen gazon politie + afwerken,4.375,3.5,5.25,2017-01-23 08:00:00,2017-01-27 17:00:00,,0
552,1.1.1.6.10.3.15,perron havanalus,11.375,9.1,13.65,2017-01-23 08:00:00,2017-02-03 17:00:00,,0
553,1.1.1.6.10.3.16,Bushalteplaats,6.375,5.1,7.65,2017-01-26 08:00:00,2017-02-01 17:00:00,,0
554,1.1.1.6.10.3.17,fundering schuilhokjes,3.375,2.7,4.05,2017-02-03 08:00:00,2017-02-06 17:00:00,,0
555,1.1.1.6.10.3.18,verharding perrons Havanalus,5.375,4.3,6.45,2017-03-23 08:00:00,2017-03-28 17:00:00,,0
556,1.1.1.6.10.3.19,plaatsen schuilhokjes,2.375,1.9,2.85,2017-03-27 08:00:00,2017-03-29 17:00:00,,0
557,1.1.1.6.10.3.20,Wapening,2.375,1.9,2.85,2017-01-23 08:00:00,2017-01-25 17:00:00,,0
558,1.1.1.6.10.3.21,afwerklaag betonherstellingen Havanalus,38.375,30.7,46.05,2017-02-20 08:00:00,2017-03-30 17:00:00,,0
559,1.1.1.6.11,612 Kruispunt Groenendaallaan,627.375,621.1,633.65,2016-09-01 08:00:00,2018-05-21 17:00:00,,0
560,1.1.1.6.11.1,Voorgaande werken,71.375,70.66,72.09,2016-09-01 08:00:00,2016-11-11 17:00:00,,0
561,1.1.1.6.11.1.1,Voorbereiding - Stap 1: VP/FP Noord-Oost kwadrant,67.375,66.7,68.05,2016-09-01 08:00:00,2016-11-07 17:00:00,,0
562,1.1.1.6.11.1.1.1,Werken nutsleidingen ,22.375,17.9,26.85,2016-09-08 08:00:00,2016-09-30 17:00:00,,0
563,1.1.1.6.11.1.1.2,Opbraak bestaan VP/FP,1.375,1.1,1.65,2016-09-01 08:00:00,2016-09-02 17:00:00,,0
564,1.1.1.6.11.1.1.3,Frezen asfalt afslagstrook,0.375,0.3,0.45,2016-09-13 08:00:00,2016-09-13 17:00:00,,0
565,1.1.1.6.11.1.1.4,Sondering aansluiting riolering,11.375,9.1,13.65,2016-09-19 08:00:00,2016-09-30 17:00:00,,0
566,1.1.1.6.11.1.1.5,Installatie voetpadkasten,4.375,3.5,5.25,2016-10-03 08:00:00,2016-10-07 17:00:00,,0
567,1.1.1.6.11.1.1.6,Wegname flitspaal,0.375,0.3,0.45,2016-10-03 08:00:00,2016-10-03 17:00:00,,0
568,1.1.1.6.11.1.1.7,Slokkers rijweg + aansluitingen ,2.375,1.9,2.85,2016-10-03 08:00:00,2016-10-05 17:00:00,,0
569,1.1.1.6.11.1.1.8,Lijnvormige elementen wegenis,1.375,1.1,1.65,2016-10-06 08:00:00,2016-10-07 17:00:00,,0
570,1.1.1.6.11.1.1.9,Wachtbuizen en trekputten,1.375,1.1,1.65,2016-10-10 08:00:00,2016-10-11 17:00:00,,0
571,1.1.1.6.11.1.1.10,Sokkel nieuw portiek,0.375,0.3,0.45,2016-10-12 08:00:00,2016-10-12 17:00:00,,0
572,1.1.1.6.11.1.1.11,Grondwerk,1.375,1.1,1.65,2016-10-13 08:00:00,2016-10-14 17:00:00,,0
573,1.1.1.6.11.1.1.12,Fundering VP/FP,4.375,3.5,5.25,2016-10-17 08:00:00,2016-10-21 17:00:00,,0
574,1.1.1.6.11.1.1.13,Verhardingen VP/FP,4.375,3.5,5.25,2016-10-24 08:00:00,2016-10-28 17:00:00,,0
575,1.1.1.6.11.1.1.14,Bovenleiding PAL,40.375,39.97,40.78,2016-09-28 08:00:00,2016-11-07 17:00:00,,0
576,1.1.1.6.11.1.1.14.1,Overbrengen 1 mast (nacht),0.375,0.3,0.45,2016-09-28 08:00:00,2016-09-28 17:00:00,,0
577,1.1.1.6.11.1.1.14.2,Montage constructies (nacht),11.375,9.1,13.65,2016-10-03 08:00:00,2016-10-14 17:00:00,,0
578,1.1.1.6.11.1.1.14.3,Overbrengen 1 mast (nacht),0.375,0.3,0.45,2016-10-03 08:00:00,2016-10-03 17:00:00,,0
579,1.1.1.6.11.1.1.14.4,Afrol draden bocht (nacht),12.375,9.9,14.85,2016-10-26 08:00:00,2016-11-07 17:00:00,,0
580,1.1.1.6.11.1.1.15,Bovenleiding NDL,30.375,30.07,30.68,2016-09-28 08:00:00,2016-10-28 17:00:00,,0
581,1.1.1.6.11.1.1.15.1,Plaatsen masten ,30.375,24.3,36.45,2016-09-28 08:00:00,2016-10-28 17:00:00,,0
582,1.1.1.6.11.1.1.15.2,Maken funderingsbuizen ,4.375,3.5,5.25,2016-10-17 08:00:00,2016-10-21 17:00:00,,0
583,1.1.1.6.11.1.1.15.3,Boren funderingsbuizen,0.375,0.3,0.45,2016-09-28 08:00:00,2016-09-28 17:00:00,,0
584,1.1.1.6.11.1.1.15.4,Montage constructies  (nacht),15.375,12.3,18.45,2016-10-03 08:00:00,2016-10-18 17:00:00,,0
585,1.1.1.6.11.1.1.15.5,Maken proefputten ,25.375,20.3,30.45,2016-10-03 08:00:00,2016-10-28 17:00:00,,0
586,1.1.1.6.11.1.1.15.6,Afrol draden rechte stukken ,4.375,3.5,5.25,2016-10-24 08:00:00,2016-10-28 17:00:00,,0
587,1.1.1.6.11.1.1.16,Bovenleiding KP GDL,30.375,30.07,30.68,2016-09-28 08:00:00,2016-10-28 17:00:00,,0
588,1.1.1.6.11.1.1.16.1,Maken van proefputten (nacht),0.375,0.3,0.45,2016-09-28 08:00:00,2016-09-28 17:00:00,,0
589,1.1.1.6.11.1.1.16.2,Boren funderingsbuizen (nacht),0.375,0.3,0.45,2016-09-29 08:00:00,2016-09-29 17:00:00,,0
590,1.1.1.6.11.1.1.16.3,Montage constructies (nacht),11.375,9.1,13.65,2016-10-10 08:00:00,2016-10-21 17:00:00,,0
591,1.1.1.6.11.1.1.16.4,Afrol draden bocht (nacht),4.375,3.5,5.25,2016-10-24 08:00:00,2016-10-28 17:00:00,,0
592,1.1.1.6.11.1.2,Voorbereiding - Stap 2: TBB einde Noorderlaan brug,23.375,23.14,23.61,2016-10-03 08:00:00,2016-10-26 17:00:00,,0
593,1.1.1.6.11.1.2.1,Uitbreken bestaande verharding TBB + sporen,1.375,1.1,1.65,2016-10-03 08:00:00,2016-10-04 17:00:00,,0
594,1.1.1.6.11.1.2.2,Grondwerk + fundering TBB,6.375,5.1,7.65,2016-10-05 08:00:00,2016-10-11 17:00:00,,0
595,1.1.1.6.11.1.2.3,Plaatsing sporen (incl pikettage spoorbakjes),1.375,1.1,1.65,2016-10-13 08:00:00,2016-10-14 17:00:00,,0
596,1.1.1.6.11.1.2.4,Plaatsen spoorbakjes BAM RAIL,0.375,0.3,0.45,2016-10-17 08:00:00,2016-10-17 17:00:00,,0
597,1.1.1.6.11.1.2.5,Plaatsen spoorbakjes FAB TRAC,0.375,0.3,0.45,2016-10-18 08:00:00,2016-10-18 17:00:00,,0
598,1.1.1.6.11.1.2.6,Voorzieningen voor wisselsturing,0.375,0.3,0.45,2016-10-17 08:00:00,2016-10-17 17:00:00,,0
599,1.1.1.6.11.1.2.7,Afstellen + lassen,0.375,0.3,0.45,2016-10-18 08:00:00,2016-10-18 17:00:00,,0
600,1.1.1.6.11.1.2.8,Wapening TBB + kiftbeton,1.375,1.1,1.65,2016-10-20 08:00:00,2016-10-21 17:00:00,,0
601,1.1.1.6.11.1.2.9,Plaatsing lussen voor wisselsturing (TDI + HFK),0.375,0.3,0.45,2016-10-24 08:00:00,2016-10-24 17:00:00,,0
602,1.1.1.6.11.1.2.10,Betonverharding TBB,1.375,1.1,1.65,2016-10-25 08:00:00,2016-10-26 17:00:00,,0
603,1.1.1.6.11.1.2.11,Opbreken bestaand VP/FP,1.375,1.1,1.65,2016-10-03 08:00:00,2016-10-04 17:00:00,,0
604,1.1.1.6.11.1.2.12,Opbraak bestaande OV & flitspalen,0.375,0.3,0.45,2016-10-03 08:00:00,2016-10-03 17:00:00,,0
605,1.1.1.6.11.1.2.13,Sondering aansluiting riolering,1.375,1.1,1.65,2016-10-05 08:00:00,2016-10-06 17:00:00,,0
606,1.1.1.6.11.1.2.14,Wachtbuizen en trekputten,9.375,7.5,11.25,2016-10-05 08:00:00,2016-10-14 17:00:00,,0
607,1.1.1.6.11.1.2.15,Grondwerk,1.375,1.1,1.65,2016-10-17 08:00:00,2016-10-18 17:00:00,,0
608,1.1.1.6.11.1.2.16,Fundering VP/FP,1.375,1.1,1.65,2016-10-19 08:00:00,2016-10-20 17:00:00,,0
609,1.1.1.6.11.1.2.17,Verhardingen VP/FP,3.375,2.7,4.05,2016-10-21 08:00:00,2016-10-24 17:00:00,,0
610,1.1.1.6.11.1.2.18,Opbraak berm zuidzijde kruispunt,1.375,1.1,1.65,2016-10-04 08:00:00,2016-10-05 17:00:00,,0
611,1.1.1.6.11.1.2.19,Fundering + tijdelijke verharding bermen,13.375,10.7,16.05,2016-10-06 08:00:00,2016-10-19 17:00:00,,0
612,1.1.1.6.11.1.2.20,Aanleg definitieve afslagstrook van zuid naar west,5.375,4.3,6.45,2016-10-06 08:00:00,2016-10-11 17:00:00,,0
613,1.1.1.6.11.1.3,14 dagen ,14.0,13.86,14.14,2016-10-28 17:00:00,2016-11-11 17:00:00,,0
614,1.1.1.6.11.1.3.1,Fase 1,5.0,4.95,5.05,2016-10-28 17:00:00,2016-11-02 17:00:00,,0
615,1.1.1.6.11.1.3.1.1,start,0.0,0.0,0.0,2016-10-28 17:00:00,2016-10-28 17:00:00,,0
616,1.1.1.6.11.1.3.1.2,einde ,0.0,0.0,0.0,2016-11-02 17:00:00,2016-11-02 17:00:00,,0
617,1.1.1.6.11.1.3.2,Fase 2 - 44u,1.0,0.99,1.01,2016-11-03 17:00:00,2016-11-04 17:00:00,,0
618,1.1.1.6.11.1.3.2.1,start ,0.0,0.0,0.0,2016-11-03 17:00:00,2016-11-03 17:00:00,,0
619,1.1.1.6.11.1.3.2.2,einde,0.0,0.0,0.0,2016-11-04 17:00:00,2016-11-04 17:00:00,,0
620,1.1.1.6.11.1.3.3,Fase 3,3.0,2.97,3.03,2016-11-04 17:00:00,2016-11-07 17:00:00,,0
621,1.1.1.6.11.1.3.3.1,start ,0.0,0.0,0.0,2016-11-04 17:00:00,2016-11-04 17:00:00,,0
622,1.1.1.6.11.1.3.3.2,einde,0.0,0.0,0.0,2016-11-07 17:00:00,2016-11-07 17:00:00,,0
623,1.1.1.6.11.1.3.4,Fase 4,3.0,2.97,3.03,2016-11-08 17:00:00,2016-11-11 17:00:00,,0
624,1.1.1.6.11.1.3.4.1,start ,0.0,0.0,0.0,2016-11-08 17:00:00,2016-11-08 17:00:00,,0
625,1.1.1.6.11.1.3.4.2,einde,0.0,0.0,0.0,2016-11-11 17:00:00,2016-11-11 17:00:00,,0
626,1.1.1.6.11.2,Afwerkingen na heropenen kruispunt,88.375,87.49,89.26,2016-11-14 08:00:00,2017-02-10 17:00:00,,0
627,1.1.1.6.11.2.1,Afwerkingen - Stap 1: Afslagstrook Zuid,4.375,4.33,4.42,2016-11-14 08:00:00,2016-11-18 17:00:00,,0
628,1.1.1.6.11.2.1.1,Opbreken bestaand VP/FP,0.375,0.3,0.45,2016-11-14 08:00:00,2016-11-14 17:00:00,,0
629,1.1.1.6.11.2.1.2,Asfalt tijdelijke afslagstrook richting zuid,1.375,1.1,1.65,2016-11-15 08:00:00,2016-11-16 17:00:00,,0
630,1.1.1.6.11.2.1.3,Aanleg 2 tijdelijke rijstroken zuidwest,1.375,1.1,1.65,2016-11-17 08:00:00,2016-11-18 17:00:00,,0
631,1.1.1.6.11.2.2,Afwerkingen - Stap 2: Rijweg Noorderlaan tak Zuid-West,11.375,11.26,11.49,2016-11-21 08:00:00,2016-12-02 17:00:00,,0
632,1.1.1.6.11.2.2.1,Opbreken tijdelijke verharding,0.375,0.3,0.45,2016-11-21 08:00:00,2016-11-21 17:00:00,,0
633,1.1.1.6.11.2.2.2,Fundering rijstroken zuid,1.375,1.1,1.65,2016-11-22 08:00:00,2016-11-23 17:00:00,,0
634,1.1.1.6.11.2.2.3,Aanleg definitieve rijstroken zuid,5.375,4.3,6.45,2016-11-24 08:00:00,2016-11-29 17:00:00,,0
635,1.1.1.6.11.2.2.4,Asfaltverharding rijstroken zuid,1.375,1.1,1.65,2016-11-30 08:00:00,2016-12-01 17:00:00,,0
636,1.1.1.6.11.2.2.5,Wegmarkeringen,0.375,0.3,0.45,2016-12-02 08:00:00,2016-12-02 17:00:00,,0
637,1.1.1.6.11.2.3,Afwerkingen - Stap 3: Afwerking hoek Zuid-West,11.375,11.26,11.49,2016-12-05 08:00:00,2016-12-16 17:00:00,,0
638,1.1.1.6.11.2.3.1,Opbraak tijdelijke verkeersstrook zuidwest,1.375,1.1,1.65,2016-12-05 08:00:00,2016-12-06 17:00:00,,0
639,1.1.1.6.11.2.3.2,Fundering VP/FP,1.375,1.1,1.65,2016-12-07 08:00:00,2016-12-08 17:00:00,,0
640,1.1.1.6.11.2.3.3,Verharding VP/FP,4.375,3.5,5.25,2016-12-09 08:00:00,2016-12-13 17:00:00,,0
641,1.1.1.6.11.2.3.4,Asfalt afslagstrook,1.375,1.1,1.65,2016-12-14 08:00:00,2016-12-15 17:00:00,,0
642,1.1.1.6.11.2.3.5,Markeringen,0.375,0.3,0.45,2016-12-16 08:00:00,2016-12-16 17:00:00,,0
643,1.1.1.6.11.2.4,Resterende werken vanaf 23/01/2017,18.375,18.19,18.56,2017-01-23 08:00:00,2017-02-10 17:00:00,,0
644,1.1.1.6.11.2.4.1,Afwerking VP klinkers,2.375,1.9,2.85,2017-02-01 08:00:00,2017-02-03 17:00:00,,0
645,1.1.1.6.11.2.4.2,controle trekputten + afwerking errond,1.375,1.1,1.65,2017-01-30 08:00:00,2017-01-31 17:00:00,,0
646,1.1.1.6.11.2.4.3,wachtbuizen + trekputten perron controle,1.375,1.1,1.65,2017-01-25 08:00:00,2017-01-26 17:00:00,,0
647,1.1.1.6.11.2.4.4,FO werken tussen TS Luchtbal en Keerlus,1.375,1.1,1.65,2017-01-23 08:00:00,2017-01-24 17:00:00,,0
648,1.1.1.6.11.2.4.5,Aflaswerken FO Noorderlaan,2.375,1.9,2.85,2017-01-25 08:00:00,2017-01-27 17:00:00,,0
649,1.1.1.6.11.2.4.6,Testen kabelwerken WS en Aansluiten Noorderlaan,18.375,14.7,22.05,2017-01-23 08:00:00,2017-02-10 17:00:00,,0
650,1.1.1.6.11.2.4.7,afwerklaag beton herstellingen,7.375,5.9,8.85,2017-01-25 08:00:00,2017-02-01 17:00:00,,0
651,1.1.1.6.11.3,Aanpassingswerken Groenendaallaan nav metingen,483.375,478.54,488.21,2017-01-23 08:00:00,2018-05-21 17:00:00,,0
652,1.1.1.6.11.3.1,wegwerken gekende opmerkingen OG ivm kwaliteit,93.375,74.7,112.05,2017-01-23 08:00:00,2017-04-26 17:00:00,,0
653,1.1.1.6.11.3.2,Afwerking kant Boels (na wegwerken herstellingen Noorderlaanbrug Tjalkstraat & hoek metropolis),95.375,76.3,114.45,2018-02-15 08:00:00,2018-05-21 17:00:00,,0
654,1.1.1.6.11.3.3,Aanpassingswerken gedurende afsluiting kruispunt,1.0,0.99,1.01,2017-02-23 17:00:00,2017-02-24 17:00:00,,0
655,1.1.1.6.11.3.3.1,Start,0.0,0.0,0.0,2017-02-23 17:00:00,2017-02-23 17:00:00,,0
656,1.1.1.6.11.3.3.2,Einde ,0.0,0.0,0.0,2017-02-24 17:00:00,2017-02-24 17:00:00,,0
657,1.1.1.6.12,Algemene afwerking,161.0,159.39,162.61,2017-02-17 17:00:00,2017-07-28 17:00:00,,0
658,1.1.1.6.12.1,Herstelpunten OG wegwerken na voorwaardelijke beschikbaarheid,17.375,13.9,20.85,2017-06-06 08:00:00,2017-06-23 17:00:00,,0
659,1.1.1.6.12.2,Affrezen te hoge beton TBB,0.375,0.3,0.45,2017-05-18 08:00:00,2017-05-18 17:00:00,,0
660,1.1.1.6.12.3,Wegwerken opmerkingen trekputten en wachtbuizen,9.375,7.5,11.25,2017-05-22 08:00:00,2017-05-31 17:00:00,,0
661,1.1.1.6.12.4,Opkuis laatste wissels en spoorslokkers,2.375,1.9,2.85,2017-05-17 08:00:00,2017-05-19 17:00:00,,0
662,1.1.1.6.12.5,Herstel defecte wachtbuis wisselmotor PAL (NACHTWERK),1.375,1.1,1.65,2017-05-22 08:00:00,2017-05-23 17:00:00,,0
663,1.1.1.6.12.6,Ploffen boomvak tussen TBB en FP,9.375,7.5,11.25,2017-05-15 08:00:00,2017-05-24 17:00:00,,0
664,1.1.1.6.12.7,Ploffen boomvak tussen TBB en rijbaan,58.375,46.7,70.05,2017-05-29 08:00:00,2017-07-26 17:00:00,,0
665,1.1.1.6.12.8,Aanvullen boomvak tussen TBB en rijbaan (volgend op ploffen; van op rijbaan met vergunning inname rijvak),45.375,36.3,54.45,2017-06-13 08:00:00,2017-07-28 17:00:00,,0
666,1.1.1.6.12.9,Herstellingwerken fietspad,13.375,10.7,16.05,2017-06-16 08:00:00,2017-06-29 17:00:00,,0
667,1.1.1.6.12.10,Alle werken klaar voor testen BCT3,0.0,0.0,0.0,2017-02-17 17:00:00,2017-02-17 17:00:00,,0
668,1.1.1.6.12.11,Alle werken klaar fasewissel verkeer naar Noorden (2b),0.0,0.0,0.0,2017-05-05 17:00:00,2017-05-05 17:00:00,,0
669,1.1.1.7,Deelfase 2b Aanleg tijdelijke verharding middenberm,19.0,18.81,19.19,2017-05-31 17:00:00,2017-06-19 17:00:00,,0
670,1.1.1.7.1,Fasewissel Noorderlaan - Fase 2 Middenberm,0.0,0.0,0.0,2017-05-31 17:00:00,2017-05-31 17:00:00,,0
671,1.1.1.7.2,Signalisatie,0.375,0.3,0.45,2017-06-01 08:00:00,2017-06-01 17:00:00,,0
672,1.1.1.7.3,Opbraak,6.375,5.1,7.65,2017-06-01 08:00:00,2017-06-07 17:00:00,,0
673,1.1.1.7.4,Ontstronken,1.375,1.1,1.65,2017-06-06 08:00:00,2017-06-07 17:00:00,,0
674,1.1.1.7.5,Verplaatsen bovenleidingspalen logistiekweg,1.375,1.1,1.65,2017-06-08 08:00:00,2017-06-09 17:00:00,,0
675,1.1.1.7.6,Doorsteek waterlink,1.375,1.1,1.65,2017-06-08 08:00:00,2017-06-09 17:00:00,,0
676,1.1.1.7.7,Wachtbuizen en riolering,1.375,1.1,1.65,2017-06-06 08:00:00,2017-06-07 17:00:00,,0
677,1.1.1.7.8,Grondwerk en Fundering,7.375,5.9,8.85,2017-06-08 08:00:00,2017-06-15 17:00:00,,0
678,1.1.1.7.9,Tijdelijke verharding - asfalt,5.375,4.3,6.45,2017-06-14 08:00:00,2017-06-19 17:00:00,,0
679,1.1.1.7.10,Alle werken klaar fasewissel  verkeer naar Zuiden (2c),0.0,0.0,0.0,2017-06-19 17:00:00,2017-06-19 17:00:00,,0
680,1.1.1.8,Deelfase 2b Aanleg tijdelijke verharding middenberm resterend gedeelte,3.375,3.34,3.41,2017-06-20 08:00:00,2017-06-23 17:00:00,,0
681,1.1.1.8.1,Werken voor fasewissel 2b resterend gedeelte,3.375,2.7,4.05,2017-06-20 08:00:00,2017-06-23 17:00:00,,0
682,1.1.1.8.2,Fasewissel 2b resterend gedeelte,0.0,0.0,0.0,2017-06-23 17:00:00,2017-06-23 17:00:00,,0
683,1.1.1.9,Deelfase 2c - Hoofdrijweg + ventwegen WEST,687.0,680.13,693.87,2017-06-19 17:00:00,2019-05-07 17:00:00,,0
684,1.1.1.9.1,Alle werken klaar om verkeer te verplaatsen naar definitieve fase deel 2,0.0,0.0,0.0,2018-02-05 17:00:00,2018-02-05 17:00:00,,0
685,1.1.1.9.2,Alle werken klaar om verkeer te verplaatsen naar definitieve fase deel 3,0.0,0.0,0.0,2018-03-02 17:00:00,2018-03-02 17:00:00,,0
686,1.1.1.9.3,Fasewissel Noorderlaan - Fase 3 West,0.0,0.0,0.0,2017-06-19 17:00:00,2017-06-19 17:00:00,,0
687,1.1.1.9.4,"Signalisatie, verkeerslichtenregeling",6.375,5.1,7.65,2017-06-20 08:00:00,2017-06-26 17:00:00,,0
688,1.1.1.9.5,Opbraak bestaande situatie,10.375,10.27,10.48,2017-06-27 08:00:00,2017-07-07 17:00:00,,0
689,1.1.1.9.5.1,"Trekputten, gas- en waterkranen signaleren + ophogen",7.375,5.9,8.85,2017-06-30 08:00:00,2017-07-07 17:00:00,,0
690,1.1.1.9.5.2,Opbraak Zone Groenendaallaan-Santiagostraat (440m),6.375,5.1,7.65,2017-06-27 08:00:00,2017-07-03 17:00:00,,0
691,1.1.1.9.5.3,Ontbossing Zone Groenendaallaan-Santiagostraat (440m),1.375,1.1,1.65,2017-06-27 08:00:00,2017-06-28 17:00:00,,0
692,1.1.1.9.5.4,Opbraak Zone Santiagostraat-Michiganstraat (500m),3.375,2.7,4.05,2017-07-04 08:00:00,2017-07-07 17:00:00,,0
693,1.1.1.9.5.5,Opbraak Zone Michiganstraat-Dublinstraat (440m),0.375,0.3,0.45,2017-07-07 08:00:00,2017-07-07 17:00:00,,0
694,1.1.1.9.5.6,Opbraak Zone Dublinstraat-Kortewielerstraat (370m),3.375,2.7,4.05,2017-07-03 08:00:00,2017-07-06 17:00:00,,0
695,1.1.1.9.5.7,Opbraak Zone Kortewielersraat-Ekersesteenweg (350m),3.375,2.7,4.05,2017-06-27 08:00:00,2017-06-30 17:00:00,,0
696,1.1.1.9.6,"Peilen, (ver)plaatsen en aanpassen restant langse nutsleidingen",112.375,111.25,113.5,2017-07-17 08:00:00,2017-11-06 17:00:00,,0
697,1.1.1.9.6.1,Algemene nutswerken over alle zones,74.375,59.5,89.25,2017-07-17 08:00:00,2017-09-29 17:00:00,,0
698,1.1.1.9.6.2,Sleufwerken Nuts Zone Groenendaallaan-Santiagostraat (440m),46.375,37.1,55.65,2017-07-17 08:00:00,2017-09-01 17:00:00,,0
699,1.1.1.9.6.3,Sleufwerken Nuts Zone Groenendaallaan-Santiagostraat (440m) persleiding PAL + aanwerken riolering,14.375,11.5,17.25,2017-10-23 08:00:00,2017-11-06 17:00:00,,0
700,1.1.1.9.6.4,Sleufwerken Nuts Zone Santiagostraat-Michiganstraat (500m),77.375,61.9,92.85,2017-07-31 08:00:00,2017-10-16 17:00:00,,0
701,1.1.1.9.6.5,Sleufwerken Nuts Zone Michiganstraat-Dublinstraat (440m),79.375,63.5,95.25,2017-08-07 08:00:00,2017-10-25 17:00:00,,0
702,1.1.1.9.6.6,Sleufwerken Nuts Zone Dublinstraat-Kortewielerstraat (370m),49.375,39.5,59.25,2017-07-25 08:00:00,2017-09-12 17:00:00,,0
703,1.1.1.9.6.7,Sleufwerken Nuts Zone Kortewielersraat-Ekersesteenweg (350m),53.375,42.7,64.05,2017-07-17 08:00:00,2017-09-08 17:00:00,,0
704,1.1.1.9.6.8,Kranencomplex Eandis (zone Kortewielerstraat - Ekersesteenweg),43.375,34.7,52.05,2017-09-18 08:00:00,2017-10-31 17:00:00,,0
705,1.1.1.9.7,Rioleringen,448.375,443.89,452.86,2017-06-27 08:00:00,2018-09-18 17:00:00,,0
706,1.1.1.9.7.1,Inspectie bestaande riolering WEST,56.375,45.1,67.65,2017-07-05 08:00:00,2017-08-30 17:00:00,,0
707,1.1.1.9.7.2,Reinigen bestaande riolering + camera inspectie,10.375,8.3,12.45,2017-06-27 08:00:00,2017-07-07 17:00:00,,0
708,1.1.1.9.7.3,Opmaak insp. Verslag en naar OG Ter Beoordeling,0.375,0.3,0.45,2017-09-18 08:00:00,2017-09-18 17:00:00,,0
709,1.1.1.9.7.4,Bestelling Materialen na goedkeuring plan en wijziging.,22.375,17.9,26.85,2018-02-08 08:00:00,2018-03-02 17:00:00,,0
710,1.1.1.9.7.5,Opbraak bestaande riolering,46.375,37.1,55.65,2018-03-26 08:00:00,2018-05-11 17:00:00,,0
711,1.1.1.9.7.6,Aanleg nieuwe riolering DWA tussen PAL en Michiganstraat,49.375,39.5,59.25,2018-03-29 08:00:00,2018-05-17 17:00:00,,0
712,1.1.1.9.7.7,Herstel bestaande DWA tussen Michiganstraat en Ekersesteenweg,135.375,108.3,162.45,2018-03-05 08:00:00,2018-07-18 17:00:00,,0
713,1.1.1.9.7.8,Aanpassen bovenbouw bestaande putten ,20.375,16.3,24.45,2018-07-06 08:00:00,2018-07-26 17:00:00,,0
714,1.1.1.9.7.9,Afwerken ventweg (fundering boordsteen verharding en wegmarkering ) Zone tussen PAL en Michigan.,4.375,3.5,5.25,2018-06-25 08:00:00,2018-06-29 17:00:00,,0
715,1.1.1.9.7.10,Afwerken OV in zone nieuwe DWA. Zone tussen PAL en Michigan.,29.375,23.5,35.25,2018-07-02 08:00:00,2018-07-31 17:00:00,,0
716,1.1.1.9.7.11,Fietspad en voedpad zone nieuwe DWA na afwerken ventweg in die zone,11.375,9.1,13.65,2018-05-28 08:00:00,2018-06-08 17:00:00,,0
717,1.1.1.9.7.12,Aanleg groenzone in zone nieuwe DWA,11.375,9.1,13.65,2018-05-28 08:00:00,2018-06-08 17:00:00,,0
718,1.1.1.9.7.13,Aanleg toplaag fietspad in zone renovatie bestaande DWA,1.375,1.1,1.65,2018-08-20 08:00:00,2018-08-21 17:00:00,,0
719,1.1.1.9.7.14,Omschakelen fietspad Oost/West incl. hestellingen fietspad Oost.,29.375,23.5,35.25,2018-08-20 08:00:00,2018-09-18 17:00:00,,0
720,1.1.1.9.7.15,Einde werkzaamheden tgv renovatie en heraanleg bestaande DWA riolering,0.0,0.0,0.0,2018-09-18 17:00:00,2018-09-18 17:00:00,,0
721,1.1.1.9.7.16,Rio Zone Groenendaallaan-Santiagostraat (440m),16.375,13.1,19.65,2017-09-04 08:00:00,2017-09-20 17:00:00,,0
722,1.1.1.9.7.17,Persleiding PAL Zone Groenendaallaan-Santiagostraat (440m) ,13.375,10.7,16.05,2017-11-14 08:00:00,2017-11-27 17:00:00,,0
723,1.1.1.9.7.18,Rio Zone Santiagostraat-Michiganstraat (500m),13.375,10.7,16.05,2017-08-23 08:00:00,2017-09-05 17:00:00,,0
724,1.1.1.9.7.19,Rio Zone Michiganstraat-Dublinstraat (440m),16.375,13.1,19.65,2017-07-31 08:00:00,2017-08-16 17:00:00,,0
725,1.1.1.9.7.20,Rio Zone Dublinstraat-Kortewielerstraat (370m),0.375,0.3,0.45,2017-07-07 08:00:00,2017-07-07 17:00:00,,0
726,1.1.1.9.7.21,Rio Zone Kortewielersraat-Ekersesteenweg (350m),4.375,3.5,5.25,2017-07-03 08:00:00,2017-07-07 17:00:00,,0
727,1.1.1.9.8,Huis en slokkeraansluitingen,63.375,62.74,64.01,2017-07-26 08:00:00,2017-09-27 17:00:00,,0
728,1.1.1.9.8.1,HAS Zone Groenendaallaan-Santiagostraat (440m),12.375,9.9,14.85,2017-09-15 08:00:00,2017-09-27 17:00:00,,0
729,1.1.1.9.8.2,HSA Zone Santiagostraat-Michiganstraat (500m),13.375,10.7,16.05,2017-08-30 08:00:00,2017-09-12 17:00:00,,0
730,1.1.1.9.8.3,HSA Zone Michiganstraat-Dublinstraat (440m),12.375,9.9,14.85,2017-08-17 08:00:00,2017-08-29 17:00:00,,0
731,1.1.1.9.8.4,HSA Zone Dublinstraat-Kortewielerstraat (370m),6.375,5.1,7.65,2017-07-26 08:00:00,2017-08-01 17:00:00,,0
732,1.1.1.9.8.5,HSA Zone Kortewielersraat-Ekersesteenweg (350m),7.375,5.9,8.85,2017-07-28 08:00:00,2017-08-04 17:00:00,,0
733,1.1.1.9.9,"Ingegraven leidingen, trekputten, wachtbuizen",176.375,174.61,178.14,2017-07-26 08:00:00,2018-01-18 17:00:00,,0
734,1.1.1.9.9.1,LTW Zone Groenendaallaan-Santiagostraat (440m),70.375,56.3,84.45,2017-09-15 08:00:00,2017-11-24 17:00:00,,0
735,1.1.1.9.9.2,LTW Zone Santiagostraat-Michiganstraat (500m),44.375,35.5,53.25,2017-09-13 08:00:00,2017-10-27 17:00:00,,0
736,1.1.1.9.9.3,LTW Zone Michiganstraat-Dublinstraat (440m),18.375,14.7,22.05,2017-08-17 08:00:00,2017-09-04 17:00:00,,0
737,1.1.1.9.9.4,LTW Zone Dublinstraat-Kortewielerstraat (370m),12.375,9.9,14.85,2017-07-26 08:00:00,2017-08-07 17:00:00,,0
738,1.1.1.9.9.5,LTW Zone Kortewielersraat-Ekersesteenweg (350m),12.375,9.9,14.85,2017-07-28 08:00:00,2017-08-09 17:00:00,,0
739,1.1.1.9.9.6,LTW  Bijkomend verdichten sleuven nutsleidingen,52.375,41.9,62.85,2017-11-27 08:00:00,2018-01-18 17:00:00,,0
740,1.1.1.9.10,Funderingen wegenis,110.375,109.27,111.48,2017-08-16 08:00:00,2017-12-04 17:00:00,,0
741,1.1.1.9.10.1,Fund wegenis Zone Groenendaallaan-Santiagostraat (440m),12.375,9.9,14.85,2017-09-28 08:00:00,2017-10-10 17:00:00,,0
742,1.1.1.9.10.2,Fund wegenis Persleiding PAL Zone Groenendaallaan-Santiagostraat (440m),6.375,5.1,7.65,2017-11-28 08:00:00,2017-12-04 17:00:00,,0
743,1.1.1.9.10.3,Fund wegenis Zone Santiagostraat-Michiganstraat (500m),13.375,10.7,16.05,2017-09-13 08:00:00,2017-09-26 17:00:00,,0
744,1.1.1.9.10.4,Fund wegenis  Zone Michiganstraat-Dublinstraat (440m),13.375,10.7,16.05,2017-08-30 08:00:00,2017-09-12 17:00:00,,0
745,1.1.1.9.10.5,Fund wegenis  Zone Dublinstraat-Kortewielerstraat (370m),9.375,7.5,11.25,2017-08-16 08:00:00,2017-08-25 17:00:00,,0
746,1.1.1.9.10.6,Fund wegenis  Zone Kortewielersraat-Ekersesteenweg (350m),5.375,4.3,6.45,2017-08-16 08:00:00,2017-08-21 17:00:00,,0
747,1.1.1.9.10.7,Fundering wegenis Zone Kortewielerstraat-Ekersesteenweg saldo na kranencomplex (ventweg),2.375,1.9,2.85,2017-11-06 08:00:00,2017-11-08 17:00:00,,0
748,1.1.1.9.11,Plaatsen lijnvormige elementen + slokkers,302.08333333340124,299.06,305.1,2017-08-24 08:00:00,2018-06-22 10:00:00,,0
749,1.1.1.9.11.1,LE Zone Groenendaallaan-Santiagostraat (440m),7.375,5.9,8.85,2017-12-04 08:00:00,2017-12-11 17:00:00,,0
750,1.1.1.9.11.2,LE Zone Persleiding PAL Zone Groenendaallaan-Santiagostraat (440m),1.375,1.1,1.65,2017-12-12 08:00:00,2017-12-13 17:00:00,,0
751,1.1.1.9.11.3,LE Zone Santiagostraat-Michiganstraat (500m),7.375,5.9,8.85,2017-09-26 08:00:00,2017-10-03 17:00:00,,0
752,1.1.1.9.11.4,LE Zone Michiganstraat-Dublinstraat (440m),8.375,6.7,10.05,2017-09-11 08:00:00,2017-09-19 17:00:00,,0
753,1.1.1.9.11.5,LE Zone Dublinstraat-Kortewielerstraat (370m),4.0,3.2,4.8,2018-06-18 10:00:00,2018-06-22 10:00:00,,0
754,1.1.1.9.11.6,LE Zone Kortewielersraat-Ekersesteenweg (350m),4.375,3.5,5.25,2017-08-24 08:00:00,2017-08-28 17:00:00,,0
755,1.1.1.9.11.7,LE Zone Kortewielerstraat-Ekersesteenweg saldo na kranencomplex (ventweg),1.375,1.1,1.65,2017-11-09 08:00:00,2017-11-10 17:00:00,,0
756,1.1.1.9.12,Voetpad en fietspad (inclusief fundering en verharding),329.375,326.08,332.67,2017-10-06 08:00:00,2018-08-31 17:00:00,,0
757,1.1.1.9.12.1,VF Zone Groenendaallaan-Santiagostraat (440m),40.375,32.3,48.45,2017-10-06 08:00:00,2017-11-15 17:00:00,,0
758,1.1.1.9.12.2,VF Zone Michiganstraat-Dublinstraat excl toplaag (440m),154.375,123.5,185.25,2018-01-25 08:00:00,2018-06-28 17:00:00,,0
759,1.1.1.9.12.3,VF Zone Dublinstraat-Kortewielerstraat excl toplaag  (370m) gewijzigde opbouw.,175.375,140.3,210.45,2017-12-21 08:00:00,2018-06-14 17:00:00,,0
760,1.1.1.9.12.4,VF Zone Kortewielersraat-Ekersesteenweg excl toplaag  excl toplaag  (350m) gewijzigde opbouw.,135.375,108.3,162.45,2018-02-13 08:00:00,2018-06-28 17:00:00,,0
761,1.1.1.9.12.5,Aanwerken voetpad naar privé-eigendommen wegens opbraak nutsmaatschappijen,102.375,81.9,122.85,2018-05-21 08:00:00,2018-08-31 17:00:00,,0
762,1.1.1.9.13,Aanleg groenzone - Hoofdrijweg + ventwegen WEST,419.375,415.18,423.57,2018-03-14 08:00:00,2019-05-07 17:00:00,,0
763,1.1.1.9.13.1,"1Groenzone Zone Kortewielersraat-Ekersesteenweg (350m), beplanting 90%, exclusief Winter-eiken ",282.375,225.9,338.85,2018-03-14 08:00:00,2018-12-21 17:00:00,,0
764,1.1.1.9.13.2,"2Groenzone Zone Dublinstraat-Kortewielerstraat (370m), beplanting 90%, exclusief Winter-eiken ",282.375,225.9,338.85,2018-03-14 08:00:00,2018-12-21 17:00:00,,0
765,1.1.1.9.13.3,"3Groenzone Zone Michiganstraat-Dublinstraat (440m), beplanting 90%, exclusief Winter-eiken ",276.375,221.1,331.65,2018-03-20 08:00:00,2018-12-21 17:00:00,,0
766,1.1.1.9.13.4,"5Groenzone Zone Groenendaallaan-Santiagostraat (440m), beplanting 90%, exclusief Winter-eiken ",276.375,221.1,331.65,2018-03-20 08:00:00,2018-12-21 17:00:00,,0
767,1.1.1.9.13.5,"1Groenzone Zone Kortewielersraat-Ekersesteenweg (350m), planten restant beplanting: winter-eiken totaal 96st",43.375,34.7,52.05,2019-03-25 08:00:00,2019-05-07 17:00:00,,0
768,1.1.1.9.13.6,"2Groenzone Zone Dublinstraat-Kortewielerstraat (370m), planten restant beplanting: winter-eiken totaal 96st",43.375,34.7,52.05,2019-03-25 08:00:00,2019-05-07 17:00:00,,0
769,1.1.1.9.13.7,"3Groenzone Zone Michiganstraat-Dublinstraat (440m), planten restant beplanting: winter-eiken totaal 96st",43.375,34.7,52.05,2019-03-25 08:00:00,2019-05-07 17:00:00,,0
770,1.1.1.9.13.8,"5Groenzone Zone Groenendaallaan-Santiagostraat (440m), planten restant beplanting: winter-eiken totaal 96st",43.375,34.7,52.05,2019-03-25 08:00:00,2019-05-07 17:00:00,,0
771,1.1.1.9.14,Verharding ventweg - asfalt,8.375,8.29,8.46,2018-06-04 08:00:00,2018-06-12 17:00:00,,0
772,1.1.1.9.14.1,1Verharding (toplaag) Ventweg Zone Kortewielersraat-Ekersesteenweg (350m),1.375,1.1,1.65,2018-06-04 08:00:00,2018-06-05 17:00:00,,0
773,1.1.1.9.14.2,2Verharding (toplaag) Ventweg Zone Dublinstraat-Kortewielerstraat (370m),1.375,1.1,1.65,2018-06-06 08:00:00,2018-06-07 17:00:00,,0
774,1.1.1.9.14.3,3Verharding (toplaag) Ventweg Zone Michiganstraat-Dublinstraat (440m),3.375,2.7,4.05,2018-06-08 08:00:00,2018-06-11 17:00:00,,0
775,1.1.1.9.14.4,5Verharding (toplaag) Ventweg Zone Groenendaallaan-Santiagostraat (440m),0.375,0.3,0.45,2018-06-12 08:00:00,2018-06-12 17:00:00,,0
776,1.1.1.9.15,Verharding rijweg - asfalt,302.08333333340124,299.06,305.1,2017-08-29 08:00:00,2018-06-27 10:00:00,,0
777,1.1.1.9.15.1,Verharding (toplaag)  rijweg Zone Groenendaallaan-Santiagostraat (440m) ,18.375,14.7,22.05,2017-12-14 08:00:00,2018-01-01 17:00:00,,0
778,1.1.1.9.15.2,Aansluiting Noorderlaan(NZ) op Groenendaallaan.,36.375,29.1,43.65,2018-01-25 08:00:00,2018-03-02 17:00:00,,0
779,1.1.1.9.15.3,Afsslagstroken aansluiting Noorderlaan op Groenendaallaan (NZ),18.375,14.7,22.05,2018-03-05 08:00:00,2018-03-23 17:00:00,,0
780,1.1.1.9.15.4,Verharding (toplaag) rijweg Zone Santiagostraat-Michiganstraat (500m),75.375,60.3,90.45,2017-10-04 08:00:00,2017-12-18 17:00:00,,0
781,1.1.1.9.15.5,Verharding rijweg Zone Michiganstraat-Dublinstraat (440m),1.375,1.1,1.65,2017-09-20 08:00:00,2017-09-21 17:00:00,,0
782,1.1.1.9.15.6,Verharding rijweg Zone Dublinstraat-Kortewielerstraat (370m),5.0,4.0,6.0,2018-06-22 10:00:00,2018-06-27 10:00:00,,0
783,1.1.1.9.15.7,Verharding rijweg Zone Kortewielersraat-Ekersesteenweg (350m),1.375,1.1,1.65,2017-08-29 08:00:00,2017-08-30 17:00:00,,0
784,1.1.1.9.16,Zone Kortewieler Noord,21.375,21.16,21.59,2017-10-10 08:00:00,2017-10-31 17:00:00,,0
785,1.1.1.9.16.1,Zone vrijgegeven door nuts,2.375,1.9,2.85,2017-10-10 08:00:00,2017-10-12 17:00:00,,0
786,1.1.1.9.16.2,Fundering,4.375,3.5,5.25,2017-10-13 08:00:00,2017-10-17 17:00:00,,0
787,1.1.1.9.16.3,Lineaire elementen,2.375,1.9,2.85,2017-10-18 08:00:00,2017-10-20 17:00:00,,0
788,1.1.1.9.16.4,Asfalt,8.375,6.7,10.05,2017-10-23 08:00:00,2017-10-31 17:00:00,,0
789,1.1.1.9.17,Fasewissel Noorderlaan - Verkeer op Korte wieler Noord,0.375,0.3,0.45,2017-11-17 08:00:00,2017-11-17 17:00:00,,0
790,1.1.1.9.18,Zone Kortewieler Zuid (25m),210.08333333340124,207.98,212.18,2017-11-20 08:00:00,2018-06-18 10:00:00,,0
791,1.1.1.9.18.1,Opbraak,0.375,0.3,0.45,2017-11-20 08:00:00,2017-11-20 17:00:00,,0
792,1.1.1.9.18.2,Rioleringen Kortewieler zuid,20.375,16.3,24.45,2017-11-21 08:00:00,2017-12-11 17:00:00,,0
793,1.1.1.9.18.3,Nuts (VOORAF? HOE),1.375,1.1,1.65,2017-12-12 08:00:00,2017-12-13 17:00:00,,0
794,1.1.1.9.18.4,Huis en slokkeraansluitingen,1.375,1.1,1.65,2017-12-12 08:00:00,2017-12-13 17:00:00,,0
795,1.1.1.9.18.5,"Ingegraven leidingen, trekputten, wachtbuizen",1.375,1.1,1.65,2017-12-12 08:00:00,2017-12-13 17:00:00,,0
796,1.1.1.9.18.6,Funderingen wegenis kortewieler zuid plus asfalt,6.375,5.1,7.65,2017-12-14 08:00:00,2017-12-20 17:00:00,,0
797,1.1.1.9.18.7,Toplaag asfalt.,26.375,21.1,31.65,2017-12-21 08:00:00,2018-01-16 17:00:00,,0
798,1.1.1.9.18.8,Afwerkingsfase 1 kruispunt Korte wielenstraat - Noorderlaan,9.375,7.5,11.25,2018-02-06 08:00:00,2018-02-15 17:00:00,,0
799,1.1.1.9.18.9,Afwerkingsfase 2 kruispunt Korte wielenstraat - Noorderlaan,10.375,8.3,12.45,2018-02-27 08:00:00,2018-03-09 17:00:00,,0
800,1.1.1.9.18.10,Afwerkingsfase 3 kruispunt Korte wielenstraat - Noorderlaan,58.08333333340124,46.47,69.7,2018-03-12 08:00:00,2018-05-09 10:00:00,,0
801,1.1.1.9.18.11,Probleem VRI,13.0,10.4,15.6,2018-05-16 10:00:00,2018-05-29 10:00:00,,0
802,1.1.1.9.18.12,Afwerkingsfase 4 kruispunt Korte wielenstraat - Noorderlaan,20.0,16.0,24.0,2018-05-29 10:00:00,2018-06-18 10:00:00,,0
803,1.1.1.9.19,Wegmarkering,103.375,102.34,104.41,2018-03-09 08:00:00,2018-06-20 17:00:00,,0
804,1.1.1.9.19.1,Wegmarkering Zone Groenendaallaan-Santiagostraat (440m),96.375,77.1,115.65,2018-03-16 08:00:00,2018-06-20 17:00:00,,0
805,1.1.1.9.19.2,Wegmarkering Zone Michiganstraat-Dublinstraat (440m),97.375,77.9,116.85,2018-03-15 08:00:00,2018-06-20 17:00:00,,0
806,1.1.1.9.19.3,Wegmarkering Zone Dublinstraat-Kortewielerstraat (370m),99.375,79.5,119.25,2018-03-13 08:00:00,2018-06-20 17:00:00,,0
807,1.1.1.9.19.4,Wegmarkering Zone Kortewielersraat-Ekersesteenweg (350m),103.375,82.7,124.05,2018-03-09 08:00:00,2018-06-20 17:00:00,,0
808,1.1.1.9.20,Verkeerslichten,497.08333333340124,492.11,502.05,2017-08-29 08:00:00,2019-01-08 10:00:00,,0
809,1.1.1.9.20.1,Verkeerslichten Zone Groenendaallaan-Santiagostraat (440m),132.375,105.9,158.85,2017-12-14 08:00:00,2018-04-25 17:00:00,,0
810,1.1.1.9.20.2,Verkeerslichten Zone Santiagostraat-Michiganstraat (500m),328.375,262.7,394.05,2017-10-04 08:00:00,2018-08-28 17:00:00,,0
811,1.1.1.9.20.3,Verkeerslichten Zone Michiganstraat-Dublinstraat (440m),215.375,172.3,258.45,2017-09-20 08:00:00,2018-04-23 17:00:00,,0
812,1.1.1.9.20.4,Verkeerslichten Zone Dublinstraat-Kortewielerstraat (370m),200.0,160.0,240.0,2018-06-22 10:00:00,2019-01-08 10:00:00,,0
813,1.1.1.9.20.5,Verkeerslichten Zone Kortewielersraat-Ekersesteenweg (350m),255.375,204.3,306.45,2017-08-29 08:00:00,2018-05-11 17:00:00,,0
814,1.1.1.9.21,Openbare verlichting West,242.375,239.95,244.8,2017-11-13 08:00:00,2018-07-13 17:00:00,,0
815,1.1.1.9.21.1,OV Zone Groenendaallaan-Santiagostraat (440m),1.375,1.1,1.65,2017-11-13 08:00:00,2017-11-14 17:00:00,,0
816,1.1.1.9.21.2,OV Zone Michiganstraat-Dublinstraat (440m),4.375,3.5,5.25,2017-11-16 08:00:00,2017-11-20 17:00:00,,0
817,1.1.1.9.21.3,OV Zone Dublinstraat-Kortewielerstraat (370m),1.375,1.1,1.65,2017-11-21 08:00:00,2017-11-22 17:00:00,,0
818,1.1.1.9.21.4,OV Zone Kortewielersraat-Ekersesteenweg (350m),1.375,1.1,1.65,2017-11-23 08:00:00,2017-11-24 17:00:00,,0
819,1.1.1.9.21.5,"Afwerken verkeerslichten Santiagostraat, Michiganstraat en Manchesterstraat na heraanleg riolering",11.375,9.1,13.65,2018-07-02 08:00:00,2018-07-13 17:00:00,,0
820,1.1.1.10,Deelfase 4 - Aanleg Middenberm,220.375,218.17,222.58,2017-11-20 08:00:00,2018-06-28 17:00:00,,0
821,1.1.1.10.1,Fase Kortewielerstraat - Michiganstraat,192.375,190.45,194.3,2017-11-20 08:00:00,2018-05-31 17:00:00,,0
822,1.1.1.10.1.1,"Voorbereidingen, signalisatie en opbraakwerken",10.375,8.3,12.45,2017-11-20 08:00:00,2017-11-30 17:00:00,,0
823,1.1.1.10.1.2,Lijnvormige elementen incl fundering ,2.375,1.9,2.85,2017-11-29 08:00:00,2017-12-01 17:00:00,,0
824,1.1.1.10.1.3,Verharding afslagstroken,11.375,9.1,13.65,2017-12-18 08:00:00,2017-12-29 17:00:00,,0
825,1.1.1.10.1.4,Groenzone & Wachtbuizen,113.375,90.7,136.05,2018-01-15 08:00:00,2018-05-08 17:00:00,,0
826,1.1.1.10.1.5,OV Middenberm,136.375,109.1,163.65,2018-01-15 08:00:00,2018-05-31 17:00:00,,0
827,1.1.1.10.2,Fase Saldo,115.375,114.22,116.53,2018-03-05 08:00:00,2018-06-28 17:00:00,,0
828,1.1.1.10.2.1,"Voorbereidingen, signalisatie en opbraakwerken",8.375,6.7,10.05,2018-03-05 08:00:00,2018-03-13 17:00:00,,0
829,1.1.1.10.2.2,Lijnvormige elementen incl fundering ,2.375,1.9,2.85,2018-03-13 08:00:00,2018-03-15 17:00:00,,0
830,1.1.1.10.2.3,Verharding afslagstroken,13.375,10.7,16.05,2018-03-27 08:00:00,2018-04-09 17:00:00,,0
831,1.1.1.10.2.4,Groenzone & Wachtbuizen,59.375,47.5,71.25,2018-03-09 08:00:00,2018-05-07 17:00:00,,0
832,1.1.1.10.2.5,OV Middenberm (faase saldo),88.375,70.7,106.05,2018-03-09 08:00:00,2018-06-05 17:00:00,,0
833,1.1.1.10.2.6,Alle werken klaar BCNT,0.0,0.0,0.0,2018-06-28 17:00:00,2018-06-28 17:00:00,,0
834,1.1.1.11,611 Noorderlaanbrug,129.375,128.08,130.67,2017-06-12 08:00:00,2017-10-19 17:00:00,,0
835,1.1.1.11.1,Herstellingswerken thv tractiestation Tjalkstraat,129.375,128.08,130.67,2017-06-12 08:00:00,2017-10-19 17:00:00,,0
836,1.1.1.11.1.1,Fase 1: Versterking tractiestation,25.375,20.3,30.45,2017-06-12 08:00:00,2017-07-07 17:00:00,,0
837,1.1.1.11.1.2,Fase 2: Herstelling trambusbaan,122.375,121.15,123.6,2017-06-12 08:00:00,2017-10-12 17:00:00,,0
838,1.1.1.11.1.2.1,Aanleg fundering tijdelijke rijweg,1.375,1.1,1.65,2017-08-01 08:00:00,2017-08-02 17:00:00,,0
839,1.1.1.11.1.2.2,Asfaltwerken tijdelijke rijweg,0.375,0.3,0.45,2017-08-03 08:00:00,2017-08-03 17:00:00,,0
840,1.1.1.11.1.2.3,Uitbraak,20.375,20.17,20.58,2017-08-11 08:00:00,2017-08-31 17:00:00,,0
841,1.1.1.11.1.2.3.1,Verwijderen bovenleidingspalen,0.375,0.3,0.45,2017-08-11 08:00:00,2017-08-11 17:00:00,,0
842,1.1.1.11.1.2.3.2,Opbraak + stockage spoor,2.375,1.9,2.85,2017-08-16 08:00:00,2017-08-18 17:00:00,,0
843,1.1.1.11.1.2.3.3,Opbraak betonverharding,7.375,5.9,8.85,2017-08-21 08:00:00,2017-08-28 17:00:00,,0
844,1.1.1.11.1.2.3.4,Verwijderen onderfundering (aangetaste zone),2.375,1.9,2.85,2017-08-29 08:00:00,2017-08-31 17:00:00,,0
845,1.1.1.11.1.2.4,Herstelling,122.375,121.15,123.6,2017-06-12 08:00:00,2017-10-12 17:00:00,,0
846,1.1.1.11.1.2.4.1,Aanbrengen funderingszand + stabilisé + plaatproeven,1.375,1.1,1.65,2017-09-05 08:00:00,2017-09-06 17:00:00,,0
847,1.1.1.11.1.2.4.2,Aanbrengen onderfundering + fundering + drain,1.375,1.1,1.65,2017-09-07 08:00:00,2017-09-08 17:00:00,,0
848,1.1.1.11.1.2.4.3,Sandwichlaag asfalt,0.375,0.3,0.45,2017-09-11 08:00:00,2017-09-11 17:00:00,,0
849,1.1.1.11.1.2.4.4,Aanvoer materiaal,0.375,0.3,0.45,2017-09-12 08:00:00,2017-09-12 17:00:00,,0
850,1.1.1.11.1.2.4.5,Voormontage spoor,0.375,0.3,0.45,2017-09-13 08:00:00,2017-09-13 17:00:00,,0
851,1.1.1.11.1.2.4.6,Uitleggen wapeningsnetten + aanpassen voor hulpdwarsliggers,1.375,1.1,1.65,2017-09-14 08:00:00,2017-09-15 17:00:00,,0
852,1.1.1.11.1.2.4.7,Plaatsen spoor en 1e regeling,1.375,1.1,1.65,2017-09-18 08:00:00,2017-09-19 17:00:00,,0
853,1.1.1.11.1.2.4.8,Lassen spoorstaven,0.375,0.3,0.45,2017-09-20 08:00:00,2017-09-20 17:00:00,,0
854,1.1.1.11.1.2.4.9,"Plaatsen bulben, doken, mousse",4.375,3.5,5.25,2017-09-21 08:00:00,2017-09-25 17:00:00,,0
855,1.1.1.11.1.2.4.10,Installeren spoorbakjes,0.375,0.3,0.45,2017-09-21 08:00:00,2017-09-21 17:00:00,,0
856,1.1.1.11.1.2.4.11,Defenitieve hoogteregeling,0.375,0.3,0.45,2017-09-26 08:00:00,2017-09-26 17:00:00,,0
857,1.1.1.11.1.2.4.12,Plaatsen buizen,0.375,0.3,0.45,2017-09-26 08:00:00,2017-09-26 17:00:00,,0
858,1.1.1.11.1.2.4.13,Plaatsen bovenwapening,2.375,1.9,2.85,2017-09-27 08:00:00,2017-09-29 17:00:00,,0
859,1.1.1.11.1.2.4.14,Storten onderbeton,0.375,0.3,0.45,2017-10-02 08:00:00,2017-10-02 17:00:00,,0
860,1.1.1.11.1.2.4.15,Storten + uitharden bovenbeton,7.375,5.9,8.85,2017-10-03 08:00:00,2017-10-10 17:00:00,,0
861,1.1.1.11.1.2.4.16,Ingieten spoorstaven,2.375,1.9,2.85,2017-10-09 08:00:00,2017-10-11 17:00:00,,0
862,1.1.1.11.1.2.4.17,Opbraak rijweg middenberm,0.375,0.3,0.45,2017-10-11 08:00:00,2017-10-11 17:00:00,,0
863,1.1.1.11.1.2.4.18,Herstel groenzone,0.375,0.3,0.45,2017-10-12 08:00:00,2017-10-12 17:00:00,,0
864,1.1.1.11.1.2.4.19,Herstelling TBB tractiestation klaar,0.375,0.3,0.45,2017-06-12 08:00:00,2017-06-12 17:00:00,,0
865,1.1.1.11.1.2.5,Fietspad,35.375,35.02,35.73,2017-09-07 08:00:00,2017-10-12 17:00:00,,0
866,1.1.1.11.1.2.5.1,Aanbrengen mager beton,0.375,0.3,0.45,2017-09-07 08:00:00,2017-09-07 17:00:00,,0
867,1.1.1.11.1.2.5.2,Herstelling borduur + kantstrook,1.375,1.1,1.65,2017-10-02 08:00:00,2017-10-03 17:00:00,,0
868,1.1.1.11.1.2.5.3,Wapeningsnet vlechten,1.375,1.1,1.65,2017-10-04 08:00:00,2017-10-05 17:00:00,,0
869,1.1.1.11.1.2.5.4,Storten + uitharden betonplaat,7.375,5.9,8.85,2017-10-03 08:00:00,2017-10-10 17:00:00,,0
870,1.1.1.11.1.2.5.5,Plaatsen leuning,1.375,1.1,1.65,2017-10-11 08:00:00,2017-10-12 17:00:00,,0
871,1.1.1.11.1.3,Bovenleiding,115.375,114.22,116.53,2017-06-26 08:00:00,2017-10-19 17:00:00,,0
872,1.1.1.11.1.3.1,Plaatsen constructies bovenleiding op bestaande masten,11.375,9.1,13.65,2017-06-26 08:00:00,2017-07-07 17:00:00,,0
873,1.1.1.11.1.3.2,Verwijderen de te vervangen masten en maken van proefputten,4.375,3.5,5.25,2017-07-31 08:00:00,2017-08-04 17:00:00,,0
874,1.1.1.11.1.3.3,Plaatsen bovenleidingsconstructies,11.375,9.1,13.65,2017-08-21 08:00:00,2017-09-01 17:00:00,,0
875,1.1.1.11.1.3.4,Plaatsen nieuwe mast,6.375,5.1,7.65,2017-10-11 08:00:00,2017-10-17 17:00:00,,0
876,1.1.1.11.1.3.5,Afrollen bovenleiding,8.375,6.7,10.05,2017-10-11 08:00:00,2017-10-19 17:00:00,,0
877,1.1.1.12,615 Kruispunt Ekersesteenweg,225.375,223.12,227.63,2016-03-01 08:00:00,2016-10-12 17:00:00,,0
878,1.1.1.12.1,Voorbereidingen (detailfase 1),44.375,43.93,44.82,2016-03-01 08:00:00,2016-04-14 17:00:00,,0
879,1.1.1.12.1.1,opbraak + grondwerk,2.375,2.35,2.4,2016-03-01 08:00:00,2016-03-03 17:00:00,,0
880,1.1.1.12.1.1.1,Vellen bomen + ontstronken,0.375,0.3,0.45,2016-03-01 08:00:00,2016-03-01 17:00:00,,0
881,1.1.1.12.1.1.2,gracht dempen + nieuwe?,2.375,1.9,2.85,2016-03-01 08:00:00,2016-03-03 17:00:00,,0
882,1.1.1.12.1.2,fietspad-voetpad (west),41.375,40.96,41.79,2016-03-04 08:00:00,2016-04-14 17:00:00,,0
883,1.1.1.12.1.2.1,Verplaatsen nutsleidingen,41.375,33.1,49.65,2016-03-04 08:00:00,2016-04-14 17:00:00,,0
884,1.1.1.12.2,Aanleg nieuw deel WEST (detailfase 2),71.375,70.66,72.09,2016-04-20 08:00:00,2016-06-30 17:00:00,,0
885,1.1.1.12.2.1,opbraak + afgraving,13.375,13.24,13.51,2016-04-20 08:00:00,2016-05-03 17:00:00,,0
886,1.1.1.12.2.1.1,Opbraak OV-palen,0.375,0.3,0.45,2016-04-20 08:00:00,2016-04-20 17:00:00,,0
887,1.1.1.12.2.1.2,Opbraak rijweg,13.375,10.7,16.05,2016-04-20 08:00:00,2016-05-03 17:00:00,,0
888,1.1.1.12.2.1.3,Opbraak voetpad-fietspad,13.375,10.7,16.05,2016-04-20 08:00:00,2016-05-03 17:00:00,,0
889,1.1.1.12.2.2,rioleringen,16.375,16.21,16.54,2016-04-27 08:00:00,2016-05-13 17:00:00,,0
890,1.1.1.12.2.2.1,RWA D?00 + ? Putten ?,6.375,5.1,7.65,2016-04-27 08:00:00,2016-05-03 17:00:00,,0
891,1.1.1.12.2.2.2,aansluitingen slokkers / gracht ,4.375,3.5,5.25,2016-05-09 08:00:00,2016-05-13 17:00:00,,0
892,1.1.1.12.2.3,fietspad-voetpad,42.375,41.95,42.8,2016-05-17 08:00:00,2016-06-28 17:00:00,,0
893,1.1.1.12.2.3.1,"Wachtbuizen, trekputten & funderingen",1.375,1.1,1.65,2016-05-17 08:00:00,2016-05-18 17:00:00,,0
894,1.1.1.12.2.3.2,Grondkoffer,1.375,1.1,1.65,2016-05-19 08:00:00,2016-05-20 17:00:00,,0
895,1.1.1.12.2.3.3,Onderfundering type I,2.375,1.9,2.85,2016-05-23 08:00:00,2016-05-25 17:00:00,,0
896,1.1.1.12.2.3.4,Steenslagfundering type I,4.375,3.5,5.25,2016-05-26 08:00:00,2016-05-30 17:00:00,,0
897,1.1.1.12.2.3.5,Steenslagfundering type IIA,2.375,1.9,2.85,2016-05-31 08:00:00,2016-06-02 17:00:00,,0
898,1.1.1.12.2.3.6,Asfalt,4.375,3.5,5.25,2016-06-03 08:00:00,2016-06-07 17:00:00,,0
899,1.1.1.12.2.3.7,Borduur + betonstraatstenen + koffer,13.375,10.7,16.05,2016-06-08 08:00:00,2016-06-21 17:00:00,,0
900,1.1.1.12.2.3.8,Openbare verlichting,6.375,5.1,7.65,2016-06-22 08:00:00,2016-06-28 17:00:00,,0
901,1.1.1.12.2.4,rijweg,35.375,35.02,35.73,2016-05-17 08:00:00,2016-06-21 17:00:00,,0
902,1.1.1.12.2.4.1,"Wachtbuizen, trekputten & funderingen",6.375,5.1,7.65,2016-05-17 08:00:00,2016-05-23 17:00:00,,0
903,1.1.1.12.2.4.2,Grondkoffer,1.375,1.1,1.65,2016-05-24 08:00:00,2016-05-25 17:00:00,,0
904,1.1.1.12.2.4.3,Onderfundering type III,1.375,1.1,1.65,2016-05-26 08:00:00,2016-05-27 17:00:00,,0
905,1.1.1.12.2.4.4,Steenslagfundering type IA,2.375,1.9,2.85,2016-05-30 08:00:00,2016-06-01 17:00:00,,0
906,1.1.1.12.2.4.5,Lijnvormige elementen,1.375,1.1,1.65,2016-06-02 08:00:00,2016-06-03 17:00:00,,0
907,1.1.1.12.2.4.6,Grondwerk berm,4.375,3.5,5.25,2016-06-06 08:00:00,2016-06-10 17:00:00,,0
908,1.1.1.12.2.4.7,asfalt,3.375,2.7,4.05,2016-06-13 08:00:00,2016-06-16 17:00:00,,0
909,1.1.1.12.2.4.8,Wegmarkering,3.375,2.7,4.05,2016-06-17 08:00:00,2016-06-20 17:00:00,,0
910,1.1.1.12.2.4.9,Signalisatie,4.375,3.5,5.25,2016-06-17 08:00:00,2016-06-21 17:00:00,,0
911,1.1.1.12.2.4.10,Verkeerslichtenregeling,4.375,3.5,5.25,2016-06-17 08:00:00,2016-06-21 17:00:00,,0
912,1.1.1.12.2.5,Verkeer op nieuw tracé,0.0,0.0,0.0,2016-06-30 17:00:00,2016-06-30 17:00:00,,0
913,1.1.1.12.3,Afwerking zone OOST (detailfase 3),100.375,99.37,101.38,2016-07-04 08:00:00,2016-10-12 17:00:00,,0
914,1.1.1.12.3.1,opbraak + afgraving,7.375,7.3,7.45,2016-07-04 08:00:00,2016-07-11 17:00:00,,0
915,1.1.1.12.3.1.1,Opbraak OV-palen,0.375,0.3,0.45,2016-07-04 08:00:00,2016-07-04 17:00:00,,0
916,1.1.1.12.3.1.2,Wegname VRI,4.375,3.5,5.25,2016-07-04 08:00:00,2016-07-08 17:00:00,,0
917,1.1.1.12.3.1.3,Opbraak rijweg,7.375,5.9,8.85,2016-07-04 08:00:00,2016-07-11 17:00:00,,0
918,1.1.1.12.3.1.4,Opbraak voetpad-fietspad,1.375,1.1,1.65,2016-07-04 08:00:00,2016-07-05 17:00:00,,0
919,1.1.1.12.3.2,rioleringen,21.375,21.16,21.59,2016-08-01 08:00:00,2016-08-22 17:00:00,,0
920,1.1.1.12.3.2.1,RWA D?00 + ? Putten ?,11.375,9.1,13.65,2016-08-01 08:00:00,2016-08-12 17:00:00,,0
921,1.1.1.12.3.2.2,aansluitingen slokkers / gracht ,6.375,5.1,7.65,2016-08-16 08:00:00,2016-08-22 17:00:00,,0
922,1.1.1.12.3.3,fietspad-voetpad,98.375,97.39,99.36,2016-07-06 08:00:00,2016-10-12 17:00:00,,0
923,1.1.1.12.3.3.1,Verplaatsen nutsleidingen,13.375,10.7,16.05,2016-07-06 08:00:00,2016-07-19 17:00:00,,0
924,1.1.1.12.3.3.2,"Wachtbuizen, trekputten & funderingen",1.375,1.1,1.65,2016-08-23 08:00:00,2016-08-24 17:00:00,,0
925,1.1.1.12.3.3.3,Grondkoffer,6.375,5.1,7.65,2016-08-25 08:00:00,2016-08-31 17:00:00,,0
926,1.1.1.12.3.3.4,Onderfundering type I,6.375,5.1,7.65,2016-09-01 08:00:00,2016-09-07 17:00:00,,0
927,1.1.1.12.3.3.5,Steenslagfundering type I,6.375,5.1,7.65,2016-09-08 08:00:00,2016-09-14 17:00:00,,0
928,1.1.1.12.3.3.6,Steenslagfundering type IIA,6.375,5.1,7.65,2016-09-15 08:00:00,2016-09-21 17:00:00,,0
929,1.1.1.12.3.3.7,Asfalt,6.375,5.1,7.65,2016-09-22 08:00:00,2016-09-28 17:00:00,,0
930,1.1.1.12.3.3.8,Borduur + betonstraatstenen + koffer,13.375,10.7,16.05,2016-09-29 08:00:00,2016-10-12 17:00:00,,0
931,1.1.1.12.3.4,rijweg,94.375,93.43,95.32,2016-07-04 08:00:00,2016-10-06 17:00:00,,0
932,1.1.1.12.3.4.1,"Wachtbuizen, trekputten & funderingen",1.375,1.1,1.65,2016-08-23 08:00:00,2016-08-24 17:00:00,,0
933,1.1.1.12.3.4.2,Grondkoffer,6.375,5.1,7.65,2016-08-25 08:00:00,2016-08-31 17:00:00,,0
934,1.1.1.12.3.4.3,Onderfundering type III,6.375,5.1,7.65,2016-09-01 08:00:00,2016-09-07 17:00:00,,0
935,1.1.1.12.3.4.4,Steenslagfundering type IA,6.375,5.1,7.65,2016-09-08 08:00:00,2016-09-14 17:00:00,,0
936,1.1.1.12.3.4.5,Lijnvormige elementen,0.375,0.3,0.45,2016-09-15 08:00:00,2016-09-15 17:00:00,,0
937,1.1.1.12.3.4.6,Grondwerk berm,13.375,10.7,16.05,2016-09-16 08:00:00,2016-09-29 17:00:00,,0
938,1.1.1.12.3.4.7,asfalt,6.375,5.1,7.65,2016-09-30 08:00:00,2016-10-06 17:00:00,,0
939,1.1.1.12.3.4.8,Beplanting,22.375,17.9,26.85,2016-07-04 08:00:00,2016-07-26 17:00:00,,0
940,1.1.1.12.3.4.9,Wegmarkering,6.375,5.1,7.65,2016-08-18 08:00:00,2016-08-24 17:00:00,,0
941,1.1.1.12.3.4.10,Signalisatie,6.375,5.1,7.65,2016-08-18 08:00:00,2016-08-24 17:00:00,,0
942,1.1.1.12.3.4.11,Verkeerslichtenregeling,27.375,21.9,32.85,2016-08-18 08:00:00,2016-09-14 17:00:00,,0
943,1.1.1.13,616 Keerlus Metropolis ,18.375,18.19,18.56,2017-03-06 08:00:00,2017-03-24 17:00:00,,0
944,1.1.1.13.1,Opbraak bestaande spoorinfrastructuur,11.375,9.1,13.65,2017-03-06 08:00:00,2017-03-17 17:00:00,,0
945,1.1.1.13.2,Nieuwe verhardingen,9.375,7.5,11.25,2017-03-08 08:00:00,2017-03-17 17:00:00,,0
946,1.1.1.13.3,Verharding - asfalt,1.375,1.1,1.65,2017-03-15 08:00:00,2017-03-16 17:00:00,,0
947,1.1.1.13.4,Afwerking,2.375,1.9,2.85,2017-03-22 08:00:00,2017-03-24 17:00:00,,0
948,1.1.1.13.5,Keerlus Metropolis klaar,0.0,0.0,0.0,2017-03-24 17:00:00,2017-03-24 17:00:00,,0
949,1.1.1.14,63 Park&Ride,98.0,97.02,98.98,2017-03-31 17:00:00,2017-07-07 17:00:00,,0
950,1.1.1.14.1,Park&Ride volgens bestek > OUT OF SCOPE,0.0,0.0,0.0,2017-03-31 17:00:00,2017-03-31 17:00:00,,0
951,1.1.1.14.2,Alle werken klaar STAD04a,0.0,0.0,0.0,2017-06-15 17:00:00,2017-06-15 17:00:00,,0
952,1.1.1.14.3,Plaatsen deel 1 beschermingspalen (28stuks) + wegwerken restpunten,3.375,2.7,4.05,2017-06-23 08:00:00,2017-06-26 17:00:00,,0
953,1.1.1.14.4,Plaatsen saldo paaltjes (17 stuks),2.375,1.9,2.85,2017-07-05 08:00:00,2017-07-07 17:00:00,,0
954,1.1.1.14.5,Tijdelijke Park&Ride,62.0,61.38,62.62,2017-04-14 17:00:00,2017-06-15 17:00:00,,0
955,1.1.1.14.5.1,Start Park&Ride,0.0,0.0,0.0,2017-04-14 17:00:00,2017-04-14 17:00:00,,0
956,1.1.1.14.5.2,Af- en uitgraving + opbraak bestaande toestand,3.375,2.7,4.05,2017-04-18 08:00:00,2017-04-21 17:00:00,,0
957,1.1.1.14.5.3,Wachtbuizen,1.375,1.1,1.65,2017-04-20 08:00:00,2017-04-21 17:00:00,,0
958,1.1.1.14.5.4,Onderfundering,6.375,5.1,7.65,2017-04-20 08:00:00,2017-04-26 17:00:00,,0
959,1.1.1.14.5.5,Borduur & greppel incl. fundering en stut,3.375,2.7,4.05,2017-05-02 08:00:00,2017-05-05 17:00:00,,0
960,1.1.1.14.5.6,Steenslagfundering,3.375,2.7,4.05,2017-05-08 08:00:00,2017-05-11 17:00:00,,0
961,1.1.1.14.5.7,Witte - grijze BSS,6.375,5.1,7.65,2017-05-12 08:00:00,2017-05-18 17:00:00,,0
962,1.1.1.14.5.8,Grasbetontegels incl. legbed,10.375,8.3,12.45,2017-05-12 08:00:00,2017-05-22 17:00:00,,0
963,1.1.1.14.5.9,Biggenruggen + afwerking bermen,2.375,1.9,2.85,2017-05-22 08:00:00,2017-05-24 17:00:00,,0
964,1.1.1.14.5.10,Afsluiting incl. poort,3.375,2.7,4.05,2017-06-12 08:00:00,2017-06-15 17:00:00,,0
965,1.1.1.14.5.11,Park & Ride klaar voor gebruik,0.0,0.0,0.0,2017-05-24 17:00:00,2017-05-24 17:00:00,,0
966,1.1.1.15,64 Haltinfrastructuur en fietsenstalling P+R NOORD,634.375,628.03,640.72,2016-06-02 08:00:00,2018-02-26 17:00:00,,0
967,1.1.1.15.1,Aanpassingswerken nutsleidingen ifv fietsenstalling,41.375,33.1,49.65,2016-06-02 08:00:00,2016-07-13 17:00:00,,0
968,1.1.1.15.2,Funderingspalen en valse putten,20.375,16.3,24.45,2016-08-04 08:00:00,2016-08-24 17:00:00,,0
969,1.1.1.15.3,Grondwerken,4.375,3.5,5.25,2016-08-29 08:00:00,2016-09-02 17:00:00,,0
970,1.1.1.15.4,Funderingen,25.375,20.3,30.45,2016-09-05 08:00:00,2016-09-30 17:00:00,,0
971,1.1.1.15.5,Montage hoofdstructuren,18.375,14.7,22.05,2016-10-03 08:00:00,2016-10-21 17:00:00,,0
972,1.1.1.15.6,Betonplaten,27.375,21.9,32.85,2016-10-25 08:00:00,2016-11-21 17:00:00,,0
973,1.1.1.15.7,Alle werken klaar STAD04b,0.0,0.0,0.0,2018-02-26 17:00:00,2018-02-26 17:00:00,,0
974,1.1.1.15.8,"Staalstructuur: Trappen, leuningen,…",24.0,23.76,24.24,2017-04-17 17:00:00,2017-05-11 17:00:00,,0
975,1.1.1.15.8.1,Start Staalstructuur,0.0,0.0,0.0,2017-04-17 17:00:00,2017-04-17 17:00:00,,0
976,1.1.1.15.8.2,Staalstructuur zone 1 trambaan,3.375,2.7,4.05,2017-04-18 08:00:00,2017-04-21 17:00:00,,0
977,1.1.1.15.8.3,Staalstructuur zone 2 fietshelling,7.375,5.9,8.85,2017-05-04 08:00:00,2017-05-11 17:00:00,,0
978,1.1.1.15.9,Welfsels,39.375,38.98,39.77,2017-04-24 08:00:00,2017-06-02 17:00:00,,0
979,1.1.1.15.9.1,Welfsels zone 1 trambaan,1.375,1.1,1.65,2017-04-24 08:00:00,2017-04-25 17:00:00,,0
980,1.1.1.15.9.2,Welfsels zone 2 fietshelling,8.375,6.7,10.05,2017-05-11 08:00:00,2017-05-19 17:00:00,,0
981,1.1.1.15.9.3,Storten druklaag,1.375,1.1,1.65,2017-06-01 08:00:00,2017-06-02 17:00:00,,0
982,1.1.1.15.10,Montage strekmetaal,112.375,111.25,113.5,2017-06-06 08:00:00,2017-09-26 17:00:00,,0
983,1.1.1.15.10.1,Plaatsen strekmetaal zone 1 trambaan,6.375,5.1,7.65,2017-09-20 08:00:00,2017-09-26 17:00:00,,0
984,1.1.1.15.10.2,Plaatsen strekmetaal zone 2 fietshelling,45.375,36.3,54.45,2017-06-06 08:00:00,2017-07-21 17:00:00,,0
985,1.1.1.15.11,Inrichting,322.0,318.78,325.22,2017-02-27 17:00:00,2018-01-15 17:00:00,,0
986,1.1.1.15.11.1,Plaatsen hellingverwarming,3.375,2.7,4.05,2017-05-22 08:00:00,2017-05-25 17:00:00,,0
987,1.1.1.15.11.2,Vloerafwerking buiten,0.0,0.0,0.0,2017-10-27 17:00:00,2017-10-27 17:00:00,,0
988,1.1.1.15.11.3,Technieken,27.375,21.9,32.85,2017-05-30 08:00:00,2017-06-26 17:00:00,,0
989,1.1.1.15.11.4,Plaatsen dekvloer,0.375,0.3,0.45,2017-06-29 08:00:00,2017-06-29 17:00:00,,0
990,1.1.1.15.11.5,Herstellen coating helling.,194.375,155.5,233.25,2017-06-30 08:00:00,2018-01-10 17:00:00,,0
991,1.1.1.15.11.6,Resterende Inrichting Fietsenstalling,157.0,155.43,158.57,2017-08-11 17:00:00,2018-01-15 17:00:00,,0
992,1.1.1.15.11.6.1,Plaatsen betonnen trap,0.0,0.0,0.0,2017-08-11 17:00:00,2017-08-11 17:00:00,,0
993,1.1.1.15.11.6.2,Plaatsen stalen trappen,7.375,7.3,7.45,2017-09-04 08:00:00,2017-09-11 17:00:00,,0
994,1.1.1.15.11.6.2.1,Centrale trap,1.375,1.1,1.65,2017-09-04 08:00:00,2017-09-05 17:00:00,,0
995,1.1.1.15.11.6.2.2,Trappen uiterste delen ,7.375,5.9,8.85,2017-09-04 08:00:00,2017-09-11 17:00:00,,0
996,1.1.1.15.11.6.2.3,Trap boven dienstlokaal,7.375,5.9,8.85,2017-09-04 08:00:00,2017-09-11 17:00:00,,0
997,1.1.1.15.11.6.2.4,Trappen langs perrons (timing te bepalen),7.375,5.9,8.85,2017-09-04 08:00:00,2017-09-11 17:00:00,,0
998,1.1.1.15.11.6.3,Plaatsen definitieve verlichting,2.375,1.9,2.85,2017-09-04 08:00:00,2017-09-06 17:00:00,,0
999,1.1.1.15.11.6.4,Verharding gelijkvloers,6.375,5.1,7.65,2017-08-25 08:00:00,2017-08-31 17:00:00,,0
1000,1.1.1.15.11.6.5,Voedingskabel / plaatsen kast,0.375,0.3,0.45,2017-09-07 08:00:00,2017-09-07 17:00:00,,0
1001,1.1.1.15.11.6.6,Plaatsen definitieve kasten vloerverwarming,0.375,0.3,0.45,2018-01-15 08:00:00,2018-01-15 17:00:00,,0
1002,1.1.1.15.11.7,Resterende inrichting Dienstlokaal + wachtlokaal,206.0,203.94,208.06,2017-02-27 17:00:00,2017-09-21 17:00:00,,0
1003,1.1.1.15.11.7.1,Levertermijn buitenschrijnwerk,183.0,181.17,184.83,2017-02-27 17:00:00,2017-08-29 17:00:00,,0
1004,1.1.1.15.11.7.1.1,Gunning OA,0.0,0.0,0.0,2017-02-27 17:00:00,2017-02-27 17:00:00,,0
1005,1.1.1.15.11.7.1.2,opmaken plannen door OA,9.375,7.5,11.25,2017-05-15 08:00:00,2017-05-24 17:00:00,,0
1006,1.1.1.15.11.7.1.3,Controle PL en AR,2.375,1.9,2.85,2017-05-31 08:00:00,2017-06-02 17:00:00,,0
1007,1.1.1.15.11.7.1.4,Productie schrijnwerk,85.375,68.3,102.45,2017-06-05 08:00:00,2017-08-29 17:00:00,,0
1008,1.1.1.15.11.7.2,Buitenschrijnwerk profielen,10.375,8.3,12.45,2017-08-21 08:00:00,2017-08-31 17:00:00,,0
1009,1.1.1.15.11.7.3,Buitenschrijnwerk beglazing,0.375,0.3,0.45,2017-09-06 08:00:00,2017-09-06 17:00:00,,0
1010,1.1.1.15.11.7.4,Buitenschrijnwerk ondoorzichtige beglazing,0.375,0.3,0.45,2017-09-20 08:00:00,2017-09-20 17:00:00,,0
1011,1.1.1.15.11.7.5,Sanitair eerste gedeelte,6.375,5.1,7.65,2017-06-22 08:00:00,2017-06-28 17:00:00,,0
1012,1.1.1.15.11.7.6,Sanitair resterend gedeelte,26.375,21.1,31.65,2017-08-16 08:00:00,2017-09-11 17:00:00,,0
1013,1.1.1.15.11.7.7,Gyprocwerken,7.375,5.9,8.85,2017-09-01 08:00:00,2017-09-08 17:00:00,,0
1014,1.1.1.15.11.7.8,Dakafwerking wachtruimte,2.375,1.9,2.85,2017-09-13 08:00:00,2017-09-15 17:00:00,,0
1015,1.1.1.15.11.7.9,Plaatsen dakranden,0.375,0.3,0.45,2017-09-21 08:00:00,2017-09-21 17:00:00,,0
1016,1.1.1.15.11.7.10,Binnenmuren,4.375,3.5,5.25,2017-08-07 08:00:00,2017-08-11 17:00:00,,0
1017,1.1.1.15.11.7.11,Tegelwerken,0.375,0.3,0.45,2017-09-05 08:00:00,2017-09-05 17:00:00,,0
1018,1.1.1.15.11.7.12,Binnendeuren,1.375,1.1,1.65,2017-09-07 08:00:00,2017-09-08 17:00:00,,0
1019,1.1.1.15.11.7.13,Elektriciteitswerken,1.375,1.1,1.65,2017-09-11 08:00:00,2017-09-12 17:00:00,,0
1020,1.1.1.15.11.7.14,Vloerafwerking gelijkvloers,1.375,1.1,1.65,2017-09-04 08:00:00,2017-09-05 17:00:00,,0
1021,1.1.1.15.11.7.15,Plaatsing kitchenette,1.375,1.1,1.65,2017-09-07 08:00:00,2017-09-08 17:00:00,,0
1022,1.1.1.15.11.7.16,Stalen trappen naast spoor,1.375,1.1,1.65,2017-09-07 08:00:00,2017-09-08 17:00:00,,0
1023,1.1.1.15.11.7.17,(Mogelijks) tijdelijke borstwering trappen langs spoor,4.375,3.5,5.25,2017-09-04 08:00:00,2017-09-08 17:00:00,,0
1024,1.1.1.15.12,Vast meubilair en fietssbeugels,210.375,208.27,212.48,2017-07-31 08:00:00,2018-02-26 17:00:00,,0
1025,1.1.1.15.12.1,Fietsbeugels zone klinkers,1.375,1.1,1.65,2017-09-04 08:00:00,2017-09-05 17:00:00,,0
1026,1.1.1.15.12.2,Fietsbeugels zone hellingen (ON HOLD na herstellingswerken helling),10.375,8.3,12.45,2018-02-16 08:00:00,2018-02-26 17:00:00,,0
1027,1.1.1.15.12.3,Vast meubilair (out of scope),0.375,0.3,0.45,2017-07-31 08:00:00,2017-07-31 17:00:00,,0
1028,1.1.1.15.12.4,Rondgang in kader Indienstname Fietsenstalling (Excl. zone op hellingen) & dienstlokaal,0.0,0.0,0.0,2017-09-08 17:00:00,2017-09-08 17:00:00,,0
