node_id,wbs,task_name,duration,optimistic_time,pessimistic_time,baseline_start,baseline_end,resource_demand,total_cost
0,1.0,Project,5.0,5.0,5.0,2023-09-22 08:00:00,2023-09-29 11:00:00,,0
1,1.1,Placing outer heras fences,3.0,2.4,3.6,2023-09-22 08:00:00,2023-09-22 11:00:00,,0
2,1.2,Placing inner heras fences,2.0,1.6,2.4,2023-09-22 11:00:00,2023-09-22 14:00:00,,0
3,1.3,Setting up the tent (bar B1),2.0,1.6,2.4,2023-09-22 14:00:00,2023-09-22 16:00:00,,0
4,1.4,Tent equipping with utilities (bar B1),2.0,1.6,2.4,2023-09-22 16:00:00,2023-09-25 09:00:00,,0
5,1.5,Installing the bar (bar B1),1.0,0.8,1.2,2023-09-25 09:00:00,2023-09-25 10:00:00,,0
6,1.6,Connecting barrels (bar B1),1.0,0.8,1.2,2023-09-25 10:00:00,2023-09-25 11:00:00,,0
7,1.7,Positioning fridges (bar B1),1.0,0.8,1.2,2023-09-25 11:00:00,2023-09-25 12:00:00,,0
8,1.8,Filling fridges (bar B1),1.0,0.8,1.2,2023-09-25 13:00:00,2023-09-25 14:00:00,,0
9,1.9,Setting up the tent (bar B2),2.0,1.6,2.4,2023-09-22 14:00:00,2023-09-22 16:00:00,,0
10,1.1,Tent equipping with utilities (bar B2),2.0,1.6,2.4,2023-09-22 16:00:00,2023-09-25 09:00:00,,0
11,1.11,Installing the bar (bar B2),1.0,0.8,1.2,2023-09-25 09:00:00,2023-09-25 10:00:00,,0
12,1.12,Connecting barrels (bar B2),1.0,0.8,1.2,2023-09-25 10:00:00,2023-09-25 11:00:00,,0
13,1.13,Positioning fridges (bar B2),1.0,0.8,1.2,2023-09-25 11:00:00,2023-09-25 12:00:00,,0
14,1.14,Filling fridges (bar B2),1.0,0.8,1.2,2023-09-25 13:00:00,2023-09-25 14:00:00,,0
15,1.15,Setting up the tent (bar B5),2.0,1.6,2.4,2023-09-22 14:00:00,2023-09-22 16:00:00,,0
16,1.16,Tent equipping with utilities (bar B5),2.0,1.6,2.4,2023-09-22 16:00:00,2023-09-25 09:00:00,,0
17,1.17,Installing the bar (bar B5),1.0,0.8,1.2,2023-09-25 09:00:00,2023-09-25 10:00:00,,0
18,1.18,Connecting barrels (bar B5),1.0,0.8,1.2,2023-09-25 10:00:00,2023-09-25 11:00:00,,0
19,1.19,Positioning fridges (bar B5),1.0,0.8,1.2,2023-09-25 11:00:00,2023-09-25 12:00:00,,0
20,1.2,Filling fridges (bar B5),1.0,0.8,1.2,2023-09-25 13:00:00,2023-09-25 14:00:00,,0
21,1.21,Setting up the tent (bar B8),2.0,1.6,2.4,2023-09-22 14:00:00,2023-09-22 16:00:00,,0
22,1.22,Tent equipping with utilities (bar B8),2.0,1.6,2.4,2023-09-22 16:00:00,2023-09-25 09:00:00,,0
23,1.23,Installing the bar (bar B8),1.0,0.8,1.2,2023-09-25 09:00:00,2023-09-25 10:00:00,,0
24,1.24,Connecting barrels (bar B8),1.0,0.8,1.2,2023-09-25 10:00:00,2023-09-25 11:00:00,,0
25,1.25,Positioning fridges (bar B8),1.0,0.8,1.2,2023-09-25 11:00:00,2023-09-25 12:00:00,,0
26,1.26,Filling fridges (bar B8),1.0,0.8,1.2,2023-09-25 13:00:00,2023-09-25 14:00:00,,0
27,1.27,Setting up the tent (backstagetent),0.0,0.0,0.0,2023-09-22 14:00:00,2023-09-22 14:00:00,,0
28,1.28,Tent equipping with utilities (backstagetent),0.0,0.0,0.0,2023-09-22 14:00:00,2023-09-22 14:00:00,,0
29,1.29,Furnishing interior tent (backstagetent),0.0,0.0,0.0,2023-09-22 14:00:00,2023-09-22 14:00:00,,0
30,1.3,Setting up the tent (first-aid tent),0.0,0.0,0.0,2023-09-22 14:00:00,2023-09-22 14:00:00,,0
31,1.31,Tent equipping with utilities (first-aid tent),0.0,0.0,0.0,2023-09-22 14:00:00,2023-09-22 14:00:00,,0
32,1.32,Setting up the tent (employees frame tent),2.0,1.6,2.4,2023-09-22 14:00:00,2023-09-22 16:00:00,,0
33,1.33,Tent equipping with utilities (employees frame tent),0.0,0.0,0.0,2023-09-22 16:00:00,2023-09-22 16:00:00,,0
34,1.34,Furnishing interior tent (employees frame tent),0.0,0.0,0.0,2023-09-22 16:00:00,2023-09-22 16:00:00,,0
35,1.35,Setting up the tent (Eristoff tent),2.0,1.6,2.4,2023-09-22 14:00:00,2023-09-22 16:00:00,,0
36,1.36,Tent equipping with utilities (Eristoff tent),0.0,0.0,0.0,2023-09-22 16:00:00,2023-09-22 16:00:00,,0
37,1.37,Furnishing interior tent (Eristoff tent),4.0,3.2,4.8,2023-09-25 08:00:00,2023-09-25 12:00:00,,0
38,1.38,Setting up 53 tents (association tents),2.0,1.6,2.4,2023-09-22 14:00:00,2023-09-22 16:00:00,,0
39,1.39,Setting up the tent (VIP catering),0.0,0.0,0.0,2023-09-22 14:00:00,2023-09-22 14:00:00,,0
40,1.4,Tent equipping with utilities (VIP catering),0.0,0.0,0.0,2023-09-22 14:00:00,2023-09-22 14:00:00,,0
41,1.41,Furnishing interior tent (VIP catering),1.0,0.8,1.2,2023-09-22 14:00:00,2023-09-22 15:00:00,,0
42,1.42,Setting up the deck (VIP deck),3.0,2.4,3.6,2023-09-22 14:00:00,2023-09-22 17:00:00,,0
43,1.43,Setting up the tent (VIP deck),3.0,2.4,3.6,2023-09-25 08:00:00,2023-09-25 11:00:00,,0
44,1.44,Tent equipping with utilities (VIP deck),2.0,1.6,2.4,2023-09-25 11:00:00,2023-09-25 14:00:00,,0
45,1.45,Furnishing interior tent (VIP deck),2.0,1.6,2.4,2023-09-25 14:00:00,2023-09-25 16:00:00,,0
46,1.46,Setting up the tent (recycling area 1),0.0,0.0,0.0,2023-09-22 14:00:00,2023-09-22 14:00:00,,0
47,1.47,Tent equipping with utilities (recycling area 1),0.0,0.0,0.0,2023-09-22 14:00:00,2023-09-22 14:00:00,,0
48,1.48,Furnishing interior tent (recycling area 1),0.0,0.0,0.0,2023-09-22 14:00:00,2023-09-22 14:00:00,,0
49,1.49,Setting up the tent (recycling area 2),0.0,0.0,0.0,2023-09-22 14:00:00,2023-09-22 14:00:00,,0
50,1.5,Tent equipping with utilities (recycling area 2),0.0,0.0,0.0,2023-09-22 14:00:00,2023-09-22 14:00:00,,0
51,1.51,Furnishing interior tent (recycling area 2),0.0,0.0,0.0,2023-09-22 14:00:00,2023-09-22 14:00:00,,0
52,1.52,Setting up the tent (recycling area 3),0.0,0.0,0.0,2023-09-22 14:00:00,2023-09-22 14:00:00,,0
53,1.53,Tent equipping with utilities (recycling area 3),0.0,0.0,0.0,2023-09-22 14:00:00,2023-09-22 14:00:00,,0
54,1.54,Furnishing interior tent (recycling area 3),0.0,0.0,0.0,2023-09-22 14:00:00,2023-09-22 14:00:00,,0
55,1.55,Setting up the tent (direction 1),0.0,0.0,0.0,2023-09-22 14:00:00,2023-09-22 14:00:00,,0
56,1.56,Tent equipping with utilities (direction 1),0.0,0.0,0.0,2023-09-22 14:00:00,2023-09-22 14:00:00,,0
57,1.57,Furnishing interior tent (direction 1),0.0,0.0,0.0,2023-09-22 14:00:00,2023-09-22 14:00:00,,0
58,1.58,Setting up the tent (direction 2),0.0,0.0,0.0,2023-09-22 14:00:00,2023-09-22 14:00:00,,0
59,1.59,Tent equipping with utilities (direction 2),0.0,0.0,0.0,2023-09-22 14:00:00,2023-09-22 14:00:00,,0
60,1.6,Furnishing interior tent (direction 2),0.0,0.0,0.0,2023-09-22 14:00:00,2023-09-22 14:00:00,,0
61,1.61,Setting up the deck (Deck Kramersplein),7.0,5.6,8.4,2023-09-22 14:00:00,2023-09-25 12:00:00,,0
62,1.62,Setting up the tent (Deck Kramersplein),7.0,5.6,8.4,2023-09-25 13:00:00,2023-09-26 11:00:00,,0
63,1.63,Tent equipping with utilities (Deck Kramersplein),2.0,1.6,2.4,2023-09-26 11:00:00,2023-09-26 14:00:00,,0
64,1.64,Installing the bar (Deck Kramersplein bar 1),1.0,0.8,1.2,2023-09-26 14:00:00,2023-09-26 15:00:00,,0
65,1.65,Connecting barrels (Deck Kramersplein bar 1),1.0,0.8,1.2,2023-09-26 15:00:00,2023-09-26 16:00:00,,0
66,1.66,Positioning fridges (Deck Kramersplein bar 1),1.0,0.8,1.2,2023-09-26 16:00:00,2023-09-26 17:00:00,,0
67,1.67,Filling fridges (Deck Kramersplein bar 1),1.0,0.8,1.2,2023-09-27 08:00:00,2023-09-27 09:00:00,,0
68,1.68,Installing the bar (Deck Kramersplein bar 2),1.0,0.8,1.2,2023-09-26 14:00:00,2023-09-26 15:00:00,,0
69,1.69,Connecting barrels (Deck Kramersplein bar 2),1.0,0.8,1.2,2023-09-26 15:00:00,2023-09-26 16:00:00,,0
70,1.7,Positioning fridges (Deck Kramersplein bar 2),1.0,0.8,1.2,2023-09-26 16:00:00,2023-09-26 17:00:00,,0
71,1.71,Filling fridges (Deck Kramersplein bar 2),1.0,0.8,1.2,2023-09-27 08:00:00,2023-09-27 09:00:00,,0
72,1.72,Setting up the tent (recycling area Kramersplein),0.0,0.0,0.0,2023-09-22 14:00:00,2023-09-22 14:00:00,,0
73,1.73,Tent equipping with utilities (recycling area Kramersplein),0.0,0.0,0.0,2023-09-22 14:00:00,2023-09-22 14:00:00,,0
74,1.74,Furnishing interior tent (recycling area Kramersplein),0.0,0.0,0.0,2023-09-22 14:00:00,2023-09-22 14:00:00,,0
75,1.75,Placing bottom container (bar 3),0.0,0.0,0.0,2023-09-22 14:00:00,2023-09-22 14:00:00,,0
76,1.76,Placing top container (bar3),0.0,0.0,0.0,2023-09-22 14:00:00,2023-09-22 14:00:00,,0
77,1.77,Installing the stairs (bar3),0.0,0.0,0.0,2023-09-22 14:00:00,2023-09-22 14:00:00,,0
78,1.78,Equipping both containers with utilities (bar3),0.0,0.0,0.0,2023-09-22 15:00:00,2023-09-22 15:00:00,,0
79,1.79,Filling the fridges in the bottom container (bar 3),0.0,0.0,0.0,2023-09-22 15:00:00,2023-09-22 15:00:00,,0
80,1.8,Furnishing interior of upper container (bar 3),0.0,0.0,0.0,2023-09-22 15:00:00,2023-09-22 15:00:00,,0
81,1.81,Placing fully equipped container (bar 4),0.0,0.0,0.0,2023-09-22 14:00:00,2023-09-22 14:00:00,,0
82,1.82,Equipping container with utilities (bar 4),0.0,0.0,0.0,2023-09-22 14:00:00,2023-09-22 14:00:00,,0
83,1.83,Placing container (desk container boxoffices),0.0,0.0,0.0,2023-09-22 14:00:00,2023-09-22 14:00:00,,0
84,1.84,Equipping container with utilities (desk container boxoffices),0.0,0.0,0.0,2023-09-22 14:00:00,2023-09-22 14:00:00,,0
85,1.85,Furnishing interior of container (desk container boxoffices),0.0,0.0,0.0,2023-09-22 14:00:00,2023-09-22 14:00:00,,0
86,1.86,Placing container (desk container coordinators),0.0,0.0,0.0,2023-09-22 14:00:00,2023-09-22 14:00:00,,0
87,1.87,Equipping container with utilities (desk container coordinators),0.0,0.0,0.0,2023-09-22 14:00:00,2023-09-22 14:00:00,,0
88,1.88,Furnishing interior of container (desk container coordinators),0.0,0.0,0.0,2023-09-22 14:00:00,2023-09-22 14:00:00,,0
89,1.89,Placing container (first-aid),0.0,0.0,0.0,2023-09-22 14:00:00,2023-09-22 14:00:00,,0
90,1.9,Equipping container with utilities (first-aid),0.0,0.0,0.0,2023-09-22 14:00:00,2023-09-22 14:00:00,,0
91,1.91,Furnishing interior of container (first-aid),0.0,0.0,0.0,2023-09-22 14:00:00,2023-09-22 14:00:00,,0
92,1.92,Placing bottom container (warehouse + SS),0.0,0.0,0.0,2023-09-22 14:00:00,2023-09-22 14:00:00,,0
93,1.93,Placing top container (warehouse + SS),0.0,0.0,0.0,2023-09-22 14:00:00,2023-09-22 14:00:00,,0
94,1.94,Installing the stairs (warehouse + SS),0.0,0.0,0.0,2023-09-22 14:00:00,2023-09-22 14:00:00,,0
95,1.95,Equipping both containers with utilities (warehouse + SS),0.0,0.0,0.0,2023-09-22 15:00:00,2023-09-22 15:00:00,,0
96,1.96,Furnishing interior of both containers (warehouse + SS),0.0,0.0,0.0,2023-09-22 15:00:00,2023-09-22 15:00:00,,0
97,1.97,Placing container (press),0.0,0.0,0.0,2023-09-22 14:00:00,2023-09-22 14:00:00,,0
98,1.98,Equipping container with utilities (press),0.0,0.0,0.0,2023-09-22 14:00:00,2023-09-22 14:00:00,,0
99,1.99,Furnishing interior of container (press),0.0,0.0,0.0,2023-09-22 14:00:00,2023-09-22 14:00:00,,0
100,1.1,Placing container (production x IT x bitstream),0.0,0.0,0.0,2023-09-22 14:00:00,2023-09-22 14:00:00,,0
101,1.101,Equipping container with utilities (production x IT x bitstream),0.0,0.0,0.0,2023-09-22 14:00:00,2023-09-22 14:00:00,,0
102,1.102,Furnishing interior of container (production x IT x bitstream),0.0,0.0,0.0,2023-09-22 14:00:00,2023-09-22 14:00:00,,0
103,1.103,Placing container (checkout Petermans),0.0,0.0,0.0,2023-09-22 14:00:00,2023-09-22 14:00:00,,0
104,1.104,Equipping container with utilities (checkout Petermans),0.0,0.0,0.0,2023-09-22 14:00:00,2023-09-22 14:00:00,,0
105,1.105,Furnishing interior of container (checkout Petermans),0.0,0.0,0.0,2023-09-22 14:00:00,2023-09-22 14:00:00,,0
106,1.106,Placing container (checkout 1 main toilet),0.0,0.0,0.0,2023-09-22 14:00:00,2023-09-22 14:00:00,,0
107,1.107,Equipping container with utilities (checkout 1 main toilet),0.0,0.0,0.0,2023-09-22 14:00:00,2023-09-22 14:00:00,,0
108,1.108,Furnishing interior of container (checkout 1 main toilet),0.0,0.0,0.0,2023-09-22 14:00:00,2023-09-22 14:00:00,,0
109,1.109,Placing container (checkout 2 main toilet),0.0,0.0,0.0,2023-09-22 14:00:00,2023-09-22 14:00:00,,0
110,1.11,Equipping container with utilities (checkout 2 main toilet),0.0,0.0,0.0,2023-09-22 14:00:00,2023-09-22 14:00:00,,0
111,1.111,Furnishing interior of container (checkout 2 main toilet),0.0,0.0,0.0,2023-09-22 14:00:00,2023-09-22 14:00:00,,0
112,1.112,Placing container (checkout container K1),0.0,0.0,0.0,2023-09-22 14:00:00,2023-09-22 14:00:00,,0
113,1.113,Equipping container with utilities (checkout container K1),0.0,0.0,0.0,2023-09-22 14:00:00,2023-09-22 14:00:00,,0
114,1.114,Furnishing interior of container (checkout container K1),0.0,0.0,0.0,2023-09-22 14:00:00,2023-09-22 14:00:00,,0
115,1.115,Placing container (checkout container K2),0.0,0.0,0.0,2023-09-22 14:00:00,2023-09-22 14:00:00,,0
116,1.116,Equipping container with utilities (checkout container K2),0.0,0.0,0.0,2023-09-22 14:00:00,2023-09-22 14:00:00,,0
117,1.117,Furnishing interior of container (checkout container K2),0.0,0.0,0.0,2023-09-22 14:00:00,2023-09-22 14:00:00,,0
118,1.118,Placing container (checkout container K3),0.0,0.0,0.0,2023-09-22 14:00:00,2023-09-22 14:00:00,,0
119,1.119,Equipping container with utilities (checkout container K3),0.0,0.0,0.0,2023-09-22 14:00:00,2023-09-22 14:00:00,,0
120,1.12,Furnishing interior of container (checkout container K3),0.0,0.0,0.0,2023-09-22 14:00:00,2023-09-22 14:00:00,,0
121,1.121,Placing container (checkout container K4),0.0,0.0,0.0,2023-09-22 14:00:00,2023-09-22 14:00:00,,0
122,1.122,Equipping container with utilities (checkout container K4),0.0,0.0,0.0,2023-09-22 14:00:00,2023-09-22 14:00:00,,0
123,1.123,Furnishing interior of container (checkout container K4),0.0,0.0,0.0,2023-09-22 14:00:00,2023-09-22 14:00:00,,0
124,1.124,Placing container (checkout container K5),0.0,0.0,0.0,2023-09-22 14:00:00,2023-09-22 14:00:00,,0
125,1.125,Equipping container with utilities (checkout container K5),0.0,0.0,0.0,2023-09-22 14:00:00,2023-09-22 14:00:00,,0
126,1.126,Furnishing interior of container (checkout container K5),0.0,0.0,0.0,2023-09-22 14:00:00,2023-09-22 14:00:00,,0
127,1.127,Placing container (core container),0.0,0.0,0.0,2023-09-22 14:00:00,2023-09-22 14:00:00,,0
128,1.128,Equipping container with utilities (core container),0.0,0.0,0.0,2023-09-22 14:00:00,2023-09-22 14:00:00,,0
129,1.129,Furnishing interior of container (core container),0.0,0.0,0.0,2023-09-22 14:00:00,2023-09-22 14:00:00,,0
130,1.13,Placing container (toilet container VIP),0.0,0.0,0.0,2023-09-22 14:00:00,2023-09-22 14:00:00,,0
131,1.131,Equipping container with utilities (toilet container VIP),0.0,0.0,0.0,2023-09-22 14:00:00,2023-09-22 14:00:00,,0
132,1.132,Equipping container with supplies (toilet container VIP),0.0,0.0,0.0,2023-09-22 14:00:00,2023-09-22 14:00:00,,0
133,1.133,Placing container (checkout container 1 Kramersplein),0.0,0.0,0.0,2023-09-26 14:00:00,2023-09-26 14:00:00,,0
134,1.134,Equipping container with utilities (checkout container 1 Kramersplein),0.0,0.0,0.0,2023-09-26 14:00:00,2023-09-26 14:00:00,,0
135,1.135,Furnishing interior of container (checkout container 1 Kramersplein),0.0,0.0,0.0,2023-09-26 14:00:00,2023-09-26 14:00:00,,0
136,1.136,Placing container (checkout container 2 Kramersplein),0.0,0.0,0.0,2023-09-26 14:00:00,2023-09-26 14:00:00,,0
137,1.137,Equipping container with utilities (checkout container 2 Kramersplein),0.0,0.0,0.0,2023-09-26 14:00:00,2023-09-26 14:00:00,,0
138,1.138,Furnishing interior of container (checkout container 2 Kramersplein),0.0,0.0,0.0,2023-09-26 14:00:00,2023-09-26 14:00:00,,0
139,1.139,Placing piscines (toilet 1),2.0,1.6,2.4,2023-09-22 14:00:00,2023-09-22 16:00:00,,0
140,1.14,Placing toilets (toilet 1),2.0,1.6,2.4,2023-09-22 14:00:00,2023-09-22 16:00:00,,0
141,1.141,Equipping with utilities (toilet 1),2.0,1.6,2.4,2023-09-22 16:00:00,2023-09-25 09:00:00,,0
142,1.142,Building up toilet exit (toilet 1),1.0,0.8,1.2,2023-09-25 09:00:00,2023-09-25 10:00:00,,0
143,1.143,Placing piscines (toilet 2),1.0,0.8,1.2,2023-09-22 14:00:00,2023-09-22 15:00:00,,0
144,1.144,Placing toilets (toilet 2),1.0,0.8,1.2,2023-09-22 14:00:00,2023-09-22 15:00:00,,0
145,1.145,Equipping with utilities (toilet 2),0.0,0.0,0.0,2023-09-22 15:00:00,2023-09-22 15:00:00,,0
146,1.146,Placing piscines (Toilet Kramersplein),1.0,0.8,1.2,2023-09-22 14:00:00,2023-09-22 15:00:00,,0
147,1.147,Placing toilets (Toilet Kramersplein),1.0,0.8,1.2,2023-09-22 14:00:00,2023-09-22 15:00:00,,0
148,1.148,Equipping with utilities (toilet Kramersplein),0.0,0.0,0.0,2023-09-22 15:00:00,2023-09-22 15:00:00,,0
149,1.149,Helping with set-up (mainstage),2.0,1.6,2.4,2023-09-22 14:00:00,2023-09-26 16:00:00,,0
150,1.15,Helping with set-up (delay 1),0.0,0.0,0.0,2023-09-22 14:00:00,2023-09-22 14:00:00,,0
151,1.151,Helping with set-up (delay 2),0.0,0.0,0.0,2023-09-22 14:00:00,2023-09-22 14:00:00,,0
152,1.152,Helping with set-up (petermans 1),0.0,0.0,0.0,2023-09-22 14:00:00,2023-09-22 14:00:00,,0
153,1.153,Helping with set-up (petermans 2),0.0,0.0,0.0,2023-09-22 14:00:00,2023-09-22 14:00:00,,0
154,1.154,Placing container (DJ booth),0.0,0.0,0.0,2023-09-22 14:00:00,2023-09-22 14:00:00,,0
155,1.155,Equipping container with utilities (DJ booth),0.0,0.0,0.0,2023-09-22 14:00:00,2023-09-22 14:00:00,,0
156,1.156,Helping with set-up (Stage Kramersplein),6.0,4.8,7.2,2023-09-26 14:00:00,2023-09-27 11:00:00,,0
157,1.157,Positioning container fridge,0.0,0.0,0.0,2023-09-22 14:00:00,2023-09-22 14:00:00,,0
158,1.158,Equipping with utilities (container fridge),0.0,0.0,0.0,2023-09-22 14:00:00,2023-09-22 14:00:00,,0
159,1.159,Positioning Icelander,0.0,0.0,0.0,2023-09-22 14:00:00,2023-09-22 14:00:00,,0
160,1.16,Equipping with utilities (icelander),0.0,0.0,0.0,2023-09-22 14:00:00,2023-09-22 14:00:00,,0
161,1.161,Positioning tap water site,0.0,0.0,0.0,2023-09-22 14:00:00,2023-09-22 14:00:00,,0
162,1.162,Equipping with utilities (tap water site),0.0,0.0,0.0,2023-09-22 14:00:00,2023-09-22 14:00:00,,0
163,1.163,Placing cold store (x2) (bar B1),0.0,0.0,0.0,2023-09-25 14:00:00,2023-09-25 14:00:00,,0
164,1.164,Placing cold store (bar 4),0.0,0.0,0.0,2023-09-22 14:00:00,2023-09-22 14:00:00,,0
165,1.165,Placing cold store (bar B2),0.0,0.0,0.0,2023-09-25 14:00:00,2023-09-25 14:00:00,,0
166,1.166,Placing cold store (x2) (bar B8),0.0,0.0,0.0,2023-09-25 14:00:00,2023-09-25 14:00:00,,0
167,1.167,Placing cold store (x2) (Deck Kramersplein),0.0,0.0,0.0,2023-09-27 09:00:00,2023-09-27 09:00:00,,0
168,1.168,Equipping cold store with utilities,0.0,0.0,0.0,2023-09-27 09:00:00,2023-09-27 09:00:00,,0
169,1.169,Placing Maes barrels (x2) (bar B2),0.0,0.0,0.0,2023-09-25 14:00:00,2023-09-25 14:00:00,,0
170,1.17,Placing barrels (x5) (bar B8),0.0,0.0,0.0,2023-09-25 14:00:00,2023-09-25 14:00:00,,0
171,1.171,Placing Maes barrels (x3) (bar B1),0.0,0.0,0.0,2023-09-25 14:00:00,2023-09-25 14:00:00,,0
172,1.172,Placing barrels (x3) (bar B5),0.0,0.0,0.0,2023-09-25 14:00:00,2023-09-25 14:00:00,,0
173,1.173,Placing Maes barrels (x2) (bar 4),0.0,0.0,0.0,2023-09-22 14:00:00,2023-09-22 14:00:00,,0
174,1.174,Placing Maes barrels (x4) (Deck Kramersplein),0.0,0.0,0.0,2023-09-26 17:00:00,2023-09-26 17:00:00,,0
175,1.175,Equipping with utilities (storage Buysse),0.0,0.0,0.0,2023-09-22 14:00:00,2023-09-22 14:00:00,,0
176,1.176,Positioning stock (bar B1),1.0,0.8,1.2,2023-09-22 14:00:00,2023-09-22 15:00:00,,0
177,1.177,Positioning stock (bar B8),1.0,0.8,1.2,2023-09-22 14:00:00,2023-09-22 15:00:00,,0
178,1.178,Positioning stock (stock cups 1 Kramersplein),1.0,0.8,1.2,2023-09-22 14:00:00,2023-09-22 15:00:00,,0
179,1.179,Positioning stock (stock cups 2 Kramersplein),1.0,0.8,1.2,2023-09-22 14:00:00,2023-09-22 15:00:00,,0
180,1.18,Placing crashbarriers (mainstage),2.0,1.6,2.4,2023-09-26 16:00:00,2023-09-27 09:00:00,,0
181,1.181,Placing crashbarriers (Eristoff stage),0.0,0.0,0.0,2023-09-22 14:00:00,2023-09-22 14:00:00,,0
182,1.182,Placing crashbarriers (Petermanstage),0.0,0.0,0.0,2023-09-22 14:00:00,2023-09-22 14:00:00,,0
183,1.183,Placing crashbarriers (crashbarriers Kramersplein),0.0,0.0,0.0,2023-09-27 11:00:00,2023-09-27 11:00:00,,0
184,1.184,Placing constructions,7.0,5.6,8.4,2023-09-27 09:00:00,2023-09-27 17:00:00,,0
185,1.185,Wire management,7.0,5.6,8.4,2023-09-28 08:00:00,2023-09-28 16:00:00,,0
186,1.186,Making connections,2.0,1.6,2.4,2023-09-28 16:00:00,2023-09-29 09:00:00,,0
187,1.187,Final check,2.0,1.6,2.4,2023-09-29 09:00:00,2023-09-29 11:00:00,,0
