node_id,wbs,task_name,duration,optimistic_time,pessimistic_time,baseline_start,baseline_end,resource_demand,total_cost
0,nan,Totale Intercampagne installatie 2:                               2958 ladingen,9.0,9.0,9.0,2022-09-11 01:00:00,nan,,
3,nan, Uitdienstname gasrecuperatie installatie 2 + inbeslagnemen brilklep en spuien met stikstof.,1.0,1.0,1.0,2022-09-11 01:00:00,nan,,
4,nan, Testen stoominjecties (mekaniekers ter plaatse aanwezig).,0.0,0.0,0.0,2022-09-11 02:00:00,nan,,
5,nan, Ledigen van vuilslit (om later de convertorstenen te stockeren).,2.0,2.0,2.0,2022-09-11 01:00:00,nan,,
6,nan, Verwijderen van het schroot op en rond de beschermtunnels convertor.,1.0,1.0,1.0,2022-09-11 01:00:00,nan,,
7,nan, Beschermtunnels voor convertor wegnemen.,1.0,1.0,1.0,2022-09-11 02:00:00,nan,,
8,nan," Laadvloer volldig afzetten met nadarhekkens (kant kanaal en kant be, valgevaar in put na verwijderen tunnels).",0.0,0.0,0.0,2022-09-11 08:00:00,nan,,
9,nan," Beerbranden convertorbodem, conus en bek.",1.0,1.0,1.0,2022-09-11 04:00:00,nan,,
10,nan, Alle weegbunkers AKT convertortoeslagen leegmaken.,3.0,3.0,3.0,2022-09-11 04:00:00,nan,,
11,nan, Dagbunker 1 convertortoeslagen AKT leegmaken.,3.0,3.0,3.0,2022-09-11 04:00:00,nan,,
12,nan," Reinigen van zuurstoflansen, sublansen en lansengat (loshangende stukken verwijderen) en lansenplatform.",1.0,1.0,1.0,2022-09-11 05:00:00,nan,,
13,nan," Inleggen sequentieknop ""Koelen schouw start IC"" (Automatisch ventilator TLT op 1000 toeren met venturies 100% opengestuurd, op beeld CV2: Schouw op WinCC).",0.0,0.0,0.0,2022-09-11 05:00:00,nan,,
14,nan," Op hand de spoelafsluiters watertas, taugtopf en watersloten opensturen en controleren of deze leegkomen (controle peilmetingen).",0.0,0.0,0.0,2022-09-11 05:05:00,nan,,
15,nan, Uitvoeren van inbeslagnames van gassen (positieve isolatieafsluiters) volgens werkvoorschrift WVS000060922.,2.0,2.0,2.0,2022-09-11 05:00:00,nan,,
16,nan, Opmeten convertor met ferrotron.,0.0,0.0,0.0,2022-09-11 07:00:00,nan,,
17,nan, Reinigen van trillers onder de weegbunkers AKT + nazicht bunkers op 32m.,0.0,0.0,0.0,2022-09-11 07:00:00,nan,,
18,nan, Afzetten Wagner Biro na beerbranden convertor (automatische afsluiters dicht sturen + opensturen B&R).,0.0,0.0,0.0,2022-09-11 07:15:00,nan,,
19,nan, Vaste schouw en ballon leeg en drukloos maken vanaf 6bar volgens werkvoorschrift WVS000060423.,2.0,2.0,2.0,2022-09-11 08:00:00,nan,,
20,nan, Slakstopper reinigen en vergrendelen.,0.0,0.0,0.0,2022-09-11 07:15:00,nan,,
21,nan, Afbranden bouten gietgat en afnemen gietgatplaat.,1.0,1.0,1.0,2022-09-11 07:30:00,nan,,
22,nan, Zandbunker PM leegmaken en reinigen weeggedeelte + verwijderen pallet met zand.,0.0,0.0,0.0,2022-09-11 08:45:00,nan,,
23,nan, Reinigen zone rond de lagers.,1.0,1.0,1.0,2022-09-11 09:00:00,nan,,
24,nan, Machinaal reinigen bek en conus convertor (gebruik van Wieger of Gradall) + afnemen gietplaat.,0.0,0.0,0.0,2022-09-11 08:45:00,nan,,
25,nan, Uitvoeren inbeslagnames installatie in volgorde volgens werkvoorschrift.,25.0,25.0,25.0,2022-09-11 09:00:00,nan,,
26,nan," Reinigen convertormantel, slakkenbeschermplaten en wanden doghouse.",5.0,5.0,5.0,2022-09-11 09:15:00,nan,,
27,nan, Reinigen convertormuren en gekoelde kap PM2 met Wieger (geen betreding in de convertorput).,5.0,5.0,5.0,2022-09-11 09:15:00,nan,,
28,nan, Controle uitvoeren op de gereinigde doghouse en convertor.,0.0,0.0,0.0,2022-09-11 11:00:00,nan,,
29,nan, Alle weegbunkers APT pantoeslagen 32.0132.11  leegmaken met S32 naar vuibakken op niveau 0m.,3.0,3.0,3.0,2022-09-11 11:00:00,nan,,
30,nan, Dagbunker 22.02 pantoeslagen leegmaken met S32 naar vuilbakken op niveau 0m.,3.0,3.0,3.0,2022-09-11 11:00:00,nan,,
31,nan, Kap van S32 wegnemen en transportband achteruit rijden in garagestand.,1.0,1.0,1.0,2022-09-11 12:15:00,nan,,
32,nan, Reinigen omgeving rond transportband S32 en bunkers op niveau 17m.,4.0,4.0,4.0,2022-09-11 14:30:00,nan,,
33,nan, Stelring laten zakken op de convertor (tegen vallende beren uit de schouw),0.0,0.0,0.0,2022-09-11 12:00:00,nan,,
34,nan," IBN plaatsen convertor, stelring gezakt en convertor deuren dicht.",0.0,0.0,0.0,2022-09-11 12:00:00,nan,,
35,nan, Afbakenen opening met nadarhekken (2 meter van de opening).,0.0,0.0,0.0,2022-09-11 13:30:00,nan,,
36,nan," Reinigen vloer 11 meter voor convertor, nadien de laadvloer afzetten met nadarhekens (geen vuil in convertorput gooien).",0.0,0.0,0.0,2022-09-11 14:00:00,nan,,
37,nan," Reinigen van het lansengat met stelring gezakt. Na de werken, de snijbranders wegnemen.",5.0,5.0,5.0,2022-09-11 14:00:00,nan,,
38,nan," Reinigen schuine beplating onder convertor, hitteschild PM en gekoelde kap PM volgens werkvoorschrift WVS000361979.",5.0,5.0,5.0,2022-09-11 14:00:00,nan,,
39,nan, Afrijden zijkanten put en resterende uit put kant HO.,0.0,0.0,0.0,2022-09-11 20:00:00,nan,,
40,nan, Plaatsen van 2 waterkannonnen aan beide zijden v/d convertor kant pannenhal voor vormen van een watergordijn en vullen convertorput met water (+/ 40cm).,0.0,0.0,0.0,2022-09-11 20:30:00,nan,,
41,nan," IBN opheffen stelring op convertor, IBN uitvoeren van koeling stelring.",0.0,0.0,0.0,2022-09-11 21:00:00,nan,,
42,nan," Instellen inbeslagname ""afspannen volledige convertorput"".",0.0,0.0,0.0,2022-09-11 21:30:00,nan,,
43,nan, Uitbreken van de slijtbekleding convertor na opheffen inbeslagname convertor (Prim. Ontstoffing (bischoff) en sec. ontstoffing indienst).,2.0,2.0,2.0,2022-09-11 22:00:00,nan,,
44,nan," Uitkippen convertor onder toezicht aan beide zijden van de convertor (iedereen verwittigen met algemene oproep en radio, primaire bischoff en secundaire ontstoffing in dienst).",2.0,2.0,2.0,2022-09-12 00:00:00,nan,,
45,nan," Opheffen inbeslagname ""afspannen volledige convertorput"".",0.0,0.0,0.0,2022-09-12 01:00:00,nan,,
46,nan," Telegeleid de convertorput uitrijden, stenen in slit storten.",4.0,4.0,4.0,2022-09-12 01:15:00,nan,,
47,nan, Instellen inbeslagname stelring in hoogste stand.,0.0,0.0,0.0,2022-09-12 01:00:00,nan,,
48,nan, Opmeten blijfbekleding convertor met ferrotron.,0.0,0.0,0.0,2022-09-12 01:00:00,nan,,
49,nan, O²controle uitvoeren in de vaste schouw en gasrecuperatie net vòòr stilleggen ontstoffingsventilator TLT.,0.0,0.0,0.0,2022-09-12 01:00:00,nan,,
50,nan, Oliekamers van automatisch uitbalanceren TLT leegblazen,0.0,0.0,0.0,2022-09-12 01:00:00,nan,,
51,nan, Ventilator TLT:  stilleggen en inbeslagnemen.,0.0,0.0,0.0,2022-09-12 01:15:00,nan,,
52,nan, Convertor positioneren op 90° en inbeslagnemen.,0.0,0.0,0.0,2022-09-12 01:15:00,nan,,
53,nan," Loskoppelen flenzen op trolley (temperatuurcontrole met pyrometer, max.60°).",1.0,1.0,1.0,2022-09-12 01:30:00,nan,,
54,nan," Opheffen inbeslagname convertor 90°, positioneren op 0° en terug inbeslagnemen.",0.0,0.0,0.0,2022-09-12 02:50:00,nan,,
55,nan, Wegnemen ferrotronpanelen trolley kant WW.,2.0,2.0,2.0,2022-09-12 03:00:00,nan,,
56,nan, Beweegbare schouw laten zakken en loskoppelen hydrauliek trolley (tijdelijk stoppen met uitrijden convertorput).,1.0,1.0,1.0,2022-09-12 04:15:00,nan,,
57,nan, Convertor op 90° draaien en inbeslagnemen.,0.0,0.0,0.0,2022-09-12 04:15:00,nan,,
58,nan, Uitrijden trolley naar garagestand kant Ber (vermelden op stilstandsprogramma).,0.0,0.0,0.0,2022-09-12 05:00:00,nan,,
59,nan, Plaat onder de schouw rijden en deze inbeslagnemen.,1.0,1.0,1.0,2022-09-12 05:45:00,nan,,
60,nan," Instellen inbeslagname ""afspannen volledige convertorput"".",0.0,0.0,0.0,2022-09-12 07:00:00,nan,,
61,nan," Afzetten Bischoff + IBN, na uitkippen bekleding convertor.",0.0,0.0,0.0,2022-09-12 06:00:00,nan,,
62,nan, Volledig dichtmaken van de opening kant laadzijde met stellingsmateriaal (gebruik van valgordel).,0.0,0.0,0.0,2022-09-12 11:00:00,nan,,
63,nan, Reinigen vloer 11m (vuil in put) en hangen beplating aan stellingsmateriaal.,0.0,0.0,0.0,2022-09-12 12:45:00,nan,,
64,nan,Installatie klaar voor starten onderhoudswerken op:,0.0,0.0,0.0,2022-09-12 13:15:00,nan,,
67,nan,Monteren gietgat + slakstopper:,7.0,7.0,7.0,2022-09-12 06:00:00,nan,,
68,nan," Convertor eerst draaien naar +90°, vervolgens naar 75° draaien (bek richting HO).",0.0,0.0,0.0,2022-09-12 07:15:00,nan,,
69,nan, Convertor inbeslagnemen op 75° in het onderstation ipv inbeslagnamekast.,0.0,0.0,0.0,2022-09-12 07:35:00,nan,,
70,nan, Vervangen schakelaar van lokale inbeslagnamekast convertor op niveau 11m.,7.0,7.0,7.0,2022-09-12 08:45:00,nan,,
71,nan, Visuele controle (of met camera) uitvoeren op de bladveren vanop 17m.,7.0,7.0,7.0,2022-09-12 08:45:00,nan,,
72,nan, Klaar stellen gereviseerde slakstopper en gietgat kant beremet convertor.,1.0,1.0,1.0,2022-09-12 06:00:00,nan,,
73,nan, Plaatsen passerel op convertor en plaatsen levenslijn.,1.0,1.0,1.0,2022-09-12 09:00:00,nan,,
74,nan, Monteren nieuwe gietgatset.,1.0,1.0,1.0,2022-09-12 09:30:00,nan,,
75,nan, Demonteren van de slakstopper.,2.0,2.0,2.0,2022-09-12 10:00:00,nan,,
76,nan, Doorblazen stuurleidingen slakstopper (flexibels zijn afgekoppeld voor aanpassen trommel).,0.0,0.0,0.0,2022-09-12 11:30:00,nan,,
77,nan," Monteren slakstopper (na controle, slakstopper vergrendelen).",2.0,2.0,2.0,2022-09-12 11:30:00,nan,,
78,nan," Verwijderen van de passerel, levenslijn en stoelen slakstopper en gietgat.",0.0,0.0,0.0,2022-09-12 12:30:00,nan,,
81,nan, Controleren en voorzien van 9 lege vuilbakken op niveau 17m om vuil van aflaten plaat op te vangen.,6.0,6.0,6.0,2022-09-11 23:00:00,nan,,
82,nan, 2 kleine hoogtewerkers op niveau 11m plaatsen via goederenlift indien deze er nog niet staan.,6.0,6.0,6.0,2022-09-11 23:00:00,nan,,
83,nan," De passerels om naar de convertorgordel te gaan, naar niveau 11m brengen.",6.0,6.0,6.0,2022-09-11 23:00:00,nan,,
84,nan, Overgaan van schrootaanvoer schroothal naar schrootaanvoer via poort 208 (deel 1).,7.0,7.0,7.0,2022-09-12 07:15:00,nan,,
85,nan, Uitbranden dekseltjes over bouten kroonstukken (hoogtewerker).,7.0,7.0,7.0,2022-09-12 12:45:00,nan,,
88,nan, Doghouse controleren op vervuiling via 17m.,1.0,1.0,1.0,2022-09-12 06:45:00,nan,,
89,nan, Toptec op niveau 17m plaatsen (indien nodig bij vervuiling).,1.0,1.0,1.0,2022-09-12 07:45:00,nan,,
90,nan, Reinigen van het doghouse vanop niveau 17m met Toptec of via gekeurde mand aan LK147 (indien nodig).,2.0,2.0,2.0,2022-09-12 13:00:00,nan,,
93,nan, Hefvork H60 op niveau 11 meter plaatsen met kraan 103 (hefvork af te halen bij de mekaniekers KG).,2.0,2.0,2.0,2022-09-11 23:00:00,nan,,
95,nan, Opheffen inbeslagname kipbeweging 75° in onderstation.,2.0,2.0,2.0,2022-09-12 13:30:00,nan,,
96,nan, IBN opheffen deuren convertor afgietzijde en open sturen.,0.0,0.0,0.0,2022-09-12 13:30:00,nan,,
97,nan," Instellen inbeslagname kipbeweging convertor op +99,5°.",0.0,0.0,0.0,2022-09-12 14:00:00,nan,,
98,nan, Controle metseltakels op niveau 17m. Takelblok dalen tot in de convertorput (deel 1 zonder werkvloer).,0.0,0.0,0.0,2022-09-12 14:15:00,nan,,
99,nan, Visuele controle (of met camera) uitvoeren op de schakels vanop 17m.,0.0,0.0,0.0,2022-09-12 14:15:00,nan,,
100,nan, Plaatsen beschermtunnel in de convertor (deuren terug sluiten tot tegen de beschermtunnel tegen valgevaar en met persoonlijke IBNkaartje inbeslagnemen).,3.0,3.0,3.0,2022-09-12 14:15:00,nan,,
94,nan, Heftruck H60 koppelen aan tunnel (+ tegengewicht) en deze klaarstellen voor convertordeuren (taak zonder inbeslagnames).,1.0,1.0,1.0,2022-09-12 08:15:00,nan,,
101,nan, Controle gietgatkader op beschadigingen.,0.0,0.0,0.0,2022-09-12 15:45:00,nan,,
102,nan, Aandammen cilinder.,0.0,0.0,0.0,2022-09-12 15:45:00,nan,,
103,nan, Herstellen gietgatkader.,0.0,0.0,0.0,2022-09-12 17:00:00,nan,,
104,nan, Verder aandammen van het nieuwe gietgat.,3.0,3.0,3.0,2022-09-13 02:00:00,nan,,
105,nan, Verwijderen veiligheidstunnel.,1.0,1.0,1.0,2022-09-13 02:45:00,nan,,
106,nan," Opheffen inbeslagname convertor +99,5°.",0.0,0.0,0.0,2022-09-13 03:30:00,nan,,
107,nan," Vrijschieten van de bouten kroonstukken met Toptec kant WW of HO (telegeleid, zonder IBN CV in omslag).",1.0,1.0,1.0,2022-09-13 03:45:00,nan,,
108,nan, Volledig dicht rijden convertordeuren en deze inbeslagnemen.,0.0,0.0,0.0,2022-09-13 03:45:00,nan,,
109,nan," Veiligheidstunnel afzetten, demonteren tegengewicht en hefvork plaatsen aan kolom B9.",1.0,1.0,1.0,2022-09-13 07:30:00,nan,,
110,nan, Hefvork H60 op niveau 0m plaatsen met kraan 103.,1.0,1.0,1.0,2022-09-11 22:00:00,nan,,
113,nan, Instellen inbeslagname convertor op 0°.,0.0,0.0,0.0,2022-09-13 03:30:00,nan,,
114,nan, Leggen werkvloer rond convertor 17m.,1.0,1.0,1.0,2022-09-13 03:45:00,nan,,
115,nan," Inbeslagname ""vloer rond convertor"" instellen.",0.0,0.0,0.0,2022-09-13 05:30:00,nan,,
116,nan, Monteren verlengkabel naar verlichting werkvloer en controleren of de verlichting werkt.,0.0,0.0,0.0,2022-09-13 05:30:00,nan,,
117,nan, Afwerken standaarden voor takels 147 en 152 (deel 2 met werkvloer 17m).,1.0,1.0,1.0,2022-09-13 05:45:00,nan,,
118,nan, Controle takel 147 en 152 vóór demonteren kroonstukken volgens POplan 991006884.,1.0,1.0,1.0,2022-09-13 05:45:00,nan,,
119,nan, Dichten openingen tussen vloer en convertor op niveau 17m (met afspanning convertorput).,2.0,2.0,2.0,2022-09-13 06:00:00,nan,,
120,nan, Instellen inbeslagname op persluchttoevoer fullflow metselen convertor.,0.0,0.0,0.0,2022-09-13 05:45:00,nan,,
121,nan," Uitbranden beschermplaatjes boutgaten kroonstukken en lassen lastogen op de kroonstukken (zonder afspanning convertorput, tijdens uitrijden convertorput).",4.0,4.0,4.0,2022-09-13 07:00:00,nan,,
122,nan, Bouten losschieten (na 20min gedaan) en afnemen kroonstukken met takel 152 (met afspanning convertorput).,4.0,4.0,4.0,2022-09-13 10:30:00,nan,,
123,nan," Reinigen kroon convertor, verwijderen losse aanbering en stenen + controle blijfbekleding (2,5u) (met kooi naar beneden gaan). Na einde werken het bedieningshok kraanman terug verwijderen.",3.0,3.0,3.0,2022-09-13 12:30:00,nan,,
124,nan, Nazicht kroonkoeling en opmeten flens convertor.,0.0,0.0,0.0,2022-09-13 12:30:00,nan,,
125,nan, Nazicht takel  147 en 152 na demonteren kroonstukken volgens POplan 991006885.,1.0,1.0,1.0,2022-09-13 12:30:00,nan,,
126,nan, Plaatsen van 8 lege vuilbakken voor de convertor op niveau 17m.,0.0,0.0,0.0,2022-09-13 15:30:00,nan,,
129,nan,Voorbereidende werken:,1.0,1.0,1.0,2022-09-12 05:15:00,nan,,
130,nan, Overbrengen van de BMW van schroothal naar pannenhal.,2.0,2.0,2.0,2022-09-12 05:15:00,nan,,
131,nan," Controleren aanwezigheid opneem/koppelstukken bodem (3 stuks met schroefdraad, 3 stuks met tapse vorm).",1.0,1.0,1.0,2022-09-12 07:15:00,nan,,
132,nan," Koppelen / opstarten bodemmanipulatorwagen (Vermogen en netwerkkabel inpluggen, controleren automatisch opstarten verwarmingselementen, oliepeil en foutmeldingen kwijten).",1.0,1.0,1.0,2022-09-12 07:15:00,nan,,
133,nan, Testen hydraulische bewegingen na opwarmen olie.,1.0,1.0,1.0,2022-09-12 16:15:00,nan,,
134,nan, Opheffen inbeslagname staalwagen en deze onder de Dfile rijden.,0.0,0.0,0.0,2022-09-13 04:00:00,nan,,
135,nan, De bodemmanipulatorwagen (BMW) elektrisch afkoppelen in pannenhal.,0.0,0.0,0.0,2022-09-13 04:30:00,nan,,
136,nan, De bodemmanipulatorwagen (BMW) op het spoor plaatsen met LK111.,0.0,0.0,0.0,2022-09-13 05:00:00,nan,,
137,nan, De staalwagen mechanisch koppelen aan de bodemmanipulatorwagen + aansluiten vermogen en netwerkkabel.,0.0,0.0,0.0,2022-09-13 05:30:00,nan,,
138,nan," Controle BMW op foutmeldingen, problemen oliepomp.",0.0,0.0,0.0,2022-09-13 14:00:00,nan,,
139,nan,Demonteren convertorbodem:,8.0,8.0,8.0,2022-09-14 01:30:00,nan,,
140,nan, Opheffen inbeslagname staalwagen.,0.0,0.0,0.0,2022-09-14 01:30:00,nan,,
141,nan, De bodemmanipulatorwagen (BMW) onder de convertor rijden (wordt gepositioneerd met lasers).,1.0,1.0,1.0,2022-09-14 01:45:00,nan,,
142,nan, Manipulator positioneren en  hijsen.,1.0,1.0,1.0,2022-09-14 02:00:00,nan,,
143,nan, Demonteren flexibels en spieën.,5.0,5.0,5.0,2022-09-14 02:15:00,nan,,
144,nan, Manipulator met bodem laten zakken.,0.0,0.0,0.0,2022-09-14 04:00:00,nan,,
145,nan, Opheffen inbeslagname staalwagen en wegrijden naar pannenhal (15m).,0.0,0.0,0.0,2022-09-14 04:15:00,nan,,
146,nan, Verwijderen convertorbodem uit de bodemmanipulatorwagen met LK111.,1.0,1.0,1.0,2022-09-14 04:30:00,nan,,
147,nan, Plaatsen van het gemetste bodem op de bodemmanipulatorwagen met LK111.,1.0,1.0,1.0,2022-09-14 05:00:00,nan,,
148,nan,Reinigen bodemgeleiding vanuit een hoogtewerker:,2.0,2.0,2.0,2022-09-14 04:30:00,nan,,
149,nan, Instellen inbeslagname rijbeweging staalwagen in de pannenhal.,0.0,0.0,0.0,2022-09-14 04:30:00,nan,,
150,nan, Reinigen bodemgeleiding met naaldschieters vanuit een hoogtewerker.,1.0,1.0,1.0,2022-09-14 05:00:00,nan,,
151,nan,Monteren convertorbodem (na reinigen kroon convertor):,4.0,4.0,4.0,2022-09-14 05:45:00,nan,,
152,nan, Opheffen inbeslagname rijbeweging staalwagen in de pannenhal.,0.0,0.0,0.0,2022-09-14 05:45:00,nan,,
153,nan, De bodemmanipulatorwagen (BMW) onder de convertor rijden (gepositioneerd met lasers).,0.0,0.0,0.0,2022-09-14 05:50:00,nan,,
154,nan, Manipulator met gemetselde bodem hijsen.,0.0,0.0,0.0,2022-09-14 06:00:00,nan,,
155,nan, Meten speling tussen flens convertor en flens bodem.,0.0,0.0,0.0,2022-09-14 06:15:00,nan,,
156,nan, Bodem koppelen met spieën.,1.0,1.0,1.0,2022-09-14 06:30:00,nan,,
157,nan, Plaatsen inbeslagname op drie spieën convertorbodem.,0.0,0.0,0.0,2022-09-14 07:00:00,nan,,
158,nan," Monteren flexibels tussen convertor en bodem (4u), niet afgewerkt",0.0,0.0,0.0,2022-09-14 06:30:00,nan,,
159,nan," Monteren beschermbakken over de flexibels bodemblazen (1,5u).",0.0,0.0,0.0,2022-09-14 08:45:00,nan,,
160,nan," IBN af hydr,  manipulator laten zakken en wegrijden naar pannenhal.",0.0,0.0,0.0,2022-09-14 08:45:00,nan,,
161,nan, Testen BMW gekoppeld aan staalwagen.,0.0,0.0,0.0,2022-09-14 09:00:00,nan,,
162,nan, Afkoppelen BMW van staalwagen.,0.0,0.0,0.0,2022-09-14 16:00:00,nan,,
163,nan, Verplaatsen bodemmanipulator van spoor naar teststand in pannenhal.,0.0,0.0,0.0,2022-09-14 16:30:00,nan,,
164,nan, Testen bodemmanipulator in pannenhal.,0.0,0.0,0.0,2022-09-15 08:00:00,nan,,
165,nan," Verwijderen bodemmanipulator van spoor, direct afvoeren met platte wagen naar schroothal (niet verschroten aub).",0.0,0.0,0.0,2022-09-15 16:00:00,nan,,
168,nan, Voorbereidingen metselen convertor:,11.0,11.0,11.0,2022-09-14 02:45:00,nan,,
170,nan, Materiaal klaar stellen voor starten metselen van de convertor in de omgeving van de convertor (taak met inbeslagnames).,10.0,10.0,10.0,2022-09-14 11:45:00,nan,,
169,nan, Materiaal klaar stellen voor starten metselen van de convertor buiten de omgeving convertor en plaat onder de vaste schouw (taak zonder inbeslagnames).,1.0,1.0,1.0,2022-09-14 02:45:00,nan,,
171,nan, Reinigen convertorbodem.,1.0,1.0,1.0,2022-09-14 13:45:00,nan,,
172,nan, Start metselen convertor (10uren extra ivm hijsplan):,4.0,4.0,4.0,2022-09-14 14:45:00,nan,,
173,nan, Afwerken bodem (Rang B17 + opvulling onder bodemconus) (sl. 8u).,9.0,9.0,9.0,2022-09-14 14:45:00,nan,,
174,nan, Metselen van de bodemconus (Rang K1K15) (bl. 0u; sl. 26u).,29.0,29.0,29.0,2022-09-14 22:00:00,nan,,
175,nan, Verder metselen van de wand van de convertor tot op rij 52 inclusief gietgat (bl. 10u; sl. 50u).,54.0,54.0,54.0,2022-09-16 02:00:00,nan,,
176,nan, Verwijderen aandrukplaat gietgat dmv vleugelmoer M24.,1.0,1.0,1.0,2022-09-18 08:00:00,nan,,
177,nan, Verder metselen van de blijf en slijtbekleding wand (bl. 8u; sl. 12u).,14.0,14.0,14.0,2022-09-18 08:00:00,nan,,
178,nan, Opruimen rond de convertor op niveau 17m.,2.0,2.0,2.0,2022-09-19 05:00:00,nan,,
179,nan, Aanpassen nr. bekleding convertor op scherm STF + afboeken convertorcampagne GVBO.,0.0,0.0,0.0,2022-09-19 07:00:00,nan,,
180,nan,Convertor volledig gemetseld op:,0.0,0.0,0.0,2022-09-19 07:00:00,nan,,
184,nan, Kroonstukken plaatsen (convertorput afgezet).,1.0,1.0,1.0,2022-09-19 07:00:00,nan,,
183,nan, Samenstellen opneemjuk voor dekselen convertor.,2.0,2.0,2.0,2022-09-19 07:00:00,nan,,
185,nan, Bouten kroonstukken aandraaien met elektrische momentsleutel.,2.0,2.0,2.0,2022-09-19 08:10:00,nan,,
186,nan, Vullen openingen van bouten kroonstukken met dammassa.,1.0,1.0,1.0,2022-09-11 04:00:00,nan,,
187,nan, Afwerken kroonstukken (eventueel zonder IBN afspanning in de put).,6.0,6.0,6.0,2022-09-19 09:30:00,nan,,
188,nan, Guniteren van de kroonstukken.,3.0,3.0,3.0,2022-09-19 18:15:00,nan,,
189,nan, Metselstelling verwijderen uit de convertor.,3.0,3.0,3.0,2022-09-19 21:00:00,nan,,
190,nan, Convertor inwendig opruimen en reinigen.,1.0,1.0,1.0,2022-09-20 00:00:00,nan,,
191,nan, Houten paletten op bodem leggen (30 à 35 stuks).,0.0,0.0,0.0,2022-09-20 01:00:00,nan,,
192,nan,Vuurvast convertor afgewerkt op:,0.0,0.0,0.0,2022-09-20 01:30:00,nan,,
195,nan, Algemeen onderhoud convertor.,18.0,18.0,18.0,2022-09-13 06:00:00,nan,,
196,nan, Controle van de vatgeleiding boven de convertorlagers (toegang via deur labyrintschijf kant beremet).,3.0,3.0,3.0,2022-09-13 06:30:00,nan,,
197,nan, Testen nieuwe afscherming over draaiende delen aandrijving convertor.,4.0,4.0,4.0,2022-09-13 08:00:00,nan,,
198,nan, Instellen inbeslagname afspanning in convertorput voor werken aan convertor,0.0,0.0,0.0,2022-09-14 09:00:00,nan,,
199,nan, Reinigen convertoraandrijving.,4.0,4.0,4.0,2022-09-15 00:00:00,nan,,
200,nan, Werken in gordel:,3.0,3.0,3.0,2022-09-14 14:45:00,nan,,
201,nan, Volledig open rijden van de beide convertordeuren richting beremet + inbeslagnemen.,2.0,2.0,2.0,2022-09-14 14:45:00,nan,,
202,nan, Verwijderen vuil aan convertordeuren op niveau 11m.,0.0,0.0,0.0,2022-09-14 16:15:00,nan,,
203,nan, Plaatsen van 1 passerel naar gordel kant WW.,1.0,1.0,1.0,2022-09-14 17:45:00,nan,,
204,nan, Plaatsen van 1 passerel naar gordel kant HO.,1.0,1.0,1.0,2022-09-14 18:30:00,nan,,
205,nan, Reinigen gordel.,6.0,6.0,6.0,2022-09-15 07:00:00,nan,,
206,nan, Monteren thermokoppels van gietgat via gordel naar doorgang gordel (6u) + slakstopper.,6.0,6.0,6.0,2022-09-15 09:00:00,nan,,
207,nan, Visuele lasnaadcontrole in de gordel.,8.0,8.0,8.0,2022-09-16 14:00:00,nan,,
208,nan," Algemene controle in de gordel, nordlock plaatsen (mag zonder afbakening in de convertorput).",8.0,8.0,8.0,2022-09-18 06:00:00,nan,,
209,nan, Vervangen van flexibels door vaste uitzettingsbuizen voor slakstopper in gordel (24u). Enkel blaasleiding uitgevoerd.,24.0,24.0,24.0,2022-09-17 08:30:00,nan,,
210,nan, Herstellen steun kabeltrommel convertor kant kanaal.,16.0,16.0,16.0,2022-09-15 11:30:00,nan,,
211,nan, Bijplaatsen van 2 compensatoren in verticale leidingen kroonkoeling boven draaikoppeling kant Beremet.,16.0,16.0,16.0,2022-09-16 14:00:00,nan,,
212,nan, Verwijderen van 1 passerel kant HO.,1.0,1.0,1.0,2022-09-16 22:15:00,nan,,
213,nan, Controleren en eventueel herstellen hematietbalk boven de convertordeuren (met hoogtewerker).,6.0,6.0,6.0,2022-09-16 22:15:00,nan,,
214,nan, Herstellen lek in hydraulische leiding aan draaikoppeling convertor kant Beremet.,16.0,16.0,16.0,2022-09-12 06:00:00,nan,,
215,nan, Aftesten stikstofleiding blaasmond slakstopper.,0.0,0.0,0.0,2022-09-19 09:00:00,nan,,
216,nan, Controle van de ophanging slakken en gordelplaten (+ lasnaad bevestiging op kuip).,9.0,9.0,9.0,2022-09-19 10:00:00,nan,,
217,nan, Herstellen kroonkoelleiding in gordel.,0.0,0.0,0.0,2022-09-19 17:00:00,nan,,
218,nan, Monteren positieve isolatieafsluiters in stuurleidingen slakstopper.,16.0,16.0,16.0,2022-09-19 22:00:00,nan,,
219,nan, Verwijderen van de passerel kant WW.,2.0,2.0,2.0,2022-09-19 22:00:00,nan,,
220,nan, Demonteren (afbranden) buis uit gietgat (met hoogtewerker).,0.0,0.0,0.0,2022-09-20 00:00:00,nan,,
221,nan, Dichtrijden beide convertordeuren.,1.0,1.0,1.0,2022-09-20 00:30:00,nan,,
224,nan, Convertordeuren:,2.0,2.0,2.0,2022-09-14 14:45:00,nan,,
225,nan, Volledig open rijden convertordeuren richting beremet.,2.0,2.0,2.0,2022-09-14 14:45:00,nan,,
226,nan, Herstellen beide convertordeuren.,43.0,43.0,43.0,2022-09-15 23:00:00,nan,,
227,nan, Controleren sproeiers persluchtgordijn aan beide convertordeuren.,8.0,8.0,8.0,2022-09-16 14:00:00,nan,,
230,nan," Reinigen schuine beplating onder convertor, hitteschild PM en gekoelde kap PM volgens werkvoorschrift WVS000361979.",5.0,5.0,5.0,2022-09-11 14:00:00,nan,,
231,nan, Afrijden zijkanten put en resterende uit put kant HO.,0.0,0.0,0.0,2022-09-11 20:00:00,nan,,
232,nan, Plaatsen van 2 waterkannonnen aan beide zijden v/d convertor kant pannenhal voor vormen van een watergordijn en vullen convertorput met water (+/ 40cm).,0.0,0.0,0.0,2022-09-11 20:30:00,nan,,
233,nan," Instellen inbeslagname ""afspannen volledige convertorput"" na reinigen convertorput en doghouse.",0.0,0.0,0.0,2022-09-11 21:30:00,nan,,
234,nan, Opheffen inbeslagname afspanning in convertorput om convertorput uit te rijden.,0.0,0.0,0.0,2022-09-12 01:00:00,nan,,
235,nan," Telegeleid de convertorput uitrijden, stenen in slit storten (geen personen in convertorput).",4.0,4.0,4.0,2022-09-12 01:15:00,nan,,
236,nan," Instellen inbeslagname ""afspannen volledige convertorput"" na uitrijden convertorput.",0.0,0.0,0.0,2022-09-12 07:00:00,nan,,
237,nan, Reinigen hitteschilden boven garagestand slakkenwagen.,0.0,0.0,0.0,2022-09-12 14:00:00,nan,,
238,nan, Opheffen inbeslagname afspanning in convertorput om convertorput uit te rijden.,0.0,0.0,0.0,2022-09-13 08:30:00,nan,,
239,nan," Verwijderen stenen in put onder convertor (met convertor op 0°, werkvloer aanwezig).",2.0,2.0,2.0,2022-09-13 08:45:00,nan,,
240,nan, Nogmaals reinigen convertorput en doghouse.,1.0,1.0,1.0,2022-09-13 08:45:00,nan,,
241,nan," Instellen inbeslagname ""afspanning in convertorput ter hoogte van de convertoropening"" (losschieten en afnemen kroonstukken).",0.0,0.0,0.0,2022-09-13 10:15:00,nan,,
242,nan," Opheffen inbeslagname ""afspanning in convertorput ter hoogte van de convertoropening"".",0.0,0.0,0.0,2022-09-14 01:30:00,nan,,
243,nan, Uitwisselen bodem convertor.,18.0,18.0,18.0,2022-09-14 01:45:00,nan,,
244,nan, Nazicht stuuren voedingskabel van de staalwagen en indien nodig preventief vervangen.,0.0,0.0,0.0,2022-09-14 01:45:00,nan,,
245,nan," Instellen inbeslagname ""afspanning in convertorput ter hoogte van de convertoropening"".",0.0,0.0,0.0,2022-09-14 09:00:00,nan,,
246,nan," Opheffen inbeslagname ""afspanning in convertorput ter hoogte van de convertoropening"".",0.0,0.0,0.0,2022-09-14 20:30:00,nan,,
247,nan, Herstellen convertorput:,1.0,1.0,1.0,2022-09-14 23:00:00,nan,,
248,nan, Uitschieten beide zijkanten convertorput.,9.0,9.0,9.0,2022-09-14 23:00:00,nan,,
249,nan, Herstellen schuine beplating en sporen in de convertorput (12u).,0.0,0.0,0.0,2022-09-15 05:30:00,nan,,
250,nan, Reinigen / stofzuigen convertorput (6u).,6.0,6.0,6.0,2022-09-15 06:30:00,nan,,
251,nan, Gieten beton in convertorput (2u).,2.0,2.0,2.0,2022-09-15 12:00:00,nan,,
252,nan, Droogtijd beton van zijkanten convertorput (Put wordt niet afgespannen).,22.0,22.0,22.0,2022-09-15 14:00:00,nan,,
253,nan, Preventief controle lasconstructie watergekoelde kap PM2.,8.0,8.0,8.0,2022-09-15 09:00:00,nan,,
254,nan, Herstellen hitteschilden boven garagestand slakkenwagen (kant Ho put niveau 5m):,8.0,8.0,8.0,2022-09-15 14:00:00,nan,,
255,nan, Koppelen flexibels bodemblazen en monteren beschermbakken onderkant convertor.,8.0,8.0,8.0,2022-09-15 22:00:00,nan,,
256,nan, Opmeten sporen in convertorput.,4.0,4.0,4.0,2022-09-16 02:00:00,nan,,
257,nan, Aanpassen uitstroomopening APTgoot (32u).,2.0,2.0,2.0,2022-09-15 14:00:00,nan,,
258,nan," Bepalen centerpunt onder converter, opzetten kaliber (+ volgens plannen), afbranden van neus goot kant WWA, Afbraak huidige goot kant HOS",8.0,8.0,8.0,2022-09-15 14:00:00,nan,,
259,nan," Afbraak 'oude' goot kant HOS + weg nemen 3 laatste slijtplaten in bestaande goot voor goede connectie, controle en bijsturing landmeter van kaliber (+ rond 9u)",8.0,8.0,8.0,2022-09-16 06:00:00,nan,,
260,nan, Positioneren van goot naar het kaliber + vast lassen flens (goot moet nog eens gedemonteerd worden om alle lassen te kunnen uitvoeren). Plaatsen voetje tegen moederplaten hematietwand.,8.0,8.0,8.0,2022-09-16 14:00:00,nan,,
261,nan," Instellen inbeslagname ""afspanning in convertorput ter hoogte van de convertoropening"".",0.0,0.0,0.0,2022-09-16 22:00:00,nan,,
262,nan," Opheffen inbeslagname ""afspanning in convertorput ter hoogte van de convertoropening"".",0.0,0.0,0.0,2022-09-17 05:45:00,nan,,
263,nan," Aflassen flens op 'oude' goot, monteren van 3 slijtplaten 'oude' goot",8.0,8.0,8.0,2022-09-17 06:00:00,nan,,
264,nan, Controle APTgoot vanuit de put met hoogtewerker.,32.0,32.0,32.0,2022-09-17 06:00:00,nan,,
265,nan, Algemeen onderhoud op de geleidingsrollen voor kabel slakkenwagen (met schaarlift).,4.0,4.0,4.0,2022-09-16 13:00:00,nan,,
266,nan, Guniteren gekoelde kap PM2 + hitteschild.,8.0,8.0,8.0,2022-09-17 14:00:00,nan,,
267,nan," Instellen inbeslagname ""afspanning in convertorput ter hoogte van de convertoropening"" (monteren kroonstukken).",0.0,0.0,0.0,2022-09-17 22:00:00,nan,,
268,nan, Controle en herstellen slagbomen convertorput kant HO.,8.0,8.0,8.0,2022-09-14 06:00:00,nan,,
271,nan, Voorbereidende werken vaste schouw:,6.0,6.0,6.0,2022-09-11 06:00:00,nan,,
272,nan, Afzetten Wagner Biro na beerbranden convertor (dichtsturen automatische afsluiters en opwarming ballon).,0.0,0.0,0.0,2022-09-11 07:15:00,nan,,
273,nan, Druk in ballon aflaten tot max. 6bar door het openen op hand van de automatische veiligheidsklep B&R.,0.0,0.0,0.0,2022-09-11 07:30:00,nan,,
274,nan, Vaste schouw en ballon leeg en drukloos maken volgens werkvoorschrift WVS000060423.,2.0,2.0,2.0,2022-09-11 08:00:00,nan,,
275,nan, Instellen inbeslagnames van deel 1 en 2 van de vaste schouw.,2.0,2.0,2.0,2022-09-11 10:00:00,nan,,
276,nan, Instellen inbeslagname deel 2 van de beweegbare schouw.,1.0,1.0,1.0,2022-09-11 12:00:00,nan,,
277,nan, Stofzuigen omgeving ventilator TLT.,3.0,3.0,3.0,2022-09-11 06:00:00,nan,,
278,nan, Stofzuigen van het noodluik in gesloten stand.,1.0,1.0,1.0,2022-09-11 09:00:00,nan,,
279,nan, Demonteren van alle spieën + dichting (COlek).,1.0,1.0,1.0,2022-09-11 10:00:00,nan,,
280,nan, Reinigen bovenkant broek ter beveiliging reinigen vaste schouw:,22.0,22.0,22.0,2022-09-11 20:00:00,nan,,
281,nan, Plaatsen van inbeslagname op het karrewiel lansengat (geen toegang tot de vaste schouw).,0.0,0.0,0.0,2022-09-11 20:00:00,nan,,
282,nan," Ventilator TLT: Oliekamers leegblazen, stilleggen en inbeslagnemen.",0.0,0.0,0.0,2022-09-12 01:00:00,nan,,
283,nan, Afzetten Bischoff + IBN.,1.0,1.0,1.0,2022-09-12 06:00:00,nan,,
284,nan, Openen van het noodluik.,1.0,1.0,1.0,2022-09-12 06:00:00,nan,,
285,nan, Openen mangat watertas + afdekken opening met plaat.,1.0,1.0,1.0,2022-09-12 07:30:00,nan,,
286,nan, Openen mangat in afvoerbuis grofafscheider voor afvoerkar op niveau 28m.,1.0,1.0,1.0,2022-09-12 08:00:00,nan,,
287,nan, Uitschieten afvoerbuis grofafscheider en monteren afvoergoot (kar) op niveau 28m.,1.0,1.0,1.0,2022-09-12 08:15:00,nan,,
288,nan, Plaatsen inbeslagname op de afvoerkar grofafscheider.,0.0,0.0,0.0,2022-09-12 08:30:00,nan,,
289,nan," Openen mangat, 6 flenzen en monteren 3 buizen in broek op niveau 45m + veiligheidshek monteren op mangat.",1.0,1.0,1.0,2022-09-12 08:45:00,nan,,
290,nan, Verwijderen beren op sproeiers in de broek.,0.0,0.0,0.0,2022-09-12 10:15:00,nan,,
291,nan, Monteren van de plankenvloer in de broek.,1.0,1.0,1.0,2022-09-12 10:30:00,nan,,
292,nan, Plaatsen stelling in broek.,2.0,2.0,2.0,2022-09-12 12:00:00,nan,,
293,nan, Reinigen bovenkant broek vanop de stelling.,2.0,2.0,2.0,2022-09-12 15:45:00,nan,,
294,nan, Reinigen vaste schouw:,14.0,14.0,14.0,2022-09-12 17:45:00,nan,,
295,nan, Opheffen inbeslagname deuren noodschouw.,0.0,0.0,0.0,2022-09-12 17:45:00,nan,,
296,nan, Reinigen van de vaste schouw deel boven de geleidingsrol.,3.0,3.0,3.0,2022-09-12 18:00:00,nan,,
297,nan, Monteren geleidingrol en controleren werking schouwlift voorbij rol.,1.0,1.0,1.0,2022-09-12 22:00:00,nan,,
298,nan, Verder reinigen van de vaste schouw tot beneden + lansengat.,7.0,7.0,7.0,2022-09-12 23:00:00,nan,,
300,nan, Nazicht schouwlift (AIB).,2.0,2.0,2.0,2022-09-13 08:00:00,nan,,
299,nan, Controle reinigingswerken van de vaste schouw + aanduiden gekende lekken in panelen (camerabeelden).,0.0,0.0,0.0,2022-09-13 08:00:00,nan,,
301,nan, Aflaten plaat en controle zanddichting onderkant vaste schouw:,17.0,17.0,17.0,2022-09-13 22:00:00,nan,,
302,nan, Opheffen inbeslagname van de plaat tegen de vaste schouw getrokken.,0.0,0.0,0.0,2022-09-13 22:00:00,nan,,
303,nan, Opheffen inbeslagname van de helmkleppen convertortoeslagen.,0.0,0.0,0.0,2022-09-13 22:00:00,nan,,
304,nan, Aflaten plaat en openen helmkleppen.,0.0,0.0,0.0,2022-09-13 22:30:00,nan,,
305,nan, Plaat op lange kettingen hangen + plaat en toeslaggoten terug inbeslagnemen.,1.0,1.0,1.0,2022-09-13 23:00:00,nan,,
306,nan, Reinigen convertorvloer op niveau 17m na aflaten plaat in vuilbakken.,1.0,1.0,1.0,2022-09-14 00:30:00,nan,,
307,nan, Plaatsen afspanning op de plaat.,0.0,0.0,0.0,2022-09-14 01:30:00,nan,,
308,nan, Reinigen zanddichting onderkant vaste schouw.,1.0,1.0,1.0,2022-09-14 02:00:00,nan,,
309,nan, Herstellen zanddichting onderkant vaste schouw.,9.0,9.0,9.0,2022-09-14 04:30:00,nan,,
310,nan, Opsmeren met beton onderkant zanddichting onderkant vaste schouw.,4.0,4.0,4.0,2022-09-14 07:30:00,nan,,
311,nan, Demonteren afbakening op plaat.,0.0,0.0,0.0,2022-09-14 10:00:00,nan,,
312,nan, Optrekken plaat tegen de vaste schouw en inbeslagnemen.,1.0,1.0,1.0,2022-09-14 10:15:00,nan,,
313,nan, Nazicht beveiliging op plaat onder de vaste schouw.,6.0,6.0,6.0,2022-09-14 12:30:00,nan,,
314,nan," Werken aan, in en op de ballon:",3.0,3.0,3.0,2022-09-11 17:00:00,nan,,
315,nan, Openen van beide mangaten ballon (SLW…mm).,1.0,1.0,1.0,2022-09-11 17:00:00,nan,,
316,nan, Koelen ballon met venturieblazer.,14.0,14.0,14.0,2022-09-11 18:00:00,nan,,
317,nan, Instellen inbeslagname deel 4 van de vaste schouw en ballon: Isolatieafsluiters.,4.0,4.0,4.0,2022-09-12 08:00:00,nan,,
318,nan, Vervangen toevoerleiding opwarming ballon.,22.0,22.0,22.0,2022-09-12 08:00:00,nan,,
319,nan, Inwendige controle van de ballon.,4.0,4.0,4.0,2022-09-15 08:30:00,nan,,
320,nan, Lasnaadcontrole (RX) op lassen nieuwe buis opwarming ballon (15/09).,2.0,2.0,2.0,2022-09-15 12:00:00,nan,,
321,nan, Sluiten ballon.,2.0,2.0,2.0,2022-09-15 14:00:00,nan,,
322,nan, Opheffen inbeslagname deel 4 van de vaste schouw en ballon: Isolatieafsluiters.,2.0,2.0,2.0,2022-09-15 14:00:00,nan,,
324,nan, Andere werken:,7.0,7.0,7.0,2022-09-12 05:30:00,nan,,
325,nan, Vervangen stoomring lansengat.,22.0,22.0,22.0,2022-09-12 14:00:00,nan,,
326,nan, Nazicht collectorbakken op niveau 45m:,4.0,4.0,4.0,2022-09-12 14:00:00,nan,,
327,nan, Stofzuigen collectorbakken op niveau 45m.,8.0,8.0,8.0,2022-09-12 14:00:00,nan,,
328,nan, Controle collectorbakken op niveau 45m.,51.0,51.0,51.0,2022-09-16 06:00:00,nan,,
329,nan, Vervangen collectorbak op broek kant Ho/Be.,51.0,51.0,51.0,2022-09-16 06:00:00,nan,,
330,nan, Herstellen pantser kant HO op niveau 45m:,7.0,7.0,7.0,2022-09-12 05:30:00,nan,,
332,nan, Plaatsen afscherming aan transportband S7 om veilig de stelling te kunnen plaatsen.,0.0,0.0,0.0,2022-09-12 06:00:00,nan,,
331,nan," Instellen inbeslagname op transportband S7, verdeelwagen en muizenval.",2.0,2.0,2.0,2022-09-12 05:30:00,nan,,
333,nan, Plaatsen stelling kant HO vaste schouw op niveau 45m.,4.0,4.0,4.0,2022-09-12 08:00:00,nan,,
334,nan, Openen en verwijderen oud pantser.,12.0,12.0,12.0,2022-09-12 14:00:00,nan,,
335,nan, Verstevigen structuur en plaatsen vuurvaste stenen tss panelen en pantser.,11.0,11.0,11.0,2022-09-14 20:00:00,nan,,
336,nan, Sluiten pantser en deze aflassen.,14.0,14.0,14.0,2022-09-15 14:00:00,nan,,
337,nan, Demonteren stelling kant HO vaste schouw op niveau 45m.,2.0,2.0,2.0,2022-09-19 06:30:00,nan,,
338,nan, Verwijderen tijdelijke afscherming aan transportband S7 en terug alles origineel plaatsen.,2.0,2.0,2.0,2022-09-19 08:00:00,nan,,
339,nan, Plaatsen stelling op lansenplatform naar wand aan quicktap installatie.,2.0,2.0,2.0,2022-09-16 07:00:00,nan,,
340,nan," Vervangen van een veiligheidsklep AX 215 van de beweegbare schouw (laat door, de 2de kant beremet).",4.0,4.0,4.0,2022-09-12 06:00:00,nan,,
341,nan, Herstellen wand aan quicktap installatie.,10.0,10.0,10.0,2022-09-18 14:00:00,nan,,
342,nan, Demonteren stelling op lansenplatform.,2.0,2.0,2.0,2022-09-19 08:45:00,nan,,
344,nan, Controle / afdrukken van de vaste schouw:,5.0,5.0,5.0,2022-09-15 06:00:00,nan,,
345,nan, Algemeen onderhoud in de vaste schouw.,3.0,3.0,3.0,2022-09-15 06:00:00,nan,,
346,nan," Peil ontgasser verlagen volgens werkvoorschrift WVS0000607…. ""afdrukken ballon met koud water"".",1.0,1.0,1.0,2022-09-15 08:00:00,nan,,
347,nan, Instellen IBN beweegbare schouw deel 1.,1.0,1.0,1.0,2022-09-15 08:00:00,nan,,
348,nan, POA 2 inbeslagnemen. Drukproef enkel met POA1 uitvoeren.,0.0,0.0,0.0,2022-09-15 08:00:00,nan,,
349,nan, Dichtsturen B&R op ballon.,0.0,0.0,0.0,2022-09-15 08:00:00,nan,,
350,nan, Drukproef van de vaste schouw met perslucht en herstellen lekken volgens werkvoorschrift WVS000410122:,15.0,15.0,15.0,2022-09-15 17:15:00,nan,,
351,nan, Opheffen inbeslagname deel 2 van de vaste schouw.,1.0,1.0,1.0,2022-09-15 17:15:00,nan,,
352,nan," Afdrukken vaste schouw met perslucht + controle vaste schouw (1 lek in schouw, boven de rol en 3 lekken in de broek).",5.0,5.0,5.0,2022-09-15 19:00:00,nan,,
353,nan, Instellen inbeslagname deel 2 van de vaste schouw.,1.0,1.0,1.0,2022-09-15 23:00:00,nan,,
354,nan, Herstellen lekken na de drukproef met perslucht.,8.0,8.0,8.0,2022-09-15 23:00:00,nan,,
355,nan, Drukproef van de vaste schouw met koud water volgens werkvoorschrift WVS000060745:,19.0,19.0,19.0,2022-09-15 23:00:00,nan,,
356,nan, Opheffen inbeslagname deel 2 van de vaste schouw.,1.0,1.0,1.0,2022-09-15 23:00:00,nan,,
357,nan, Vullen ballon met POA1.,3.0,3.0,3.0,2022-09-15 23:00:00,nan,,
358,nan, Afdrukken ballon en controle uitvoeren op lekken.,2.0,2.0,2.0,2022-09-16 02:00:00,nan,,
359,nan," Geleidingsrol en schouwlift uit de schouw halen, sluiten deuren noodschouw.",0.0,0.0,0.0,2022-09-16 02:00:00,nan,,
360,nan, Plaatsen inbeslagname deel 3 van de vaste schouw.,1.0,1.0,1.0,2022-09-16 04:00:00,nan,,
361,nan, Herstellen lekken na afdrukken van de vaste schouw met water (met gevulde ballon).,8.0,8.0,8.0,2022-09-16 04:45:00,nan,,
362,nan, Opheffen inbeslagname deel 3 van de vaste schouw.,1.0,1.0,1.0,2022-09-16 08:45:00,nan,,
363,nan, Drukproef met AIB ivm nieuwe leiding opwarming ballon (16/09).,1.0,1.0,1.0,2022-09-16 10:00:00,nan,,
364,nan, Nogmaals afdrukken vaste schouw met water en controle uitvoeren op lekken.,2.0,2.0,2.0,2022-09-16 10:00:00,nan,,
365,nan, Plaatsen inbeslagname deel 3 van de vaste schouw.,1.0,1.0,1.0,2022-09-16 11:45:00,nan,,
366,nan, Herstellen lekken na afdrukken van de vaste schouw met water (met gevulde ballon).,8.0,8.0,8.0,2022-09-16 12:30:00,nan,,
367,nan, Opheffen inbeslagname deel 3 van de vaste schouw.,1.0,1.0,1.0,2022-09-16 14:15:00,nan,,
368,nan, Nogmaals afdrukken vaste schouw met water en controle uitvoeren op lekken.,2.0,2.0,2.0,2022-09-16 15:00:00,nan,,
369,nan, Plaatsen inbeslagname deel 2 van de vaste schouw.,1.0,1.0,1.0,2022-09-16 17:00:00,nan,,
370,nan, Instellen inbeslagname op de deuren noodschouw.,0.0,0.0,0.0,2022-09-16 17:00:00,nan,,
371,nan, Monteren beschermring ter hoogte van de stoomring lansengat ter bescherming van de gaatjes.,1.0,1.0,1.0,2022-09-16 23:00:00,nan,,
372,nan, Guniteren van het lansengat (plastiek folie op plaat) + verwijderen en reinigen beschermring uit lansengat,4.0,4.0,4.0,2022-09-17 00:00:00,nan,,
373,nan, Reinigen plaat binnenkant vaste schouw na guniteren lansengat.,2.0,2.0,2.0,2022-09-17 04:00:00,nan,,
374,nan, Reinigen van de ladder na guniteren lansengat.,1.0,1.0,1.0,2022-09-17 06:00:00,nan,,
375,nan, Instellen inbeslagname op het karrewiel lansengat (geen toegang tot de vaste schouw).,0.0,0.0,0.0,2022-09-17 06:00:00,nan,,
376,nan, Demonteren stelling uit de broek.,1.0,1.0,1.0,2022-09-19 06:30:00,nan,,
377,nan, Sluiten noodluik en deze inbeslagnemen in gesloten toestand.,2.0,2.0,2.0,2022-09-19 23:00:00,nan,,
380,nan, Plaatsen buffer op spoor 2107.,0.0,0.0,0.0,2022-09-11 04:00:00,nan,,
381,nan," Plaatsen inbeslagname op ""spoor 2107 met buffer geplaatst"" door de dienst GHV (werkvergunning Parys Michel).",2.0,2.0,2.0,2022-09-11 06:00:00,nan,,
382,nan, Trolley uitbouwen en in garagestand plaatsen met LK 100.,1.0,1.0,1.0,2022-09-12 05:00:00,nan,,
383,nan, Afspannen putten rond de poten trolley met het voorziene layermateriaal.,0.0,0.0,0.0,2022-09-12 06:00:00,nan,,
384,nan, Afdrukflenzen worden NIET geplaatst op de vaste flenzen van de beweegbare schouw met LK100 ( nieuwe dichtingen gebruiken + 1bout monteren).,0.0,0.0,0.0,2022-09-12 06:30:00,nan,,
385,nan," Instellen inbeslagname op schakelschoen in ruwijzerhal (bij voorkeur schakelschoen 19, LK100 en 101 in dienst)  + testen goede werking stootstuk.",0.0,0.0,0.0,2022-09-12 06:30:00,nan,,
386,nan, Reinigen van de beweegbare schouw H en trolley:,7.0,7.0,7.0,2022-09-12 07:00:00,nan,,
387,nan, Reinigen beweegbare schouw via bovenkant.,2.0,2.0,2.0,2022-09-12 07:00:00,nan,,
388,nan, Reinigen van beweegbare schouw met schaarlift.,2.0,2.0,2.0,2022-09-12 09:00:00,nan,,
389,nan, Reinigen wanden doghouse trolley.,1.0,1.0,1.0,2022-09-12 11:00:00,nan,,
390,nan, Verwijderen zware aanbering in bew. schouw dmv. bobcat en verwijderen vuil op grond onder de bew. schouw.,1.0,1.0,1.0,2022-09-12 12:00:00,nan,,
391,nan, Verwijderen stof onder de trolley d.m.v. veegwagen of handmatig vegen.,1.0,1.0,1.0,2022-09-12 13:00:00,nan,,
392,nan, Stofzuigen trolley en zanddichting.,6.0,6.0,6.0,2022-09-13 06:00:00,nan,,
393,nan, Controle hydraulische cilinders beweegbare schouw op lekken.,1.0,1.0,1.0,2022-09-13 14:00:00,nan,,
394,nan, Controle en of herstellen afzuigkap secundaire ontstoffing met schaarliftje.,75.0,75.0,75.0,2022-09-12 22:00:00,nan,,
395,nan, Trolley: Periodieke controle doghouse trolley (rechten wand kant kanaal).,75.0,75.0,75.0,2022-09-12 22:00:00,nan,,
396,nan, Algemeen onderhoud en controle goede werking van de ferrotron (wiel + spoorveger).,4.0,4.0,4.0,2022-09-12 06:00:00,nan,,
397,nan, Afdrukken en herstellen beweegbare schouw H:,4.0,4.0,4.0,2022-09-12 14:00:00,nan,,
398,nan, Opheffen inbeslagname deel 2 (beide collectoren leeg) van de beweegbare schouw.,0.0,0.0,0.0,2022-09-12 14:00:00,nan,,
399,nan, Opheffen inbeslagname deel 2 van toeslaggoten en stelring.,0.0,0.0,0.0,2022-09-12 14:00:00,nan,,
400,nan, Plaatsen stelling in de beweegbare schouw (4u).,0.0,0.0,0.0,2022-09-12 14:00:00,nan,,
401,nan, Zandstralen van de beweegbare shouw + verwijderen straalzand (6u).,0.0,0.0,0.0,2022-09-12 14:00:00,nan,,
402,nan," Vastzetten flenzen op trolley van beweegbare schouw, stelring en toeslaggoten (2u).",0.0,0.0,0.0,2022-09-14 08:45:00,nan,,
403,nan, Controle/afdrukken/herstellen beweegbare schouw na zandstralen beweegbare schouw (8u).,0.0,0.0,0.0,2022-09-14 08:45:00,nan,,
404,nan, Bouten losschieten van de afdrukflenzen beweegbare schouw (1 bout laten zitten) (2u).,0.0,0.0,0.0,2022-09-14 08:45:00,nan,,
405,nan, Diktemetingen uitvoeren op de beweegbare schouw (4u).,0.0,0.0,0.0,2022-09-14 08:45:00,nan,,
406,nan, Opheffen Inbeslagname stootstuk.,0.0,0.0,0.0,2022-09-14 08:45:00,nan,,
407,nan, Afnemen afdrukflenzen van de beweegbare schouw met LK100.,0.0,0.0,0.0,2022-09-14 08:45:00,nan,,
408,nan, Demonteren stelling uit de beweegbare schouw (2u).,0.0,0.0,0.0,2022-09-14 08:45:00,nan,,
409,nan, Vervangen beweegbare schouw H door schouw F:,3.0,3.0,3.0,2022-09-12 13:00:00,nan,,
410,nan, Opheffen inbeslagname deel 2 (beide collectoren leeg) van de beweegbare schouw.,0.0,0.0,0.0,2022-09-13 22:00:00,nan,,
411,nan, Opheffen inbeslagname deel 2 van toeslaggoten en stelring.,0.0,0.0,0.0,2022-09-13 22:00:00,nan,,
412,nan, Loskoppelen flexibels toeslaggoten.,4.0,4.0,4.0,2022-09-12 13:00:00,nan,,
413,nan, Loskoppelen ophanging en toevoerbuizen stelring en de stelring laten zakken op de steunen.,8.0,8.0,8.0,2022-09-12 13:00:00,nan,,
414,nan, Loskoppelen zanddichting tss beweegbare schouw en trolley.,4.0,4.0,4.0,2022-09-13 07:00:00,nan,,
415,nan, Uitnemen beweegbare schouw met LK100.,2.0,2.0,2.0,2022-09-15 17:00:00,nan,,
416,nan, Plaatsen beweegbare schouw F in trolley met LK100.,2.0,2.0,2.0,2022-09-16 12:00:00,nan,,
417,nan," Instellen inbeslagname op schakelschoen in ruwijzerhal (bij voorkeur schakelschoen 19, LK100 en 101 in dienst)  + testen goede werking stootstuk.",0.0,0.0,0.0,2022-09-16 14:00:00,nan,,
418,nan, Monteren stelring.,8.0,8.0,8.0,2022-09-16 15:15:00,nan,,
419,nan, Monteren flexibels toeslaggoten.,4.0,4.0,4.0,2022-09-16 15:15:00,nan,,
420,nan, Monteren zanddichting tss beweegbare schouw en trolley.,4.0,4.0,4.0,2022-09-19 06:00:00,nan,,
421,nan, Uitlijnen stelring tov de beweegbare schouw.,8.0,8.0,8.0,2022-09-19 12:00:00,nan,,
422,nan, Afdrukken en herstellen van de stelring + demonteren afdrukflenzen.,4.0,4.0,4.0,2022-09-12 06:00:00,nan,,
423,nan," Instellen van 3 inbeslagnames ""deel 2, leeglaten"" op beweegbare schouw, stelring en toeslaggoten.",0.0,0.0,0.0,2022-09-14 17:00:00,nan,,
424,nan," Opheffen inbeslagnames ""stelring in hoogste stand"" + hydrauliek.",0.0,0.0,0.0,2022-09-19 06:00:00,nan,,
425,nan, Testen hydraulische bewegingen van stelring en beweegbare schouw.,3.0,3.0,3.0,2022-09-19 06:30:00,nan,,
426,nan," Instellen inbeslagname ""stelring in hoogste stand"".",0.0,0.0,0.0,2022-09-19 14:00:00,nan,,
427,nan, Opruimen materiaal en vuil op trolley.,2.0,2.0,2.0,2022-09-19 14:30:00,nan,,
428,nan, Trolley B klaar stellen voor inbouwen:,2.0,2.0,2.0,2022-09-19 14:30:00,nan,,
429,nan, Controle staat en bevestigingen (klemmen) roosters op trolley.,1.0,1.0,1.0,2022-09-19 14:30:00,nan,,
430,nan, Reinigen van de flenzen en bouten flenzen.,2.0,2.0,2.0,2022-09-19 14:30:00,nan,,
431,nan, Ferrotron in garagestand plaatsen (kant be).,0.0,0.0,0.0,2022-09-19 14:30:00,nan,,
432,nan, Beweegbare schouw in onderste stand.,0.0,0.0,0.0,2022-09-19 14:45:00,nan,,
433,nan, Toegangspasserel naar trolley ingeschoven.,0.0,0.0,0.0,2022-09-19 15:00:00,nan,,
434,nan, Alle flexibels en kabels afgekoppeld.,0.0,0.0,0.0,2022-09-19 15:15:00,nan,,
435,nan, Reinigen van de flenzen en dekselen flenzen.,1.0,1.0,1.0,2022-09-19 15:30:00,nan,,
436,nan, Vullen zandichtingen met dammassa (geen water gebruiken) + extra 10 zakjes op trolley.,2.0,2.0,2.0,2022-09-19 15:30:00,nan,,
437,nan, Opheffen Inbeslagname stootstuk.,0.0,0.0,0.0,2022-09-19 17:30:00,nan,,
438,nan,Trolley klaar voor inbouwen op:,0.0,0.0,0.0,2022-09-19 18:00:00,nan,,
439,nan," Opheffen inbeslagname op ""spoor 2107 met buffer geplaatst"" door de dienst GHV (werkvergunning Parys Michel).",0.0,0.0,0.0,2022-09-19 17:30:00,nan,,
442,nan,Bischoffinstallatie:,8.0,8.0,8.0,2022-09-11 14:00:00,nan,,
443,nan, Openen mangaten volgens lijst.,20.0,20.0,20.0,2022-09-12 06:45:00,nan,,
444,nan, Plaatsen 3 debietsmeters op spoeling schuifafsluiters watersloten.,1.0,1.0,1.0,2022-09-12 08:00:00,nan,,
445,nan, Plaatsen extra afsluiters op kanaalwatertoevoer naar venturies.,8.0,8.0,8.0,2022-09-12 09:15:00,nan,,
446,nan, Vervangen bischoffafsluiter B0221.,4.0,4.0,4.0,2022-09-17 06:00:00,nan,,
447,nan, Broek:,7.0,7.0,7.0,2022-09-12 06:00:00,nan,,
448,nan, Plaatsen van inbeslagname op het karrewiel lansengat (geen toegang tot de vaste schouw) + deuren noodschouw.,1.0,1.0,1.0,2022-09-12 06:00:00,nan,,
449,nan, Openen mangat 2/409 watertas en afdekken opening met plaat + openen mangat 2/347 afvoerkar .,2.0,2.0,2.0,2022-09-12 07:30:00,nan,,
450,nan, Uitschieten afvoerbuis grofafscheider en monteren afvoerkar op niveau 28m.,1.0,1.0,1.0,2022-09-12 08:15:00,nan,,
451,nan, Plaatsen inbeslagname op de afvoerkar grofafscheider.,0.0,0.0,0.0,2022-09-12 08:30:00,nan,,
452,nan," Openen mangat, 6 flenzen en monteren 3 buizen in broek op niveau 45m.",1.0,1.0,1.0,2022-09-12 08:45:00,nan,,
453,nan, Verwijderen beren op sproeiers in de broek.,0.0,0.0,0.0,2022-09-12 10:15:00,nan,,
454,nan, Monteren van de plankenvloer in de broek.,1.0,1.0,1.0,2022-09-12 10:30:00,nan,,
455,nan, Plaatsen stelling in broek.,2.0,2.0,2.0,2022-09-12 12:00:00,nan,,
456,nan, Reinigen bovenkant broek vanop de stelling.,2.0,2.0,2.0,2022-09-12 15:45:00,nan,,
457,nan," Reinigen broek (+ aanladingen onder de vloer), na reinigen vaste schouw.",8.0,8.0,8.0,2022-09-13 14:00:00,nan,,
458,nan, Controle hoofdsproeier en 2de sproeier.,6.0,6.0,6.0,2022-09-15 06:00:00,nan,,
459,nan, Herstellen broekkoeling.,10.0,10.0,10.0,2022-09-16 17:00:00,nan,,
460,nan, Demonteren stelling in de broek op niveau 45m.,1.0,1.0,1.0,2022-09-12 06:30:00,nan,,
461,nan, Demonteren plankenvloer uit broek en sluiten mangat en flenzen.,1.0,1.0,1.0,2022-09-12 14:00:00,nan,,
463,nan, Grofafscheider en banaan:,1.0,1.0,1.0,2022-09-15 06:45:00,nan,,
464,nan, Vervangen 2 dubbele sproeiers uit de grofafscheider.,8.0,8.0,8.0,2022-09-15 06:45:00,nan,,
465,nan, Reinigen van de volledige overloop grofafscheider (loopt naar TT).,6.0,6.0,6.0,2022-09-15 19:00:00,nan,,
466,nan, Vervangen mangat op overloop grofafscheider op niveau 32m.,0.0,0.0,0.0,2022-09-16 09:00:00,nan,,
468,nan, Horizontale buizen niveau 42m:,4.0,4.0,4.0,2022-09-12 10:00:00,nan,,
469,nan, Reinigen horizontale buizen tss banaan en venturies op niveau 42m.,8.0,8.0,8.0,2022-09-12 10:00:00,nan,,
470,nan, Vervangen van een compensator in horizontale buis 42m.,1.0,1.0,1.0,2022-09-12 22:00:00,nan,,
471,nan, Vervangen flexibel naar sproeier op horizontale buis 2B op niveau 42m.,2.0,2.0,2.0,2022-09-16 06:00:00,nan,,
472,nan, Sluiten beide mangaten op de horizontale buizen 42m.,2.0,2.0,2.0,2022-09-17 06:00:00,nan,,
474,nan, Venturies 2A en 2B:,4.0,4.0,4.0,2022-09-11 14:00:00,nan,,
475,nan, Venturieklokken inbeslagnemen in laagste stand.,1.0,1.0,1.0,2022-09-11 14:00:00,nan,,
476,nan, Reinigen bovenkant venturies.,7.0,7.0,7.0,2022-09-13 06:00:00,nan,,
477,nan, Venturieklokken inbeslagnemen in hoogste stand.,1.0,1.0,1.0,2022-09-14 13:30:00,nan,,
478,nan, Reinigen as boven klok.,1.0,1.0,1.0,2022-09-14 14:15:00,nan,,
479,nan, Monteren plankenvloeren onder venturieklokken.,2.0,2.0,2.0,2022-09-14 15:15:00,nan,,
480,nan, Verder reinigen van de venturies vanop de plankenvloer.,4.0,4.0,4.0,2022-09-15 06:30:00,nan,,
481,nan, Reinigen onderkant venturies 2A en 2B.,8.0,8.0,8.0,2022-09-15 10:30:00,nan,,
482,nan, Controleren en eventueel vervangen sproeiers en afsluiters van de venturies.,8.0,8.0,8.0,2022-09-16 06:00:00,nan,,
483,nan, Controle asgeleidingen klokken.,1.0,1.0,1.0,2022-09-16 14:00:00,nan,,
484,nan, Demonteren plankenvloeren onder venturieklokken en sluiten mangaten.,1.0,1.0,1.0,2022-09-16 15:00:00,nan,,
486,nan, Horizontale buizen met voorafscheiders op niveau 32m:,1.0,1.0,1.0,2022-09-14 10:45:00,nan,,
487,nan, Reinigen horizontale buizen + voorafscheiders + onderkant cyclonen op niveau 32m.,14.0,14.0,14.0,2022-09-14 10:45:00,nan,,
488,nan,  Sluiten beide mangaten op horizontale buizen 32m.,1.0,1.0,1.0,2022-09-17 08:00:00,nan,,
490,nan, Cyclonen 2A en 2B:,2.0,2.0,2.0,2022-09-15 08:00:00,nan,,
491,nan, Wegnemen roosters in cyclonen 2A en 2B + reinigen roosters.,6.0,6.0,6.0,2022-09-15 18:30:00,nan,,
492,nan, Reinigen beide afvoerbuizen van cyclonen naar watersloten.,2.0,2.0,2.0,2022-09-16 08:30:00,nan,,
493,nan, Vervangen afvoerbuis van cycloon 2B naar waterslot 2B. Nog te verven.,16.0,16.0,16.0,2022-09-15 08:00:00,nan,,
494,nan, Reinigen overlopen van cyclonen naar de watersloten.,2.0,2.0,2.0,2022-09-16 16:00:00,nan,,
495,nan, Terugleggen roosters na reinigen cyclonen.,4.0,4.0,4.0,2022-09-16 16:00:00,nan,,
497,nan," Watertas, watersloten en Tauchtoph:",4.0,4.0,4.0,2022-09-15 11:00:00,nan,,
498,nan,Reinigingswerken:,1.0,1.0,1.0,2022-09-15 11:00:00,nan,,
499,nan, Reinigen taughtopf en afvoer.,4.0,4.0,4.0,2022-09-15 11:00:00,nan,,
500,nan, Reinigen overloop taughtopf.,4.0,4.0,4.0,2022-09-15 13:00:00,nan,,
501,nan, Reinigen watertas.,6.0,6.0,6.0,2022-09-16 13:00:00,nan,,
502,nan, Reinigen waterslot 2A en 2B en afvoer.,2.0,2.0,2.0,2022-09-16 20:00:00,nan,,
503,nan, Reinigen afvoer en bocht watertas.,4.0,4.0,4.0,2022-09-16 16:00:00,nan,,
504,nan,Nazicht afsluiters:,1.0,1.0,1.0,2022-09-19 06:00:00,nan,,
505,nan, Nazicht afsluiter Tauchtoph.,4.0,4.0,4.0,2022-09-19 06:00:00,nan,,
506,nan, Nazicht afsluiters watersloten.,4.0,4.0,4.0,2022-09-19 06:00:00,nan,,
507,nan, Nazicht afsluiter watertas.,4.0,4.0,4.0,2022-09-19 06:00:00,nan,,
508,nan, Opheffen inbeslagname afvoerkar en demonteren kar uit afvoerbuis grofafscheider (broek dicht).,0.0,0.0,0.0,2022-09-19 19:00:00,nan,,
509,nan, Herstellen onderkant mangat afvoerkar op afvoer grofafscheider.,8.0,8.0,8.0,2022-09-19 19:30:00,nan,,
510,nan, Sluiten mangaten watertas en afvoerbuis grofafscheider.,1.0,1.0,1.0,2022-09-19 19:30:00,nan,,
512,nan, Tussengoot en bischoffgoot B:,7.0,7.0,7.0,2022-09-12 08:00:00,nan,,
513,nan, Reinigen bovenkant bischoffgoot B (voorbereidingen inwendig reinigen bischoffgoot B).,8.0,8.0,8.0,2022-09-12 08:00:00,nan,,
514,nan, Plaatsen inbeslagname op de bischoffgoot na uitspuiten waterterugslagklep GR.,4.0,4.0,4.0,2022-09-12 17:00:00,nan,,
515,nan, Reinigen bischoffgoot B (geen toezichter of buitenwacht nodig).,80.0,80.0,80.0,2022-09-14 06:00:00,nan,,
516,nan, Aansluiten stofafvoer SAIB op bischoffgot B.,12.0,12.0,12.0,2022-09-18 06:00:00,nan,,
517,nan, Reinigen tussengoot installatie 2.,7.0,7.0,7.0,2022-09-19 08:00:00,nan,,
518,nan, Controle uitvoeren op de gereinigde installatie en bischoffgoot.,1.0,1.0,1.0,2022-09-17 06:00:00,nan,,
519,nan, Nogmaals reininigen tussengoot.,0.0,0.0,0.0,2022-09-20 06:00:00,nan,,
520,nan, Sluiten tussengoot.,0.0,0.0,0.0,2022-09-20 08:15:00,nan,,
521,nan, Sluiten mangaten op niveau 25m.,0.0,0.0,0.0,2022-09-20 10:15:00,nan,,
524,nan, Onderhoud  ventilator TLT.,4.0,4.0,4.0,2022-09-12 06:00:00,nan,,
525,nan, Demonteren kappen van de ventilator TLT en plaatsen spiegelpaleis.,10.0,10.0,10.0,2022-09-12 06:00:00,nan,,
526,nan, Zandstralen van het schoepenwiel.,6.0,6.0,6.0,2022-09-12 16:00:00,nan,,
527,nan, Algemeen onderhoud ontstoffingsventilator + vervangen draaikoppeling aut. uitbalanceren.,12.0,12.0,12.0,2022-09-13 06:00:00,nan,,
528,nan, Controle scheuren in het schoepenwiel (scheuren gezien).,2.0,2.0,2.0,2022-09-13 06:00:00,nan,,
529,nan, Herstellen scheuren in schoepenwiel.,0.0,0.0,0.0,2022-09-13 14:30:00,nan,,
530,nan, Schilderen 1ste laag op schoepenwiel.,2.0,2.0,2.0,2022-09-14 16:00:00,nan,,
531,nan, Stofzuigen slakkenhuis en omgeving ventilator.,2.0,2.0,2.0,2022-09-15 06:30:00,nan,,
532,nan, Schilderen 2de laag op schoepenwiel.,2.0,2.0,2.0,2022-09-15 16:00:00,nan,,
533,nan, Verlengen afblaasleiding stikstof automatisch uitbalanceren door wand.,8.0,8.0,8.0,2022-09-15 08:00:00,nan,,
534,nan, Terugplaatsen kappen ventilator TLT.,10.0,10.0,10.0,2022-09-18 06:00:00,nan,,
536,nan, Onderhoud op de isolatiekleppen en afvoerafsluiters GR:,1.0,1.0,1.0,2022-09-12 06:00:00,nan,,
537,nan, Openen 4 mangaten en flenzen op de aanzuigen ventilator TLT.,1.0,1.0,1.0,2022-09-12 06:00:00,nan,,
538,nan, Monteren van de aluminium vloertjes in de aanzuigen ventilator TLT.,1.0,1.0,1.0,2022-09-13 06:00:00,nan,,
539,nan, Reinigen isolatiekleppen en aanslagen in beide aanzuigen ventilator met naaldschieter.,4.0,4.0,4.0,2022-09-13 07:30:00,nan,,
540,nan, Vervangen van de 4 ronde flenzen naar ovale flenzen op de aanzuigen nivea 42m (nieuwe isolatevloertjes uitbalanceren ventilatoren).,0.0,0.0,0.0,2022-09-13 11:30:00,nan,,
541,nan, Monteren isolatievloertjes volgens uitvoeringsblad IBN in aanzuig net onder ventilator.,0.0,0.0,0.0,2022-09-13 11:30:00,nan,,
542,nan, Kop van afsluiters in afvoeren gasrecuperatie demonteren en inwendig reinigen.,8.0,8.0,8.0,2022-09-13 06:00:00,nan,,
543,nan, Verwijderen beide isolatiekleppen uit aanzuigen ventilator TLT.,0.0,0.0,0.0,2022-09-13 11:30:00,nan,,
544,nan, Demonteren aluminium vloertjes uit aanzuig ventilator TLT net boven de bovenkant cyclonen.,1.0,1.0,1.0,2022-09-15 10:00:00,nan,,
545,nan, Sluiten van de flenzen na demonteren vloertjes (mangaten niet).,1.0,1.0,1.0,2022-09-17 06:00:00,nan,,
547,nan, Persleiding boven splitplaat en geluidsdemper:,8.0,8.0,8.0,2022-09-12 06:00:00,nan,,
548,nan, Openen mangat 53/2 aan splitplaat niveau 50m.,1.0,1.0,1.0,2022-09-12 06:00:00,nan,,
549,nan, Controle uitvoeren splitplaat en afvoeren.,1.0,1.0,1.0,2022-09-12 08:00:00,nan,,
550,nan, Controleren stoominjectie in pers TLT (demonteren).,4.0,4.0,4.0,2022-09-12 09:00:00,nan,,
551,nan, Plaatsen steiger naast geluidsdemper kant kan op niveau 56m.,8.0,8.0,8.0,2022-09-13 06:00:00,nan,,
552,nan, Herstellen plaatwerk buitenkant geluidsdemper kant kanaal.,88.0,88.0,88.0,2022-09-16 06:00:00,nan,,
553,nan, Bijplaatsen steiger aan geluidsdemper kant ber.,0.0,0.0,0.0,2022-09-16 06:00:00,nan,,
554,nan, Herstellen plaatwerk buitenkant geluidsdemper kant ber.,0.0,0.0,0.0,2022-09-16 14:00:00,nan,,
555,nan, Sluiten mangat 53/2 aan splitplaat niveau 50m.,1.0,1.0,1.0,2022-09-19 15:00:00,nan,,
556,nan, Demonteren steiger aan geluidsdemper.,4.0,4.0,4.0,2022-09-20 14:00:00,nan,,
558,nan, Uitbalanceren ventilator TLT:,3.0,3.0,3.0,2022-09-17 07:00:00,nan,,
559,nan, Plaatsen inbeslagname op de isolatiekleppen in aanzuig ventilator TLT in gesloten stand.,1.0,1.0,1.0,2022-09-17 07:00:00,nan,,
560,nan, Instellen inbeslagname driewegklep richting fakkel.,1.0,1.0,1.0,2022-09-20 09:00:00,nan,,
561,nan, Opheffen inbeslagname ventilator TLT.,0.0,0.0,0.0,2022-09-20 10:00:00,nan,,
562,nan, Ongepland vervangen Elleta,0.0,0.0,0.0,2022-09-20 11:15:00,nan,,
563,nan, Testen starten ventilator TLT.,0.0,0.0,0.0,2022-09-20 12:15:00,nan,,
564,nan, Uitbalanceren ventilator TLT.,3.0,3.0,3.0,2022-09-20 12:15:00,nan,,
565,nan, Instellen inbeslagname (elektrische) op de ventilator TLT.,0.0,0.0,0.0,2022-09-20 13:45:00,nan,,
566,nan, Opheffen inbeslagname van isolatiekleppen in aanzuig ventilator TLT (controle kleppen in open stand).,2.0,2.0,2.0,2022-09-20 14:15:00,nan,,
569,nan, Herstellen kleppen aanzuig 2B van secundaire ontstoffing op niveau 17m. Niet volledig gedaan.,16.0,16.0,16.0,2022-09-16 06:00:00,nan,,
572,nan, Pantoeslagen APT:,8.0,8.0,8.0,2022-09-11 11:00:00,nan,,
573,nan,Dag en weegbunkers niveau 17m:,2.0,2.0,2.0,2022-09-11 11:00:00,nan,,
574,nan, Alle weegbunkers APT pantoeslagen leegmaken met S32 naar vuibakken op niveau 0m.,3.0,3.0,3.0,2022-09-11 11:00:00,nan,,
575,nan, Algemeen onderhoud op de dag en weegbunkers en trillers APT niveau 17m.,4.0,4.0,4.0,2022-09-16 06:00:00,nan,,
576,nan, Kalibratie van de weegbunkers 32.01 t.e.m. 32.10 pantoeslagen APT niveau 17m.,8.0,8.0,8.0,2022-09-19 08:00:00,nan,,
577,nan,Transportbanden:,8.0,8.0,8.0,2022-09-11 12:15:00,nan,,
578,nan,Transportband S22 op niveau 28m:,4.0,4.0,4.0,2022-09-16 06:00:00,nan,,
579,nan, Algemeen onderhoud op transportband S22.,4.0,4.0,4.0,2022-09-16 06:00:00,nan,,
580,nan,Transportband S32 op niveau 17m:,2.0,2.0,2.0,2022-09-11 12:15:00,nan,,
581,nan, Beschermkap van S32 wegnemen en transportband achteruit rijden in garagestand.,1.0,1.0,1.0,2022-09-11 12:15:00,nan,,
582,nan, Reinigen omgeving rond transportband S32 en bunkers op niveau 17m.,4.0,4.0,4.0,2022-09-11 14:30:00,nan,,
583,nan, Stofzuigen omgeving weegbunkers APT uitwendig op niveau 17m.,8.0,8.0,8.0,2022-09-15 08:45:00,nan,,
584,nan, Algemeen onderhoud op transportband S32 + vervangen olie.,4.0,4.0,4.0,2022-09-16 08:45:00,nan,,
585,nan, Uit te voeren werken aan APTinstallatie.,0.0,0.0,0.0,2022-09-20 08:00:00,nan,,
586,nan, Terugplaatsen transportband S32.,0.0,0.0,0.0,2022-09-20 16:00:00,nan,,
587,nan,Verdraaibare toeslaggoot APT op niveau 11m:,18.0,18.0,18.0,2022-09-12 11:30:00,nan,,
588,nan, Controle en eventueel vervangen trechter op niveau 17m van de draaibare toeslaggoot.,1.0,1.0,1.0,2022-09-12 11:30:00,nan,,
589,nan, Controle en eventueel herstellen van de verdraaibare toeslaggoot op niveau 11m.,7.0,7.0,7.0,2022-09-12 14:00:00,nan,,
590,nan, Smeren beweegbare APTgoot en draaikrans.,1.0,1.0,1.0,2022-09-13 06:00:00,nan,,
591,nan,Vaste APTgoot:,5.0,5.0,5.0,2022-09-12 12:30:00,nan,,
592,nan, Plaatsen 2 scheidingsplaten tussen vaste APTgoot niveau 11m en goot in doghouse (convertorput afgespannen).,1.0,1.0,1.0,2022-09-12 12:30:00,nan,,
593,nan, Instellen inbeslagname van scheidingsplaten in de APTgoot.,0.0,0.0,0.0,2022-09-12 13:30:00,nan,,
594,nan, Controle en eventueel herstellen vaste APTgoot op niveau 11m.,2.0,2.0,2.0,2022-09-12 14:00:00,nan,,
595,nan, Controle en eventueel herstellen vaste APTgoot in doghouse vanuit de convertorput.,4.0,4.0,4.0,2022-09-18 06:00:00,nan,,
596,nan, Opheffen inbeslagname op de scheidingsplaat in de vaste APTgoot.,0.0,0.0,0.0,2022-09-19 16:00:00,nan,,
597,nan, Vaste APTgoot: Verwijderen van 2 scheidingsplaten tussen goot niveau 11m en goot in doghouse en sluiten mangaten.,1.0,1.0,1.0,2022-09-19 16:30:00,nan,,
599,nan, Convertortoeslagen AKT:,8.0,8.0,8.0,2022-09-11 04:00:00,nan,,
600,nan, Dagbunkers:,1.0,1.0,1.0,2022-09-11 04:00:00,nan,,
601,nan, Dagbunker 1 convertortoeslagen leegmaken.,3.0,3.0,3.0,2022-09-11 04:00:00,nan,,
602,nan, Reviseren of vervangen afsluitschuif boven klep onderkant dagbunker 1.,9.0,9.0,9.0,2022-09-16 06:00:00,nan,,
603,nan, Trilschuiven en kleppen:,9.0,9.0,9.0,2022-09-16 06:30:00,nan,,
604,nan, Algemeen onderhoud op de kleppen dagbunkers convertortoeslagen niveau 32m.,4.0,4.0,4.0,2022-09-16 06:30:00,nan,,
605,nan, Algemeen onderhoud op de trilschuiven convertortoeslagen niveau 28m.,4.0,4.0,4.0,2022-09-16 08:00:00,nan,,
606,nan, Uitvoeren van trillingsmetingen op de trilschuiven.,1.0,1.0,1.0,2022-09-20 06:00:00,nan,,
607,nan, Verzamelbunkers:,7.0,7.0,7.0,2022-09-13 06:00:00,nan,,
608,nan, Stofzuigen verzamelbunkers AKT inwendig.,8.0,8.0,8.0,2022-09-13 06:00:00,nan,,
609,nan," Preventief nazicht convertortoeslagen AKT, controle/vervangen slijtplaten verzamelbunkers.",8.0,8.0,8.0,2022-09-17 06:00:00,nan,,
610,nan, Helmkleppen:,4.0,4.0,4.0,2022-09-12 06:00:00,nan,,
611,nan, Helmklep kant beremet (extra controle):,4.0,4.0,4.0,2022-09-12 06:00:00,nan,,
612,nan, Demonteren cilinder helmklep kant beremet.,2.0,2.0,2.0,2022-09-19 07:15:00,nan,,
613,nan, Open leggen klep en controleren toestand klep kant beremet.,2.0,2.0,2.0,2022-09-19 09:15:00,nan,,
614,nan, Helmklep kant beremet sluiten en monteren nieuwe cilinder.,2.0,2.0,2.0,2022-09-12 06:00:00,nan,,
615,nan, Helmklep kant kanaal:,4.0,4.0,4.0,2022-09-19 11:15:00,nan,,
616,nan, Demonteren cilinder helmklep kant kanaal.,1.0,1.0,1.0,2022-09-19 11:15:00,nan,,
617,nan, Open leggen klep en controleren toestand klep kant kanaal.,1.0,1.0,1.0,2022-09-19 12:15:00,nan,,
618,nan, Helmklep kant kanaal sluiten en monteren nieuwe cilinder.,2.0,2.0,2.0,2022-09-19 13:15:00,nan,,
621,nan, Stofzuigen lansenwagen en omgeving.,8.0,8.0,8.0,2022-09-12 06:00:00,nan,,
622,nan, Demonteren lans kant kanaal.,0.0,0.0,0.0,2022-09-12 22:00:00,nan,,
623,nan, Preventief nazicht lansenwagen.,8.0,8.0,8.0,2022-09-16 09:00:00,nan,,
624,nan, Monteren lans,0.0,0.0,0.0,2022-09-15 18:00:00,nan,,
625,nan, Preventief nazicht merobels zuurstofcabine.,9.0,9.0,9.0,2022-09-16 06:00:00,nan,,
626,nan, Nazicht handafsluiters koelwater lansen.,4.0,4.0,4.0,2022-09-16 06:00:00,nan,,
627,nan, Uitvoeren van een oliewissel van lans 2.,8.0,8.0,8.0,2022-09-16 10:00:00,nan,,
630,nan, Preventief onderhoud op watergekoelde kap PM2.,3.0,3.0,3.0,2022-09-15 08:00:00,nan,,
631,nan, Preventief controle lasconstructie watergekoelde kap PM2.,4.0,4.0,4.0,2022-09-15 09:00:00,nan,,
632,nan, Guniteren van de gekoelde kap PM2.,2.0,2.0,2.0,2022-09-17 14:00:00,nan,,
633,nan, Preventief vervangen van de staalkabel emmer zandtoevoeging PM2.,2.0,2.0,2.0,2022-09-20 08:00:00,nan,,
634,nan, Preventief onderhoud op lanseninstallatie PM2.,3.0,3.0,3.0,2022-09-20 10:00:00,nan,,
637,nan, Staalwagen:,8.0,8.0,8.0,2022-09-11 07:00:00,nan,,
638,nan, Staalwagen reinigen + verwijderen reststaalkuip en juk.,4.0,4.0,4.0,2022-09-11 07:00:00,nan,,
653,nan, Slakkenwagen reinigen na afvoer van de toeslagstoffen kant HO.,2.0,2.0,2.0,2022-09-11 09:00:00,nan,,
639,nan," Reinigen noodgietput, staalwagen in pannenhal.",1.0,1.0,1.0,2022-09-11 10:00:00,nan,,
640,nan, Staalwagen plaatsen in giethal en deze inbeslagnemen.,43.0,43.0,43.0,2022-09-11 12:00:00,nan,,
641,nan, Staalwagen in dienst voor wisselen convertorbodem.,0.0,0.0,0.0,2022-09-13 04:00:00,nan,,
642,nan, Nazicht stuuren voedingskabel van de staalwagen (kan later indien nodig preventief vervangen worden).,0.0,0.0,0.0,2022-09-15 16:30:00,nan,,
643,nan, Instellen inbeslagname staalwagen in pannenhal op 5300cm.,8.0,8.0,8.0,2022-09-15 17:00:00,nan,,
644,nan, Plaatsen stelling in en rond de staalwagen.,8.0,8.0,8.0,2022-09-15 06:00:00,nan,,
645,nan, Onderhoud op de staalwagen (SW2/0117).,2.0,2.0,2.0,2022-09-15 08:00:00,nan,,
646,nan, Nazicht lasconstructie van de staalwagen en eventueel herstellen + zadels herstellen.,8.0,8.0,8.0,2022-09-15 14:00:00,nan,,
647,nan, Onderhoud uitvoeren op staalwagen.,8.0,8.0,8.0,2022-09-16 08:00:00,nan,,
648,nan, Reinigen motorruimte / trekput staalwagen 2.,8.0,8.0,8.0,2022-09-19 08:00:00,nan,,
649,nan, Aanpassen trekontlasting flexibel op staalwagen.,2.0,2.0,2.0,2022-09-19 08:00:00,nan,,
650,nan, Demonteren steiger aan staalwagen.,14.0,14.0,14.0,2022-09-20 12:15:00,nan,,
652,nan, Slakkenwagen C uit dienst nemen:,8.0,8.0,8.0,2022-09-11 09:00:00,nan,,
654,nan, Slakkenwagen afkoppelen kant HO.,1.0,1.0,1.0,2022-09-11 10:00:00,nan,,
655,nan, Slakkenwagen door de put duwen en reinigen kant WW in pannenhal.,2.0,2.0,2.0,2022-09-11 12:00:00,nan,,
656,nan, Slakkenwagen wegnemen met LK111 naar onderhoudstand pannenhal.,1.0,1.0,1.0,2022-09-11 13:00:00,nan,,
657,nan, Algemeen mechanisch onderhoud op slakkenwagen.,1.0,1.0,1.0,2022-09-16 16:00:00,nan,,
658,nan, Algemeen nazicht op scheuren en eventueel herstellen.,0.0,0.0,0.0,2022-09-20 18:00:00,nan,,
659,nan, Slakkenwagen B in dienst nemen:,0.0,0.0,0.0,2022-09-20 18:00:00,nan,,
660,nan, Plaatsen slakkenwagen op spoor.,10.0,10.0,10.0,2022-09-20 18:00:00,nan,,
661,nan, Slakkenwagen door de convertorput duwen.,1.0,1.0,1.0,2022-09-20 19:00:00,nan,,
651,nan, Bekleden draagconstructie en guniteren van de staalwagen.,0.0,0.0,0.0,2022-09-20 20:00:00,nan,,
662,nan, Elektrisch koppelen slakkenwagen.,2.0,2.0,2.0,2022-09-20 20:00:00,nan,,
663,nan, Testen staal en slakkenwagen:,4.0,4.0,4.0,2022-09-20 22:00:00,nan,,
664,nan, Testen slakkenwagen (controle rijbeweging).,0.0,0.0,0.0,2022-09-20 22:00:00,nan,,
665,nan, Testen staalwagen tot onder de convertor.,0.0,0.0,0.0,2022-09-21 04:00:00,nan,,
666,nan, Afijken weging staalwagen.,0.0,0.0,0.0,2022-09-21 04:15:00,nan,,
669,nan, T&Mkar inbeslagnemen in garagestand.,0.0,0.0,0.0,2022-09-11 04:00:00,nan,,
670,nan, Reinigen van de T&Mkar.,8.0,8.0,8.0,2022-09-11 21:45:00,nan,,
671,nan, Algemeen mechanisch onderhoud op de T&Mkar.,8.0,8.0,8.0,2022-09-19 06:00:00,nan,,
672,nan, Onderhoud en testen hydraulische bewegingen T&Mkar.,4.0,4.0,4.0,2022-09-19 14:00:00,nan,,
675,nan,Reinigen van de verticale afvoeren van de gasrecuperatie onder hoge druk.,8.0,8.0,8.0,2022-09-12 08:00:00,nan,,
676,nan,Kleppen gasrecuperatie:,4.0,4.0,4.0,2022-09-12 01:45:00,nan,,
677,nan, Waterterugslagklep:,3.0,3.0,3.0,2022-09-12 06:00:00,nan,,
678,nan, Reinigen (uitspuiten) waterterugslagklep.,4.0,4.0,4.0,2022-09-12 06:00:00,nan,,
679,nan, Uitvoeren van diktemetingen op bodem en helm waterterugslagklep en eventueel oplassen.,4.0,4.0,4.0,2022-09-12 10:00:00,nan,,
680,nan, Controle afvoer tss driewegklep en waterterugslagklep (cameracontrole).,6.0,6.0,6.0,2022-09-12 14:00:00,nan,,
681,nan, Herstellen lekkende bodem waterterugslagklep.,0.0,0.0,0.0,2022-09-12 19:00:00,nan,,
682,nan, Controle en smeren waterterugslagklep.,1.0,1.0,1.0,2022-09-15 06:00:00,nan,,
683,nan, Vervangen stikstofbuizen in waterterugslagklep. 1 uitgevoerd,16.0,16.0,16.0,2022-09-19 10:00:00,nan,,
684,nan, Driewegklep:,1.0,1.0,1.0,2022-09-15 06:00:00,nan,,
685,nan, Controle en smeren driewegklep.,1.0,1.0,1.0,2022-09-15 06:00:00,nan,,
686,nan, Bypassklep:,3.0,3.0,3.0,2022-09-12 01:45:00,nan,,
687,nan, Uitlijnen bypassklep + vervangen onderdelen.,24.0,24.0,24.0,2022-09-12 01:45:00,nan,,
688,nan, Controle en smeren bypassklep.,1.0,1.0,1.0,2022-09-15 07:00:00,nan,,
689,nan, Drukregelklep:,3.0,3.0,3.0,2022-09-12 06:00:00,nan,,
690,nan, Vervangen aspakking drukregelklep kant beremet.,4.0,4.0,4.0,2022-09-12 06:00:00,nan,,
691,nan, Controle en smeren drukregelklep.,1.0,1.0,1.0,2022-09-12 06:00:00,nan,,
692,nan, Testen hydraulische bewegingen van de kleppen gasrecuperatie.,2.0,2.0,2.0,2022-09-15 06:00:00,nan,,
693,nan, Testen sluiten waterterugslagklep gasrecuperatie op zwaartekracht.,0.0,0.0,0.0,2022-09-15 08:00:00,nan,,
694,nan,Diptank 32m:,1.0,1.0,1.0,2022-09-16 06:00:00,nan,,
695,nan, Tussenstuk van overloopleiding naar diptank demonteren en controleren op aanlading.,2.0,2.0,2.0,2022-09-20 06:00:00,nan,,
696,nan, Vervangen leeglaatafsluiter diptank 32m gasrecuperatie.,8.0,8.0,8.0,2022-09-16 06:00:00,nan,,
697,nan,Reinigingswerken gasrecuperatie:,4.0,4.0,4.0,2022-09-19 06:00:00,nan,,
698,nan, Algemeen reinigen van de gasrecuperatie.,4.0,4.0,4.0,2022-09-19 06:00:00,nan,,
699,nan, Hoge druk reinigen afvoer tss driewgklep en waterterugslagklep.,0.0,0.0,0.0,2022-09-20 06:00:00,nan,,
700,nan, Sluiten mangaten gasrecuperatie.,2.0,2.0,2.0,2022-09-20 08:15:00,nan,,
704,nan, Testen Bischoffinstallatie.,7.0,7.0,7.0,2022-09-19 14:00:00,nan,,
705,nan, Opheffen inbeslagname bischoffgoot.,22.0,22.0,22.0,2022-09-19 14:00:00,nan,,
706,nan, Opheffen inbeslagname bischoff en kanaalwater + watersloten.,2.0,2.0,2.0,2022-09-20 16:15:00,nan,,
707,nan, Visuele controle op waterlekken in de installatie.,1.0,1.0,1.0,2022-09-20 17:15:00,nan,,
708,nan," Controleren, regelen en noteren debieten op sproeiers volgens werkvoorschrift WVS000358635.",1.0,1.0,1.0,2022-09-20 17:15:00,nan,,
709,nan, Eventueel dichten van geconstateerde lekken in de installatie.,2.0,2.0,2.0,2022-09-20 19:15:00,nan,,
710,nan, Hangen van de ladder in het lansengat met takel 154.,4.0,4.0,4.0,2022-09-20 01:30:00,nan,,
711,nan, Verwijderen platen over openingen tussen vloer en convertor.,0.0,0.0,0.0,2022-09-20 01:30:00,nan,,
712,nan, Werkvloer 17m wegnemen.,1.0,1.0,1.0,2022-09-20 02:00:00,nan,,
713,nan, Vullen zanddichting trolley op niveau 17m,1.0,1.0,1.0,2022-09-20 03:30:00,nan,,
714,nan, Controle takel 152 na demonteren metselvloer.,0.0,0.0,0.0,2022-09-20 03:30:00,nan,,
715,nan, Plaat aflaten en wegrijden naar garagestand.,0.0,0.0,0.0,2022-09-20 04:30:00,nan,,
716,nan, Inrijden trolley (vermelden op stilstandsprogramma).,1.0,1.0,1.0,2022-09-20 05:00:00,nan,,
703,nan, Zie checklijst volgens werkvoorschrift WVS000326539.,1.0,1.0,1.0,2022-09-20 06:00:00,nan,,
717,nan, Oppompen beweegbare schouw. (vermelden op stilstandsprogramma).,0.0,0.0,0.0,2022-09-20 06:00:00,nan,,
718,nan, Terugplaatsen ferrotronpanelen trolley kant WW.,2.0,2.0,2.0,2022-09-20 06:00:00,nan,,
719,nan, Koppelen flenzen op trolley.,2.0,2.0,2.0,2022-09-20 07:15:00,nan,,
720,nan, Convertor afdekken met deksel.,0.0,0.0,0.0,2022-09-20 09:00:00,nan,,
721,nan, Vullen zanddichting tussen beweegbare schouw en trolley.,1.0,1.0,1.0,2022-09-20 09:15:00,nan,,
722,nan, Opheffen inbeslagnames ifv koppelen van de trolley.,2.0,2.0,2.0,2022-09-20 10:45:00,nan,,
723,nan, Guniteren overgang beweegbare en vaste schouw. Eerst convertor 3 in dienst guniteren.,2.0,2.0,2.0,2022-09-20 11:30:00,nan,,
724,nan, Opheffen overblijvende inbeslagnames ifv guniteren overgang schouw.,2.0,2.0,2.0,2022-09-20 13:30:00,nan,,
725,nan, Opheffen inbeslagname ontstoffingsventilator TLT.,0.0,0.0,0.0,2022-09-20 15:15:00,nan,,
726,nan, Nazicht alle mangaten Bischoffinstallatie op valse luchtaanzuig (met draaiende ventilator TLT).,3.0,3.0,3.0,2022-09-20 15:45:00,nan,,
727,nan, Uitvoeren van de test sluiten waterterugslagklep door zwaartekracht (bediening via WinCC).,0.0,0.0,0.0,2022-09-20 15:45:00,nan,,
728,nan, Deksel convertor verwijderen (deksel zuiver maken voor volgende intercampagne).,0.0,0.0,0.0,2022-09-20 12:45:00,nan,,
729,nan, Monteren temperatuursonde in convertormond via middelst luik ferrotron op niveau 17m.,0.0,0.0,0.0,2022-09-20 12:45:00,nan,,
730,nan," Opheffen inbeslagname ""afspannen convertorput"".",0.0,0.0,0.0,2022-09-20 13:30:00,nan,,
731,nan, Eventueel herstellen lekken na controle luchtdichtheid installatie met draaiende ventilator.,2.0,2.0,2.0,2022-09-20 18:45:00,nan,,
732,nan, Lek aan ventilator TLT.,0.0,0.0,0.0,2022-09-20 20:45:00,nan,,
733,nan, Opheffen inbeslagnames positieve isolatie na controle valse luchtaanzuig bischoffinstallatie.,2.0,2.0,2.0,2022-09-21 02:00:00,nan,,
734,nan,Einde taken afwerken installatie.,0.0,0.0,0.0,2022-09-11 04:00:00,nan,,
735,nan, Demonteren opneemjuk na wegnemen deksel van convertor.,1.0,1.0,1.0,2022-09-20 12:55:00,nan,,
738,nan, Aansteken brasero's (CO detectie bij zich hebben).,3.0,3.0,3.0,2022-09-21 04:00:00,nan,,
739,nan, Bakken convertor.,6.0,6.0,6.0,2022-09-21 07:00:00,nan,,
740,nan, Telegeleid de convertorput vullen met een 15cm laag litier ter bescherming van het beton (kan tijdens bakken).,1.0,1.0,1.0,2022-09-21 07:00:00,nan,,
741,nan, Demonteren temperatuursonde uit convertormond via middelst luik ferrotron op niveau 17m. (na bakken convertor).,0.0,0.0,0.0,2022-09-21 13:20:00,nan,,
742,nan, Evacuatie van personeel / mensen van niveau 25m en hoger tijdens 1ste lading na bakken convertor).,0.0,0.0,0.0,2022-09-21 13:20:00,nan,,
743,nan, Begin laden.,0.0,0.0,0.0,2022-09-21 13:35:00,nan,,
744,nan," Spoellading uitvoeren (15min., uitgevallen op bero detectie liften lansenplatform).",0.0,0.0,0.0,2022-09-21 13:35:00,nan,,
745,nan, Blazen eerste lading ( 17min).,0.0,0.0,0.0,2022-09-21 13:35:00,nan,,
746,nan, Uitvoeren van de COcontrole tijdens blazen eerste lading via WinnCCbeelden vaste meetpunten en PDC.,0.0,0.0,0.0,2022-09-21 13:35:00,nan,,
747,nan, Uitvoeren van de COcontrole tijdens blazen tweede lading ter plaatse (rondgang).,0.0,0.0,0.0,2022-09-21 13:35:00,nan,,
750,nan,"Taken elektriekers, PI en dienst weging:",7.0,7.0,7.0,2022-09-12 08:00:00,nan,,
751,nan, Reinigen afnames drukmetingen schouw.,8.0,8.0,8.0,2022-09-12 08:00:00,nan,,
752,nan," Controle takels 147 en 152 volgens standaard (Deel 1 zonder werkvloer, LT152/058).",4.0,4.0,4.0,2022-09-12 14:00:00,nan,,
753,nan, Algemeen onderhoud op de ventilator (CV WB22/0201).,8.0,8.0,8.0,2022-09-12 08:00:00,nan,,
754,nan, Algemeen onderhoud T&Mkar (CV2 VM02/0050).,8.0,8.0,8.0,2022-09-12 08:00:00,nan,,
755,nan, Algemeen onderhoud slakkenwagen (CV SW02/0114).,8.0,8.0,8.0,2022-09-15 08:00:00,nan,,
756,nan, Algemeen onderhoud op de buiteninstallatie convertor (CV K02/0037).,8.0,8.0,8.0,2022-09-15 08:00:00,nan,,
757,nan, Onderhoud pantoeslagen (PT20/0147).,8.0,8.0,8.0,2022-09-12 08:00:00,nan,,
758,nan, Onderhoud op de convertortoeslagen (KT2/0145).,8.0,8.0,8.0,2022-09-14 08:00:00,nan,,
759,nan, Onderhoud op de zuurstoflansen (KL02/0041).,8.0,8.0,8.0,2022-09-15 08:00:00,nan,,
760,nan, Kalibratie van weegbunker pannenzand op niveau 11m.,2.0,2.0,2.0,2022-09-19 08:00:00,nan,,
763,nan, Reinigen omgeving APT 17m en 25m.,4.0,4.0,4.0,2022-09-11 14:30:00,nan,,
764,nan," Controle van de  temp en monsternamekar, indien nodig betonarmen vervangen.",8.0,8.0,8.0,2022-09-11 18:30:00,nan,,
765,nan, Verwittigen dienst camera voor preventieve controles (tel. 2533).,0.0,0.0,0.0,2022-09-13 06:00:00,nan,,
766,nan, Verwittigen dienst wegingen voor controle weegbunkers (tel. 3752).,0.0,0.0,0.0,2022-09-13 06:00:00,nan,,
767,nan, Vervangen van veiligheidsglazen van 2 camera's convertorput.,6.0,6.0,6.0,2022-09-16 11:00:00,nan,,
768,nan, Nazicht kasten bodemspoelen installatie 2 volgens standaard.,8.0,8.0,8.0,2022-09-16 12:00:00,nan,,
769,nan, Reinigen lansenwagen volgens standaard.,8.0,8.0,8.0,2022-09-16 14:00:00,nan,,
770,nan, Nazicht convertortunnels A1A2A3 volgens standaard.,8.0,8.0,8.0,2022-09-16 22:00:00,nan,,
771,nan," Afvoeren van afval (paletten, bigbags, …) gedurend het metselen van de convertor naar containers niveau 0m.",70.0,70.0,70.0,2022-09-15 00:00:00,nan,,
772,nan, Verwittigen dienst gasanalyse één dag voor bakken convertor (tel. 2683 of 3752).,0.0,0.0,0.0,2022-09-19 22:30:00,nan,,
775,nan, Inst.2: Niveau 0m: Trolley: Reinigen bew. schouw en verwijderen vuil op grond onder de bew. schouw.,5.0,5.0,5.0,2022-09-12 07:00:00,nan,,
776,nan, Inst.2: Niveau 48m: Waterterugslagklep gasrecuperatie: Uitspuiten klep.,4.0,4.0,4.0,2022-09-12 06:00:00,nan,,
777,nan, Inst.2: Niveau 42m: Horizontale buizen tss banaan en venturies.,8.0,8.0,8.0,2022-09-12 10:00:00,nan,,
778,nan, Inst.2: Niveau 42m: Reinigen bovenkant behuizing venturies 2A en 2B.,8.0,8.0,8.0,2022-09-13 06:00:00,nan,,
779,nan, Inst.2: Niveau 25m: Watertas: Openen mangaten watertas en reinigen afvoerbuis grofafscheider.,5.0,5.0,5.0,2022-09-12 07:30:00,nan,,
780,nan, Inst.2: Niveau 45m: Verwijderen beren op sproeiers in de broek.,0.0,0.0,0.0,2022-09-12 10:15:00,nan,,
781,nan, Inst.2: Niveau 42m: Monteren van de aluminium vloertjes in de aanzuigen ventilator TLT.,1.0,1.0,1.0,2022-09-13 06:00:00,nan,,
782,nan, Inst.2: Niveau 45m: Broek: Reinigen van de hemel vanop de stelling.,1.0,1.0,1.0,2022-09-12 15:45:00,nan,,
783,nan, Inst.2: Niveau 56m: Vaste schouw: Reinigen met schouwliftje.,11.0,11.0,11.0,2022-09-12 18:00:00,nan,,
784,nan, Inst.2: Niveau 32m: Venturies: Monteren plankenvloeren onder venturieklokken.,2.0,2.0,2.0,2022-09-14 15:15:00,nan,,
785,nan, Inst.2: Niveau 32m: Venturies: Inwendig reinigen vanop de plankenvloer.,4.0,4.0,4.0,2022-09-15 06:30:00,nan,,
786,nan, Inst.2: Niveau 65m: Fakkel: Reinigen gootjes en bovenzijde fakkel.,4.0,4.0,4.0,2022-09-14 11:00:00,nan,,
787,nan, Inst.2: Niveau 2545m: Reinigen broek (+ aanladingen onder de vloer) en monteren definitieve vloer.,4.0,4.0,4.0,2022-09-14 15:00:00,nan,,
788,nan, Inst.2: Niveau 25m: Zanddichting reinigen onderkant vaste schouw vanop de plaat.,1.0,1.0,1.0,2022-09-14 06:00:00,nan,,
789,nan, Inst.2: Niveau 32m: Reinigen onderkant venturies 2A en 2B.,8.0,8.0,8.0,2022-09-15 10:30:00,nan,,
790,nan, Inst.2: Niveau 32m: Wegnemen roosters en reinigen onderkant cyclonen 2A en 2B.,6.0,6.0,6.0,2022-09-15 18:30:00,nan,,
791,nan, Inst.2: Niveau 37m: TLT: Reinigen isolatieafsluiters in zuig ventilator TLT.,6.0,6.0,6.0,2022-09-14 19:00:00,nan,,
792,nan, Inst.2: Niveau 1725m: Taughtopf: Reinigen afvoerbuizen van beide voorafscheiders naar Taughtopf.,2.0,2.0,2.0,2022-09-15 09:00:00,nan,,
793,nan, Inst.2: Niveau 1725m: Taughtopf: Reinigen taughtopf en afvoer.,2.0,2.0,2.0,2022-09-15 11:00:00,nan,,
794,nan, Inst.2: Niveau 1725m: Taughtopf: Reinigen overloop taughtopf.,4.0,4.0,4.0,2022-09-15 13:00:00,nan,,
795,nan, Inst.2: Niveau 25m: TLT: Reinigen kappen ventilator.,2.0,2.0,2.0,2022-09-15 17:00:00,nan,,
796,nan, Inst.2: Niveau 32m: Horizontale buizen tss venturies en cyclonen op niveau 32m + voorafscheiders reinigen.,12.0,12.0,12.0,2022-09-15 19:00:00,nan,,
797,nan, Inst.2: Niveau 32m: Overloop grofafscheider naar Taugtoph reinigen.,6.0,6.0,6.0,2022-09-15 19:00:00,nan,,
798,nan, Inst.2: Niveau 25m: Watertas reinigen.,4.0,4.0,4.0,2022-09-16 09:00:00,nan,,
799,nan, Inst.2: Niveau 25m: Watertas: Reinigen overloop van de watertas.,3.0,3.0,3.0,2022-09-16 13:00:00,nan,,
800,nan, Inst.2: Niveau 25m: Watertas: Reinigen afvoer en bocht onder watertas.,3.0,3.0,3.0,2022-09-16 16:00:00,nan,,
801,nan, Inst.2: Niveau 1725m: Watersloten: Reinigen beide afvoerbuizen van cyclonen naar watersloten.,2.0,2.0,2.0,2022-09-16 15:00:00,nan,,
802,nan, Inst.2: Niveau 32m: Venturies: Demonteren plankenvloeren onder venturieklokken en sluiten mangaten.,1.0,1.0,1.0,2022-09-16 17:00:00,nan,,
803,nan, Inst.2: Niveau 1725m: Watersloten: Reinigen overlopen van cyclonen naar de watersloten.,2.0,2.0,2.0,2022-09-16 18:00:00,nan,,
804,nan, Inst.2: Niveau 1725m: Watersloten: Reinigen waterslot 2A en 2B en afvoer.,2.0,2.0,2.0,2022-09-16 20:00:00,nan,,
805,nan, Inst.2: Niveau 1725m: Watersloten: Reinigen overloop waterslot 2A en 2B.,2.0,2.0,2.0,2022-09-19 06:00:00,nan,,
806,nan, Inst.2: Niveau 20m: Tussengoot: Reinigen tussengoot.,6.0,6.0,6.0,2022-09-19 08:00:00,nan,,
807,nan, Inst.2: Niveau 20m: Tussengoot: Reinigen afvoer tussengoot + afvoerbuis naar bischoffgoot.,6.0,6.0,6.0,2022-09-19 14:00:00,nan,,
808,nan, Inst.2: Niveau 48m: Gasrecuperatie: Reinigen gasrecuperatie.,4.0,4.0,4.0,2022-09-19 08:00:00,nan,,
809,nan, Inst.2: Niveau 0m: Trolley: Opruimen materiaal en vuil op trolley.,2.0,2.0,2.0,2022-09-19 14:30:00,nan,,
810,nan, Inst.2: Niveau 32m: Gasrecuperatie: Diptank en afvoeren reinigen.,4.0,4.0,4.0,2022-09-20 08:30:00,nan,,
811,nan, Inst.2: Niveau 32m: Gasrecuperatie: Diptank: Reinigen overloop en noodoverloop diptank 32m GR.,4.0,4.0,4.0,2022-09-20 12:30:00,nan,,
812,nan, Inst.2: Niveau 45m: TLT: Reinigen lagerhuizen en omgeving ventilator (ontvetten).,7.0,7.0,7.0,2022-09-20 08:30:00,nan,,
813,nan, Inst.2: Niveau 45m: Gasrecuperatie: Reinigen van de verticale afvoeren onder hoge druk van de gasrecuperatie.,1.0,1.0,1.0,2022-09-12 08:00:00,nan,,
814,nan, Reinigen bischoffgoot B (geen toezichter of buitenwacht nodig).,62.0,62.0,62.0,2022-09-14 06:00:00,nan,,
817,nan, Stofzuigen omgeving ventilator TLT + noodluik + schouwliftje (Parys Michel).,4.0,4.0,4.0,2022-09-11 06:00:00,nan,,
818,nan, Stofzuigen ferrotronpanelen + passerels aan vergrendeling trolley op niveau 17m (Parys Michel).,4.0,4.0,4.0,2022-09-11 10:00:00,nan,,
819,nan, Stofzuigen lansenwagen en omgeving (De Keyzer Frederick).,8.0,8.0,8.0,2022-09-12 06:00:00,nan,,
820,nan, Stofzuigen collectorbakken op niveau 45m.,8.0,8.0,8.0,2022-09-12 14:00:00,nan,,
821,nan, Stofzuigen trolley + op afzuigkap secundaire ontstoffing (De Keyzer Frederick).,6.0,6.0,6.0,2022-09-13 06:00:00,nan,,
822,nan, Stofzuigen verzamelbunkers AKT inwendig + omgeving AKT op niveau 25m (De Keyzer Frederick).,6.0,6.0,6.0,2022-09-13 06:00:00,nan,,
823,nan, Stofzuigen slakkenhuis en omgeving ontstoffingsventilator TLT (De Keyzer Frederick).,4.0,4.0,4.0,2022-09-15 06:30:00,nan,,
824,nan, Stofzuigen omgeving AKT op niveau 32m (De Keyzer Frederick).,8.0,8.0,8.0,2022-09-15 08:45:00,nan,,
825,nan, Stofzuigen omgeving weegbunkers APT uitwendig op niveau 17m (De Keyzer Frederick).,8.0,8.0,8.0,2022-09-15 08:45:00,nan,,
826,nan, Stofzuigen omgeving aandrijving convertor op niveau 11m (De Keyzer Frederick).,4.0,4.0,4.0,2022-09-16 08:45:00,nan,,
829,nan, Het bestelde stellingsmateriaal uitvoeren naar de verschillende locaties (Parys Michel).,4.0,4.0,4.0,2022-09-12 08:00:00,nan,,
830,nan, Te plaatsen stellingen:,3.0,3.0,3.0,2022-09-12 08:00:00,nan,,
831,nan, Plaatsen stelling kant HO vaste schouw op niveau 45m (D'Hont Benny).,4.0,4.0,4.0,2022-09-12 08:00:00,nan,,
832,nan, Plaatsen stelling in de broek op niveau 45m (Parys Michel).,2.0,2.0,2.0,2022-09-12 12:00:00,nan,,
833,nan, Plaatsen steiger naast geluidsdemper op niveau 56m (D'Hont Benny).,8.0,8.0,8.0,2022-09-13 06:00:00,nan,,
834,nan, Plaatsen stelling in en rond de staalwagen (De Vos Marco).,8.0,8.0,8.0,2022-09-15 06:00:00,nan,,
835,nan, Plaatsen stelling op lansenplatform naar wand aan quicktap installatie (Van Isacker Yorick).,2.0,2.0,2.0,2022-09-16 08:00:00,nan,,
836,nan, Te demonteren stelling:,1.0,1.0,1.0,2022-09-19 06:30:00,nan,,
837,nan, Demonteren stelling kant HO vaste schouw op niveau 45m.,2.0,2.0,2.0,2022-09-19 06:30:00,nan,,
838,nan, Demonteren stelling in de broek op niveau 45m.,2.0,2.0,2.0,2022-09-19 06:30:00,nan,,
839,nan, Demonteren stelling op lansenplatform.,2.0,2.0,2.0,2022-09-19 08:45:00,nan,,
840,nan, Demonteren steiger aan staalwagen.,2.0,2.0,2.0,2022-09-20 12:15:00,nan,,
841,nan, Demonteren steiger aan geluidsdemper.,4.0,4.0,4.0,2022-09-20 14:00:00,nan,,
842,nan, Opruimen materiaal stellingen.,2.0,2.0,2.0,2022-09-20 18:00:00,nan,,
844,nan,Stilstand SF:,11.0,11.0,11.0,2022-09-14 08:00:00,nan,,
