node_id,wbs,task_name,duration,optimistic_time,pessimistic_time,baseline_start,baseline_end,resource_demand,total_cost
3,1.1.1.1,CARTEL DE OBRA ,1.0,0.01,0.01,2022-07-01 00:00:00,nan,,
4,1.1.1.2,TRANSPORTE Y MOVILIZACION DE EQUIPOS HERRAMIENTAS Y MATERIALES A LA OBRA,4.0,0.04,0.28,2022-07-01 00:00:00,nan,,
5,1.1.1.3,MANTENIMIENTO DE TRANSITO Y SEGURIDAD VIAL,30.0,6.0,12.0,2022-07-01 00:00:00,nan,,
6,1.1.1.4,TRAZO Y REPLANTEO PARA LAS INSTALACIONES,1.0,0.01,0.01,2022-07-01 00:00:00,nan,,
7,1.1.1.5,ALQUILER DE ALMACEN DE OBRA Y GUARDIANIA,30.0,2.4,10.8,2022-07-01 00:00:00,nan,,
9,1.1.2.1,CORTE DE VEREDA CON DISCO ,1.0,0.01,0.01,2022-07-01 00:00:00,nan,team subcontractor,
10,1.1.2.2,DEMOLICION DE VEREDAS DE CONCRETO ,1.0,0.01,0.01,2022-07-01 00:00:00,nan,team subcontractor,
12,1.1.3.1,EXCAVACION MANUAL,1.0,0.01,0.01,2022-07-02 00:00:00,nan,team subcontractor[2.00 #8],
13,1.1.3.2,EXCAVACION MANUAL DE ZANJAS PARA DUCTOS,1.0,0.01,0.01,2022-07-02 00:00:00,nan,team subcontractor[2.00 #8],
14,1.1.3.3,CAMA DE ARENA PARA CABLE ELECTRICO,1.0,0.01,0.01,2022-07-03 00:00:00,nan,team subcontractor[2.00 #8],
15,1.1.3.4,INSTALACION DE TUBERIA PVC PARA CABLE SUBTERRANEO,1.0,0.01,0.01,2022-07-03 00:00:00,nan,team subcontractor[2.00 #8],
16,1.1.3.5,RELLENO COMPACTADO CON MATERIAL PROPIO,1.0,0.01,0.01,2022-07-04 00:00:00,nan,team subcontractor[2.00 #8],
17,1.1.3.6,BASE DE AFIRMADO ,1.0,0.01,0.01,2022-07-04 00:00:00,nan,team subcontractor[2.00 #8],
18,1.1.3.7,ELIMINACION DE MATERIAL EXCEDENTE CON ESPONJAMIENTO,1.0,0.01,0.01,2022-07-05 00:00:00,nan,team subcontractor[3.00 #8],
21,1.1.4.1.1,SOLADOS CONCRETO ,1.0,0.01,0.01,2022-07-05 00:00:00,nan,mason,
23,1.1.4.2.1,CIMIENTOS CORRIDOS ,1.0,0.01,0.01,2022-07-06 00:00:00,nan,mason,
25,1.1.4.3.1,CONCRETO PARA SOBRECIMIENTO ,1.0,0.01,0.01,2022-07-07 00:00:00,nan,mason,
26,1.1.4.3.2,ENCOFRADO Y DESENCOFRADO DE SOBRECIMIENTOS,1.0,0.01,0.01,2022-07-07 00:00:00,nan,carpenter,
28,1.1.4.4.1,CONCRETO PARA VEREDAS ,1.0,0.01,0.01,2022-07-11 00:00:00,nan,mason,
29,1.1.4.4.2,ENCOFRADO Y DESENCOFRADO DE VEREDAS,1.0,0.01,0.01,2022-07-10 00:00:00,nan,carpenter,
30,1.1.4.4.3,CURADO DE VEREDAS CON CURADOR QUIMICO,1.0,0.01,0.01,2022-07-12 00:00:00,nan,mason,
33,1.1.5.1.1,CONCRETO PARA ZAPATAS ,1.0,0.01,0.01,2022-07-08 00:00:00,nan,mason,
34,1.1.5.1.2,ACERO CORRUGADO  GRADO 60 EN ZAPATAS,1.0,0.01,0.01,2022-07-08 00:00:00,nan,mason,
35,1.1.5.1.3,PERNOS DE ANCLAJE PARA POSTES EN ZAPATAS ,1.0,0.01,0.01,2022-07-09 00:00:00,nan,mason,
37,1.1.5.2.1,CONCRETO PARA BASE DE POSTES Y CONTROLADOR ,1.0,0.01,0.01,2022-07-13 00:00:00,nan,mason,
38,1.1.5.2.2,ENCOFRADO PARA BASE DE POSTES Y CONTROLADOR,1.0,0.01,0.01,2022-07-12 00:00:00,nan,carpenter,
39,1.1.5.2.3,ACERO CORRUGADO  GRADO 60 EN BASE PARA POSTES,1.0,0.01,0.01,2022-07-12 00:00:00,nan,mason,
42,1.2.1.1,"MURO DE LADRILLO KK, AMARRE CABEZA, MORTERO 1.5 CM PARA MEDIDOR",1.0,0.01,0.02,2022-07-14 00:00:00,nan,mason,
43,1.2.1.2,TARRAJEO IMPERMEABILIZADO,1.0,0.01,0.03,2022-07-15 00:00:00,nan,plasterer,
45,1.2.2.1,SENALIZACION HORIZONTAL PINTURA SOBRE PAVIMENTO,2.0,0.01,0.05,2022-07-24 00:00:00,nan,painter,
46,1.2.2.2,SENALIZACION HORIZONTAL PINTURA SOBRE SARDINEL,2.0,0.01,0.05,2022-07-26 00:00:00,nan,painter,
47,1.2.2.3,SENALIZACION VERTICAL REGLAMENTARIA,1.0,0.01,0.01,2022-07-28 00:00:00,nan,painter,
49,1.2.3.1,FABRICACION DE POSTES TIPO ARCO CON ESTRUCTURAS DE ,5.0,0.05,0.45,2022-07-14 00:00:00,nan,team subcontractor[4.00 #8],
50,1.2.3.2,MONTAJE DE POSTE TIPO ARCO CON ESTRCTURAS DE ,2.0,0.01,0.07,2022-07-19 00:00:00,nan,team subcontractor[4.00 #8],
51,1.2.3.3,POSTE TIPO PEDESTAL CON ESTRUCTURA DE ,2.0,0.02,0.06,2022-07-21 00:00:00,nan,team subcontractor[4.00 #8],
53,1.2.4.1,PINTURA ESMALTE 2 MANOS EN MUROS EXTERIORES,1.0,0.01,0.01,2022-07-23 00:00:00,nan,painter,
54,1.2.4.2,PINTURA DE TRAFICO EN ESTRUCTURAS DE CONCRETO,1.0,0.01,0.01,2022-07-23 00:00:00,nan,painter,
56,1.2.5.1,COLOCACION DE ROMPEMUELLE DE CAUCHO DE ,7.0,0.14,0.63,2022-07-06 00:00:00,nan,mason,
57,1.2.5.2,COLOCACION DE TERMINAL DE ROMPEMUELLE,7.0,0.28,0.7,2022-07-06 00:00:00,nan,mason,
58,1.2.5.3,ANCLAJE DE REDUCTORES DE VELOCIDAD CON PERNOS ,7.0,0.21,1.05,2022-07-06 00:00:00,nan,mason,
60,1.2.6.1,REDUCTORES DE VELOCIDAD (GIBAS ASFALTICAS),1.0,0.01,0.01,2022-07-13 00:00:00,nan,,
61,1.2.6.2,PINTURA DE TRAFICO EN GIBAS ASFALTICAS,1.0,0.01,0.01,2022-07-24 00:00:00,nan,painter,
63,1.2.7.1,MITIGACION DE IMPACTO AMBIENTAL,30.0,3.0,15.0,2022-07-01 00:00:00,nan,,
64,1.2.7.2,LIMPIEZA FINAL DE LA OBRA,1.0,0.01,0.01,2022-07-30 00:00:00,nan,,
67,1.3.1.1,TABLERO GENERAL DE CONTROL,1.0,0.01,0.01,2022-07-16 00:00:00,nan,electrician ,
68,1.3.1.2,SUB TABLERO (MEDIDOR),1.0,0.01,0.01,2022-07-17 00:00:00,nan,electrician ,
70,1.3.2.1,CABLE CONCENTRICO AWG,1.0,0.01,0.01,2022-07-18 00:00:00,nan,electrician ,
71,1.3.2.2,CABLE NLT  AWG (VULCANIZADO),3.0,0.03,0.15,2022-07-19 00:00:00,nan,electrician ,
72,1.3.2.3,CABLE NPT  AWG (VULCANIZADO),1.0,0.01,0.01,2022-07-22 00:00:00,nan,electrician ,
73,1.3.2.4,CABLE CPT N08 AWG,1.0,0.01,0.01,2022-07-23 00:00:00,nan,electrician ,
75,1.3.3.1,CAJAS DE PASO TIPO CE-1,1.0,0.01,0.01,2022-07-22 00:00:00,nan,electrician ,
77,1.3.4.1,SEMAFORO VEHICULAR  HORIZONTAL,2.0,0.02,0.06,2022-07-19 00:00:00,nan,,
78,1.3.4.2,SEMAFORO VEHICULAR 1C  VERTICAL ADOSADO,2.0,0.02,0.06,2022-07-21 00:00:00,nan,,
79,1.3.4.3,SEMAFORO PEATONAL 1C  PEDESTAL,1.0,0.01,0.01,2022-07-23 00:00:00,nan,,
80,1.3.4.4,SEMAFORO PEATONAL 1C  ADOSADO,2.0,0.02,0.06,2022-07-24 00:00:00,nan,,
81,1.3.4.5,CONTADOR DE TRANSITO ROJO/VERDE 1C ,2.0,0.02,0.06,2022-07-26 00:00:00,nan,,
82,1.3.4.6,FLECHA COLOR VERDE  LENTE DE 300mm,1.0,0.01,0.01,2022-07-28 00:00:00,nan,,
84,1.3.5.1,CONTROLADOR ELECTRONICO CON MICROPROCESADOR 8 FASES,1.0,0.01,0.01,2022-07-28 00:00:00,nan,,
86,1.3.6.1,TENDIDO DE CABLE ELECTRICO,3.0,0.03,0.27,2022-07-26 00:00:00,nan,electrician,
87,1.3.6.2,OPCION TARIFARIA BT-5B,1.0,0.01,0.01,2022-07-17 00:00:00,nan,electrician,
88,1.3.6.3,POZO A TIERRA (INC. EXCAVACION TAPADO Y CAJA),2.0,0.02,0.06,2022-07-29 00:00:00,nan,electrician,
89,1.3.6.4,TRAMITE ANTE HIDRANDINA,1.0,0.01,0.01,2022-07-17 00:00:00,nan,electrician,
91,1.4.1,EQUIPOS DE PROTECCION PERSONAL,30.0,1.5,16.5,2022-07-01 00:00:00,nan,,
92,1.4.2,RECURSOS PARA RESPUESTAS ANTE EMERGENCIAS EN SEGURIDAD,30.0,3.0,10.5,2022-07-01 00:00:00,nan,,
93,1.4.3,INSTALACION DE LAVADERO PROVISIONAL DE OBRA A INGRESO CON TANQUE DE AGUA,2.0,0.02,0.06,2022-07-01 00:00:00,nan,,
94,1.4.4,KIT DE DESINFECCION PARA OBRA,30.0,3.0,15.0,2022-07-01 00:00:00,nan,,
95,1.4.5,fin del proyecto,1.0,0.01,0.01,2022-07-01 00:00:00,nan,,
