node_id,wbs,task_name,duration,optimistic_time,pessimistic_time,baseline_start,baseline_end,resource_demand,total_cost
2,1.1.1,CARTEL DE IDENTIFICACION DE LA OBRA DE 3.60x2.40 M,1.0,0.5,1.5,2021-10-06 08:00:00,nan,"carpenter [1,00 #8]",
3,1.1.2,CASETA PARA GUARDIANIA Y ALMACEN,1.0,0.5,1.5,2021-10-06 08:00:00,nan,"plumber [1,00 #8]",
5,1.2.1,ENERGIA ELECTRICA PARA LA CONSTRUCION,1.0,0.5,1.5,2021-10-06 08:00:00,nan,"plumber [1,00 #8]",
7,1.3.1,MOVILIZACION Y DESMOVILIZACION DE EQUIPO LIVIANO Y HERRAMIENTAS,1.0,0.5,1.5,2021-10-06 08:00:00,nan,"carpenter [1,00 #8]",
9,1.4.1,EQUIPOS DE PROTECCION INDIVIDUAL,1.0,0.5,1.5,2021-10-06 08:00:00,nan,"carpenter [1,00 #8]",
10,1.4.2,EQUIPOS DE PROTECCION COLECTIVA,1.0,0.5,1.5,2021-10-06 08:00:00,nan,"plumber [1,00 #8]",
11,1.4.3,CAPACITACION EN SEGURIDAD Y SALUD,1.0,0.5,1.5,2021-10-06 08:00:00,nan,"team subcontractor[2,00 #8]",
13,1.5.1,KIT DE LIMPIEZA Y DESINFECCIÓN PERSONAL,1.0,0.5,1.5,2021-10-06 08:00:00,nan,"carpenter [1,00 #8]",
14,1.5.2,DESINFECCIÓN DE ÁREAS COMUNES,90.0,45.0,135.0,2021-10-06 08:00:00,nan,"team subcontractor[2,00 #8]",
15,1.5.3,EQUIPOS DE PROTECCIÓN PERSONAL,1.0,0.5,1.5,2021-10-06 08:00:00,nan,"plumber [1,00 #8]",
17,1.6.1,FLETE TERRESTRE,72.0,36.0,67.68,2021-10-06 08:00:00,nan,"mason [2,00 #8]",
20,1.7.1.1,PRUEBA DE CONTINUIDAD,1.0,0.5,1.5,2021-10-06 08:00:00,nan,"carpenter [1,00 #8]",
21,1.7.1.2,PRUEBA DE RESISTENCIA DE PUESTA A TIERRA,1.0,0.5,1.5,2021-10-06 08:00:00,nan,mason,
22,1.7.1.3,PRUEBA DE AISLAMIENTO,1.0,0.5,1.5,2021-10-06 08:00:00,nan,painter,
24,1.7.2.1,PRUEBA DE COMPRESIÓN (ROTURA DE BRIQUETA),1.0,0.5,1.5,2021-10-06 08:00:00,nan,"carpenter [1,00 #8]",
26,1.7.3.1,"PRUEBAS DE COMPACTACIÓN, PROCTOR MODIFICADO",1.0,0.5,1.5,2021-10-06 08:00:00,nan,"steel worker [1,00 #8]",
29,1.8.1.1,DESMONTAJE DE SISTEMAS ELECTRICOS,2.0,1.0,3.0,2021-10-07 08:00:00,nan,,
30,1.8.1.2,DESMOTAJE DE TECHOS,2.0,1.0,3.0,2021-10-12 08:00:00,nan,"mason [2,00 #8]",
31,1.8.1.3,DESMONTAJE DE PUERTAS Y VENTANAS,2.0,1.0,3.0,2021-10-14 08:00:00,nan,"team subcontractor[1,00 #8]",
32,1.8.1.4,DEMOLICION DE MUROS DE ADOBE E= 0.40 M,2.0,1.0,3.0,2021-10-15 08:00:00,nan,"mason [2,00 #8]",
33,1.8.1.5,ELIMINACION DE MATERIAL PROCEDENTE DE LA DEMOLICIÓN,2.0,1.0,3.0,2021-10-18 08:00:00,nan,"team subcontractor[1,00 #8]",
35,1.8.2.1,HABILITADO DE INGRESO PARA MAQUINARIAS,1.0,0.5,1.5,2021-10-20 08:00:00,nan,"carpenter [1,00 #8]",
36,1.8.2.2,"TRAZO, NIVELACION Y REPLANTEO PRELIMINAR",1.0,0.5,1.5,2021-10-21 08:00:00,nan,"mason [2,00 #8]",
38,1.8.3.1,EXCAVACIÓN PARA ZAPATAS,2.0,1.0,3.0,2021-10-23 08:00:00,nan,"steel worker [2,00 #8]",
39,1.8.3.2,EXCAVACION PARA CIMIENTO CORRIDO,2.0,1.0,3.0,2021-10-29 08:00:00,nan,"steel worker [2,00 #8]",
41,1.8.4.1,"RELLENO COMPACTADO C/ EQUIPO, MATERIAL DE PRESTAMO",1.0,0.8,1.2,2021-11-01 08:00:00,nan,mason,
43,1.8.5.1,"ACARREO INTERNO, MATERIAL PROCEDENTE DE EXCAVACIONES",2.0,1.6,2.4,2021-11-04 08:00:00,nan,"carpenter [1,00 #8]",
45,1.8.6.1,NIVELACION INTERIOR Y APISONADO PARA PISO,1.0,0.5,1.5,2021-11-08 08:00:00,nan,"carpenter [1,00 #8]",
46,1.8.6.2,NIVELACION Y COMPACTACIÓN EN ÁREA (FONDO) DE CIMENTACIÓN,1.0,0.5,1.5,2021-11-10 08:00:00,nan,"steel worker [1,00 #8]",
47,1.8.6.3,"AFIRMADO DE 2"" PARA PISOS",1.0,0.8,1.2,2021-11-11 08:00:00,nan,"steel worker [1,00 #8]",
49,1.8.7.1,SOLADO e= 0.05m 1:12 C/H,1.0,0.8,1.2,2021-11-01 08:00:00,nan,"mason [2,00 #8]",
50,1.8.7.2,ENCOFRADO Y DESENCOFRADO EN MURO POSTERIOR EJE C-C,1.0,0.8,1.2,2021-11-01 08:00:00,nan,"carpenter [1,00 #8]",
51,1.8.7.3,CONCRETO f'c=175 kg/cm2 - EN MURO POSTERIOR EJE C-C,1.0,0.8,1.2,2021-11-01 08:00:00,nan,"team subcontractor[1,00 #8]",
53,1.8.7.4.1,CONCRETO Fc=100kg/cm2 + 30% PG,2.0,1.6,2.4,2021-11-01 08:00:00,nan,"carpenter [1,00 #8]",
55,1.8.7.5.1,ENCOFRADO Y DESENCOFRADO SOBRECIMIENTO,1.0,0.7,1.1,2021-11-04 08:00:00,nan,mason,
56,1.8.7.5.2,CONCRETO Fc=140kg/cm2 + 25% PG,1.0,0.7,1.1,2021-11-06 08:00:00,nan,"carpenter [1,00 #8]",
57,1.8.7.5.3,"ACERO fy=4,200 kg/cm2 GRADO 60 EN SOBRECIMIENTO",1.0,0.5,1.5,2021-11-09 08:00:00,nan,"steel worker [1,00 #8]",
58,1.8.7.5.4,FALSO PISO MEZCLA 1:6 E=10 cm,1.0,0.5,1.5,2021-11-08 08:00:00,nan,"carpenter [1,00 #8]",
61,1.8.8.1.1,CONCRETO F'c= 210 KG/CM2 - ZAPATAS,2.0,1.0,3.0,2021-11-12 08:00:00,nan,painter,
62,1.8.8.1.2,"ACERO fy=4,200 kg/cm2 GRADO 60 EN ZAPATAS",2.0,1.4,2.2,2021-11-11 08:00:00,nan,painter,
64,1.8.8.2.1,ENCOFRADO Y DESENCOFRADO EN VIGAS DE CONEXION,2.0,1.4,2.2,2021-11-18 08:00:00,nan,"team subcontractor[1,00 #8]",
65,1.8.8.2.2,"ACERO fy=4,200 kg/cm2 GRADO 60 EN VIGAS DE CONEXION",2.0,1.4,2.2,2021-11-17 08:00:00,nan,"steel worker [1,00 #8]",
66,1.8.8.2.3,CONCRETO F'c= 210 KG/CM2 - VIGAS DE CONEXIÓN,1.0,0.5,1.5,2021-11-22 08:00:00,nan,"team subcontractor[1,00 #8]",
68,1.8.8.3.1,ENCOFRADO Y DESENCOFRADO EN COLUMNAS,2.0,1.0,3.0,2021-11-25 08:00:00,nan,"carpenter [1,00 #8]",
69,1.8.8.3.2,"ACERO fy=4,200 kg/cm2 GRADO 60 EN COLUMNAS",2.0,1.0,3.0,2021-11-23 08:00:00,nan,"steel worker [1,00 #8]",
70,1.8.8.3.3,CONCRETO F'c= 210 KG/CM2 EN COLUMNAS,2.0,1.0,3.0,2021-11-27 08:00:00,nan,"carpenter [1,00 #8]",
72,1.8.8.4.1,ENCOFRADO Y DESENCOFRADO - COLUMNAS DE CONFINAMIENTO,1.0,0.5,1.5,2021-12-01 08:00:00,nan,"mason [2,00 #8]",
73,1.8.8.4.2,"ACERO fy=4,200 kg/cm2 GRADO 60 EN COLUMNAS DE CONFINAMIENTO",1.0,0.5,1.5,2021-11-30 08:00:00,nan,"steel worker [1,00 #8]",
74,1.8.8.4.3,CONCRETO f'c=175 kg/cm2 - COLUMNAS DE CONFINAMIENTO,1.0,0.5,1.5,2021-12-02 08:00:00,nan,"carpenter [1,00 #8]",
76,1.8.8.5.1,ENCOFRADO Y DESENCOFRADO - VIGAS,2.0,1.0,3.0,2021-12-06 08:00:00,nan,"mason [2,00 #8]",
77,1.8.8.5.2,ACERO F'Y= 4200 KG/CM2 GRADO 60 EN VIGAS,2.0,1.0,3.0,2021-12-03 08:00:00,nan,"team subcontractor[2,00 #8]",
78,1.8.8.5.3,CONCRETO f'c= 210 KG/CM2 - VIGAS,3.0,1.5,4.5,2021-12-08 08:00:00,nan,"team subcontractor[2,00 #8]",
80,1.8.8.6.1,ENCOFRADO Y DESENCOFRADO EN VIGAS DE CONFINAMIENTO,2.0,1.0,3.0,2021-12-14 08:00:00,nan,mason,
81,1.8.8.6.2,"ACERO fy= 4,200 kg/cm2 GRADO 60 EN VIGAS DE CONFINAMIENTO",2.0,1.4,2.2,2021-12-11 08:00:00,nan,mason,
82,1.8.8.6.3,CONCRETO f'c= 175 kg/cm2-VIGAS DE CONFINAMIENTO,1.0,0.5,1.5,2021-12-16 08:00:00,nan,"team subcontractor[2,00 #8]",
84,1.8.8.7.1,"ACERO fy= 4,200 kg/cm2 GRADO 60 EN MURO",2.0,1.0,3.0,2021-12-17 08:00:00,nan,"steel worker [1,00 #8]",
86,1.8.9.1,CORREAS METALICAS DE TUBO CUADRADO,1.0,0.5,1.5,2021-12-20 08:00:00,nan,"team subcontractor[2,00 #8]",
87,1.8.9.2,TIJERAL METALICO,1.0,0.5,1.5,2021-12-22 08:00:00,nan,"steel worker [1,00 #8]",
88,1.8.9.3,CUMBRERAS DE TEJA ANDINA,1.0,0.5,1.5,2021-12-24 08:00:00,nan,"steel worker [1,00 #8]",
89,1.8.9.4,COBERTURA DE TEJA ANDINA,1.0,0.5,1.5,2021-12-30 08:00:00,nan,"steel worker [1,00 #8]",
91,1.8.10.1,"JUNTAS DE DILATACIÓN EN COLUMAS, DE POLIESTIRENO EXPANDIDO",2.0,1.0,3.0,2021-12-31 08:00:00,nan,"mason [2,00 #8]",
94,1.9.1.1,"MURO DE CABEZA,LADRILLO KING KONG 18 HUECOS DE ARCILLA,MEZCLA 1:4",4.0,2.0,6.0,2022-01-03 08:00:00,nan,"team subcontractor[2,00 #8]",
95,1.9.1.2,"MURO DE SOGA,LADRILLO KING KONG 18 HUECOS DE ARCILLA,MEZCLA 1:4",4.0,2.0,6.0,2022-01-12 08:00:00,nan,mason,
97,1.9.2.1,"TARRAJEO PRIMARIO, MORTERO 1:5",1.0,0.8,1.2,2022-01-20 08:00:00,nan,"team subcontractor[1,00 #8]",
98,1.9.2.2,TARRAJEO EN MUROS INTERIORES Y EXTERIORES MORTERO 1:5,1.0,0.5,1.5,2022-01-21 08:00:00,nan,"steel worker [1,00 #8]",
99,1.9.2.3,TARRAJEO EN COLUMNAS MORTERO 1:5,1.0,0.5,1.5,2022-01-22 08:00:00,nan,"team subcontractor[2,00 #8]",
100,1.9.2.4,TARRAJEO EN VIGAS MORTERO 1:5,2.0,1.0,3.0,2022-01-25 08:00:00,nan,"plumber [1,00 #8]",
101,1.9.2.5,"VESTIDURA DE DERRAMES, MORTERO 1:5",1.0,0.8,1.2,2022-01-26 08:00:00,nan,"team subcontractor[2,00 #8]",
102,1.9.2.6,BRUÑAS DE 1 X 1 cm,1.0,0.5,1.5,2022-01-25 08:00:00,nan,mason,
104,1.9.3.1,CIELORRASO DE PLANCHA FIBROCEMENTO 1.22 M X 2.44 M X 4MM,1.0,0.5,1.5,2022-01-27 08:00:00,nan,"mason [2,00 #8]",
107,1.9.4.1.1,PISO DE CERAMICO DE 30 X 30CM ALTO TRÁNSITO ANTIDELIZABLE,2.0,1.0,3.0,2022-01-28 08:00:00,nan,"team subcontractor[2,00 #8]",
109,1.9.4.2.1,ENCOFRADO Y DESENCOFRADO EN VIGAS DE CONFINAMIENTO,2.0,1.0,3.0,2022-01-28 08:00:00,nan,"team subcontractor[2,00 #8]",
110,1.9.4.2.2,CONCRETO f'c= 175 kg/cm2-VIGAS DE CONFINAMIENTO,2.0,1.0,3.0,2022-01-28 08:00:00,nan,mason,
111,1.9.4.2.3,"JUNTAS DE DILATACIÓN, DE POLIESTIRENO EXPANDIDO",1.0,0.5,1.5,2022-01-28 08:00:00,nan,mason,
114,1.9.5.1.1,CONTRAZOCALO DE CERAMICO,1.0,0.5,1.5,2022-01-06 08:00:00,nan,"steel worker [1,00 #8]",
115,1.9.5.1.2,CONTRAZOCALO DE CEMENTO S/COLOREAR H=20 cm,1.0,0.5,1.5,2022-01-08 08:00:00,nan,mason,
118,1.9.6.1.1,"PUERTA DE MADERA TORNILLO APANELADA, GIRO DE 180, CON VISOR DE VIDRIO TEMPLADO",2.0,1.0,3.0,2022-01-10 08:00:00,nan,"plumber [1,00 #8]",
120,1.9.6.2.1,VENTANA DE MADERA TORNILLO CON VIDRIO DOBLE DE 6 mm,1.0,0.5,1.5,2022-01-12 08:00:00,nan,"plumber [1,00 #8]",
123,1.9.7.1.1,"BISAGRA DE ACERO ALUMINIZADO PESADA DE 4"" x 4"" EN PUERTA",1.0,0.5,1.5,2022-01-13 08:00:00,nan,"team subcontractor[2,00 #8]",
124,1.9.7.1.2,"BISAGRA DE ACERO ALUMINIZADO PESADA DE 2"" x 2"" EN VENTANAS",1.0,0.5,1.5,2022-01-13 08:00:00,nan,"team subcontractor[2,00 #8]",
126,1.9.7.2.1,"CERRADURA DE SOBREPONER DOS GOLPES EN PUERTA, CON TIRADOR",1.0,0.5,1.5,2022-01-14 08:00:00,nan,"plumber [1,00 #8]",
127,1.9.7.2.2,CERRADURATIPO MANIJA DE ACERO INOX CON LLAVE,1.0,0.5,1.5,2022-01-14 08:00:00,nan,"plumber [1,00 #8]",
129,1.9.7.3.1,"CERROJO ALUMINIZADO 2"" CROMADO",1.0,0.5,1.5,2022-01-15 08:00:00,nan,mason,
132,1.9.8.1.1,PINTURA CIELORRASO,1.0,0.5,1.5,2022-01-17 08:00:00,nan,"plumber [1,00 #8]",
133,1.9.8.1.2,PINTURA LATEX EN VIGAS (DOS MANOS),1.0,0.5,1.5,2022-01-19 08:00:00,nan,"team subcontractor[2,00 #8]",
134,1.9.8.1.3,PINTURA LATEX EN COLUMNAS (DOS MANOS),1.0,0.5,1.5,2022-01-19 08:00:00,nan,"plumber [1,00 #8]",
135,1.9.8.1.4,PINTURA LATEX EN MUROS INTERIORES (DOS MANOS),1.0,0.8,1.2,2022-01-19 08:00:00,nan,"team subcontractor[2,00 #8]",
136,1.9.8.1.5,PINTURA LATEX EN MUROS EXTERIORES (DOS MANOS),1.0,0.5,1.5,2022-01-20 08:00:00,nan,"steel worker [1,00 #8]",
138,1.9.8.2.1,PINTURA EN PUERTAS C/ BARNIZ (DOS MANOS),2.0,1.0,3.0,2022-01-21 08:00:00,nan,carpenter,
139,1.9.8.2.2,PINTURA EN VENTANAS DE MADERA C/ BARNIZ (DOS MANOS),1.0,0.5,1.5,2022-01-24 08:00:00,nan,"plumber [1,00 #8]",
141,1.9.8.3.1,PINTURA ESMALTE EN CONTRAZÓCALOS,1.0,0.5,1.5,2022-01-25 08:00:00,nan,"steel worker [1,00 #8]",
144,1.10.1.1,"TRAZO, NIVELACION Y REPLANTEO PRELIMINAR",1.0,0.8,1.2,2022-01-03 08:00:00,nan,"plumber [1,00 #8]",
146,1.10.2.1,EXCAVACIÓN PARA ZANJAS,1.0,0.5,1.5,2022-01-05 08:00:00,nan,"plumber [1,00 #8]",
147,1.10.2.2,"RELLENO COMPACTADO C/ EQUIPO, MATERIAL PROPIO",1.0,0.5,1.5,2022-01-06 08:00:00,nan,"steel worker [1,00 #8]",
148,1.10.2.3,"ACARREO INTERNO, MATERIAL PROCEDENTE DE EXCAVACIONES",1.0,0.5,1.5,2022-01-10 08:00:00,nan,"steel worker [1,00 #8]",
149,1.10.2.4,ELIMINACION DE MATERIAL EXCEDENTE CON EQUIPO PESADO,1.0,0.5,1.5,2022-01-11 08:00:00,nan,"plumber [1,00 #8]",
151,1.10.3.1,"GRAVA ZARANDEADA DE 1/2"" PARA FILTRO DE DRENAJE",1.0,0.5,1.5,2022-01-12 08:00:00,nan,"plumber [1,00 #8]",
153,1.10.4.1,ENCOFRADO Y DESENCOFRADO-CANAL DE DRENAJE PLUVIAL,1.0,0.5,1.5,2022-01-13 08:00:00,nan,mason,
154,1.10.4.2,CONCRETO F´c 175 Kg/cm2-CANAL DE DRENAJE PLUVIAL,1.0,0.5,1.5,2022-01-13 08:00:00,nan,"team subcontractor[1,00 #8]",
156,1.10.5.1,"JUNTAS DE DILATACIÓN, DE POLIESTIRENO EXPANDIDO",1.0,0.5,1.5,2022-01-14 08:00:00,nan,"plumber [1,00 #8]",
157,1.10.5.2,"JUNTAS CON ELASTOMÉRICO 1/2"" x 1""",1.0,0.5,1.5,2022-01-15 08:00:00,nan,"team subcontractor[1,00 #8]",
159,1.10.6.1,"MONTANTE DE TUBERÍA DE AGUA PLUVIAL DE PVC SAP DIAMETRO 3""",1.0,0.5,1.5,2022-01-17 08:00:00,nan,"plumber [1,00 #8]",
160,1.10.6.2,"TUBERIA PVC SAP DIAMETRO 3"" DRENAJE EN PISO",1.0,0.5,1.5,2022-01-18 08:00:00,nan,"plumber [1,00 #8]",
161,1.10.6.3,"TUBERIA DE PVC SAP DIAMETRO 3"" PERFORADA",1.0,0.5,1.5,2022-01-19 08:00:00,nan,"plumber [1,00 #8]",
162,1.10.6.4,CONEXIÓN A CANAL DE AGUA PARA RIEGO,1.0,0.5,1.5,2022-01-20 08:00:00,nan,"team subcontractor[1,00 #8]",
164,1.10.7.1,"CANALETA DE PLANCHA DE Fe GALVANIZADO, e=9mm",1.0,0.5,1.5,2022-01-21 08:00:00,nan,"team subcontractor[1,00 #8]",
166,1.10.8.1,"TEE PVC SAP PARA MONTANTE 2""",1.0,0.5,1.5,2022-01-22 08:00:00,nan,"plumber [1,00 #8]",
167,1.10.8.2,"ABRAZADERA D=3"" DE 1""X1/8"" PARA MONTANTE",1.0,0.5,1.5,2022-01-22 08:00:00,nan,"plumber [1,00 #8]",
168,1.10.8.3,"CODO 90° PVC-SAP D=3""",1.0,0.5,1.5,2022-01-21 08:00:00,nan,"plumber [1,00 #8]",
170,1.10.9.1,"REJILLA DE PLATINA DESMONTABLE , A=0.25m",1.0,0.5,1.5,2022-01-24 08:00:00,nan,"team subcontractor[1,00 #8]",
172,1.11.1,"TARRAJEO EN CANAL, MORTERO 1:5",1.0,0.5,1.5,2022-01-26 08:00:00,nan,"team subcontractor[1,00 #8]",
175,1.11.2.1.1,SALIDA PARA ALUMBRADO EN TECHO,1.0,0.5,1.5,2022-01-03 08:00:00,nan,electrician ,
176,1.11.2.1.2,"SALIDA DE PARED P/INTERRUPTOR SIMPLE, CAJA RECTANGULAR",1.0,0.5,1.5,2022-01-04 08:00:00,nan,"team subcontractor[1,00 #8]",
177,1.11.2.1.3,"SALIDA DE PARED P/INTERRUPTOR DOBLE, CAJA RECTANGULAR",1.0,0.5,1.5,2022-01-06 08:00:00,nan,electrician ,
178,1.11.2.1.4,"SALIDA PARA TOMACORRIENTE BIPOLAR DOBLE CON PUESTA A TIERRA CON PROTECCIÓN, CAJA RECTANGULAR",1.0,0.5,1.5,2022-01-07 08:00:00,nan,"team subcontractor[1,00 #8]",
179,1.11.2.1.5,"SALIDA PARA TOMACORRIENTE BIPOLAR DOBLE CON PUESTA A TIERRA CON PROTECCIÓN, CAJA RECTANGULAR",1.0,0.5,1.5,2022-01-08 08:00:00,nan,"team subcontractor[1,00 #8]",
182,1.11.3.1.1,"TRAZO, NIVELES Y REPLANTEO PRELIMINAR",1.0,0.5,1.5,2022-01-10 08:00:00,nan,"team subcontractor[1,00 #8]",
183,1.11.3.1.2,EXCAVACIÓN PARA ZANJAS,1.0,0.5,1.5,2022-01-11 08:00:00,nan,,
184,1.11.3.1.3,REFINE Y NIVELACIÓN DE ZANJAS PARA TUBERÍA,1.0,0.5,1.5,2022-01-12 08:00:00,nan,"team subcontractor[1,00 #8]",
185,1.11.3.1.4,CAMA DE APOYO e=0.10m ARENA GRUESA,1.0,0.5,1.5,2022-01-13 08:00:00,nan,,
186,1.11.3.1.5,RELLENO COMPACTADO C/EQUIPO MAT/PROPIO EN REDES EXT. SANITARIAS,1.0,0.5,1.5,2022-01-14 08:00:00,nan,"team subcontractor[1,00 #8]",
187,1.11.3.1.6,ELIMINACION DE MATERIAL EXCEDENTE ACARREADO,1.0,0.5,1.5,2022-01-15 08:00:00,nan,"team subcontractor[1,00 #8]",
189,1.11.3.2.1,TUBERIA PVC-SAP ELECTRICA DE 25 mm,1.0,0.5,1.5,2022-01-17 08:00:00,nan,"team subcontractor[1,00 #8]",
191,1.11.4.1,CONDUCTOR DE CU. NH-80 2-1x10mm2 ALIMENTADOR,1.0,0.5,1.5,2022-01-18 08:00:00,nan,electrician ,
192,1.11.4.2,CONDUCTOR DE CU. NH-80 2.5mm2,1.0,0.5,1.5,2022-01-19 08:00:00,nan,electrician ,
193,1.11.4.3,CONDUCTOR DE CU. NH-80 1.5mm2,1.0,0.5,1.5,2022-01-20 08:00:00,nan,electrician ,
194,1.11.4.4,CONDUCTOR DE CU. THW 25mm2 PARA PUESTA A TIERRA,1.0,0.5,1.5,2022-01-20 08:00:00,nan,electrician ,
196,1.11.5.1,TABLERO GENERAL,1.0,0.5,1.5,2022-01-21 08:00:00,nan,electrician ,
197,1.11.5.2,TABLERO DE DISTRIBUCIÓN (TD1),1.0,0.5,1.5,2022-01-22 08:00:00,nan,electrician ,
198,1.11.5.3,INTERRUPTOR TERMOMAGNETICO 2x50 A,1.0,0.5,1.5,2022-01-22 08:00:00,nan,electrician ,
199,1.11.5.4,INTERRUPTOR TERMOMAGNETICO 2x25 A,1.0,0.5,1.5,2022-01-22 08:00:00,nan,electrician ,
200,1.11.5.5,INTERRUPTOR TERMOMAGNETICO 2x20 A,1.0,0.5,1.5,2022-01-22 08:00:00,nan,electrician ,
201,1.11.5.6,INTERRUPTOR DIFERENCIAL 2X25A,1.0,0.5,1.5,2022-01-24 08:00:00,nan,electrician ,
203,1.11.6.1,ARTEFACTO TIPO REJILLA FLUORESCENTE 2x36W ADOSADA,1.0,0.5,1.5,2022-01-25 08:00:00,nan,electrician ,
206,1.11.7.1.1,"TRAZO, NIVELACION Y REPLANTEO PRELIMINAR",1.0,0.5,1.5,2022-01-26 08:00:00,nan,"team subcontractor[1,00 #8]",
207,1.11.7.1.2,EXCAVACIÓN PARA ZANJAS,1.0,0.5,1.5,2022-01-27 08:00:00,nan,"team subcontractor[1,00 #8]",
208,1.11.7.1.3,REFINE Y NIVELACIÓN DE ZANJAS PARA TUBERÍA,1.0,0.5,1.5,2022-01-28 08:00:00,nan,painter,
209,1.11.7.1.4,CAMA DE APOYO e=0.10m ARENA GRUESA,1.0,0.5,1.5,2022-01-29 08:00:00,nan,painter,
210,1.11.7.1.5,RELLENO COMPACTADO C/EQUIPO MAT/PROPIO EN REDES EXT. SANITARIAS,1.0,0.5,1.5,2022-01-31 08:00:00,nan,"team subcontractor[1,00 #8]",
211,1.11.7.1.6,TENDIDO DE CONDUCTOR DE PUESTA A TIERRA CU THW 25 MM2 EN DUCTO PVC-SAP D=25 MM,1.0,0.5,1.5,2022-01-31 08:00:00,nan,"team subcontractor[1,00 #8]",
214,1.11.8.1.1,"TRAZO, NIVELACION Y REPLANTEO PRELIMINAR",1.0,0.5,1.5,2022-02-01 08:00:00,nan,"team subcontractor[1,00 #8]",
215,1.11.8.1.2,EXCAVACION DE ZANJA PARA POZO PUESTA A TIERRA,1.0,0.5,1.5,2022-02-01 08:00:00,nan,"team subcontractor[1,00 #8]",
216,1.11.8.1.3,REFINE Y NIVELACIÓN DE ZANJAS PARA POZO,1.0,0.5,1.5,2022-02-02 08:00:00,nan,painter,
217,1.11.8.1.4,RELLENO CON MATERIAL ESPECIAL PARA POSO A TIERRA,1.0,0.5,1.5,2022-02-03 08:00:00,nan,"team subcontractor[1,00 #8]",
218,1.11.8.1.5,INSTALACION DE PUESTA A TIERRA,1.0,0.5,1.5,2022-02-04 08:00:00,nan,"team subcontractor[1,00 #8]",
221,1.12.1.1,LIMPIEZA DE OBRA,1.0,0.5,1.5,2022-02-07 08:00:00,nan,,
222,1.12.1.2,CONTENEDORES DE RESIDUOS SÓLIDOS,1.0,0.5,1.5,2022-02-09 08:00:00,nan,"team subcontractor[1,00 #8]",
223,1.12.1.3,LETRINAS PORTATILES,1.0,0.5,1.5,2022-02-10 08:00:00,nan,"team subcontractor[1,00 #8]",
